# CR-F0009-0305-MB-F-00001

Schedule from MS Project, 2026-05-18 to 2027-01-06, status date 2026-07-08, A marks actual dates.

## Calendars

- Padrão: Mon-Fri 09:00-12:00, 13:00-18:00; Sat-Sun off. Exceptions (off unless hours are given): 2026-07-09 to 2026-07-10.

## Schedule

| ID | WBS | Task | Type | Duration | Start | Finish | Predecessors | Complete | Remaining | Baseline start | Baseline finish | Baseline duration | Baseline 1 start | Baseline 1 finish | Total slack | Free slack | Constraint | Inicio_LB_R0 | Término_LB_R0 | Disciplina | Título |
| --- | --- | --- | --- | --- | --- | --- | --- | --- | --- | --- | --- | --- | --- | --- | --- | --- | --- | --- | --- | --- | --- |
| 1 | 1 | **F0009 - Programa Marabá** |  | 166d | 2026-05-18 A | 2027-01-06 |  | 29% | 118.3d | 2026-04-27 | 2026-07-08 | 53d | 2026-04-27 | 2026-07-08 | 0d |  |  | Seg 27/04/26 | Qua 08/07/26 | GERAL |  |
| 2 | 1.1 | **Área 0000 -Documento geral** |  | 166d | 2026-05-18 A | 2027-01-06 |  | 29% | 118.3d | 2026-04-27 | 2026-07-08 | 53d | 2026-04-27 | 2026-07-08 | 0d |  |  | Seg 27/04/26 | Qua 08/07/26 | GERAL |  |
| 3 | 1.1.1 | KOM - Início de projeto | milestone | 0d | 2026-05-18 A | 2026-05-18 A |  | 100% |  | 2026-04-27 | 2026-04-27 | 0d | 2026-04-27 | 2026-04-27 |  |  | start no earlier than 2026-05-18 | Seg 27/04/26 | Seg 27/04/26 | GERAL |  |
| 4 | 1.1.2 | **Pendências** |  | 0d | 2026-05-18 A | 2026-05-18 A |  | 100% |  | 2026-04-29 | 2026-04-29 | 0d | 2026-04-29 | 2026-04-29 |  |  |  | Qua 29/04/26 | Qua 29/04/26 | PENDÊNCIAS |  |
| 5 | 1.1.2.1 | Recebimento de dados de entrada | milestone | 0d | 2026-05-18 A | 2026-05-18 A | 3 | 100% |  | 2026-04-29 | 2026-04-29 | 0d | 2026-04-29 | 2026-04-29 |  |  |  | Qua 29/04/26 | Qua 29/04/26 | PENDÊNCIAS |  |
| 6 | 1.1.3 | **Planejamento** |  | 147.5d | 2026-06-01 A | 2026-12-25 |  | 79% | 31.61d | 2026-04-27 | 2026-05-19 | 17d | 2026-04-27 | 2026-05-19 | 8.5d |  |  | Seg 27/04/26 | Ter 19/05/26 | PLANEJAMENTO |  |
| 7 | 1.1.3.1 | **LD-F0009-0000-MB-G-00001** |  | 147.5d | 2026-06-01 A | 2026-12-25 |  | 70% | 44.25d | 2026-04-27 | 2026-05-19 | 17d | 2026-04-27 | 2026-05-19 | 8.5d |  |  | Seg 27/04/26 | Ter 19/05/26 | PLANEJAMENTO | Lista de documentos |
| 8 | 1.1.3.1.1 | Emissão inicial |  | 2d | 2026-06-01 A | 2026-06-02 A | 3FS+10d | 100% |  | 2026-04-27 | 2026-04-29 | 3d | 2026-04-27 | 2026-04-29 |  |  |  | Seg 27/04/26 | Qua 29/04/26 | PLANEJAMENTO |  |
| 9 | 1.1.3.1.2 | Análise Tecnored |  | 1d | 2026-06-03 A | 2026-06-03 A | 8 | 100% |  | 2026-04-30 | 2026-04-30 | 1d | 2026-04-30 | 2026-04-30 |  |  |  | Qui 30/04/26 | Qui 30/04/26 | PLANEJAMENTO |  |
| 10 | 1.1.3.1.3 | Atendimento de comentários |  | 1d | 2026-12-17 A | 2026-12-21 | 9FS+140d | 50% | 0.5d | 2026-05-06 | 2026-05-13 | 6d | 2026-05-06 | 2026-05-13 | 8.5d | 0d |  | Qua 06/05/26 | Qua 13/05/26 | PLANEJAMENTO |  |
| 11 | 1.1.3.1.4 | Aprovação |  | 1d | 2026-12-24 | 2026-12-25 | 10FS+3d |  |  | 2026-05-19 | 2026-05-19 | 1d | 2026-05-19 | 2026-05-19 | 8.5d |  |  | Ter 19/05/26 | Ter 19/05/26 | PLANEJAMENTO |  |
| 12 | 1.1.3.2 | **EA-F0009-0000-MB-G-00001** |  | 16d | 2026-06-03 A | 2026-06-24 |  | 81% | 3d | 2026-04-30 | 2026-05-19 | 13.4d | 2026-04-30 | 2026-05-19 | 138d |  |  | Qui 30/04/26 | Ter 19/05/26 | PLANEJAMENTO | EAP |
| 13 | 1.1.3.2.1 | Emissão inicial |  | 3d | 2026-06-03 A | 2026-06-05 A | 8 | 100% |  | 2026-04-30 | 2026-05-04 | 3d | 2026-04-30 | 2026-05-04 |  |  |  | Qua 03/06/26 | Sex 05/06/26 | PLANEJAMENTO |  |
| 14 | 1.1.3.2.2 | Análise Tecnored |  | 3d | 2026-06-08 A | 2026-06-10 A | 13 | 100% |  | 2026-05-05 | 2026-05-05 | 1d | 2026-05-05 | 2026-05-05 |  |  |  | Seg 08/06/26 | Qua 10/06/26 | PLANEJAMENTO |  |
| 15 | 1.1.3.2.3 | Atendimento de comentários |  | 1d | 2026-06-23 A | 2026-06-23 | 14FS+8d | 50% | 0.5d | 2026-05-13 | 2026-05-18 | 2d | 2026-05-13 | 2026-05-18 | 138d | 0d |  | Ter 23/06/26 | Ter 23/06/26 | PLANEJAMENTO |  |
| 16 | 1.1.3.2.4 | Aprovação |  | 1d | 2026-06-24 | 2026-06-24 | 15 |  |  | 2026-05-18 | 2026-05-19 | 1d | 2026-05-18 | 2026-05-19 | 129.5d |  |  | Qua 24/06/26 | Qua 24/06/26 | PLANEJAMENTO |  |
| 17 | 1.1.3.3 | **CR-F0009-0000-MB-F-00001** |  | 16d | 2026-06-03 A | 2026-06-24 |  | 81% | 3d | 2026-04-30 | 2026-05-19 | 13.4d | 2026-04-30 | 2026-05-19 | 138d |  |  | Qui 30/04/26 | Ter 19/05/26 | PLANEJAMENTO | Cronograma |
| 18 | 1.1.3.3.1 | Emissão inicial |  | 3d | 2026-06-03 A | 2026-06-05 A | 8 | 100% |  | 2026-04-30 | 2026-05-04 | 3d | 2026-04-30 | 2026-05-04 |  |  |  | Qui 30/04/26 | Seg 04/05/26 | PLANEJAMENTO |  |
| 19 | 1.1.3.3.2 | Análise Tecnored |  | 3d | 2026-06-08 A | 2026-06-10 A | 18 | 100% |  | 2026-05-05 | 2026-05-05 | 1d | 2026-05-05 | 2026-05-05 |  |  |  | Ter 05/05/26 | Ter 05/05/26 | PLANEJAMENTO |  |
| 20 | 1.1.3.3.3 | Atendimento de comentários |  | 1d | 2026-06-23 A | 2026-06-23 | 19FS+8d | 50% | 0.5d | 2026-05-13 | 2026-05-18 | 2d | 2026-05-13 | 2026-05-18 | 138d | 0d |  | Qua 13/05/26 | Seg 18/05/26 | PLANEJAMENTO |  |
| 21 | 1.1.3.3.4 | Aprovação |  | 1d | 2026-06-24 | 2026-06-24 | 20 |  |  | 2026-05-18 | 2026-05-19 | 1d | 2026-05-18 | 2026-05-19 | 129.5d |  |  | Seg 18/05/26 | Ter 19/05/26 | PLANEJAMENTO |  |
| 22 | 1.1.4 | **Coordenação** |  | 36d | 2026-06-01 A | 2026-07-22 |  | 40% | 21.6d | 2026-04-27 | 2026-07-08 | 53d | 2026-04-27 | 2026-07-08 | 120d |  |  | Seg 27/04/26 | Qua 08/07/26 | COORDENAÇÃO |  |
| 23 | 1.1.4.1 | **RM-F0009-0000-MB-G-00002** |  | 7d | 2026-06-22 | 2026-06-30 |  |  |  | 2026-06-11 | 2026-06-19 | 7d | 2026-06-11 | 2026-06-19 | 134d |  |  | Qui 11/06/26 | Sex 19/06/26 | COORDENAÇÃO | Relatorio Mensal |
| 24 | 1.1.4.1.1 | Emissão inicial |  | 3d | 2026-06-22 | 2026-06-24 |  |  |  | 2026-06-11 | 2026-06-15 | 3d | 2026-06-11 | 2026-06-15 | 125.5d | 0d | start no earlier than 2026-06-22 | Qui 11/06/26 | Seg 15/06/26 | COORDENAÇÃO |  |
| 25 | 1.1.4.1.2 | Análise Tecnored |  | 1d | 2026-06-25 | 2026-06-25 | 24 |  |  | 2026-06-16 | 2026-06-16 | 1d | 2026-06-16 | 2026-06-16 | 125.5d | 0d |  | Ter 16/06/26 | Ter 16/06/26 | COORDENAÇÃO |  |
| 26 | 1.1.4.1.3 | Atendimento de comentários |  | 2d | 2026-06-26 | 2026-06-29 | 25 |  |  | 2026-06-17 | 2026-06-18 | 2d | 2026-06-17 | 2026-06-18 | 125.5d | 0d |  | Qua 17/06/26 | Qui 18/06/26 | COORDENAÇÃO |  |
| 27 | 1.1.4.1.4 | Aprovação |  | 1d | 2026-06-30 | 2026-06-30 | 26 |  |  | 2026-06-19 | 2026-06-19 | 1d | 2026-06-19 | 2026-06-19 | 125.5d |  |  | Sex 19/06/26 | Sex 19/06/26 | COORDENAÇÃO |  |

| ID | WBS | Task | Duration | Start | Finish | Predecessors | Complete | Remaining | Baseline start | Baseline finish | Baseline duration | Baseline 1 start | Baseline 1 finish | Total slack | Free slack | Constraint | Baseline cost | Título | Inicio_LB_R0 | Término_LB_R0 | Disciplina |
| --- | --- | --- | --- | --- | --- | --- | --- | --- | --- | --- | --- | --- | --- | --- | --- | --- | --- | --- | --- | --- | --- |
| 28 | 1.1.4.2 | **RL-F0009-0000-MB-G-00001** | 4d | 2026-06-26 | 2026-07-01 |  |  |  | 2026-06-30 | 2026-07-08 | 7d | 2026-06-30 | 2026-07-08 | 133d |  |  |  | Ultimo Relatorio | Ter 30/06/26 | Qua 08/07/26 | COORDENAÇÃO |
| 29 | 1.1.4.2.1 | Emissão inicial | 1d | 2026-06-26 | 2026-06-28 |  |  |  | 2026-06-30 | 2026-07-02 | 3d | 2026-06-30 | 2026-07-02 | 124.5d | 0d | finish no earlier than 2026-06-28 |  |  | Ter 30/06/26 | Qui 02/07/26 | COORDENAÇÃO |
| 30 | 1.1.4.2.2 | Análise Tecnored | 1d | 2026-06-29 | 2026-06-29 | 29 |  |  | 2026-07-03 | 2026-07-03 | 1d | 2026-07-03 | 2026-07-03 | 124.5d | 0d | start no earlier than 2026-06-26 |  |  | Sex 03/07/26 | Sex 03/07/26 | COORDENAÇÃO |
| 31 | 1.1.4.2.3 | Atendimento de comentários | 1d | 2026-06-30 | 2026-06-30 | 30 |  |  | 2026-07-06 | 2026-07-07 | 2d | 2026-07-06 | 2026-07-07 | 124.5d | 0d | start no earlier than 2026-06-29 |  |  | Seg 06/07/26 | Ter 07/07/26 | COORDENAÇÃO |
| 32 | 1.1.4.2.4 | Aprovação | 1d | 2026-07-01 | 2026-07-01 | 31 |  |  | 2026-07-08 | 2026-07-08 | 1d | 2026-07-08 | 2026-07-08 | 124.5d |  | start no earlier than 2026-06-30 |  |  | Qua 08/07/26 | Qua 08/07/26 | COORDENAÇÃO |
| 33 | 1.1.4.3 | **LF-F0009-0000-MB-F-00001** | 7d | 2026-06-22 A | 2026-06-30 |  | 71% | 2d |  |  |  |  |  | 134d |  |  | -0 | Vendor List | Seg 20/07/26 | Ter 28/07/26 | COORDENAÇÃO |
| 34 | 1.1.4.3.1 | Emissão inicial | 3d | 2026-06-22 A | 2026-06-24 A | 3FS+45d | 100% |  |  |  |  |  |  |  |  |  | -0 |  | Seg 20/07/26 | Qua 22/07/26 | COORDENAÇÃO |
| 35 | 1.1.4.3.2 | Análise Tecnored | 1d | 2026-06-25 A | 2026-06-25 A | 34 | 100% |  |  |  |  |  |  |  |  |  | -0 |  | Qui 23/07/26 | Qui 23/07/26 | COORDENAÇÃO |
| 36 | 1.1.4.3.3 | Atendimento de comentários | 2d | 2026-06-26 A | 2026-06-29 | 35 | 50% | 1d |  |  |  |  |  | 134d | 0d |  | -0 |  | Sex 24/07/26 | Seg 27/07/26 | COORDENAÇÃO |
| 37 | 1.1.4.3.4 | Aprovação | 1d | 2026-06-30 | 2026-06-30 | 36 |  |  |  |  |  |  |  | 125.5d |  |  | -0 |  | Ter 28/07/26 | Ter 28/07/26 | COORDENAÇÃO |
| 38 | 1.1.4.4 | **LP-F0009-0000-MB-G-00001** | 36d | 2026-06-01 A | 2026-07-22 |  | 71% | 10.29d | 2026-04-27 | 2026-06-16 | 37d | 2026-04-27 | 2026-06-16 | 120d |  |  |  | Lista de pendências | Seg 27/04/26 | Ter 16/06/26 | COORDENAÇÃO |
| 39 | 1.1.4.4.1 | Emissão inicial | 3d | 2026-06-01 A | 2026-06-03 A | 3FS+10d | 100% |  | 2026-04-27 | 2026-04-29 | 3d | 2026-04-27 | 2026-04-29 |  |  |  |  |  | Seg 27/04/26 | Qua 29/04/26 | COORDENAÇÃO |
| 40 | 1.1.4.4.2 | Análise Tecnored | 1d | 2026-06-04 A | 2026-06-04 A | 39 | 100% |  | 2026-04-30 | 2026-04-30 | 1d | 2026-04-30 | 2026-04-30 |  |  |  |  |  | Qui 30/04/26 | Qui 30/04/26 | COORDENAÇÃO |
| 41 | 1.1.4.4.3 | Atendimento de comentários | 2d | 2026-07-17 A | 2026-07-21 | 40FS+30d | 50% | 1d | 2026-06-12 | 2026-06-15 | 2d | 2026-06-12 | 2026-06-15 | 120d | 0d |  |  |  | Sex 12/06/26 | Seg 15/06/26 | COORDENAÇÃO |
| 42 | 1.1.4.4.4 | Aprovação | 1d | 2026-07-22 | 2026-07-22 | 41 |  |  | 2026-06-16 | 2026-06-16 | 1d | 2026-06-16 | 2026-06-16 | 111.5d |  |  |  |  | Ter 16/06/26 | Ter 16/06/26 | COORDENAÇÃO |
| 43 | 1.1.5 | **Processo** | 139d | 2026-05-28 A | 2026-12-10 |  | 31% | 95.56d | 2026-05-19 | 2026-06-25 | 28d | 2026-05-19 | 2026-06-25 | 19d |  |  |  |  | Ter 19/05/26 | Qui 25/06/26 | PROCESSOS |
| 44 | 1.1.5.1 | **CP-F0009-0000-MB-P-00001** | 9d | 2026-06-08 A | 2026-06-18 |  | 28% | 6.5d |  |  |  |  |  | 142d |  |  | -0 | Critério de Projetos | Ter 09/06/26 | Sex 19/06/26 | PROCESSOS |
| 45 | 1.1.5.1.1 | Emissão inicial | 5d | 2026-06-08 A | 2026-06-12 | 18, 13 | 50% | 2.5d |  |  |  |  |  | 19d | 0d |  | -0 |  | Ter 09/06/26 | Seg 15/06/26 | PROCESSOS |
| 46 | 1.1.5.1.2 | Análise Tecnored | 1d | 2026-06-15 | 2026-06-15 | 45 |  |  |  |  |  |  |  | 133.5d | 0d |  | -0 |  | Ter 16/06/26 | Ter 16/06/26 | PROCESSOS |
| 47 | 1.1.5.1.3 | Atendimento de comentários | 2d | 2026-06-16 | 2026-06-17 | 46 |  |  |  |  |  |  |  | 133.5d | 0d |  | -0 |  | Qua 17/06/26 | Qui 18/06/26 | PROCESSOS |
| 48 | 1.1.5.1.4 | Aprovação | 1d | 2026-06-18 | 2026-06-18 | 47 |  |  |  |  |  |  |  | 133.5d |  |  | -0 |  | Sex 19/06/26 | Sex 19/06/26 | PROCESSOS |
| 49 | 1.1.5.2 | **MD-F0009-0000-MB-P-00001** | 7d | 2026-12-02 | 2026-12-10 |  |  |  | 2026-06-17 | 2026-06-25 | 7d | 2026-06-17 | 2026-06-25 | 19d |  |  |  | Memorial descritivo | Qua 17/06/26 | Qui 25/06/26 | PROCESSOS |
| 50 | 1.1.5.2.1 | Emissão inicial | 3d | 2026-12-02 | 2026-12-04 | 45FS+120d |  |  | 2026-06-17 | 2026-06-19 | 3d | 2026-06-17 | 2026-06-19 | 10.5d | 0d |  |  |  | Qua 17/06/26 | Sex 19/06/26 | PROCESSOS |
| 51 | 1.1.5.2.2 | Análise Tecnored | 1d | 2026-12-07 | 2026-12-07 | 50 |  |  | 2026-06-22 | 2026-06-22 | 1d | 2026-06-22 | 2026-06-22 | 10.5d | 0d |  |  |  | Seg 22/06/26 | Seg 22/06/26 | PROCESSOS |
| 52 | 1.1.5.2.3 | Atendimento de comentários | 2d | 2026-12-08 | 2026-12-09 | 51 |  |  | 2026-06-23 | 2026-06-24 | 2d | 2026-06-23 | 2026-06-24 | 10.5d | 0d |  |  |  | Ter 23/06/26 | Qua 24/06/26 | PROCESSOS |
| 53 | 1.1.5.2.4 | Aprovação | 1d | 2026-12-10 | 2026-12-10 | 52 |  |  | 2026-06-25 | 2026-06-25 | 1d | 2026-06-25 | 2026-06-25 | 10.5d |  |  |  |  | Qui 25/06/26 | Qui 25/06/26 | PROCESSOS |

| ID | WBS | Task | Type | Duration | Start | Finish | Predecessors | Complete | Remaining | Baseline start | Baseline finish | Baseline duration | Baseline 1 start | Baseline 1 finish | Total slack | Free slack | Constraint | Baseline cost | Título | Inicio_LB_R0 | Término_LB_R0 | Disciplina |
| --- | --- | --- | --- | --- | --- | --- | --- | --- | --- | --- | --- | --- | --- | --- | --- | --- | --- | --- | --- | --- | --- | --- |
| 54 | 1.1.5.3 | **FG-F0009-0000-MB-P-00001** |  | 4d | 2026-05-28 A | 2026-06-03 |  | 63% | 1.5d | 2026-05-19 | 2026-05-25 | 5d | 2026-05-19 | 2026-05-25 | 153d |  |  |  | Diagrama de blocos de processo | Ter 19/05/26 | Seg 25/05/26 | PROCESSOS |
| 55 | 1.1.5.3.1 | Emissão inicial | milestone | 0d | 2026-05-28 A | 2026-05-28 A | 45FS+8d | 100% |  | 2026-05-19 | 2026-05-19 | 1d | 2026-05-19 | 2026-05-19 |  |  |  |  |  | Ter 19/05/26 | Ter 19/05/26 | PROCESSOS |
| 56 | 1.1.5.3.2 | Análise Tecnored |  | 1d | 2026-05-29 A | 2026-05-29 A | 55 | 100% |  | 2026-05-20 | 2026-05-20 | 1d | 2026-05-20 | 2026-05-20 |  |  |  |  |  | Qua 20/05/26 | Qua 20/05/26 | PROCESSOS |
| 57 | 1.1.5.3.3 | Atendimento de comentários |  | 2d | 2026-06-01 A | 2026-06-02 | 56 | 75% | 0.5d | 2026-05-21 | 2026-05-22 | 2d | 2026-05-21 | 2026-05-22 | 153d | 0d |  |  |  | Qui 21/05/26 | Sex 22/05/26 | PROCESSOS |
| 58 | 1.1.5.3.4 | Aprovação |  | 1d | 2026-06-03 | 2026-06-03 | 57 |  |  | 2026-05-25 | 2026-05-25 | 1d | 2026-05-25 | 2026-05-25 | 144.5d |  |  |  |  | Seg 25/05/26 | Seg 25/05/26 | PROCESSOS |
| 59 | 1.1.5.4 | **FG-F0009-0000-MB-P-00002** |  | 25d | 2026-05-28 A | 2026-07-01 |  | 63% | 9.38d | 2026-05-19 | 2026-05-25 | 5d | 2026-05-19 | 2026-05-25 | 133d |  |  |  | Fluxograma geral de processo | Ter 19/05/26 | Seg 25/05/26 | PROCESSOS |
| 60 | 1.1.5.4.1 | Emissão inicial | milestone | 0d | 2026-05-28 A | 2026-05-28 A | 45FS+8d | 100% |  | 2026-05-19 | 2026-05-19 | 1d | 2026-05-19 | 2026-05-19 |  |  |  |  |  | Ter 19/05/26 | Ter 19/05/26 | PROCESSOS |
| 61 | 1.1.5.4.2 | Análise Tecnored |  | 1d | 2026-06-26 A | 2026-06-26 A | 60 | 100% |  | 2026-05-20 | 2026-05-20 | 1d | 2026-05-20 | 2026-05-20 |  |  |  |  |  | Qua 20/05/26 | Qua 20/05/26 | PROCESSOS |
| 62 | 1.1.5.4.3 | Atendimento de comentários |  | 2d | 2026-06-29 A | 2026-06-30 | 61 | 75% | 0.5d | 2026-05-21 | 2026-05-22 | 2d | 2026-05-21 | 2026-05-22 | 133d | 0d |  |  |  | Qui 21/05/26 | Sex 22/05/26 | PROCESSOS |
| 63 | 1.1.5.4.4 | Aprovação |  | 1d | 2026-07-01 | 2026-07-01 | 62 |  |  | 2026-05-25 | 2026-05-25 | 1d | 2026-05-25 | 2026-05-25 | 124.5d |  |  |  |  | Seg 25/05/26 | Seg 25/05/26 | PROCESSOS |
| 64 | 1.1.6 | **Mecânica** |  | 128d | 2026-05-18 A | 2026-11-13 |  | 9% | 116.09d | 2026-05-19 | 2026-07-08 | 37d | 2026-05-19 | 2026-07-08 | 38d |  |  |  |  | Ter 19/05/26 | Qua 08/07/26 | MECÂNICA |
| 65 | 1.1.6.1 | **CP-F0009-0000-MB-M-00001** |  | 6d | 2026-05-18 A | 2026-05-25 |  | 67% | 2d |  |  |  |  |  | 160d |  |  | -0 | Critério de Projetos | Ter 09/06/26 | Sex 19/06/26 | MECÂNICA |
| 66 | 1.1.6.1.1 | Emissão inicial |  | 2d | 2026-05-18 A | 2026-05-19 A | 45FF | 100% |  |  |  |  |  |  |  |  | finish no earlier than 2026-05-19 | -0 |  | Ter 09/06/26 | Seg 15/06/26 | MECÂNICA |
| 67 | 1.1.6.1.2 | Análise Tecnored |  | 1d | 2026-05-20 A | 2026-05-20 A | 66 | 100% |  |  |  |  |  |  |  |  |  | -0 |  | Ter 16/06/26 | Ter 16/06/26 | MECÂNICA |
| 68 | 1.1.6.1.3 | Atendimento de comentários |  | 2d | 2026-05-21 A | 2026-05-22 | 67 | 50% | 1d |  |  |  |  |  | 160d | 0d |  | -0 |  | Qua 17/06/26 | Qui 18/06/26 | MECÂNICA |
| 69 | 1.1.6.1.4 | Aprovação |  | 1d | 2026-05-25 | 2026-05-25 | 68 |  |  |  |  |  |  |  | 151.5d |  |  | -0 |  | Sex 19/06/26 | Sex 19/06/26 | MECÂNICA |
| 70 | 1.1.6.2 | **AG-F0009-0000-MB-L-00001** |  | 6d | 2026-11-06 | 2026-11-13 |  |  |  | 2026-05-26 | 2026-06-02 | 6d | 2026-05-26 | 2026-06-02 | 38d |  |  |  | Especificação Técnica | Ter 26/05/26 | Ter 02/06/26 | MECÂNICA |
| 71 | 1.1.6.2.1 | Emissão inicial |  | 2d | 2026-11-06 | 2026-11-09 | 66FS+120d |  |  | 2026-05-26 | 2026-05-27 | 2d | 2026-05-26 | 2026-05-27 | 29.5d | 0d |  |  |  | Ter 26/05/26 | Qua 27/05/26 | MECÂNICA |
| 72 | 1.1.6.2.2 | Análise Tecnored |  | 1d | 2026-11-10 | 2026-11-10 | 71 |  |  | 2026-05-28 | 2026-05-28 | 1d | 2026-05-28 | 2026-05-28 | 29.5d | 0d |  |  |  | Qui 28/05/26 | Qui 28/05/26 | MECÂNICA |
| 73 | 1.1.6.2.3 | Atendimento de comentários |  | 2d | 2026-11-11 | 2026-11-12 | 72 |  |  | 2026-05-29 | 2026-06-01 | 2d | 2026-05-29 | 2026-06-01 | 29.5d | 0d |  |  |  | Sex 29/05/26 | Seg 01/06/26 | MECÂNICA |
| 74 | 1.1.6.2.4 | Aprovação |  | 1d | 2026-11-13 | 2026-11-13 | 73 |  |  | 2026-06-02 | 2026-06-02 | 1d | 2026-06-02 | 2026-06-02 | 29.5d |  |  |  |  | Ter 02/06/26 | Ter 02/06/26 | MECÂNICA |
| 75 | 1.1.6.3 | **AG-F0009-0000-MB-L-00002** |  | 6d | 2026-11-06 | 2026-11-13 |  |  |  | 2026-05-26 | 2026-06-02 | 6d | 2026-05-26 | 2026-06-02 | 38d |  |  |  | Especificação Técnica | Ter 26/05/26 | Ter 02/06/26 | MECÂNICA |
| 76 | 1.1.6.3.1 | Emissão inicial |  | 2d | 2026-11-06 | 2026-11-09 | 66FS+120d |  |  | 2026-05-26 | 2026-05-27 | 2d | 2026-05-26 | 2026-05-27 | 29.5d | 0d |  |  |  | Ter 26/05/26 | Qua 27/05/26 | MECÂNICA |
| 77 | 1.1.6.3.2 | Análise Tecnored |  | 1d | 2026-11-10 | 2026-11-10 | 76 |  |  | 2026-05-28 | 2026-05-28 | 1d | 2026-05-28 | 2026-05-28 | 29.5d | 0d |  |  |  | Qui 28/05/26 | Qui 28/05/26 | MECÂNICA |
| 78 | 1.1.6.3.3 | Atendimento de comentários |  | 2d | 2026-11-11 | 2026-11-12 | 77 |  |  | 2026-05-29 | 2026-06-01 | 2d | 2026-05-29 | 2026-06-01 | 29.5d | 0d |  |  |  | Sex 29/05/26 | Seg 01/06/26 | MECÂNICA |
| 79 | 1.1.6.3.4 | Aprovação |  | 1d | 2026-11-13 | 2026-11-13 | 78 |  |  | 2026-06-02 | 2026-06-02 | 1d | 2026-06-02 | 2026-06-02 | 29.5d |  |  |  |  | Ter 02/06/26 | Ter 02/06/26 | MECÂNICA |

| ID | WBS | Task | Duration | Start | Finish | Predecessors | Complete | Remaining | Baseline start | Baseline finish | Baseline duration | Baseline 1 start | Baseline 1 finish | Total slack | Free slack | Constraint | Baseline cost | Título | Inicio_LB_R0 | Término_LB_R0 | Disciplina |
| --- | --- | --- | --- | --- | --- | --- | --- | --- | --- | --- | --- | --- | --- | --- | --- | --- | --- | --- | --- | --- | --- |
| 80 | 1.1.6.4 | **AG-F0009-0000-MB-L-00003** | 6d | 2026-11-06 | 2026-11-13 |  |  |  | 2026-05-26 | 2026-06-02 | 6d | 2026-05-26 | 2026-06-02 | 38d |  |  |  | Especificação Técnica | Ter 26/05/26 | Ter 02/06/26 | MECÂNICA |
| 81 | 1.1.6.4.1 | Emissão inicial | 2d | 2026-11-06 | 2026-11-09 | 66FS+120d |  |  | 2026-05-26 | 2026-05-27 | 2d | 2026-05-26 | 2026-05-27 | 29.5d | 0d |  |  |  | Ter 26/05/26 | Qua 27/05/26 | MECÂNICA |
| 82 | 1.1.6.4.2 | Análise Tecnored | 1d | 2026-11-10 | 2026-11-10 | 81 |  |  | 2026-05-28 | 2026-05-28 | 1d | 2026-05-28 | 2026-05-28 | 29.5d | 0d |  |  |  | Qui 28/05/26 | Qui 28/05/26 | MECÂNICA |
| 83 | 1.1.6.4.3 | Atendimento de comentários | 2d | 2026-11-11 | 2026-11-12 | 82 |  |  | 2026-05-29 | 2026-06-01 | 2d | 2026-05-29 | 2026-06-01 | 29.5d | 0d |  |  |  | Sex 29/05/26 | Seg 01/06/26 | MECÂNICA |
| 84 | 1.1.6.4.4 | Aprovação | 1d | 2026-11-13 | 2026-11-13 | 83 |  |  | 2026-06-02 | 2026-06-02 | 1d | 2026-06-02 | 2026-06-02 | 29.5d |  |  |  |  | Ter 02/06/26 | Ter 02/06/26 | MECÂNICA |
| 85 | 1.1.6.5 | **AG-F0009-0000-MB-L-00004** | 6d | 2026-11-06 | 2026-11-13 |  |  |  | 2026-05-26 | 2026-06-02 | 6d | 2026-05-26 | 2026-06-02 | 38d |  |  |  | Especificação Técnica | Ter 26/05/26 | Ter 02/06/26 | MECÂNICA |
| 86 | 1.1.6.5.1 | Emissão inicial | 2d | 2026-11-06 | 2026-11-09 | 66FS+120d |  |  | 2026-05-26 | 2026-05-27 | 2d | 2026-05-26 | 2026-05-27 | 29.5d | 0d |  |  |  | Ter 26/05/26 | Qua 27/05/26 | MECÂNICA |
| 87 | 1.1.6.5.2 | Análise Tecnored | 1d | 2026-11-10 | 2026-11-10 | 86 |  |  | 2026-05-28 | 2026-05-28 | 1d | 2026-05-28 | 2026-05-28 | 29.5d | 0d |  |  |  | Qui 28/05/26 | Qui 28/05/26 | MECÂNICA |
| 88 | 1.1.6.5.3 | Atendimento de comentários | 2d | 2026-11-11 | 2026-11-12 | 87 |  |  | 2026-05-29 | 2026-06-01 | 2d | 2026-05-29 | 2026-06-01 | 29.5d | 0d |  |  |  | Sex 29/05/26 | Seg 01/06/26 | MECÂNICA |
| 89 | 1.1.6.5.4 | Aprovação | 1d | 2026-11-13 | 2026-11-13 | 88 |  |  | 2026-06-02 | 2026-06-02 | 1d | 2026-06-02 | 2026-06-02 | 29.5d |  |  |  |  | Ter 02/06/26 | Ter 02/06/26 | MECÂNICA |
| 90 | 1.1.6.6 | **MD-F0009-0000-MB-M-00001** | 6d | 2026-11-06 | 2026-11-13 |  |  |  | 2026-05-26 | 2026-06-02 | 6d | 2026-05-26 | 2026-06-02 | 38d |  |  |  | Memorial descritivo | Ter 26/05/26 | Ter 02/06/26 | MECÂNICA |
| 91 | 1.1.6.6.1 | Emissão inicial | 2d | 2026-11-06 | 2026-11-09 | 66FS+120d |  |  | 2026-05-26 | 2026-05-27 | 2d | 2026-05-26 | 2026-05-27 | 29.5d | 0d |  |  |  | Ter 26/05/26 | Qua 27/05/26 | MECÂNICA |
| 92 | 1.1.6.6.2 | Análise Tecnored | 1d | 2026-11-10 | 2026-11-10 | 91 |  |  | 2026-05-28 | 2026-05-28 | 1d | 2026-05-28 | 2026-05-28 | 29.5d | 0d |  |  |  | Qui 28/05/26 | Qui 28/05/26 | MECÂNICA |
| 93 | 1.1.6.6.3 | Atendimento de comentários | 2d | 2026-11-11 | 2026-11-12 | 92 |  |  | 2026-05-29 | 2026-06-01 | 2d | 2026-05-29 | 2026-06-01 | 29.5d | 0d |  |  |  | Sex 29/05/26 | Seg 01/06/26 | MECÂNICA |
| 94 | 1.1.6.6.4 | Aprovação | 1d | 2026-11-13 | 2026-11-13 | 93 |  |  | 2026-06-02 | 2026-06-02 | 1d | 2026-06-02 | 2026-06-02 | 29.5d |  |  |  |  | Ter 02/06/26 | Ter 02/06/26 | MECÂNICA |
| 95 | 1.1.6.7 | **ET-F0009-0000-MB-M-00001** | 7d | 2026-07-06 | 2026-07-16 |  |  |  | 2026-05-26 | 2026-06-02 | 6d | 2026-05-26 | 2026-06-02 | 124d |  |  |  | Especificação Técnica | Ter 26/05/26 | Ter 02/06/26 | MECÂNICA |
| 96 | 1.1.6.7.1 | Emissão inicial | 3d | 2026-07-06 | 2026-07-08 |  |  |  | 2026-05-26 | 2026-05-27 | 2d | 2026-05-26 | 2026-05-27 | 115.5d | 0d | start no earlier than 2026-07-06 |  |  | Ter 26/05/26 | Qua 27/05/26 | MECÂNICA |
| 97 | 1.1.6.7.2 | Análise Tecnored | 1d | 2026-07-13 | 2026-07-13 | 96 |  |  | 2026-05-28 | 2026-05-28 | 1d | 2026-05-28 | 2026-05-28 | 115.5d | 0d |  |  |  | Qui 28/05/26 | Qui 28/05/26 | MECÂNICA |
| 98 | 1.1.6.7.3 | Atendimento de comentários | 2d | 2026-07-14 | 2026-07-15 | 97 |  |  | 2026-05-29 | 2026-06-01 | 2d | 2026-05-29 | 2026-06-01 | 115.5d | 0d |  |  |  | Sex 29/05/26 | Seg 01/06/26 | MECÂNICA |
| 99 | 1.1.6.7.4 | Aprovação | 1d | 2026-07-16 | 2026-07-16 | 98 |  |  | 2026-06-02 | 2026-06-02 | 1d | 2026-06-02 | 2026-06-02 | 115.5d |  |  |  |  | Ter 02/06/26 | Ter 02/06/26 | MECÂNICA |
| 100 | 1.1.7 | **Tubulação/Utilidades** | 132d | 2026-06-08 A | 2026-12-10 |  | 39% | 80.35d | 2026-05-20 | 2026-07-08 | 36d | 2026-05-20 | 2026-07-08 | 19d |  |  |  |  | Qua 20/05/26 | Qua 08/07/26 | TUBULAÇÃO / UTILIDADES |
| 101 | 1.1.7.1 | **CP-F0009-0000-MB-T-00001** | 9d | 2026-06-08 A | 2026-06-18 A |  | 100% |  |  |  |  |  |  |  |  |  | -0 | Critério de Projetos | Qui 11/06/26 | Sex 19/06/26 | TUBULAÇÃO / UTILIDADES |
| 102 | 1.1.7.1.1 | Emissão inicial | 5d | 2026-06-08 A | 2026-06-12 A | 45FF | 100% |  |  |  |  |  |  |  |  |  | -0 |  | Qui 11/06/26 | Seg 15/06/26 | TUBULAÇÃO / UTILIDADES |
| 103 | 1.1.7.1.2 | Análise Tecnored | 1d | 2026-06-15 A | 2026-06-15 A | 102 | 100% |  |  |  |  |  |  |  |  |  | -0 |  | Ter 16/06/26 | Ter 16/06/26 | TUBULAÇÃO / UTILIDADES |
| 104 | 1.1.7.1.3 | Atendimento de comentários | 2d | 2026-06-16 A | 2026-06-17 A | 103 | 100% |  |  |  |  |  |  |  |  |  | -0 |  | Qua 17/06/26 | Qui 18/06/26 | TUBULAÇÃO / UTILIDADES |
| 105 | 1.1.7.1.4 | Aprovação | 1d | 2026-06-18 A | 2026-06-18 A | 104 | 100% |  |  |  |  |  |  |  |  |  | -0 |  | Sex 19/06/26 | Sex 19/06/26 | TUBULAÇÃO / UTILIDADES |

| ID | WBS | Task | Duration | Start | Finish | Predecessors | Complete | Remaining | Baseline start | Baseline finish | Baseline duration | Baseline 1 start | Baseline 1 finish | Total slack | Free slack | Constraint | Baseline cost | Título | Inicio_LB_R0 | Término_LB_R0 | Disciplina |
| --- | --- | --- | --- | --- | --- | --- | --- | --- | --- | --- | --- | --- | --- | --- | --- | --- | --- | --- | --- | --- | --- |
| 106 | 1.1.7.2 | **MD-F0009-0000-MB-U-00001** | 7d | 2026-12-02 | 2026-12-10 |  |  |  | 2026-06-18 | 2026-06-26 | 7d | 2026-06-18 | 2026-06-26 | 19d |  |  |  | Memorial descritivo | Qui 18/06/26 | Sex 26/06/26 | TUBULAÇÃO / UTILIDADES |
| 107 | 1.1.7.2.1 | Emissão inicial | 3d | 2026-12-02 | 2026-12-04 | 102FS+120d |  |  | 2026-06-18 | 2026-06-22 | 3d | 2026-06-18 | 2026-06-22 | 10.5d | 0d |  |  |  | Qui 18/06/26 | Seg 22/06/26 | TUBULAÇÃO / UTILIDADES |
| 108 | 1.1.7.2.2 | Análise Tecnored | 1d | 2026-12-07 | 2026-12-07 | 107 |  |  | 2026-06-23 | 2026-06-23 | 1d | 2026-06-23 | 2026-06-23 | 10.5d | 0d |  |  |  | Ter 23/06/26 | Ter 23/06/26 | TUBULAÇÃO / UTILIDADES |
| 109 | 1.1.7.2.3 | Atendimento de comentários | 2d | 2026-12-08 | 2026-12-09 | 108 |  |  | 2026-06-24 | 2026-06-25 | 2d | 2026-06-24 | 2026-06-25 | 10.5d | 0d |  |  |  | Qua 24/06/26 | Qui 25/06/26 | TUBULAÇÃO / UTILIDADES |
| 110 | 1.1.7.2.4 | Aprovação | 1d | 2026-12-10 | 2026-12-10 | 109 |  |  | 2026-06-26 | 2026-06-26 | 1d | 2026-06-26 | 2026-06-26 | 10.5d |  |  |  |  | Sex 26/06/26 | Sex 26/06/26 | TUBULAÇÃO / UTILIDADES |
| 111 | 1.1.7.3 | **ET-F0009-0000-MB-T-00001** | 7d | 2026-07-06 | 2026-07-16 |  |  |  | 2026-06-02 | 2026-06-10 | 7d | 2026-06-02 | 2026-06-10 | 124d |  |  |  | Especificação Técnica | Ter 02/06/26 | Qua 10/06/26 | TUBULAÇÃO / UTILIDADES |
| 112 | 1.1.7.3.1 | Emissão inicial | 3d | 2026-07-06 | 2026-07-08 |  |  |  | 2026-06-02 | 2026-06-04 | 3d | 2026-06-02 | 2026-06-04 | 115.5d | 0d | start no earlier than 2026-07-06 |  |  | Ter 02/06/26 | Qui 04/06/26 | TUBULAÇÃO / UTILIDADES |
| 113 | 1.1.7.3.2 | Análise Tecnored | 1d | 2026-07-13 | 2026-07-13 | 112 |  |  | 2026-06-05 | 2026-06-05 | 1d | 2026-06-05 | 2026-06-05 | 115.5d | 0d |  |  |  | Sex 05/06/26 | Sex 05/06/26 | TUBULAÇÃO / UTILIDADES |
| 114 | 1.1.7.3.3 | Atendimento de comentários | 2d | 2026-07-14 | 2026-07-15 | 113 |  |  | 2026-06-08 | 2026-06-09 | 2d | 2026-06-08 | 2026-06-09 | 115.5d | 0d |  |  |  | Seg 08/06/26 | Ter 09/06/26 | TUBULAÇÃO / UTILIDADES |
| 115 | 1.1.7.3.4 | Aprovação | 1d | 2026-07-16 | 2026-07-16 | 114 |  |  | 2026-06-10 | 2026-06-10 | 1d | 2026-06-10 | 2026-06-10 | 115.5d |  |  |  |  | Qua 10/06/26 | Qua 10/06/26 | TUBULAÇÃO / UTILIDADES |
| 116 | 1.1.8 | **Estrutura metálica** | 131d | 2026-07-06 A | 2027-01-06 |  | 7% | 121.64d | 2026-06-15 | 2026-07-08 | 18d | 2026-06-15 | 2026-07-08 | 0d |  |  |  |  | Seg 15/06/26 | Qua 08/07/26 | ESTRUTURA METÁLICA |
| 117 | 1.1.8.1 | **CP-F0009-0000-MB-S-00001** | 7d | 2026-07-07 A | 2026-07-17 |  | 21% | 5.5d |  |  |  |  |  | 123d |  |  | -0 | Critério de Projetos | Ter 09/06/26 | Sex 19/06/26 | ESTRUTURA METÁLICA |
| 118 | 1.1.8.1.1 | Emissão inicial | 3d | 2026-07-07 A | 2026-07-13 | 45FF | 50% | 1.5d |  |  |  |  |  | 0d |  |  | -0 |  | Ter 09/06/26 | Seg 15/06/26 | ESTRUTURA METÁLICA |
| 119 | 1.1.8.1.2 | Análise Tecnored | 1d | 2026-07-14 | 2026-07-14 | 118 |  |  |  |  |  |  |  | 123d | 0d |  | -0 |  | Ter 16/06/26 | Ter 16/06/26 | ESTRUTURA METÁLICA |
| 120 | 1.1.8.1.3 | Atendimento de comentários | 2d | 2026-07-15 | 2026-07-16 | 119 |  |  |  |  |  |  |  | 123d | 0d |  | -0 |  | Qua 17/06/26 | Qui 18/06/26 | ESTRUTURA METÁLICA |
| 121 | 1.1.8.1.4 | Aprovação | 1d | 2026-07-17 | 2026-07-17 | 120 |  |  |  |  |  |  |  | 123d |  |  | -0 |  | Sex 19/06/26 | Sex 19/06/26 | ESTRUTURA METÁLICA |
| 122 | 1.1.8.2 | **MD-F0009-0000-MB-S-00001** | 7d | 2026-12-29 | 2027-01-06 |  |  |  | 2026-06-17 | 2026-06-25 | 7d | 2026-06-17 | 2026-06-25 | 0d |  |  |  | Memorial descritivo | Qua 17/06/26 | Qui 25/06/26 | ESTRUTURA METÁLICA |
| 123 | 1.1.8.2.1 | Emissão inicial | 3d | 2026-12-29 | 2026-12-31 | 118FS+120d |  |  | 2026-06-17 | 2026-06-19 | 3d | 2026-06-17 | 2026-06-19 | 0d |  |  |  |  | Qua 17/06/26 | Sex 19/06/26 | ESTRUTURA METÁLICA |
| 124 | 1.1.8.2.2 | Análise Tecnored | 1d | 2027-01-01 | 2027-01-01 | 123 |  |  | 2026-06-22 | 2026-06-22 | 1d | 2026-06-22 | 2026-06-22 | 0d |  |  |  |  | Seg 22/06/26 | Seg 22/06/26 | ESTRUTURA METÁLICA |
| 125 | 1.1.8.2.3 | Atendimento de comentários | 2d | 2027-01-04 | 2027-01-05 | 124 |  |  | 2026-06-23 | 2026-06-24 | 2d | 2026-06-23 | 2026-06-24 | 0d |  |  |  |  | Ter 23/06/26 | Qua 24/06/26 | ESTRUTURA METÁLICA |
| 126 | 1.1.8.2.4 | Aprovação | 1d | 2027-01-06 | 2027-01-06 | 125 |  |  | 2026-06-25 | 2026-06-25 | 1d | 2026-06-25 | 2026-06-25 | 0d |  |  |  |  | Qui 25/06/26 | Qui 25/06/26 | ESTRUTURA METÁLICA |
| 127 | 1.1.8.3 | **ET-F0009-0000-MB-S-00001** | 7d | 2026-07-06 | 2026-07-16 |  |  |  | 2026-06-17 | 2026-06-25 | 7d | 2026-06-17 | 2026-06-25 | 124d |  |  |  | Especificação Técnica | Qua 17/06/26 | Qui 25/06/26 | ESTRUTURA METÁLICA |
| 128 | 1.1.8.3.1 | Emissão inicial | 3d | 2026-07-06 | 2026-07-08 |  |  |  | 2026-06-17 | 2026-06-19 | 3d | 2026-06-17 | 2026-06-19 | 115.5d | 0d | start no earlier than 2026-07-06 |  |  | Qua 17/06/26 | Sex 19/06/26 | ESTRUTURA METÁLICA |
| 129 | 1.1.8.3.2 | Análise Tecnored | 1d | 2026-07-13 | 2026-07-13 | 128 |  |  | 2026-06-22 | 2026-06-22 | 1d | 2026-06-22 | 2026-06-22 | 115.5d | 0d |  |  |  | Seg 22/06/26 | Seg 22/06/26 | ESTRUTURA METÁLICA |
| 130 | 1.1.8.3.3 | Atendimento de comentários | 2d | 2026-07-14 | 2026-07-15 | 129 |  |  | 2026-06-23 | 2026-06-24 | 2d | 2026-06-23 | 2026-06-24 | 115.5d | 0d |  |  |  | Ter 23/06/26 | Qua 24/06/26 | ESTRUTURA METÁLICA |
| 131 | 1.1.8.3.4 | Aprovação | 1d | 2026-07-16 | 2026-07-16 | 130 |  |  | 2026-06-25 | 2026-06-25 | 1d | 2026-06-25 | 2026-06-25 | 115.5d |  |  |  |  | Qui 25/06/26 | Qui 25/06/26 | ESTRUTURA METÁLICA |

| ID | WBS | Task | Type | Duration | Start | Finish | Predecessors | Complete | Remaining | Baseline start | Baseline finish | Baseline duration | Baseline 1 start | Baseline 1 finish | Total slack | Free slack | Constraint | Baseline cost | Inicio_LB_R0 | Término_LB_R0 | Disciplina | Título |
| --- | --- | --- | --- | --- | --- | --- | --- | --- | --- | --- | --- | --- | --- | --- | --- | --- | --- | --- | --- | --- | --- | --- |
| 132 | 1.1.9 | **Elétrica** |  | 140d | 2026-06-08 A | 2026-12-22 |  | 29% | 100d | 2026-05-21 | 2026-07-08 | 35d | 2026-05-21 | 2026-07-08 | 11d |  |  |  | Qui 21/05/26 | Qua 08/07/26 | ELÉTRICA |  |
| 133 | 1.1.9.1 | **CP-F0009-0000-MB-E-00001** |  | 9d | 2026-06-08 A | 2026-06-18 |  | 80% | 1.8d |  |  |  |  |  | 11d | 0d |  | -0 | Ter 09/06/26 | Sex 19/06/26 | ELÉTRICA | Critério de Projetos |
| 134 | 1.1.9.1.1 | Emissão inicial |  | 6d | 2026-06-08 A | 2026-06-15 A | 45FF | 100% |  |  |  |  |  |  |  |  |  | -0 | Ter 09/06/26 | Seg 15/06/26 | ELÉTRICA |  |
| 135 | 1.1.9.1.2 | Análise Tecnored |  | 1d | 2026-06-15 A | 2026-06-15 A | 134 | 100% |  |  |  |  |  |  |  |  |  | -0 | Ter 16/06/26 | Ter 16/06/26 | ELÉTRICA |  |
| 136 | 1.1.9.1.3 | Atendimento de comentários |  | 2d | 2026-06-16 A | 2026-06-17 | 135 | 50% | 1d |  |  |  |  |  | 11d | 0d |  | -0 | Qua 17/06/26 | Qui 18/06/26 | ELÉTRICA |  |
| 137 | 1.1.9.1.4 | Aprovação |  | 1d | 2026-06-18 | 2026-06-18 | 136 |  |  |  |  |  |  |  | 2.5d |  |  | -0 | Sex 19/06/26 | Sex 19/06/26 | ELÉTRICA |  |
| 138 | 1.1.9.2 | **MD-F0009-0000-MB-E-00001** |  | 11d | 2026-12-08 | 2026-12-22 |  |  |  | 2026-06-15 | 2026-06-29 | 11d | 2026-06-15 | 2026-06-29 | 11d |  |  |  | Seg 15/06/26 | Seg 29/06/26 | ELÉTRICA | Memorial descritivo |
| 139 | 1.1.9.2.1 | Emissão inicial |  | 7d | 2026-12-08 | 2026-12-16 | 133FS+120d |  |  | 2026-06-15 | 2026-06-23 | 7d | 2026-06-15 | 2026-06-23 | 2.5d | 0d |  |  | Seg 15/06/26 | Ter 23/06/26 | ELÉTRICA |  |
| 140 | 1.1.9.2.2 | Análise Tecnored |  | 1d | 2026-12-17 | 2026-12-17 | 139 |  |  | 2026-06-24 | 2026-06-24 | 1d | 2026-06-24 | 2026-06-24 | 2.5d | 0d |  |  | Qua 24/06/26 | Qua 24/06/26 | ELÉTRICA |  |
| 141 | 1.1.9.2.3 | Atendimento de comentários |  | 2d | 2026-12-18 | 2026-12-21 | 140 |  |  | 2026-06-25 | 2026-06-26 | 2d | 2026-06-25 | 2026-06-26 | 2.5d | 0d |  |  | Qui 25/06/26 | Sex 26/06/26 | ELÉTRICA |  |
| 142 | 1.1.9.2.4 | Aprovação |  | 1d | 2026-12-22 | 2026-12-22 | 141 |  |  | 2026-06-29 | 2026-06-29 | 1d | 2026-06-29 | 2026-06-29 | 2.5d |  |  |  | Seg 29/06/26 | Seg 29/06/26 | ELÉTRICA |  |
| 143 | 1.1.9.3 | **ET-F0009-0000-MB-E-00001** |  | 7d | 2026-07-06 | 2026-07-16 |  |  |  | 2026-06-15 | 2026-06-29 | 11d | 2026-06-15 | 2026-06-29 | 124d |  |  |  | Seg 15/06/26 | Seg 29/06/26 | ELÉTRICA | Especificação Técnica |
| 144 | 1.1.9.3.1 | Emissão inicial |  | 3d | 2026-07-06 | 2026-07-08 |  |  |  | 2026-06-15 | 2026-06-23 | 7d | 2026-06-15 | 2026-06-23 | 115.5d | 0d | start no earlier than 2026-07-06 |  | Seg 15/06/26 | Ter 23/06/26 | ELÉTRICA |  |
| 145 | 1.1.9.3.2 | Análise Tecnored |  | 1d | 2026-07-13 | 2026-07-13 | 144 |  |  | 2026-06-24 | 2026-06-24 | 1d | 2026-06-24 | 2026-06-24 | 115.5d | 0d |  |  | Qua 24/06/26 | Qua 24/06/26 | ELÉTRICA |  |
| 146 | 1.1.9.3.3 | Atendimento de comentários |  | 2d | 2026-07-14 | 2026-07-15 | 145 |  |  | 2026-06-25 | 2026-06-26 | 2d | 2026-06-25 | 2026-06-26 | 115.5d | 0d |  |  | Qui 25/06/26 | Sex 26/06/26 | ELÉTRICA |  |
| 147 | 1.1.9.3.4 | Aprovação |  | 1d | 2026-07-16 | 2026-07-16 | 146 |  |  | 2026-06-29 | 2026-06-29 | 1d | 2026-06-29 | 2026-06-29 | 115.5d |  |  |  | Seg 29/06/26 | Seg 29/06/26 | ELÉTRICA |  |
| 148 | 1.1.10 | **Automação e instrumentação** |  | 127d | 2026-05-28 A | 2026-11-25 |  | 24% | 96.34d | 2026-05-20 | 2026-07-08 | 36d | 2026-05-20 | 2026-07-08 | 30d |  |  |  | Qua 20/05/26 | Qua 08/07/26 | AUTOMAÇÃO E INSTRUMENTAÇÃO |  |
| 149 | 1.1.10.1 | **CP-F0009-0000-MB-J-00001** |  | 4d | 2026-05-28 A | 2026-06-03 |  | 50% | 2d |  |  |  |  |  | 153d |  |  | -0 | Ter 09/06/26 | Sex 19/06/26 | AUTOMAÇÃO E INSTRUMENTAÇÃO | Critério de Projetos |
| 150 | 1.1.10.1.1 | Emissão inicial | milestone | 0d | 2026-05-28 A | 2026-05-28 A | 45FF | 100% |  |  |  |  |  |  |  |  |  | -0 | Ter 09/06/26 | Seg 15/06/26 | AUTOMAÇÃO E INSTRUMENTAÇÃO |  |
| 151 | 1.1.10.1.2 | Análise Tecnored |  | 1d | 2026-05-29 A | 2026-05-29 A | 150 | 100% |  |  |  |  |  |  |  |  |  | -0 | Ter 16/06/26 | Ter 16/06/26 | AUTOMAÇÃO E INSTRUMENTAÇÃO |  |
| 152 | 1.1.10.1.3 | Atendimento de comentários |  | 2d | 2026-06-01 A | 2026-06-02 | 151 | 50% | 1d |  |  |  |  |  | 153d | 0d |  | -0 | Qua 17/06/26 | Qui 18/06/26 | AUTOMAÇÃO E INSTRUMENTAÇÃO |  |
| 153 | 1.1.10.1.4 | Aprovação |  | 1d | 2026-06-03 | 2026-06-03 | 152 |  |  |  |  |  |  |  | 144.5d |  |  | -0 | Sex 19/06/26 | Sex 19/06/26 | AUTOMAÇÃO E INSTRUMENTAÇÃO |  |
| 154 | 1.1.10.2 | **CP-F0009-0000-MB-J-00002** |  | 4d | 2026-05-28 A | 2026-06-03 |  | 50% | 2d |  |  |  |  |  | 153d |  |  | -0 | Ter 09/06/26 | Sex 19/06/26 | AUTOMAÇÃO E INSTRUMENTAÇÃO | Critério de Projetos |
| 155 | 1.1.10.2.1 | Emissão inicial | milestone | 0d | 2026-05-28 A | 2026-05-28 A | 45FF | 100% |  |  |  |  |  |  |  |  |  | -0 | Ter 09/06/26 | Seg 15/06/26 | AUTOMAÇÃO E INSTRUMENTAÇÃO |  |
| 156 | 1.1.10.2.2 | Análise Tecnored |  | 1d | 2026-05-29 A | 2026-05-29 A | 155 | 100% |  |  |  |  |  |  |  |  |  | -0 | Ter 16/06/26 | Ter 16/06/26 | AUTOMAÇÃO E INSTRUMENTAÇÃO |  |
| 157 | 1.1.10.2.3 | Atendimento de comentários |  | 2d | 2026-06-01 A | 2026-06-02 | 156 | 50% | 1d |  |  |  |  |  | 153d | 0d |  | -0 | Qua 17/06/26 | Qui 18/06/26 | AUTOMAÇÃO E INSTRUMENTAÇÃO |  |
| 158 | 1.1.10.2.4 | Aprovação |  | 1d | 2026-06-03 | 2026-06-03 | 157 |  |  |  |  |  |  |  | 144.5d |  |  | -0 | Sex 19/06/26 | Sex 19/06/26 | AUTOMAÇÃO E INSTRUMENTAÇÃO |  |

| ID | WBS | Task | Duration | Start | Finish | Predecessors | Complete | Remaining | Baseline start | Baseline finish | Baseline duration | Baseline 1 start | Baseline 1 finish | Total slack | Free slack | Constraint | Título | Inicio_LB_R0 | Término_LB_R0 | Disciplina |
| --- | --- | --- | --- | --- | --- | --- | --- | --- | --- | --- | --- | --- | --- | --- | --- | --- | --- | --- | --- | --- |
| 159 | 1.1.10.3 | **MD-F0009-0000-MB-J-00001** | 7d | 2026-11-17 | 2026-11-25 |  |  |  | 2026-05-22 | 2026-06-01 | 7d | 2026-05-22 | 2026-06-01 | 30d |  |  | Memorial descritivo | Sex 22/05/26 | Seg 01/06/26 | AUTOMAÇÃO E INSTRUMENTAÇÃO |
| 160 | 1.1.10.3.1 | Emissão inicial | 3d | 2026-11-17 | 2026-11-19 | 155FS+120d, 150FS+120d |  |  | 2026-05-22 | 2026-05-26 | 3d | 2026-05-22 | 2026-05-26 | 21.5d | 0d |  |  | Sex 22/05/26 | Ter 26/05/26 | AUTOMAÇÃO E INSTRUMENTAÇÃO |
| 161 | 1.1.10.3.2 | Análise Tecnored | 1d | 2026-11-20 | 2026-11-20 | 160 |  |  | 2026-05-27 | 2026-05-27 | 1d | 2026-05-27 | 2026-05-27 | 21.5d | 0d |  |  | Qua 27/05/26 | Qua 27/05/26 | AUTOMAÇÃO E INSTRUMENTAÇÃO |
| 162 | 1.1.10.3.3 | Atendimento de comentários | 2d | 2026-11-23 | 2026-11-24 | 161 |  |  | 2026-05-28 | 2026-05-29 | 2d | 2026-05-28 | 2026-05-29 | 21.5d | 0d |  |  | Qui 28/05/26 | Sex 29/05/26 | AUTOMAÇÃO E INSTRUMENTAÇÃO |
| 163 | 1.1.10.3.4 | Aprovação | 1d | 2026-11-25 | 2026-11-25 | 162 |  |  | 2026-06-01 | 2026-06-01 | 1d | 2026-06-01 | 2026-06-01 | 21.5d |  |  |  | Seg 01/06/26 | Seg 01/06/26 | AUTOMAÇÃO E INSTRUMENTAÇÃO |
| 164 | 1.1.10.4 | **LI-F0009-0000-MB-J-00001** | 7d | 2026-07-06 | 2026-07-16 |  |  |  | 2026-05-22 | 2026-06-01 | 7d | 2026-05-22 | 2026-06-01 | 124d |  |  | Memorial descritivo | Sex 22/05/26 | Seg 01/06/26 | AUTOMAÇÃO E INSTRUMENTAÇÃO |
| 165 | 1.1.10.4.1 | Emissão inicial | 3d | 2026-07-06 | 2026-07-08 |  |  |  | 2026-05-22 | 2026-05-26 | 3d | 2026-05-22 | 2026-05-26 | 115.5d | 0d | start no earlier than 2026-07-06 |  | Sex 22/05/26 | Ter 26/05/26 | AUTOMAÇÃO E INSTRUMENTAÇÃO |
| 166 | 1.1.10.4.2 | Análise Tecnored | 1d | 2026-07-13 | 2026-07-13 | 165 |  |  | 2026-05-27 | 2026-05-27 | 1d | 2026-05-27 | 2026-05-27 | 115.5d | 0d |  |  | Qua 27/05/26 | Qua 27/05/26 | AUTOMAÇÃO E INSTRUMENTAÇÃO |
| 167 | 1.1.10.4.3 | Atendimento de comentários | 2d | 2026-07-14 | 2026-07-15 | 166 |  |  | 2026-05-28 | 2026-05-29 | 2d | 2026-05-28 | 2026-05-29 | 115.5d | 0d |  |  | Qui 28/05/26 | Sex 29/05/26 | AUTOMAÇÃO E INSTRUMENTAÇÃO |
| 168 | 1.1.10.4.4 | Aprovação | 1d | 2026-07-16 | 2026-07-16 | 167 |  |  | 2026-06-01 | 2026-06-01 | 1d | 2026-06-01 | 2026-06-01 | 115.5d |  |  |  | Seg 01/06/26 | Seg 01/06/26 | AUTOMAÇÃO E INSTRUMENTAÇÃO |
| 169 | 1.1.10.5 | **LW-F0009-0000-MB-J-00001** | 7d | 2026-07-02 A | 2026-07-14 |  | 43% | 4d | 2026-05-22 | 2026-06-01 | 7d | 2026-05-22 | 2026-06-01 | 126d |  |  | Memorial descritivo | Sex 22/05/26 | Seg 01/06/26 | AUTOMAÇÃO E INSTRUMENTAÇÃO |
| 170 | 1.1.10.5.1 | Emissão inicial | 3d | 2026-07-02 A | 2026-07-06 A |  | 100% |  | 2026-05-22 | 2026-05-26 | 3d | 2026-05-22 | 2026-05-26 |  |  | start no earlier than 2026-06-30 |  | Sex 22/05/26 | Ter 26/05/26 | AUTOMAÇÃO E INSTRUMENTAÇÃO |
| 171 | 1.1.10.5.2 | Análise Tecnored | 1d | 2026-07-07 | 2026-07-07 | 170 |  |  | 2026-05-27 | 2026-05-27 | 1d | 2026-05-27 | 2026-05-27 | 117.5d | 0d |  |  | Qua 27/05/26 | Qua 27/05/26 | AUTOMAÇÃO E INSTRUMENTAÇÃO |
| 172 | 1.1.10.5.3 | Atendimento de comentários | 2d | 2026-07-08 | 2026-07-13 | 171 |  |  | 2026-05-28 | 2026-05-29 | 2d | 2026-05-28 | 2026-05-29 | 117.5d | 0d |  |  | Qui 28/05/26 | Sex 29/05/26 | AUTOMAÇÃO E INSTRUMENTAÇÃO |
| 173 | 1.1.10.5.4 | Aprovação | 1d | 2026-07-14 | 2026-07-14 | 172 |  |  | 2026-06-01 | 2026-06-01 | 1d | 2026-06-01 | 2026-06-01 | 117.5d |  |  |  | Seg 01/06/26 | Seg 01/06/26 | AUTOMAÇÃO E INSTRUMENTAÇÃO |
| 174 | 1.1.11 | **Civil** | 7d | 2026-09-09 | 2026-09-17 |  |  |  | 2026-06-22 | 2026-07-08 | 13d | 2026-06-22 | 2026-07-08 | 79d |  |  |  | Seg 22/06/26 | Qua 08/07/26 | CIVIL |
| 175 | 1.1.11.1 | **CP-F0009-0000-MB-C-00001** | 7d | 2026-09-09 | 2026-09-17 |  |  |  |  |  |  |  |  | 79d |  |  |  | Seg 07/09/26 | Seg 07/09/26 | CIVIL |
| 176 | 1.1.11.1.1 | Emissão inicial | 3d | 2026-09-09 | 2026-09-11 | 45FS+60d |  |  |  |  |  |  |  | 70.5d | 0d | start no earlier than 2026-09-08 |  | Qua 09/09/26 | Sex 11/09/26 | CIVIL |
| 177 | 1.1.11.1.2 | Análise Tecnored | 1d | 2026-09-14 | 2026-09-14 | 176 |  |  |  |  |  |  |  | 70.5d | 0d |  |  | Seg 14/09/26 | Seg 14/09/26 | CIVIL |
| 178 | 1.1.11.1.3 | Atendimento de comentários | 2d | 2026-09-15 | 2026-09-16 | 177 |  |  |  |  |  |  |  | 70.5d | 0d |  |  | Ter 15/09/26 | Qua 16/09/26 | CIVIL |
| 179 | 1.1.11.1.4 | Aprovação | 1d | 2026-09-17 | 2026-09-17 | 178 |  |  |  |  |  |  |  | 70.5d |  |  |  | Qui 17/09/26 | Qui 17/09/26 | CIVIL |
