# CR-F0009-0305-MB-F-00001

Schedule from MS Project, 2026-05-18 to 2026-12-24, status date 2026-05-18, A marks actual dates.

## Calendars

- Padrão: Mon-Fri 09:00-12:00, 13:00-18:00; Sat-Sun off.

## Schedule

| ID | WBS | Task | Type | Duration | Start | Finish | Predecessors | Complete | Remaining | Baseline start | Baseline finish | Baseline duration | Baseline 1 start | Baseline 1 finish | Total slack | Free slack | Constraint | Baseline cost | Inicio_LB_R0 | Término_LB_R0 | Disciplina | Título |
| --- | --- | --- | --- | --- | --- | --- | --- | --- | --- | --- | --- | --- | --- | --- | --- | --- | --- | --- | --- | --- | --- | --- |
| 1 | 1 | **F0009 - Programa Marabá** |  | 159d | 2026-05-18 A | 2026-12-24 |  |  | 159d | 2026-04-27 | 2026-07-08 | 53d | 2026-04-27 | 2026-07-08 | 0d |  |  |  | Seg 27/04/26 | Qua 08/07/26 | GERAL |  |
| 2 | 1.1 | **Área 0000 -Documento geral** |  | 159d | 2026-05-18 A | 2026-12-24 |  |  | 159d | 2026-04-27 | 2026-07-08 | 53d | 2026-04-27 | 2026-07-08 | 0d |  |  |  | Seg 27/04/26 | Qua 08/07/26 | GERAL |  |
| 3 | 1.1.1 | KOM - Início de projeto | milestone | 0d | 2026-05-18 A | 2026-05-18 A |  | 100% |  | 2026-04-27 | 2026-04-27 | 0d | 2026-04-27 | 2026-04-27 |  |  | start no earlier than 2026-05-18 |  | Seg 27/04/26 | Seg 27/04/26 | GERAL |  |
| 4 | 1.1.2 | **Pendências** |  | 0d | 2026-05-18 A | 2026-05-18 A |  | 100% |  | 2026-04-29 | 2026-04-29 | 0d | 2026-04-29 | 2026-04-29 |  |  |  |  | Qua 29/04/26 | Qua 29/04/26 | PENDÊNCIAS |  |
| 5 | 1.1.2.1 | Recebimento de dados de entrada | milestone | 0d | 2026-05-18 A | 2026-05-18 A | 3 | 100% |  | 2026-04-29 | 2026-04-29 | 0d | 2026-04-29 | 2026-04-29 |  |  |  |  | Qua 29/04/26 | Qua 29/04/26 | PENDÊNCIAS |  |
| 6 | 1.1.3 | **Planejamento** |  | 149d | 2026-06-01 | 2026-12-24 |  |  |  | 2026-04-27 | 2026-05-19 | 17d | 2026-04-27 | 2026-05-19 | 0d |  |  |  | Seg 27/04/26 | Ter 19/05/26 | PLANEJAMENTO |  |
| 7 | 1.1.3.1 | **LD-F0009-0000-MB-F-00001** |  | 149d | 2026-06-01 | 2026-12-24 |  |  |  | 2026-04-27 | 2026-05-19 | 17d | 2026-04-27 | 2026-05-19 | 0d |  |  |  | Seg 27/04/26 | Ter 19/05/26 | PLANEJAMENTO | Lista de documentos |
| 8 | 1.1.3.1.1 | Emissão inicial |  | 3d | 2026-06-01 | 2026-06-03 | 3FS+10d |  |  | 2026-04-27 | 2026-04-29 | 3d | 2026-04-27 | 2026-04-29 | 0d |  |  |  | Seg 27/04/26 | Qua 29/04/26 | PLANEJAMENTO |  |
| 9 | 1.1.3.1.2 | Análise Tecnored |  | 1d | 2026-06-04 | 2026-06-04 | 8 |  |  | 2026-04-30 | 2026-04-30 | 1d | 2026-04-30 | 2026-04-30 | 0d |  |  |  | Qui 30/04/26 | Qui 30/04/26 | PLANEJAMENTO |  |
| 10 | 1.1.3.1.3 | Atendimento de comentários |  | 1d | 2026-12-18 | 2026-12-18 | 9FS+140d |  |  | 2026-05-06 | 2026-05-13 | 6d | 2026-05-06 | 2026-05-13 | 0d |  |  |  | Qua 06/05/26 | Qua 13/05/26 | PLANEJAMENTO |  |
| 11 | 1.1.3.1.4 | Aprovação |  | 1d | 2026-12-24 | 2026-12-24 | 10FS+3d |  |  | 2026-05-19 | 2026-05-19 | 1d | 2026-05-19 | 2026-05-19 | 0d |  |  |  | Ter 19/05/26 | Ter 19/05/26 | PLANEJAMENTO |  |
| 12 | 1.1.3.2 | **CR-F0009-0000-MB-F-00001** |  | 16d | 2026-06-04 | 2026-06-25 |  |  |  | 2026-04-30 | 2026-05-19 | 13.4d | 2026-04-30 | 2026-05-19 | 3d |  |  |  | Qui 30/04/26 | Ter 19/05/26 | PLANEJAMENTO | Cronograma |
| 13 | 1.1.3.2.1 | Emissão inicial |  | 3d | 2026-06-04 | 2026-06-08 | 8 |  |  | 2026-04-30 | 2026-05-04 | 3d | 2026-04-30 | 2026-05-04 | 3d | 0d |  |  | Qui 30/04/26 | Seg 04/05/26 | PLANEJAMENTO |  |
| 14 | 1.1.3.2.2 | Análise Tecnored |  | 3d | 2026-06-09 | 2026-06-11 | 13 |  |  | 2026-05-05 | 2026-05-05 | 1d | 2026-05-05 | 2026-05-05 | 130d | 0d |  |  | Ter 05/05/26 | Ter 05/05/26 | PLANEJAMENTO |  |
| 15 | 1.1.3.2.3 | Atendimento de comentários |  | 1d | 2026-06-24 | 2026-06-24 | 14FS+8d |  |  | 2026-05-13 | 2026-05-18 | 2d | 2026-05-13 | 2026-05-18 | 130d | 0d |  |  | Qua 13/05/26 | Seg 18/05/26 | PLANEJAMENTO |  |
| 16 | 1.1.3.2.4 | Aprovação |  | 1d | 2026-06-25 | 2026-06-25 | 15 |  |  | 2026-05-18 | 2026-05-19 | 1d | 2026-05-18 | 2026-05-19 | 130d |  |  |  | Seg 18/05/26 | Ter 19/05/26 | PLANEJAMENTO |  |
| 17 | 1.1.4 | **Coordenação** |  | 42d | 2026-06-01 | 2026-07-28 |  |  |  | 2026-04-27 | 2026-07-08 | 53d | 2026-04-27 | 2026-07-08 | 107d |  |  |  | Seg 27/04/26 | Qua 08/07/26 | COORDENAÇÃO |  |
| 18 | 1.1.4.1 | **LF-F0009-0000-MB-F-00001** |  | 7d | 2026-07-20 | 2026-07-28 |  |  |  |  |  |  |  |  | 107d |  |  | -0 | Seg 20/07/26 | Ter 28/07/26 | COORDENAÇÃO | Vendor List |
| 19 | 1.1.4.1.1 | Emissão inicial |  | 3d | 2026-07-20 | 2026-07-22 | 3FS+45d |  |  |  |  |  |  |  | 107d | 0d |  | -0 | Seg 20/07/26 | Qua 22/07/26 | COORDENAÇÃO |  |
| 20 | 1.1.4.1.2 | Análise Tecnored |  | 1d | 2026-07-23 | 2026-07-23 | 19 |  |  |  |  |  |  |  | 107d | 0d |  | -0 | Qui 23/07/26 | Qui 23/07/26 | COORDENAÇÃO |  |
| 21 | 1.1.4.1.3 | Atendimento de comentários |  | 2d | 2026-07-24 | 2026-07-27 | 20 |  |  |  |  |  |  |  | 107d | 0d |  | -0 | Sex 24/07/26 | Seg 27/07/26 | COORDENAÇÃO |  |
| 22 | 1.1.4.1.4 | Aprovação |  | 1d | 2026-07-28 | 2026-07-28 | 21 |  |  |  |  |  |  |  | 107d |  |  | -0 | Ter 28/07/26 | Ter 28/07/26 | COORDENAÇÃO |  |
| 23 | 1.1.4.2 | **LP-F0009-0000-MB-G-00001** |  | 37d | 2026-06-01 | 2026-07-21 |  |  |  | 2026-04-27 | 2026-06-16 | 37d | 2026-04-27 | 2026-06-16 | 112d |  |  |  | Seg 27/04/26 | Ter 16/06/26 | COORDENAÇÃO | Lista de pendências |
| 24 | 1.1.4.2.1 | Emissão inicial |  | 3d | 2026-06-01 | 2026-06-03 | 3FS+10d |  |  | 2026-04-27 | 2026-04-29 | 3d | 2026-04-27 | 2026-04-29 | 112d | 0d |  |  | Seg 27/04/26 | Qua 29/04/26 | COORDENAÇÃO |  |
| 25 | 1.1.4.2.2 | Análise Tecnored |  | 1d | 2026-06-04 | 2026-06-04 | 24 |  |  | 2026-04-30 | 2026-04-30 | 1d | 2026-04-30 | 2026-04-30 | 112d | 0d |  |  | Qui 30/04/26 | Qui 30/04/26 | COORDENAÇÃO |  |
| 26 | 1.1.4.2.3 | Atendimento de comentários |  | 2d | 2026-07-17 | 2026-07-20 | 25FS+30d |  |  | 2026-06-12 | 2026-06-15 | 2d | 2026-06-12 | 2026-06-15 | 112d | 0d |  |  | Sex 12/06/26 | Seg 15/06/26 | COORDENAÇÃO |  |
| 27 | 1.1.4.2.4 | Aprovação |  | 1d | 2026-07-21 | 2026-07-21 | 26 |  |  | 2026-06-16 | 2026-06-16 | 1d | 2026-06-16 | 2026-06-16 | 112d |  |  |  | Ter 16/06/26 | Ter 16/06/26 | COORDENAÇÃO |  |

| ID | WBS | Task | Duration | Start | Finish | Predecessors | Baseline start | Baseline finish | Baseline duration | Baseline 1 start | Baseline 1 finish | Total slack | Free slack | Baseline cost | Inicio_LB_R0 | Término_LB_R0 | Disciplina | Título |
| --- | --- | --- | --- | --- | --- | --- | --- | --- | --- | --- | --- | --- | --- | --- | --- | --- | --- | --- |
| 28 | 1.1.5 | **Processo** | 132d | 2026-06-09 | 2026-12-09 |  | 2026-05-19 | 2026-06-25 | 28d | 2026-05-19 | 2026-06-25 | 3d |  |  | Ter 19/05/26 | Qui 25/06/26 | PROCESSO |  |
| 29 | 1.1.5.1 | **CP-F0009-0000-MB-P-00001** | 9d | 2026-06-09 | 2026-06-19 |  |  |  |  |  |  | 3d |  | -0 | Ter 09/06/26 | Sex 19/06/26 | PROCESSO | Critério de Projetos |
| 30 | 1.1.5.1.1 | Emissão inicial | 5d | 2026-06-09 | 2026-06-15 | 13 |  |  |  |  |  | 3d | 0d | -0 | Ter 09/06/26 | Seg 15/06/26 | PROCESSO |  |
| 31 | 1.1.5.1.2 | Análise Tecnored | 1d | 2026-06-16 | 2026-06-16 | 30 |  |  |  |  |  | 134d | 0d | -0 | Ter 16/06/26 | Ter 16/06/26 | PROCESSO |  |
| 32 | 1.1.5.1.3 | Atendimento de comentários | 2d | 2026-06-17 | 2026-06-18 | 31 |  |  |  |  |  | 134d | 0d | -0 | Qua 17/06/26 | Qui 18/06/26 | PROCESSO |  |
| 33 | 1.1.5.1.4 | Aprovação | 1d | 2026-06-19 | 2026-06-19 | 32 |  |  |  |  |  | 134d |  | -0 | Sex 19/06/26 | Sex 19/06/26 | PROCESSO |  |
| 34 | 1.1.5.2 | **MD-F0009-0000-MB-P-00001** | 7d | 2026-12-01 | 2026-12-09 |  | 2026-06-17 | 2026-06-25 | 7d | 2026-06-17 | 2026-06-25 | 11d |  |  | Qua 17/06/26 | Qui 25/06/26 | PROCESSO | Memorial descritivo |
| 35 | 1.1.5.2.1 | Emissão inicial | 3d | 2026-12-01 | 2026-12-03 | 30FS+120d | 2026-06-17 | 2026-06-19 | 3d | 2026-06-17 | 2026-06-19 | 11d | 0d |  | Qua 17/06/26 | Sex 19/06/26 | PROCESSO |  |
| 36 | 1.1.5.2.2 | Análise Tecnored | 1d | 2026-12-04 | 2026-12-04 | 35 | 2026-06-22 | 2026-06-22 | 1d | 2026-06-22 | 2026-06-22 | 11d | 0d |  | Seg 22/06/26 | Seg 22/06/26 | PROCESSO |  |
| 37 | 1.1.5.2.3 | Atendimento de comentários | 2d | 2026-12-07 | 2026-12-08 | 36 | 2026-06-23 | 2026-06-24 | 2d | 2026-06-23 | 2026-06-24 | 11d | 0d |  | Ter 23/06/26 | Qua 24/06/26 | PROCESSO |  |
| 38 | 1.1.5.2.4 | Aprovação | 1d | 2026-12-09 | 2026-12-09 | 37 | 2026-06-25 | 2026-06-25 | 1d | 2026-06-25 | 2026-06-25 | 11d |  |  | Qui 25/06/26 | Qui 25/06/26 | PROCESSO |  |
| 39 | 1.1.5.3 | **FG-F0009-0000-MB-P-00001** | 5d | 2026-06-26 | 2026-07-02 |  | 2026-05-19 | 2026-05-25 | 5d | 2026-05-19 | 2026-05-25 | 125d |  |  | Ter 19/05/26 | Seg 25/05/26 | PROCESSO | Diagrama de blocos de processo |
| 40 | 1.1.5.3.1 | Emissão inicial | 1d | 2026-06-26 | 2026-06-26 | 30FS+8d | 2026-05-19 | 2026-05-19 | 1d | 2026-05-19 | 2026-05-19 | 125d | 0d |  | Ter 19/05/26 | Ter 19/05/26 | PROCESSO |  |
| 41 | 1.1.5.3.2 | Análise Tecnored | 1d | 2026-06-29 | 2026-06-29 | 40 | 2026-05-20 | 2026-05-20 | 1d | 2026-05-20 | 2026-05-20 | 125d | 0d |  | Qua 20/05/26 | Qua 20/05/26 | PROCESSO |  |
| 42 | 1.1.5.3.3 | Atendimento de comentários | 2d | 2026-06-30 | 2026-07-01 | 41 | 2026-05-21 | 2026-05-22 | 2d | 2026-05-21 | 2026-05-22 | 125d | 0d |  | Qui 21/05/26 | Sex 22/05/26 | PROCESSO |  |
| 43 | 1.1.5.3.4 | Aprovação | 1d | 2026-07-02 | 2026-07-02 | 42 | 2026-05-25 | 2026-05-25 | 1d | 2026-05-25 | 2026-05-25 | 125d |  |  | Seg 25/05/26 | Seg 25/05/26 | PROCESSO |  |
| 44 | 1.1.5.4 | **FG-F0009-0000-MB-P-00001** | 5d | 2026-06-26 | 2026-07-02 |  | 2026-05-19 | 2026-05-25 | 5d | 2026-05-19 | 2026-05-25 | 125d |  |  | Ter 19/05/26 | Seg 25/05/26 | PROCESSO | Fluxograma geral de processo |
| 45 | 1.1.5.4.1 | Emissão inicial | 1d | 2026-06-26 | 2026-06-26 | 30FS+8d | 2026-05-19 | 2026-05-19 | 1d | 2026-05-19 | 2026-05-19 | 125d | 0d |  | Ter 19/05/26 | Ter 19/05/26 | PROCESSO |  |
| 46 | 1.1.5.4.2 | Análise Tecnored | 1d | 2026-06-29 | 2026-06-29 | 45 | 2026-05-20 | 2026-05-20 | 1d | 2026-05-20 | 2026-05-20 | 125d | 0d |  | Qua 20/05/26 | Qua 20/05/26 | PROCESSO |  |
| 47 | 1.1.5.4.3 | Atendimento de comentários | 2d | 2026-06-30 | 2026-07-01 | 46 | 2026-05-21 | 2026-05-22 | 2d | 2026-05-21 | 2026-05-22 | 125d | 0d |  | Qui 21/05/26 | Sex 22/05/26 | PROCESSO |  |
| 48 | 1.1.5.4.4 | Aprovação | 1d | 2026-07-02 | 2026-07-02 | 47 | 2026-05-25 | 2026-05-25 | 1d | 2026-05-25 | 2026-05-25 | 125d |  |  | Seg 25/05/26 | Seg 25/05/26 | PROCESSO |  |
| 49 | 1.1.6 | **Mecânica** | 131d | 2026-06-09 | 2026-12-08 |  | 2026-05-19 | 2026-07-08 | 37d | 2026-05-19 | 2026-07-08 | 12d |  |  | Ter 19/05/26 | Qua 08/07/26 | MECÂNICA |  |
| 50 | 1.1.6.1 | **CP-F0009-0000-MB-M-00001** | 9d | 2026-06-09 | 2026-06-19 |  |  |  |  |  |  | 12d |  | -0 | Ter 09/06/26 | Sex 19/06/26 | MECÂNICA | Critério de Projetos |
| 51 | 1.1.6.1.1 | Emissão inicial | 5d | 2026-06-09 | 2026-06-15 | 30FF |  |  |  |  |  | 12d | 0d | -0 | Ter 09/06/26 | Seg 15/06/26 | MECÂNICA |  |
| 52 | 1.1.6.1.2 | Análise Tecnored | 1d | 2026-06-16 | 2026-06-16 | 51 |  |  |  |  |  | 134d | 0d | -0 | Ter 16/06/26 | Ter 16/06/26 | MECÂNICA |  |
| 53 | 1.1.6.1.3 | Atendimento de comentários | 2d | 2026-06-17 | 2026-06-18 | 52 |  |  |  |  |  | 134d | 0d | -0 | Qua 17/06/26 | Qui 18/06/26 | MECÂNICA |  |
| 54 | 1.1.6.1.4 | Aprovação | 1d | 2026-06-19 | 2026-06-19 | 53 |  |  |  |  |  | 134d |  | -0 | Sex 19/06/26 | Sex 19/06/26 | MECÂNICA |  |

| ID | WBS | Task | Duration | Start | Finish | Predecessors | Baseline start | Baseline finish | Baseline duration | Baseline 1 start | Baseline 1 finish | Total slack | Free slack | Baseline cost | Título | Inicio_LB_R0 | Término_LB_R0 | Disciplina |
| --- | --- | --- | --- | --- | --- | --- | --- | --- | --- | --- | --- | --- | --- | --- | --- | --- | --- | --- |
| 55 | 1.1.6.2 | **MD-F0009-0000-MB-M-00001** | 6d | 2026-12-01 | 2026-12-08 |  | 2026-05-26 | 2026-06-02 | 6d | 2026-05-26 | 2026-06-02 | 12d |  |  | Memorial descritivo | Ter 26/05/26 | Ter 02/06/26 | MECÂNICA |
| 56 | 1.1.6.2.1 | Emissão inicial | 2d | 2026-12-01 | 2026-12-02 | 51FS+120d | 2026-05-26 | 2026-05-27 | 2d | 2026-05-26 | 2026-05-27 | 12d | 0d |  |  | Ter 26/05/26 | Qua 27/05/26 | MECÂNICA |
| 57 | 1.1.6.2.2 | Análise Tecnored | 1d | 2026-12-03 | 2026-12-03 | 56 | 2026-05-28 | 2026-05-28 | 1d | 2026-05-28 | 2026-05-28 | 12d | 0d |  |  | Qui 28/05/26 | Qui 28/05/26 | MECÂNICA |
| 58 | 1.1.6.2.3 | Atendimento de comentários | 2d | 2026-12-04 | 2026-12-07 | 57 | 2026-05-29 | 2026-06-01 | 2d | 2026-05-29 | 2026-06-01 | 12d | 0d |  |  | Sex 29/05/26 | Seg 01/06/26 | MECÂNICA |
| 59 | 1.1.6.2.4 | Aprovação | 1d | 2026-12-08 | 2026-12-08 | 58 | 2026-06-02 | 2026-06-02 | 1d | 2026-06-02 | 2026-06-02 | 12d |  |  |  | Ter 02/06/26 | Ter 02/06/26 | MECÂNICA |
| 60 | 1.1.7 | **Tubulação/Utilidades** | 135d | 2026-06-09 | 2026-12-14 |  | 2026-05-20 | 2026-07-08 | 36d | 2026-05-20 | 2026-07-08 | 8d |  |  |  | Qua 20/05/26 | Qua 08/07/26 | TUBULAÇÃO/UTILIDADES |
| 61 | 1.1.7.1 | **CP-F0009-0000-MB-T-00001** | 9d | 2026-06-09 | 2026-06-19 |  |  |  |  |  |  | 8d |  | -0 | Critério de Projetos | Qui 11/06/26 | Sex 19/06/26 | TUBULAÇÃO/UTILIDADES |
| 62 | 1.1.7.1.1 | Emissão inicial | 5d | 2026-06-09 | 2026-06-15 | 30FF |  |  |  |  |  | 8d | 0d | -0 |  | Qui 11/06/26 | Seg 15/06/26 | TUBULAÇÃO/UTILIDADES |
| 63 | 1.1.7.1.2 | Análise Tecnored | 1d | 2026-06-16 | 2026-06-16 | 62 |  |  |  |  |  | 134d | 0d | -0 |  | Ter 16/06/26 | Ter 16/06/26 | TUBULAÇÃO/UTILIDADES |
| 64 | 1.1.7.1.3 | Atendimento de comentários | 2d | 2026-06-17 | 2026-06-18 | 63 |  |  |  |  |  | 134d | 0d | -0 |  | Qua 17/06/26 | Qui 18/06/26 | TUBULAÇÃO/UTILIDADES |
| 65 | 1.1.7.1.4 | Aprovação | 1d | 2026-06-19 | 2026-06-19 | 64 |  |  |  |  |  | 134d |  | -0 |  | Sex 19/06/26 | Sex 19/06/26 | TUBULAÇÃO/UTILIDADES |
| 66 | 1.1.7.2 | **MD-F0009-0000-MB-U-00001** | 7d | 2026-12-01 | 2026-12-09 |  | 2026-06-18 | 2026-06-26 | 7d | 2026-06-18 | 2026-06-26 | 8d |  |  | Memorial descritivo | Qui 18/06/26 | Sex 26/06/26 | TUBULAÇÃO/UTILIDADES |
| 67 | 1.1.7.2.1 | Emissão inicial | 3d | 2026-12-01 | 2026-12-03 | 62FS+120d | 2026-06-18 | 2026-06-22 | 3d | 2026-06-18 | 2026-06-22 | 8d | 0d |  |  | Qui 18/06/26 | Seg 22/06/26 | TUBULAÇÃO/UTILIDADES |
| 68 | 1.1.7.2.2 | Análise Tecnored | 1d | 2026-12-04 | 2026-12-04 | 67 | 2026-06-23 | 2026-06-23 | 1d | 2026-06-23 | 2026-06-23 | 11d | 0d |  |  | Ter 23/06/26 | Ter 23/06/26 | TUBULAÇÃO/UTILIDADES |
| 69 | 1.1.7.2.3 | Atendimento de comentários | 2d | 2026-12-07 | 2026-12-08 | 68 | 2026-06-24 | 2026-06-25 | 2d | 2026-06-24 | 2026-06-25 | 11d | 0d |  |  | Qua 24/06/26 | Qui 25/06/26 | TUBULAÇÃO/UTILIDADES |
| 70 | 1.1.7.2.4 | Aprovação | 1d | 2026-12-09 | 2026-12-09 | 69 | 2026-06-26 | 2026-06-26 | 1d | 2026-06-26 | 2026-06-26 | 11d |  |  |  | Sex 26/06/26 | Sex 26/06/26 | TUBULAÇÃO/UTILIDADES |
| 71 | 1.1.7.3 | **ML-F0009-0000-MB-T-00001** | 7d | 2026-12-04 | 2026-12-14 |  | 2026-05-28 | 2026-06-05 | 7d | 2026-05-28 | 2026-06-05 | 8d |  |  | Modelo geral | Qui 28/05/26 | Sex 05/06/26 | TUBULAÇÃO/UTILIDADES |
| 72 | 1.1.7.3.1 | Emissão inicial | 3d | 2026-12-04 | 2026-12-08 | 67 | 2026-05-28 | 2026-06-01 | 3d | 2026-05-28 | 2026-06-01 | 8d | 0d |  |  | Qui 28/05/26 | Seg 01/06/26 | TUBULAÇÃO/UTILIDADES |
| 73 | 1.1.7.3.2 | Análise Tecnored | 1d | 2026-12-09 | 2026-12-09 | 72 | 2026-06-02 | 2026-06-02 | 1d | 2026-06-02 | 2026-06-02 | 8d | 0d |  |  | Ter 02/06/26 | Ter 02/06/26 | TUBULAÇÃO/UTILIDADES |
| 74 | 1.1.7.3.3 | Atendimento de comentários | 2d | 2026-12-10 | 2026-12-11 | 73 | 2026-06-03 | 2026-06-04 | 2d | 2026-06-03 | 2026-06-04 | 8d | 0d |  |  | Qua 03/06/26 | Qui 04/06/26 | TUBULAÇÃO/UTILIDADES |
| 75 | 1.1.7.3.4 | Aprovação | 1d | 2026-12-14 | 2026-12-14 | 74 | 2026-06-05 | 2026-06-05 | 1d | 2026-06-05 | 2026-06-05 | 8d |  |  |  | Sex 05/06/26 | Sex 05/06/26 | TUBULAÇÃO/UTILIDADES |
| 76 | 1.1.7.4 | **LK-F0009-0000-MB-T-00001** | 7d | 2026-12-04 | 2026-12-14 |  | 2026-06-02 | 2026-06-10 | 7d | 2026-06-02 | 2026-06-10 | 8d |  |  | Lista de Tie-ins | Ter 02/06/26 | Qua 10/06/26 | TUBULAÇÃO/UTILIDADES |
| 77 | 1.1.7.4.1 | Emissão inicial | 3d | 2026-12-04 | 2026-12-08 | 67 | 2026-06-02 | 2026-06-04 | 3d | 2026-06-02 | 2026-06-04 | 8d | 0d |  |  | Ter 02/06/26 | Qui 04/06/26 | TUBULAÇÃO/UTILIDADES |
| 78 | 1.1.7.4.2 | Análise Tecnored | 1d | 2026-12-09 | 2026-12-09 | 77 | 2026-06-05 | 2026-06-05 | 1d | 2026-06-05 | 2026-06-05 | 8d | 0d |  |  | Sex 05/06/26 | Sex 05/06/26 | TUBULAÇÃO/UTILIDADES |
| 79 | 1.1.7.4.3 | Atendimento de comentários | 2d | 2026-12-10 | 2026-12-11 | 78 | 2026-06-08 | 2026-06-09 | 2d | 2026-06-08 | 2026-06-09 | 8d | 0d |  |  | Seg 08/06/26 | Ter 09/06/26 | TUBULAÇÃO/UTILIDADES |
| 80 | 1.1.7.4.4 | Aprovação | 1d | 2026-12-14 | 2026-12-14 | 79 | 2026-06-10 | 2026-06-10 | 1d | 2026-06-10 | 2026-06-10 | 8d |  |  |  | Qua 10/06/26 | Qua 10/06/26 | TUBULAÇÃO/UTILIDADES |

| ID | WBS | Task | Duration | Start | Finish | Predecessors | Baseline start | Baseline finish | Baseline duration | Baseline 1 start | Baseline 1 finish | Total slack | Free slack | Baseline cost | Inicio_LB_R0 | Término_LB_R0 | Disciplina | Título |
| --- | --- | --- | --- | --- | --- | --- | --- | --- | --- | --- | --- | --- | --- | --- | --- | --- | --- | --- |
| 81 | 1.1.8 | **Estrutura metálica** | 130d | 2026-06-11 | 2026-12-09 |  | 2026-06-15 | 2026-07-08 | 18d | 2026-06-15 | 2026-07-08 | 11d |  |  | Seg 15/06/26 | Qua 08/07/26 | ESTRUTURA METÁLICA |  |
| 82 | 1.1.8.1 | **CP-F0009-0000-MB-S-00001** | 7d | 2026-06-11 | 2026-06-19 |  |  |  |  |  |  | 11d |  | -0 | Ter 09/06/26 | Sex 19/06/26 | ESTRUTURA METÁLICA | Critério de Projetos |
| 83 | 1.1.8.1.1 | Emissão inicial | 3d | 2026-06-11 | 2026-06-15 | 30FF |  |  |  |  |  | 11d | 0d | -0 | Ter 09/06/26 | Seg 15/06/26 | ESTRUTURA METÁLICA |  |
| 84 | 1.1.8.1.2 | Análise Tecnored | 1d | 2026-06-16 | 2026-06-16 | 83 |  |  |  |  |  | 134d | 0d | -0 | Ter 16/06/26 | Ter 16/06/26 | ESTRUTURA METÁLICA |  |
| 85 | 1.1.8.1.3 | Atendimento de comentários | 2d | 2026-06-17 | 2026-06-18 | 84 |  |  |  |  |  | 134d | 0d | -0 | Qua 17/06/26 | Qui 18/06/26 | ESTRUTURA METÁLICA |  |
| 86 | 1.1.8.1.4 | Aprovação | 1d | 2026-06-19 | 2026-06-19 | 85 |  |  |  |  |  | 134d |  | -0 | Sex 19/06/26 | Sex 19/06/26 | ESTRUTURA METÁLICA |  |
| 87 | 1.1.8.2 | **MD-F0009-0000-MB-S-00001** | 7d | 2026-12-01 | 2026-12-09 |  | 2026-06-17 | 2026-06-25 | 7d | 2026-06-17 | 2026-06-25 | 11d |  |  | Qua 17/06/26 | Qui 25/06/26 | ESTRUTURA METÁLICA | Memorial descritivo |
| 88 | 1.1.8.2.1 | Emissão inicial | 3d | 2026-12-01 | 2026-12-03 | 83FS+120d | 2026-06-17 | 2026-06-19 | 3d | 2026-06-17 | 2026-06-19 | 11d | 0d |  | Qua 17/06/26 | Sex 19/06/26 | ESTRUTURA METÁLICA |  |
| 89 | 1.1.8.2.2 | Análise Tecnored | 1d | 2026-12-04 | 2026-12-04 | 88 | 2026-06-22 | 2026-06-22 | 1d | 2026-06-22 | 2026-06-22 | 11d | 0d |  | Seg 22/06/26 | Seg 22/06/26 | ESTRUTURA METÁLICA |  |
| 90 | 1.1.8.2.3 | Atendimento de comentários | 2d | 2026-12-07 | 2026-12-08 | 89 | 2026-06-23 | 2026-06-24 | 2d | 2026-06-23 | 2026-06-24 | 11d | 0d |  | Ter 23/06/26 | Qua 24/06/26 | ESTRUTURA METÁLICA |  |
| 91 | 1.1.8.2.4 | Aprovação | 1d | 2026-12-09 | 2026-12-09 | 90 | 2026-06-25 | 2026-06-25 | 1d | 2026-06-25 | 2026-06-25 | 11d |  |  | Qui 25/06/26 | Qui 25/06/26 | ESTRUTURA METÁLICA |  |
| 92 | 1.1.9 | **Elétrica** | 140d | 2026-06-09 | 2026-12-21 |  | 2026-05-21 | 2026-07-08 | 35d | 2026-05-21 | 2026-07-08 | 3d |  |  | Qui 21/05/26 | Qua 08/07/26 | ELÉTRICA |  |
| 93 | 1.1.9.1 | **CP-F0009-0000-MB-E-00001** | 9d | 2026-06-09 | 2026-06-19 |  |  |  |  |  |  | 3d | 0d | -0 | Ter 09/06/26 | Sex 19/06/26 | ELÉTRICA | Critério de Projetos |
| 94 | 1.1.9.1.1 | Emissão inicial | 5d | 2026-06-09 | 2026-06-15 | 30FF |  |  |  |  |  | 3d | 0d | -0 | Ter 09/06/26 | Seg 15/06/26 | ELÉTRICA |  |
| 95 | 1.1.9.1.2 | Análise Tecnored | 1d | 2026-06-16 | 2026-06-16 | 94 |  |  |  |  |  | 3d | 0d | -0 | Ter 16/06/26 | Ter 16/06/26 | ELÉTRICA |  |
| 96 | 1.1.9.1.3 | Atendimento de comentários | 2d | 2026-06-17 | 2026-06-18 | 95 |  |  |  |  |  | 3d | 0d | -0 | Qua 17/06/26 | Qui 18/06/26 | ELÉTRICA |  |
| 97 | 1.1.9.1.4 | Aprovação | 1d | 2026-06-19 | 2026-06-19 | 96 |  |  |  |  |  | 3d |  | -0 | Sex 19/06/26 | Sex 19/06/26 | ELÉTRICA |  |
| 98 | 1.1.9.2 | **MD-F0009-0000-MB-E-00001** | 11d | 2026-12-07 | 2026-12-21 |  | 2026-06-15 | 2026-06-29 | 11d | 2026-06-15 | 2026-06-29 | 3d |  |  | Seg 15/06/26 | Seg 29/06/26 | ELÉTRICA | Memorial descritivo |
| 99 | 1.1.9.2.1 | Emissão inicial | 7d | 2026-12-07 | 2026-12-15 | 93FS+120d | 2026-06-15 | 2026-06-23 | 7d | 2026-06-15 | 2026-06-23 | 3d | 0d |  | Seg 15/06/26 | Ter 23/06/26 | ELÉTRICA |  |
| 100 | 1.1.9.2.2 | Análise Tecnored | 1d | 2026-12-16 | 2026-12-16 | 99 | 2026-06-24 | 2026-06-24 | 1d | 2026-06-24 | 2026-06-24 | 3d | 0d |  | Qua 24/06/26 | Qua 24/06/26 | ELÉTRICA |  |
| 101 | 1.1.9.2.3 | Atendimento de comentários | 2d | 2026-12-17 | 2026-12-18 | 100 | 2026-06-25 | 2026-06-26 | 2d | 2026-06-25 | 2026-06-26 | 3d | 0d |  | Qui 25/06/26 | Sex 26/06/26 | ELÉTRICA |  |
| 102 | 1.1.9.2.4 | Aprovação | 1d | 2026-12-21 | 2026-12-21 | 101 | 2026-06-29 | 2026-06-29 | 1d | 2026-06-29 | 2026-06-29 | 3d |  |  | Seg 29/06/26 | Seg 29/06/26 | ELÉTRICA |  |
| 103 | 1.1.10 | **Automação e instrumentação** | 132d | 2026-06-09 | 2026-12-09 |  | 2026-05-20 | 2026-07-08 | 36d | 2026-05-20 | 2026-07-08 | 11d |  |  | Qua 20/05/26 | Qua 08/07/26 | AUTOMAÇÃO E INSTRUMENTAÇÃO |  |
| 104 | 1.1.10.1 | **CP-F0009-0000-MB-J-00001** | 9d | 2026-06-09 | 2026-06-19 |  |  |  |  |  |  | 11d |  | -0 | Ter 09/06/26 | Sex 19/06/26 | AUTOMAÇÃO E INSTRUMENTAÇÃO | Critério de Projetos |
| 105 | 1.1.10.1.1 | Emissão inicial | 5d | 2026-06-09 | 2026-06-15 | 30FF |  |  |  |  |  | 11d | 0d | -0 | Ter 09/06/26 | Seg 15/06/26 | AUTOMAÇÃO E INSTRUMENTAÇÃO |  |
| 106 | 1.1.10.1.2 | Análise Tecnored | 1d | 2026-06-16 | 2026-06-16 | 105 |  |  |  |  |  | 134d | 0d | -0 | Ter 16/06/26 | Ter 16/06/26 | AUTOMAÇÃO E INSTRUMENTAÇÃO |  |
| 107 | 1.1.10.1.3 | Atendimento de comentários | 2d | 2026-06-17 | 2026-06-18 | 106 |  |  |  |  |  | 134d | 0d | -0 | Qua 17/06/26 | Qui 18/06/26 | AUTOMAÇÃO E INSTRUMENTAÇÃO |  |
| 108 | 1.1.10.1.4 | Aprovação | 1d | 2026-06-19 | 2026-06-19 | 107 |  |  |  |  |  | 134d |  | -0 | Sex 19/06/26 | Sex 19/06/26 | AUTOMAÇÃO E INSTRUMENTAÇÃO |  |

| ID | WBS | Task | Type | Duration | Start | Finish | Predecessors | Baseline start | Baseline finish | Baseline duration | Baseline 1 start | Baseline 1 finish | Total slack | Free slack | Título | Inicio_LB_R0 | Término_LB_R0 | Disciplina |
| --- | --- | --- | --- | --- | --- | --- | --- | --- | --- | --- | --- | --- | --- | --- | --- | --- | --- | --- |
| 109 | 1.1.10.2 | **MD-F0009-0000-MB-J-00001** |  | 7d | 2026-12-01 | 2026-12-09 |  | 2026-05-22 | 2026-06-01 | 7d | 2026-05-22 | 2026-06-01 | 11d |  | Memorial descritivo | Sex 22/05/26 | Seg 01/06/26 | AUTOMAÇÃO E INSTRUMENTAÇÃO |
| 110 | 1.1.10.2.1 | Emissão inicial |  | 3d | 2026-12-01 | 2026-12-03 | 105FS+120d | 2026-05-22 | 2026-05-26 | 3d | 2026-05-22 | 2026-05-26 | 11d | 0d |  | Sex 22/05/26 | Ter 26/05/26 | AUTOMAÇÃO E INSTRUMENTAÇÃO |
| 111 | 1.1.10.2.2 | Análise Tecnored |  | 1d | 2026-12-04 | 2026-12-04 | 110 | 2026-05-27 | 2026-05-27 | 1d | 2026-05-27 | 2026-05-27 | 11d | 0d |  | Qua 27/05/26 | Qua 27/05/26 | AUTOMAÇÃO E INSTRUMENTAÇÃO |
| 112 | 1.1.10.2.3 | Atendimento de comentários |  | 2d | 2026-12-07 | 2026-12-08 | 111 | 2026-05-28 | 2026-05-29 | 2d | 2026-05-28 | 2026-05-29 | 11d | 0d |  | Qui 28/05/26 | Sex 29/05/26 | AUTOMAÇÃO E INSTRUMENTAÇÃO |
| 113 | 1.1.10.2.4 | Aprovação |  | 1d | 2026-12-09 | 2026-12-09 | 112 | 2026-06-01 | 2026-06-01 | 1d | 2026-06-01 | 2026-06-01 | 11d |  |  | Seg 01/06/26 | Seg 01/06/26 | AUTOMAÇÃO E INSTRUMENTAÇÃO |
| 114 | 1.1.11 | **Civil** |  | 0d | 2026-09-07 | 2026-09-07 |  | 2026-06-22 | 2026-07-08 | 13d | 2026-06-22 | 2026-07-08 | 78d |  |  | Seg 22/06/26 | Qua 08/07/26 | CIVIL |
| 115 | 1.1.11.1 | Avaliações gerais | milestone | 0d | 2026-09-07 | 2026-09-07 | 30FS+60d |  |  |  |  |  | 78d |  |  | Seg 07/09/26 | Seg 07/09/26 | CIVIL |
