# CD - F0009 - 0207 - STOCKHOUSE - 20260715

Schedule from MS Project, 2026-07-13 to 2026-09-16, A marks actual dates.

## Calendars

- Padrão: Mon-Fri 09:00-12:00, 13:00-18:00; Sat-Sun off. Exceptions (off unless hours are given): 2026-09-07 (Independência), 2026-09-08 (Nossa Senhora do Bom Sucesso).

## Schedule

| ID | WBS | Task | Type | Duration | Start | Finish | Predecessors | Complete | Remaining | Total slack | Free slack | COD_Projeto | Disciplina |
| --- | --- | --- | --- | --- | --- | --- | --- | --- | --- | --- | --- | --- | --- |
| 1 | 1 | **F0009 - 0207 - STOCKHOUSE** |  | 46d | 2026-07-13 A | 2026-09-16 |  | 2% | 45.25d | 0d |  |  |  |
| 2 | 1.1 | **PLANNING** |  | 11d | 2026-07-13 A | 2026-07-27 |  | 12% | 9.63d | 35d |  |  |  |
| 3 | 1.1.1 | **LD-F0009-0207-MB-G-00001** |  | 5.85d | 2026-07-13 A | 2026-07-20 |  | 32% | 4d | 40.15d |  | 0207 | PLANNING |
| 4 | 1.1.1.1 | Emissão Inicial |  | 1.85d | 2026-07-13 A | 2026-07-14 A |  | 100% |  |  |  | 0207 | PLANNING |
| 5 | 1.1.1.2 | Análise Tecnored |  | 1d | 2026-07-14 | 2026-07-15 | 4 |  |  | 40.15d | 0d | 0207 | PLANNING |
| 6 | 1.1.1.3 | Atendimento de comentários |  | 2d | 2026-07-15 | 2026-07-17 | 5 |  |  | 40.15d | 0d | 0207 | PLANNING |
| 7 | 1.1.1.4 | Aprovação |  | 1d | 2026-07-17 | 2026-07-20 | 6 |  |  | 40.15d |  | 0207 | PLANNING |
| 8 | 1.1.2 | **CR-F0009-0207-MB-G-00001** |  | 9d | 2026-07-15 | 2026-07-27 |  |  |  | 35d |  | 0207 | PLANNING |
| 9 | 1.1.2.1 | Emissão Inicial |  | 5d | 2026-07-15 | 2026-07-21 |  |  |  | 35d | 0d | 0207 | PLANNING |
| 10 | 1.1.2.2 | Análise Tecnored |  | 1d | 2026-07-22 | 2026-07-22 | 9 |  |  | 35d | 0d | 0207 | PLANNING |
| 11 | 1.1.2.3 | Atendimento de comentários |  | 2d | 2026-07-23 | 2026-07-24 | 10 |  |  | 35d | 0d | 0207 | PLANNING |
| 12 | 1.1.2.4 | Aprovação |  | 1d | 2026-07-27 | 2026-07-27 | 11 |  |  | 35d |  | 0207 | PLANNING |
| 13 | 1.2 | **COORDINATION** |  | 34d | 2026-07-15 A | 2026-08-31 |  | 9% | 31.04d | 10d |  |  |  |
| 14 | 1.2.1 | **CM-F0009-0000-MB-G-00001** |  | 7d | 2026-07-15 | 2026-07-23 |  |  |  | 37d |  | 0207 | COORDINATION |
| 15 | 1.2.1.1 | Emissão Inicial |  | 3d | 2026-07-15 | 2026-07-17 |  |  |  | 37d | 0d | 0207 | COORDINATION |
| 16 | 1.2.1.2 | Análise Tecnored |  | 1d | 2026-07-20 | 2026-07-20 | 15 |  |  | 37d | 0d | 0207 | COORDINATION |
| 17 | 1.2.1.3 | Atendimento de comentários |  | 2d | 2026-07-21 | 2026-07-22 | 16 |  |  | 37d | 0d | 0207 | COORDINATION |
| 18 | 1.2.1.4 | Aprovação |  | 1d | 2026-07-23 | 2026-07-23 | 17 |  |  | 37d |  | 0207 | COORDINATION |
| 19 | 1.2.2 | **PP-F0009-0000-MB-G-00001** |  | 9d | 2026-07-15 | 2026-07-27 |  |  |  | 10d |  | 0207 | COORDINATION |
| 20 | 1.2.2.1 | Emissão Inicial |  | 5d | 2026-07-15 | 2026-07-21 |  |  |  | 10d | 0d | 0207 | COORDINATION |
| 21 | 1.2.2.2 | Análise Tecnored |  | 1d | 2026-07-22 | 2026-07-22 | 20 |  |  | 35d | 0d | 0207 | COORDINATION |
| 22 | 1.2.2.3 | Atendimento de comentários |  | 2d | 2026-07-23 | 2026-07-24 | 21 |  |  | 35d | 0d | 0207 | COORDINATION |
| 23 | 1.2.2.4 | Aprovação |  | 1d | 2026-07-27 | 2026-07-27 | 22 |  |  | 35d |  | 0207 | COORDINATION |
| 24 | 1.2.3 | TAP | milestone, manual | 1.1d | 2026-07-16 A | 2026-07-16 A |  | 100% |  |  |  |  | COORDINATION |

| ID | WBS | Task | Duration | Start | Finish | Predecessors | Complete | Remaining | Total slack | Free slack | COD_Projeto | Disciplina |
| --- | --- | --- | --- | --- | --- | --- | --- | --- | --- | --- | --- | --- |
| 25 | 1.2.4 | **OP-F0009-0000-MB-G-00001** | 7d | 2026-07-16 | 2026-07-27 |  |  |  | 35.15d |  | 0207 | COORDINATION |
| 26 | 1.2.4.1 | Emissão Inicial | 3d | 2026-07-16 | 2026-07-21 | 24 |  |  | 35.15d | 0d | 0207 | COORDINATION |
| 27 | 1.2.4.2 | Análise Tecnored | 1d | 2026-07-21 | 2026-07-22 | 26 |  |  | 35.15d | 0d | 0207 | COORDINATION |
| 28 | 1.2.4.3 | Atendimento de comentários | 2d | 2026-07-22 | 2026-07-24 | 27 |  |  | 35.15d | 0d | 0207 | COORDINATION |
| 29 | 1.2.4.4 | Aprovação | 1d | 2026-07-24 | 2026-07-27 | 28 |  |  | 35.15d |  | 0207 | COORDINATION |
| 30 | 1.2.5 | **MM-F0009-0000-MB-G-00001** | 9d | 2026-07-15 | 2026-07-27 |  |  |  | 35d |  | 0207 | COORDINATION |
| 31 | 1.2.5.1 | Emissão Inicial | 5d | 2026-07-15 | 2026-07-21 |  |  |  | 35d | 0d | 0207 | COORDINATION |
| 32 | 1.2.5.2 | Análise Tecnored | 1d | 2026-07-22 | 2026-07-22 | 31 |  |  | 35d | 0d | 0207 | COORDINATION |
| 33 | 1.2.5.3 | Atendimento de comentários | 2d | 2026-07-23 | 2026-07-24 | 32 |  |  | 35d | 0d | 0207 | COORDINATION |
| 34 | 1.2.5.4 | Aprovação | 1d | 2026-07-27 | 2026-07-27 | 33 |  |  | 35d |  | 0207 | COORDINATION |
| 35 | 1.2.6 | **MF-F0009-0000-MB-G-00001** | 7d | 2026-08-21 | 2026-08-31 |  |  |  | 10d |  | 0207 | COORDINATION |
| 36 | 1.2.6.1 | Emissão Inicial | 3d | 2026-08-21 | 2026-08-25 | 183, 365, 421, 482 |  |  | 10d | 0d | 0207 | COORDINATION |
| 37 | 1.2.6.2 | Análise Tecnored | 1d | 2026-08-26 | 2026-08-26 | 36 |  |  | 10d | 0d | 0207 | COORDINATION |
| 38 | 1.2.6.3 | Atendimento de comentários | 2d | 2026-08-27 | 2026-08-28 | 37 |  |  | 10d | 0d | 0207 | COORDINATION |
| 39 | 1.2.6.4 | Aprovação | 1d | 2026-08-31 | 2026-08-31 | 38 |  |  | 10d |  | 0207 | COORDINATION |
| 40 | 1.2.7 | **EA-F0009-0000-MB-G-00001** | 9d | 2026-07-15 A | 2026-07-27 |  | 56% | 4d | 35d |  | 0207 | COORDINATION |
| 41 | 1.2.7.1 | Emissão Inicial | 5d | 2026-07-15 A | 2026-07-21 A |  | 100% |  |  |  | 0207 | COORDINATION |
| 42 | 1.2.7.2 | Análise Tecnored | 1d | 2026-07-22 | 2026-07-22 | 41 |  |  | 35d | 0d | 0207 | COORDINATION |
| 43 | 1.2.7.3 | Atendimento de comentários | 2d | 2026-07-23 | 2026-07-24 | 42 |  |  | 35d | 0d | 0207 | COORDINATION |
| 44 | 1.2.7.4 | Aprovação | 1d | 2026-07-27 | 2026-07-27 | 43 |  |  | 35d |  | 0207 | COORDINATION |
| 45 | 1.2.8 | **RM-F0009-0000-GE-G-00001** | 7d | 2026-08-21 | 2026-08-31 |  |  |  | 10d |  | 0207 | COORDINATION |
| 46 | 1.2.8.1 | Emissão Inicial | 3d | 2026-08-21 | 2026-08-25 | 20FS+30ed |  |  | 10d | 0d | 0207 | COORDINATION |
| 47 | 1.2.8.2 | Análise Tecnored | 1d | 2026-08-26 | 2026-08-26 | 46 |  |  | 10d | 0d | 0207 | COORDINATION |
| 48 | 1.2.8.3 | Atendimento de comentários | 2d | 2026-08-27 | 2026-08-28 | 47 |  |  | 10d | 0d | 0207 | COORDINATION |
| 49 | 1.2.8.4 | Aprovação | 1d | 2026-08-31 | 2026-08-31 | 48 |  |  | 10d |  | 0207 | COORDINATION |

| ID | WBS | Task | Type | Duration | Start | Finish | Predecessors | Complete | Remaining | Total slack | Free slack | COD_Projeto | Disciplina |
| --- | --- | --- | --- | --- | --- | --- | --- | --- | --- | --- | --- | --- | --- |
| 50 | 1.2.9 | **RM-F0009-0000-GE-G-00002** | inactive | 7d | 2026-07-15 | 2026-07-23 |  |  |  | 37d |  | 0207 | COORDINATION |
| 51 | 1.2.9.1 | Emissão Inicial | inactive | 3d | 2026-07-15 | 2026-07-17 |  |  |  | 37d | 0d | 0207 | COORDINATION |
| 52 | 1.2.9.2 | Análise Tecnored | inactive | 1d | 2026-07-20 | 2026-07-20 | 51 |  |  | 37d | 0d | 0207 | COORDINATION |
| 53 | 1.2.9.3 | Atendimento de comentários | inactive | 2d | 2026-07-21 | 2026-07-22 | 52 |  |  | 37d | 0d | 0207 | COORDINATION |
| 54 | 1.2.9.4 | Aprovação | inactive | 1d | 2026-07-23 | 2026-07-23 | 53 |  |  | 37d |  | 0207 | COORDINATION |
| 55 | 1.2.10 | **RL-F0009-0000-GE-G-00001** |  | 7d | 2026-07-15 | 2026-07-23 |  |  |  | 37d |  | 0207 | COORDINATION |
| 56 | 1.2.10.1 | Emissão Inicial |  | 3d | 2026-07-15 | 2026-07-17 |  |  |  | 37d | 0d | 0207 | COORDINATION |
| 57 | 1.2.10.2 | Análise Tecnored |  | 1d | 2026-07-20 | 2026-07-20 | 56 |  |  | 37d | 0d | 0207 | COORDINATION |
| 58 | 1.2.10.3 | Atendimento de comentários |  | 2d | 2026-07-21 | 2026-07-22 | 57 |  |  | 37d | 0d | 0207 | COORDINATION |
| 59 | 1.2.10.4 | Aprovação |  | 1d | 2026-07-23 | 2026-07-23 | 58 |  |  | 37d |  | 0207 | COORDINATION |
| 60 | 1.2.11 | **LP-F0009-0207-MB-G-00001** |  | 7d | 2026-07-15 | 2026-07-23 |  |  |  | 37d |  | 0207 | COORDINATION |
| 61 | 1.2.11.1 | Emissão Inicial |  | 3d | 2026-07-15 | 2026-07-17 |  |  |  | 37d | 0d | 0207 | COORDINATION |
| 62 | 1.2.11.2 | Análise Tecnored |  | 1d | 2026-07-20 | 2026-07-20 | 61 |  |  | 37d | 0d | 0207 | COORDINATION |
| 63 | 1.2.11.3 | Atendimento de comentários |  | 2d | 2026-07-21 | 2026-07-22 | 62 |  |  | 37d | 0d | 0207 | COORDINATION |
| 64 | 1.2.11.4 | Aprovação |  | 1d | 2026-07-23 | 2026-07-23 | 63 |  |  | 37d |  | 0207 | COORDINATION |
| 65 | 1.3 | **PROCESS** |  | 12.85d | 2026-07-13 A | 2026-07-29 |  | 7% | 11.97d | 33.15d |  |  |  |
| 66 | 1.3.1 | **CA-F0009-0207-MB-G-00001** |  | 7d | 2026-07-20 | 2026-07-28 |  |  |  | 34d |  | 0207 | PROCESS |
| 67 | 1.3.1.1 | Emissão Inicial |  | 3d | 2026-07-20 | 2026-07-22 | 77, 92 |  |  | 34d | 0d | 0207 | PROCESS |
| 68 | 1.3.1.2 | Análise Tecnored |  | 1d | 2026-07-23 | 2026-07-23 | 67 |  |  | 34d | 0d | 0207 | PROCESS |
| 69 | 1.3.1.3 | Atendimento de comentários |  | 2d | 2026-07-24 | 2026-07-27 | 68 |  |  | 34d | 0d | 0207 | PROCESS |
| 70 | 1.3.1.4 | Aprovação |  | 1d | 2026-07-28 | 2026-07-28 | 69 |  |  | 34d |  | 0207 | PROCESS |
| 71 | 1.3.2 | **DB-F0009-0207-MB-P-00001** |  | 7d | 2026-07-15 | 2026-07-23 |  |  |  | 37d |  | 0207 | PROCESS |
| 72 | 1.3.2.1 | Emissão Inicial |  | 3d | 2026-07-15 | 2026-07-17 |  |  |  | 37d | 0d | 0207 | PROCESS |
| 73 | 1.3.2.2 | Análise Tecnored |  | 1d | 2026-07-20 | 2026-07-20 | 72 |  |  | 37d | 0d | 0207 | PROCESS |
| 74 | 1.3.2.3 | Atendimento de comentários |  | 2d | 2026-07-21 | 2026-07-22 | 73 |  |  | 37d | 0d | 0207 | PROCESS |
| 75 | 1.3.2.4 | Aprovação |  | 1d | 2026-07-23 | 2026-07-23 | 74 |  |  | 37d |  | 0207 | PROCESS |

| ID | WBS | Task | Duration | Start | Finish | Predecessors | Complete | Remaining | Total slack | Free slack | COD_Projeto | Disciplina |
| --- | --- | --- | --- | --- | --- | --- | --- | --- | --- | --- | --- | --- |
| 76 | 1.3.3 | **FG-F0009-0207-MB-P-00001** | 6.85d | 2026-07-13 A | 2026-07-21 |  | 42% | 4d | 39.15d |  | 0207 | PROCESS |
| 77 | 1.3.3.1 | Emissão Inicial | 2.85d | 2026-07-13 A | 2026-07-15 A |  | 100% |  |  |  | 0207 | PROCESS |
| 78 | 1.3.3.2 | Análise Tecnored | 1d | 2026-07-15 | 2026-07-16 | 77 |  |  | 39.15d | 0d | 0207 | PROCESS |
| 79 | 1.3.3.3 | Atendimento de comentários | 2d | 2026-07-16 | 2026-07-20 | 78 |  |  | 39.15d | 0d | 0207 | PROCESS |
| 80 | 1.3.3.4 | Aprovação | 1d | 2026-07-20 | 2026-07-21 | 79 |  |  | 39.15d |  | 0207 | PROCESS |
| 81 | 1.3.4 | **MD-F0009-0207-MB-P-00001** | 7d | 2026-07-20 | 2026-07-29 |  |  |  | 33.15d |  | 0207 | PROCESS |
| 82 | 1.3.4.1 | Emissão Inicial | 3d | 2026-07-20 | 2026-07-23 | 87 |  |  | 33.15d | 0d | 0207 | PROCESS |
| 83 | 1.3.4.2 | Análise Tecnored | 1d | 2026-07-23 | 2026-07-24 | 82 |  |  | 33.15d | 0d | 0207 | PROCESS |
| 84 | 1.3.4.3 | Atendimento de comentários | 2d | 2026-07-24 | 2026-07-28 | 83 |  |  | 33.15d | 0d | 0207 | PROCESS |
| 85 | 1.3.4.4 | Aprovação | 1d | 2026-07-28 | 2026-07-29 | 84 |  |  | 33.15d |  | 0207 | PROCESS |
| 86 | 1.3.5 | **MC-F0009-0207-MB-P-00001** | 7d | 2026-07-15 | 2026-07-24 |  |  |  | 33.15d |  | 0207 | PROCESS |
| 87 | 1.3.5.1 | Emissão Inicial | 3d | 2026-07-15 | 2026-07-20 | 77 |  |  | 33.15d | 0d | 0207 | PROCESS |
| 88 | 1.3.5.2 | Análise Tecnored | 1d | 2026-07-20 | 2026-07-21 | 87 |  |  | 36.15d | 0d | 0207 | PROCESS |
| 89 | 1.3.5.3 | Atendimento de comentários | 2d | 2026-07-21 | 2026-07-23 | 88 |  |  | 36.15d | 0d | 0207 | PROCESS |
| 90 | 1.3.5.4 | Aprovação | 1d | 2026-07-23 | 2026-07-24 | 89 |  |  | 36.15d |  | 0207 | PROCESS |
| 91 | 1.3.6 | **ET-F0009-0207-MB-P-00001** | 7d | 2026-07-15 | 2026-07-23 |  |  |  | 34d |  | 0207 | PROCESS |
| 92 | 1.3.6.1 | Emissão Inicial | 3d | 2026-07-15 | 2026-07-17 |  |  |  | 34d | 0d | 0207 | PROCESS |
| 93 | 1.3.6.2 | Análise Tecnored | 1d | 2026-07-20 | 2026-07-20 | 92 |  |  | 37d | 0d | 0207 | PROCESS |
| 94 | 1.3.6.3 | Atendimento de comentários | 2d | 2026-07-21 | 2026-07-22 | 93 |  |  | 37d | 0d | 0207 | PROCESS |
| 95 | 1.3.6.4 | Aprovação | 1d | 2026-07-23 | 2026-07-23 | 94 |  |  | 37d |  | 0207 | PROCESS |
| 96 | 1.4 | **MECHANICAL** | 42.5d | 2026-07-15 | 2026-09-15 |  |  |  | 0d |  |  |  |
| 97 | 1.4.1 | **LE-F0009-0207-MB-M-00001** | 6d | 2026-07-15 | 2026-07-22 |  |  |  | 37d |  | 0207 | MECHANICAL |
| 98 | 1.4.1.1 | Emissão Inicial | 3d | 2026-07-15 | 2026-07-17 |  |  |  | 37d | 0d | 0207 | MECHANICAL |
| 99 | 1.4.1.2 | Análise Tecnored | 1d | 2026-07-20 | 2026-07-20 | 98 |  |  | 38d | 0d | 0207 | MECHANICAL |
| 100 | 1.4.1.3 | Atendimento de comentários | 1d | 2026-07-21 | 2026-07-21 | 99 |  |  | 38d | 0d | 0207 | MECHANICAL |
| 101 | 1.4.1.4 | Aprovação | 1d | 2026-07-22 | 2026-07-22 | 100 |  |  | 38d |  | 0207 | MECHANICAL |

| ID | WBS | Task | Duration | Start | Finish | Predecessors | Total slack | Free slack | COD_Projeto | Disciplina |
| --- | --- | --- | --- | --- | --- | --- | --- | --- | --- | --- |
| 102 | 1.4.2 | **MD-F0009-0207-MB-M-00001** | 6d | 2026-07-15 | 2026-07-22 |  | 38d |  | 0207 | MECHANICAL |
| 103 | 1.4.2.1 | Emissão Inicial | 3d | 2026-07-15 | 2026-07-17 |  | 38d | 0d | 0207 | MECHANICAL |
| 104 | 1.4.2.2 | Análise Tecnored | 1d | 2026-07-20 | 2026-07-20 | 103 | 38d | 0d | 0207 | MECHANICAL |
| 105 | 1.4.2.3 | Atendimento de comentários | 1d | 2026-07-21 | 2026-07-21 | 104 | 38d | 0d | 0207 | MECHANICAL |
| 106 | 1.4.2.4 | Aprovação | 1d | 2026-07-22 | 2026-07-22 | 105 | 38d |  | 0207 | MECHANICAL |
| 107 | 1.4.3 | **MC-F0009-0207-MB-M-00001** | 6d | 2026-07-15 | 2026-07-22 |  | 38d |  | 0207 | MECHANICAL |
| 108 | 1.4.3.1 | Emissão Inicial | 3d | 2026-07-15 | 2026-07-17 |  | 38d | 0d | 0207 | MECHANICAL |
| 109 | 1.4.3.2 | Análise Tecnored | 1d | 2026-07-20 | 2026-07-20 | 108 | 38d | 0d | 0207 | MECHANICAL |
| 110 | 1.4.3.3 | Atendimento de comentários | 1d | 2026-07-21 | 2026-07-21 | 109 | 38d | 0d | 0207 | MECHANICAL |
| 111 | 1.4.3.4 | Aprovação | 1d | 2026-07-22 | 2026-07-22 | 110 | 38d |  | 0207 | MECHANICAL |
| 112 | 1.4.4 | **PQ-F0009-0207-MB-M-00001** | 6d | 2026-07-15 | 2026-07-22 |  | 38d |  | 0207 | MECHANICAL |
| 113 | 1.4.4.1 | Emissão Inicial | 3d | 2026-07-15 | 2026-07-17 |  | 38d | 0d | 0207 | MECHANICAL |
| 114 | 1.4.4.2 | Análise Tecnored | 1d | 2026-07-20 | 2026-07-20 | 113 | 38d | 0d | 0207 | MECHANICAL |
| 115 | 1.4.4.3 | Atendimento de comentários | 1d | 2026-07-21 | 2026-07-21 | 114 | 38d | 0d | 0207 | MECHANICAL |
| 116 | 1.4.4.4 | Aprovação | 1d | 2026-07-22 | 2026-07-22 | 115 | 38d |  | 0207 | MECHANICAL |
| 117 | 1.4.5 | **AG-F0009-0207-MB-M-00000** | 5d | 2026-08-05 | 2026-08-11 |  | 1.5d |  | 0207 | MECHANICAL |
| 118 | 1.4.5.1 | Emissão Inicial | 2d | 2026-08-05 | 2026-08-06 | 183 | 1.5d | 0d | 0207 | MECHANICAL |
| 119 | 1.4.5.2 | Análise Tecnored | 1d | 2026-08-07 | 2026-08-07 | 118 | 24d | 0d | 0207 | MECHANICAL |
| 120 | 1.4.5.3 | Atendimento de comentários | 1d | 2026-08-10 | 2026-08-10 | 119 | 24d | 0d | 0207 | MECHANICAL |
| 121 | 1.4.5.4 | Aprovação | 1d | 2026-08-11 | 2026-08-11 | 120 | 24d |  | 0207 | MECHANICAL |
| 122 | 1.4.6 | **AG-F0009-0207-MB-M-00001** | 5d | 2026-08-05 | 2026-08-11 |  | 1.5d |  | 0207 | MECHANICAL |
| 123 | 1.4.6.1 | Emissão Inicial | 2d | 2026-08-05 | 2026-08-06 | 118SS | 1.5d | 0d | 0207 | MECHANICAL |
| 124 | 1.4.6.2 | Análise Tecnored | 1d | 2026-08-07 | 2026-08-07 | 123 | 24d | 0d | 0207 | MECHANICAL |
| 125 | 1.4.6.3 | Atendimento de comentários | 1d | 2026-08-10 | 2026-08-10 | 124 | 24d | 0d | 0207 | MECHANICAL |
| 126 | 1.4.6.4 | Aprovação | 1d | 2026-08-11 | 2026-08-11 | 125 | 24d |  | 0207 | MECHANICAL |

| ID | WBS | Task | Duration | Start | Finish | Predecessors | Total slack | Free slack | COD_Projeto | Disciplina |
| --- | --- | --- | --- | --- | --- | --- | --- | --- | --- | --- |
| 127 | 1.4.7 | **AG-F0009-0207-MB-M-00002** | 5d | 2026-08-07 | 2026-08-13 |  | 13d |  | 0207 | MECHANICAL |
| 128 | 1.4.7.1 | Emissão Inicial | 2d | 2026-08-07 | 2026-08-10 | 118 | 13d | 0d | 0207 | MECHANICAL |
| 129 | 1.4.7.2 | Análise Tecnored | 1d | 2026-08-11 | 2026-08-11 | 128 | 22d | 0d | 0207 | MECHANICAL |
| 130 | 1.4.7.3 | Atendimento de comentários | 1d | 2026-08-12 | 2026-08-12 | 129 | 22d | 0d | 0207 | MECHANICAL |
| 131 | 1.4.7.4 | Aprovação | 1d | 2026-08-13 | 2026-08-13 | 130 | 22d |  | 0207 | MECHANICAL |
| 132 | 1.4.8 | **AG-F0009-0207-MB-M-00003** | 5d | 2026-08-07 | 2026-08-13 |  | 1.5d |  | 0207 | MECHANICAL |
| 133 | 1.4.8.1 | Emissão Inicial | 2d | 2026-08-07 | 2026-08-10 | 123 | 1.5d | 0d | 0207 | MECHANICAL |
| 134 | 1.4.8.2 | Análise Tecnored | 1d | 2026-08-11 | 2026-08-11 | 133 | 22d | 0d | 0207 | MECHANICAL |
| 135 | 1.4.8.3 | Atendimento de comentários | 1d | 2026-08-12 | 2026-08-12 | 134 | 22d | 0d | 0207 | MECHANICAL |
| 136 | 1.4.8.4 | Aprovação | 1d | 2026-08-13 | 2026-08-13 | 135 | 22d |  | 0207 | MECHANICAL |
| 137 | 1.4.9 | **AG-F0009-0207-MB-M-00004** | 5d | 2026-08-11 | 2026-08-17 |  | 13d |  | 0207 | MECHANICAL |
| 138 | 1.4.9.1 | Emissão Inicial | 2d | 2026-08-11 | 2026-08-12 | 128 | 13d | 0d | 0207 | MECHANICAL |
| 139 | 1.4.9.2 | Análise Tecnored | 1d | 2026-08-13 | 2026-08-13 | 138 | 20d | 0d | 0207 | MECHANICAL |
| 140 | 1.4.9.3 | Atendimento de comentários | 1d | 2026-08-14 | 2026-08-14 | 139 | 20d | 0d | 0207 | MECHANICAL |
| 141 | 1.4.9.4 | Aprovação | 1d | 2026-08-17 | 2026-08-17 | 140 | 20d |  | 0207 | MECHANICAL |
| 142 | 1.4.10 | **ML-F0009-0207-MB-M-00000** | 6d | 2026-07-15 | 2026-07-22 |  | 0d |  | 0207 | MECHANICAL |
| 143 | 1.4.10.1 | Emissão Inicial | 3d | 2026-07-15 | 2026-07-17 |  | 0d |  | 0207 | MECHANICAL |
| 144 | 1.4.10.2 | Análise Tecnored | 1d | 2026-07-20 | 2026-07-20 | 143 | 38d | 0d | 0207 | MECHANICAL |
| 145 | 1.4.10.3 | Atendimento de comentários | 1d | 2026-07-21 | 2026-07-21 | 144 | 38d | 0d | 0207 | MECHANICAL |
| 146 | 1.4.10.4 | Aprovação | 1d | 2026-07-22 | 2026-07-22 | 145 | 38d |  | 0207 | MECHANICAL |
| 147 | 1.4.11 | **ML-F0009-0207-MB-M-00001** | 6d | 2026-07-15 | 2026-07-22 |  | 29d |  | 0207 | MECHANICAL |
| 148 | 1.4.11.1 | Emissão Inicial | 3d | 2026-07-15 | 2026-07-17 | 143SS | 29d | 0d | 0207 | MECHANICAL |
| 149 | 1.4.11.2 | Análise Tecnored | 1d | 2026-07-20 | 2026-07-20 | 148 | 38d | 0d | 0207 | MECHANICAL |
| 150 | 1.4.11.3 | Atendimento de comentários | 1d | 2026-07-21 | 2026-07-21 | 149 | 38d | 0d | 0207 | MECHANICAL |
| 151 | 1.4.11.4 | Aprovação | 1d | 2026-07-22 | 2026-07-22 | 150 | 38d |  | 0207 | MECHANICAL |

| ID | WBS | Task | Duration | Start | Finish | Predecessors | Total slack | Free slack | COD_Projeto | Disciplina |
| --- | --- | --- | --- | --- | --- | --- | --- | --- | --- | --- |
| 152 | 1.4.12 | **ML-F0009-0207-MB-M-00002** | 6d | 2026-07-20 | 2026-07-27 |  | 0d |  | 0207 | MECHANICAL |
| 153 | 1.4.12.1 | Emissão Inicial | 3d | 2026-07-20 | 2026-07-22 | 143 | 0d |  | 0207 | MECHANICAL |
| 154 | 1.4.12.2 | Análise Tecnored | 1d | 2026-07-23 | 2026-07-23 | 153 | 35d | 0d | 0207 | MECHANICAL |
| 155 | 1.4.12.3 | Atendimento de comentários | 1d | 2026-07-24 | 2026-07-24 | 154 | 35d | 0d | 0207 | MECHANICAL |
| 156 | 1.4.12.4 | Aprovação | 1d | 2026-07-27 | 2026-07-27 | 155 | 35d |  | 0207 | MECHANICAL |
| 157 | 1.4.13 | **ML-F0009-0207-MB-M-00003** | 6d | 2026-07-20 | 2026-07-27 |  | 29d |  | 0207 | MECHANICAL |
| 158 | 1.4.13.1 | Emissão Inicial | 3d | 2026-07-20 | 2026-07-22 | 148 | 29d | 0d | 0207 | MECHANICAL |
| 159 | 1.4.13.2 | Análise Tecnored | 1d | 2026-07-23 | 2026-07-23 | 158 | 35d | 0d | 0207 | MECHANICAL |
| 160 | 1.4.13.3 | Atendimento de comentários | 1d | 2026-07-24 | 2026-07-24 | 159 | 35d | 0d | 0207 | MECHANICAL |
| 161 | 1.4.13.4 | Aprovação | 1d | 2026-07-27 | 2026-07-27 | 160 | 35d |  | 0207 | MECHANICAL |
| 162 | 1.4.14 | **ML-F0009-0207-MB-M-00004** | 6d | 2026-07-23 | 2026-07-30 |  | 0d |  | 0207 | MECHANICAL |
| 163 | 1.4.14.1 | Emissão Inicial | 3d | 2026-07-23 | 2026-07-27 | 153 | 0d |  | 0207 | MECHANICAL |
| 164 | 1.4.14.2 | Análise Tecnored | 1d | 2026-07-28 | 2026-07-28 | 163 | 32d | 0d | 0207 | MECHANICAL |
| 165 | 1.4.14.3 | Atendimento de comentários | 1d | 2026-07-29 | 2026-07-29 | 164 | 32d | 0d | 0207 | MECHANICAL |
| 166 | 1.4.14.4 | Aprovação | 1d | 2026-07-30 | 2026-07-30 | 165 | 32d |  | 0207 | MECHANICAL |
| 167 | 1.4.15 | **ML-F0009-0207-MB-M-00005** | 6d | 2026-07-23 | 2026-07-30 |  | 29d |  | 0207 | MECHANICAL |
| 168 | 1.4.15.1 | Emissão Inicial | 3d | 2026-07-23 | 2026-07-27 | 158 | 29d | 0d | 0207 | MECHANICAL |
| 169 | 1.4.15.2 | Análise Tecnored | 1d | 2026-07-28 | 2026-07-28 | 168 | 32d | 0d | 0207 | MECHANICAL |
| 170 | 1.4.15.3 | Atendimento de comentários | 1d | 2026-07-29 | 2026-07-29 | 169 | 32d | 0d | 0207 | MECHANICAL |
| 171 | 1.4.15.4 | Aprovação | 1d | 2026-07-30 | 2026-07-30 | 170 | 32d |  | 0207 | MECHANICAL |
| 172 | 1.4.16 | **ML-F0009-0207-MB-M-00006** | 6d | 2026-07-28 | 2026-08-04 |  | 0d |  | 0207 | MECHANICAL |
| 173 | 1.4.16.1 | Emissão Inicial | 3d | 2026-07-28 | 2026-07-30 | 163 | 0d |  | 0207 | MECHANICAL |
| 174 | 1.4.16.2 | Análise Tecnored | 1d | 2026-07-31 | 2026-07-31 | 173 | 25d | 0d | 0207 | MECHANICAL |
| 175 | 1.4.16.3 | Atendimento de comentários | 1d | 2026-08-03 | 2026-08-03 | 174 | 25d | 0d | 0207 | MECHANICAL |
| 176 | 1.4.16.4 | Aprovação | 1d | 2026-08-04 | 2026-08-04 | 175 | 29d |  | 0207 | MECHANICAL |

| ID | WBS | Task | Duration | Start | Finish | Predecessors | Total slack | Free slack | COD_Projeto | Disciplina |
| --- | --- | --- | --- | --- | --- | --- | --- | --- | --- | --- |
| 177 | 1.4.17 | **ML-F0009-0207-MB-M-00007** | 6d | 2026-07-28 | 2026-08-04 |  | 29d |  | 0207 | MECHANICAL |
| 178 | 1.4.17.1 | Emissão Inicial | 3d | 2026-07-28 | 2026-07-30 | 168 | 29d | 0d | 0207 | MECHANICAL |
| 179 | 1.4.17.2 | Análise Tecnored | 1d | 2026-07-31 | 2026-07-31 | 178 | 29d | 0d | 0207 | MECHANICAL |
| 180 | 1.4.17.3 | Atendimento de comentários | 1d | 2026-08-03 | 2026-08-03 | 179 | 29d | 0d | 0207 | MECHANICAL |
| 181 | 1.4.17.4 | Aprovação | 1d | 2026-08-04 | 2026-08-04 | 180 | 29d |  | 0207 | MECHANICAL |
| 182 | 1.4.18 | **ML-F0009-0207-MB-M-00008** | 4d | 2026-07-31 | 2026-08-05 |  | 0d |  | 0207 | MECHANICAL |
| 183 | 1.4.18.1 | Emissão Inicial | 3d | 2026-07-31 | 2026-08-04 | 173 | 0d |  | 0207 | MECHANICAL |
| 184 | 1.4.18.2 | Análise Tecnored | 1d | 2026-08-05 | 2026-08-05 | 183 | 28d |  | 0207 | MECHANICAL |
| 185 | 1.4.18.3 | Atendimento de comentários | 1d | 2026-08-04 | 2026-08-04 | 303 | 28d | 0d | 0207 | MECHANICAL |
| 186 | 1.4.18.4 | Aprovação | 1d | 2026-08-05 | 2026-08-05 | 185 | 28d |  | 0207 | MECHANICAL |
| 187 | 1.4.19 | **AG-F0009-0207-MB-M-00005** | 5d | 2026-08-11 | 2026-08-17 |  | 1.5d |  | 0207 | MECHANICAL |
| 188 | 1.4.19.1 | Emissão Inicial | 2d | 2026-08-11 | 2026-08-12 | 133 | 1.5d | 0d | 0207 | MECHANICAL |
| 189 | 1.4.19.2 | Análise Tecnored | 1d | 2026-08-13 | 2026-08-13 | 188 | 20d | 0d | 0207 | MECHANICAL |
| 190 | 1.4.19.3 | Atendimento de comentários | 1d | 2026-08-14 | 2026-08-14 | 189 | 20d | 0d | 0207 | MECHANICAL |
| 191 | 1.4.19.4 | Aprovação | 1d | 2026-08-17 | 2026-08-17 | 190 | 20d |  | 0207 | MECHANICAL |
| 192 | 1.4.20 | **AG-F0009-0207-MB-M-00006** | 5d | 2026-08-13 | 2026-08-19 |  | 18d |  | 0207 | MECHANICAL |
| 193 | 1.4.20.1 | Emissão Inicial | 2d | 2026-08-13 | 2026-08-14 | 188 | 18d | 0d | 0207 | MECHANICAL |
| 194 | 1.4.20.2 | Análise Tecnored | 1d | 2026-08-17 | 2026-08-17 | 193 | 18d | 0d | 0207 | MECHANICAL |
| 195 | 1.4.20.3 | Atendimento de comentários | 1d | 2026-08-18 | 2026-08-18 | 194 | 18d | 0d | 0207 | MECHANICAL |
| 196 | 1.4.20.4 | Aprovação | 1d | 2026-08-19 | 2026-08-19 | 195 | 18d |  | 0207 | MECHANICAL |
| 197 | 1.4.21 | **PL-F0009-0207-MB-M-00001** | 5d | 2026-08-21 | 2026-08-27 |  | 1.5d |  | 0207 | MECHANICAL |
| 198 | 1.4.21.1 | Emissão Inicial | 2d | 2026-08-21 | 2026-08-24 | 253 | 1.5d | 0d | 0207 | MECHANICAL |
| 199 | 1.4.21.2 | Análise Tecnored | 1d | 2026-08-25 | 2026-08-25 | 198 | 12d | 0d | 0207 | MECHANICAL |
| 200 | 1.4.21.3 | Atendimento de comentários | 1d | 2026-08-26 | 2026-08-26 | 199 | 12d | 0d | 0207 | MECHANICAL |
| 201 | 1.4.21.4 | Aprovação | 1d | 2026-08-27 | 2026-08-27 | 200 | 12d |  | 0207 | MECHANICAL |

| ID | WBS | Task | Duration | Start | Finish | Predecessors | Total slack | Free slack | COD_Projeto | Disciplina |
| --- | --- | --- | --- | --- | --- | --- | --- | --- | --- | --- |
| 202 | 1.4.22 | **AG-F0009-0207-MB-M-00007** | 6d | 2026-08-13 | 2026-08-20 |  | 13d |  | 0207 | MECHANICAL |
| 203 | 1.4.22.1 | Emissão Inicial | 3d | 2026-08-13 | 2026-08-17 | 138 | 13d | 0d | 0207 | MECHANICAL |
| 204 | 1.4.22.2 | Análise Tecnored | 1d | 2026-08-18 | 2026-08-18 | 203 | 17d | 0d | 0207 | MECHANICAL |
| 205 | 1.4.22.3 | Atendimento de comentários | 1d | 2026-08-19 | 2026-08-19 | 204 | 17d | 0d | 0207 | MECHANICAL |
| 206 | 1.4.22.4 | Aprovação | 1d | 2026-08-20 | 2026-08-20 | 205 | 17d |  | 0207 | MECHANICAL |
| 207 | 1.4.23 | **PL-F0009-0207-MB-M-00002** | 5d | 2026-08-21 | 2026-08-27 |  | 8d |  | 0207 | MECHANICAL |
| 208 | 1.4.23.1 | Emissão Inicial | 2d | 2026-08-21 | 2026-08-24 | 198SS | 8d | 0d | 0207 | MECHANICAL |
| 209 | 1.4.23.2 | Análise Tecnored | 1d | 2026-08-25 | 2026-08-25 | 208 | 12d | 0d | 0207 | MECHANICAL |
| 210 | 1.4.23.3 | Atendimento de comentários | 1d | 2026-08-26 | 2026-08-26 | 209 | 12d | 0d | 0207 | MECHANICAL |
| 211 | 1.4.23.4 | Aprovação | 1d | 2026-08-27 | 2026-08-27 | 210 | 12d |  | 0207 | MECHANICAL |
| 212 | 1.4.24 | **AG-F0009-0207-MB-M-00008** | 5d | 2026-08-13 | 2026-08-19 |  | 1.5d |  | 0207 | MECHANICAL |
| 213 | 1.4.24.1 | Emissão Inicial | 2d | 2026-08-13 | 2026-08-14 | 188 | 1.5d | 0d | 0207 | MECHANICAL |
| 214 | 1.4.24.2 | Análise Tecnored | 1d | 2026-08-17 | 2026-08-17 | 213 | 18d | 0d | 0207 | MECHANICAL |
| 215 | 1.4.24.3 | Atendimento de comentários | 1d | 2026-08-18 | 2026-08-18 | 214 | 18d | 0d | 0207 | MECHANICAL |
| 216 | 1.4.24.4 | Aprovação | 1d | 2026-08-19 | 2026-08-19 | 215 | 18d |  | 0207 | MECHANICAL |
| 217 | 1.4.25 | **PL-F0009-0207-MB-M-00003** | 5d | 2026-08-25 | 2026-08-31 |  | 8d |  | 0207 | MECHANICAL |
| 218 | 1.4.25.1 | Emissão Inicial | 2d | 2026-08-25 | 2026-08-26 | 208 | 8d | 0d | 0207 | MECHANICAL |
| 219 | 1.4.25.2 | Análise Tecnored | 1d | 2026-08-27 | 2026-08-27 | 218 | 10d | 0d | 0207 | MECHANICAL |
| 220 | 1.4.25.3 | Atendimento de comentários | 1d | 2026-08-28 | 2026-08-28 | 219 | 10d | 0d | 0207 | MECHANICAL |
| 221 | 1.4.25.4 | Aprovação | 1d | 2026-08-31 | 2026-08-31 | 220 | 10d |  | 0207 | MECHANICAL |
| 222 | 1.4.26 | **AG-F0009-0207-MB-M-00009** | 5d | 2026-08-18 | 2026-08-24 |  | 13d |  | 0207 | MECHANICAL |
| 223 | 1.4.26.1 | Emissão Inicial | 2d | 2026-08-18 | 2026-08-19 | 203 | 13d | 0d | 0207 | MECHANICAL |
| 224 | 1.4.26.2 | Análise Tecnored | 1d | 2026-08-20 | 2026-08-20 | 223 | 15d | 0d | 0207 | MECHANICAL |
| 225 | 1.4.26.3 | Atendimento de comentários | 1d | 2026-08-21 | 2026-08-21 | 224 | 15d | 0d | 0207 | MECHANICAL |
| 226 | 1.4.26.4 | Aprovação | 1d | 2026-08-24 | 2026-08-24 | 225 | 15d |  | 0207 | MECHANICAL |

| ID | WBS | Task | Duration | Start | Finish | Predecessors | Total slack | Free slack | COD_Projeto | Disciplina |
| --- | --- | --- | --- | --- | --- | --- | --- | --- | --- | --- |
| 227 | 1.4.27 | **PL-F0009-0207-MB-M-00004** | 5d | 2026-08-25 | 2026-08-31 |  | 1.5d |  | 0207 | MECHANICAL |
| 228 | 1.4.27.1 | Emissão Inicial | 2d | 2026-08-25 | 2026-08-26 | 198 | 1.5d | 0d | 0207 | MECHANICAL |
| 229 | 1.4.27.2 | Análise Tecnored | 1d | 2026-08-27 | 2026-08-27 | 228 | 10d | 0d | 0207 | MECHANICAL |
| 230 | 1.4.27.3 | Atendimento de comentários | 1d | 2026-08-28 | 2026-08-28 | 229 | 10d | 0d | 0207 | MECHANICAL |
| 231 | 1.4.27.4 | Aprovação | 1d | 2026-08-31 | 2026-08-31 | 230 | 10d |  | 0207 | MECHANICAL |
| 232 | 1.4.28 | **AG-F0009-0207-MB-M-00010** | 5d | 2026-08-17 | 2026-08-21 |  | 1.5d |  | 0207 | MECHANICAL |
| 233 | 1.4.28.1 | Emissão Inicial | 2d | 2026-08-17 | 2026-08-18 | 213 | 1.5d | 0d | 0207 | MECHANICAL |
| 234 | 1.4.28.2 | Análise Tecnored | 1d | 2026-08-19 | 2026-08-19 | 233 | 16d | 0d | 0207 | MECHANICAL |
| 235 | 1.4.28.3 | Atendimento de comentários | 1d | 2026-08-20 | 2026-08-20 | 234 | 16d | 0d | 0207 | MECHANICAL |
| 236 | 1.4.28.4 | Aprovação | 1d | 2026-08-21 | 2026-08-21 | 235 | 16d |  | 0207 | MECHANICAL |
| 237 | 1.4.29 | **PL-F0009-0207-MB-M-00005** | 5d | 2026-08-25 | 2026-08-31 |  | 10d |  | 0207 | MECHANICAL |
| 238 | 1.4.29.1 | Emissão Inicial | 2d | 2026-08-25 | 2026-08-26 | 208 | 10d | 0d | 0207 | MECHANICAL |
| 239 | 1.4.29.2 | Análise Tecnored | 1d | 2026-08-27 | 2026-08-27 | 238 | 10d | 0d | 0207 | MECHANICAL |
| 240 | 1.4.29.3 | Atendimento de comentários | 1d | 2026-08-28 | 2026-08-28 | 239 | 10d | 0d | 0207 | MECHANICAL |
| 241 | 1.4.29.4 | Aprovação | 1d | 2026-08-31 | 2026-08-31 | 240 | 10d |  | 0207 | MECHANICAL |
| 242 | 1.4.30 | **AG-F0009-0207-MB-M-00011** | 5d | 2026-08-20 | 2026-08-26 |  | 13d |  | 0207 | MECHANICAL |
| 243 | 1.4.30.1 | Emissão Inicial | 2d | 2026-08-20 | 2026-08-21 | 223 | 13d | 0d | 0207 | MECHANICAL |
| 244 | 1.4.30.2 | Análise Tecnored | 1d | 2026-08-24 | 2026-08-24 | 243 | 13d | 0d | 0207 | MECHANICAL |
| 245 | 1.4.30.3 | Atendimento de comentários | 1d | 2026-08-25 | 2026-08-25 | 244 | 13d | 0d | 0207 | MECHANICAL |
| 246 | 1.4.30.4 | Aprovação | 1d | 2026-08-26 | 2026-08-26 | 245 | 13d |  | 0207 | MECHANICAL |
| 247 | 1.4.31 | **PL-F0009-0207-MB-M-00006** | 5d | 2026-08-27 | 2026-09-02 |  | 8d |  | 0207 | MECHANICAL |
| 248 | 1.4.31.1 | Emissão Inicial | 2d | 2026-08-27 | 2026-08-28 | 218 | 8d | 0d | 0207 | MECHANICAL |
| 249 | 1.4.31.2 | Análise Tecnored | 1d | 2026-08-31 | 2026-08-31 | 248 | 8d | 0d | 0207 | MECHANICAL |
| 250 | 1.4.31.3 | Atendimento de comentários | 1d | 2026-09-01 | 2026-09-01 | 249 | 8d | 0d | 0207 | MECHANICAL |
| 251 | 1.4.31.4 | Aprovação | 1d | 2026-09-02 | 2026-09-02 | 250 | 8d |  | 0207 | MECHANICAL |

| ID | WBS | Task | Duration | Start | Finish | Predecessors | Total slack | Free slack | COD_Projeto | Disciplina |
| --- | --- | --- | --- | --- | --- | --- | --- | --- | --- | --- |
| 252 | 1.4.32 | **AG-F0009-0207-MB-M-00012** | 5d | 2026-08-19 | 2026-08-25 |  | 1.5d |  | 0207 | MECHANICAL |
| 253 | 1.4.32.1 | Emissão Inicial | 2d | 2026-08-19 | 2026-08-20 | 233 | 1.5d | 0d | 0207 | MECHANICAL |
| 254 | 1.4.32.2 | Análise Tecnored | 1d | 2026-08-21 | 2026-08-21 | 253 | 14d | 0d | 0207 | MECHANICAL |
| 255 | 1.4.32.3 | Atendimento de comentários | 1d | 2026-08-24 | 2026-08-24 | 254 | 14d | 0d | 0207 | MECHANICAL |
| 256 | 1.4.32.4 | Aprovação | 1d | 2026-08-25 | 2026-08-25 | 255 | 14d |  | 0207 | MECHANICAL |
| 257 | 1.4.33 | **PL-F0009-0207-MB-M-00007** | 5d | 2026-08-27 | 2026-09-02 |  | 1.5d |  | 0207 | MECHANICAL |
| 258 | 1.4.33.1 | Emissão Inicial | 2d | 2026-08-27 | 2026-08-28 | 228 | 1.5d | 0d | 0207 | MECHANICAL |
| 259 | 1.4.33.2 | Análise Tecnored | 1d | 2026-08-31 | 2026-08-31 | 258 | 8d | 0d | 0207 | MECHANICAL |
| 260 | 1.4.33.3 | Atendimento de comentários | 1d | 2026-09-01 | 2026-09-01 | 259 | 8d | 0d | 0207 | MECHANICAL |
| 261 | 1.4.33.4 | Aprovação | 1d | 2026-09-02 | 2026-09-02 | 260 | 8d |  | 0207 | MECHANICAL |
| 262 | 1.4.34 | **FD-F0009-0207-MB-M-00001** | 2.5d | 2026-08-31 | 2026-09-02 |  | 1.5d |  | 0207 | MECHANICAL |
| 263 | 1.4.34.1 | Emissão Inicial | 1d | 2026-08-31 | 2026-08-31 | 258 | 1.5d | 0d | 0207 | MECHANICAL |
| 264 | 1.4.34.2 | Análise Tecnored | 0.5d | 2026-09-01 | 2026-09-01 | 263 | 8.5d | 0d | 0207 | MECHANICAL |
| 265 | 1.4.34.3 | Atendimento de comentários | 0.5d | 2026-09-01 | 2026-09-01 | 264 | 8.5d | 0d | 0207 | MECHANICAL |
| 266 | 1.4.34.4 | Aprovação | 0.5d | 2026-09-02 | 2026-09-02 | 265 | 8.5d |  | 0207 | MECHANICAL |
| 267 | 1.4.35 | **FD-F0009-0207-MB-M-00002** | 2.5d | 2026-09-01 | 2026-09-03 |  |  |  | 0207 | MECHANICAL |
| 268 | 1.4.35.1 | Emissão Inicial | 1d | 2026-09-01 | 2026-09-01 | 263 | 1.5d | 0d | 0207 | MECHANICAL |
| 269 | 1.4.35.2 | Análise Tecnored | 0.5d | 2026-09-02 | 2026-09-02 | 268 | 7.5d | 0d | 0207 | MECHANICAL |
| 270 | 1.4.35.3 | Atendimento de comentários | 0.5d | 2026-09-02 | 2026-09-02 | 269 | 7.5d | 0d | 0207 | MECHANICAL |
| 271 | 1.4.35.4 | Aprovação | 0.5d | 2026-09-03 | 2026-09-03 | 270 | 7.5d |  | 0207 | MECHANICAL |
| 272 | 1.4.36 | **FD-F0009-0207-MB-M-00003** | 2.5d | 2026-09-02 | 2026-09-04 |  |  |  | 0207 | MECHANICAL |
| 273 | 1.4.36.1 | Emissão Inicial | 1d | 2026-09-02 | 2026-09-02 | 268 | 1.5d | 0d | 0207 | MECHANICAL |
| 274 | 1.4.36.2 | Análise Tecnored | 0.5d | 2026-09-03 | 2026-09-03 | 273 | 6.5d | 0d | 0207 | MECHANICAL |
| 275 | 1.4.36.3 | Atendimento de comentários | 0.5d | 2026-09-03 | 2026-09-03 | 274 | 6.5d | 0d | 0207 | MECHANICAL |
| 276 | 1.4.36.4 | Aprovação | 0.5d | 2026-09-04 | 2026-09-04 | 275 | 6.5d |  | 0207 | MECHANICAL |

| ID | WBS | Task | Duration | Start | Finish | Predecessors | Total slack | Free slack | COD_Projeto | Disciplina |
| --- | --- | --- | --- | --- | --- | --- | --- | --- | --- | --- |
| 277 | 1.4.37 | **FD-F0009-0207-MB-M-00004** | 2.5d | 2026-09-03 | 2026-09-09 |  |  |  | 0207 | MECHANICAL |
| 278 | 1.4.37.1 | Emissão Inicial | 1d | 2026-09-03 | 2026-09-03 | 273 | 1.5d | 0d | 0207 | MECHANICAL |
| 279 | 1.4.37.2 | Análise Tecnored | 0.5d | 2026-09-04 | 2026-09-04 | 278 | 5.5d | 0d | 0207 | MECHANICAL |
| 280 | 1.4.37.3 | Atendimento de comentários | 0.5d | 2026-09-04 | 2026-09-04 | 279 | 5.5d | 0d | 0207 | MECHANICAL |
| 281 | 1.4.37.4 | Aprovação | 0.5d | 2026-09-09 | 2026-09-09 | 280 | 5.5d |  | 0207 | MECHANICAL |
| 282 | 1.4.38 | **FD-F0009-0207-MB-M-00005** | 2.5d | 2026-09-04 | 2026-09-10 |  |  |  | 0207 | MECHANICAL |
| 283 | 1.4.38.1 | Emissão Inicial | 1d | 2026-09-04 | 2026-09-04 | 278 | 1.5d | 0d | 0207 | MECHANICAL |
| 284 | 1.4.38.2 | Análise Tecnored | 0.5d | 2026-09-09 | 2026-09-09 | 283 | 4.5d | 0d | 0207 | MECHANICAL |
| 285 | 1.4.38.3 | Atendimento de comentários | 0.5d | 2026-09-09 | 2026-09-09 | 284 | 4.5d | 0d | 0207 | MECHANICAL |
| 286 | 1.4.38.4 | Aprovação | 0.5d | 2026-09-10 | 2026-09-10 | 285 | 4.5d |  | 0207 | MECHANICAL |
| 287 | 1.4.39 | **FD-F0009-0207-MB-M-00006** | 2.5d | 2026-09-09 | 2026-09-11 |  |  |  | 0207 | MECHANICAL |
| 288 | 1.4.39.1 | Emissão Inicial | 1d | 2026-09-09 | 2026-09-09 | 283 | 1.5d | 0d | 0207 | MECHANICAL |
| 289 | 1.4.39.2 | Análise Tecnored | 0.5d | 2026-09-10 | 2026-09-10 | 288 | 3.5d | 0d | 0207 | MECHANICAL |
| 290 | 1.4.39.3 | Atendimento de comentários | 0.5d | 2026-09-10 | 2026-09-10 | 289 | 3.5d | 0d | 0207 | MECHANICAL |
| 291 | 1.4.39.4 | Aprovação | 0.5d | 2026-09-11 | 2026-09-11 | 290 | 3.5d |  | 0207 | MECHANICAL |
| 292 | 1.4.40 | **FD-F0009-0207-MB-M-00007** | 2.5d | 2026-09-10 | 2026-09-14 |  |  |  | 0207 | MECHANICAL |
| 293 | 1.4.40.1 | Emissão Inicial | 1d | 2026-09-10 | 2026-09-10 | 288 | 1.5d | 0d | 0207 | MECHANICAL |
| 294 | 1.4.40.2 | Análise Tecnored | 0.5d | 2026-09-11 | 2026-09-11 | 293 | 2.5d | 0d | 0207 | MECHANICAL |
| 295 | 1.4.40.3 | Atendimento de comentários | 0.5d | 2026-09-11 | 2026-09-11 | 294 | 2.5d | 0d | 0207 | MECHANICAL |
| 296 | 1.4.40.4 | Aprovação | 0.5d | 2026-09-14 | 2026-09-14 | 295 | 2.5d |  | 0207 | MECHANICAL |
| 297 | 1.4.41 | **FD-F0009-0207-MB-M-00008** | 2.5d | 2026-09-11 | 2026-09-15 |  |  |  | 0207 | MECHANICAL |
| 298 | 1.4.41.1 | Emissão Inicial | 1d | 2026-09-11 | 2026-09-11 | 293 | 1.5d | 0d | 0207 | MECHANICAL |
| 299 | 1.4.41.2 | Análise Tecnored | 0.5d | 2026-09-14 | 2026-09-14 | 298 | 1.5d | 0d | 0207 | MECHANICAL |
| 300 | 1.4.41.3 | Atendimento de comentários | 0.5d | 2026-09-14 | 2026-09-14 | 299 | 1.5d | 0d | 0207 | MECHANICAL |
| 301 | 1.4.41.4 | Aprovação | 0.5d | 2026-09-15 | 2026-09-15 | 300 | 1.5d |  | 0207 | MECHANICAL |

| ID | WBS | Task | Duration | Start | Finish | Predecessors | Total slack | Free slack | COD_Projeto | Disciplina |
| --- | --- | --- | --- | --- | --- | --- | --- | --- | --- | --- |
| 302 | 1.4.42 | **RL-F0009-0207-MB-M-00001** | 5d | 2026-07-31 | 2026-08-06 |  | 27d |  | 0207 | MECHANICAL |
| 303 | 1.4.42.1 | Emissão Inicial | 2d | 2026-07-31 | 2026-08-03 | 173 | 27d | 0d | 0207 | MECHANICAL |
| 304 | 1.4.42.2 | Análise Tecnored | 1d | 2026-08-04 | 2026-08-04 | 303 | 27d | 0d | 0207 | MECHANICAL |
| 305 | 1.4.42.3 | Atendimento de comentários | 1d | 2026-08-05 | 2026-08-05 | 304 | 27d | 0d | 0207 | MECHANICAL |
| 306 | 1.4.42.4 | Aprovação | 1d | 2026-08-06 | 2026-08-06 | 305 | 27d |  | 0207 | MECHANICAL |
| 307 | 1.4.43 | **RL-F0009-0207-MB-M-00002** | 5d | 2026-08-04 | 2026-08-10 |  | 25d |  | 0207 | MECHANICAL |
| 308 | 1.4.43.1 | Emissão Inicial | 2d | 2026-08-04 | 2026-08-05 | 175 | 25d | 0d | 0207 | MECHANICAL |
| 309 | 1.4.43.2 | Análise Tecnored | 1d | 2026-08-06 | 2026-08-06 | 308 | 25d | 0d | 0207 | MECHANICAL |
| 310 | 1.4.43.3 | Atendimento de comentários | 1d | 2026-08-07 | 2026-08-07 | 309 | 25d | 0d | 0207 | MECHANICAL |
| 311 | 1.4.43.4 | Aprovação | 1d | 2026-08-10 | 2026-08-10 | 310 | 25d |  | 0207 | MECHANICAL |
| 312 | 1.5 | **UTILITIES SYSTEMS** | 15d | 2026-07-15 | 2026-08-05 |  | 23.15d |  |  |  |
| 313 | 1.5.1 | **DB-F0009-0207-MB-U-00001** | 4d | 2026-07-15 | 2026-07-21 |  | 23.15d |  | 0207 | UTILITIES SYSTEMS |
| 314 | 1.5.1.1 | Emissão Inicial | 1d | 2026-07-15 | 2026-07-16 | 77 | 23.15d | 0d | 0207 | UTILITIES SYSTEMS |
| 315 | 1.5.1.2 | Análise Tecnored | 1d | 2026-07-16 | 2026-07-17 | 314 | 39.15d | 0d | 0207 | UTILITIES SYSTEMS |
| 316 | 1.5.1.3 | Atendimento de comentários | 1d | 2026-07-17 | 2026-07-20 | 315 | 39.15d | 0d | 0207 | UTILITIES SYSTEMS |
| 317 | 1.5.1.4 | Aprovação | 1d | 2026-07-20 | 2026-07-21 | 316 | 39.15d |  | 0207 | UTILITIES SYSTEMS |
| 318 | 1.5.2 | **FG-F0009-0000-GE-U-00001** | 4d | 2026-07-16 | 2026-07-22 |  | 23.15d |  | 0207 | UTILITIES SYSTEMS |
| 319 | 1.5.2.1 | Emissão Inicial | 1d | 2026-07-16 | 2026-07-17 | 314 | 23.15d | 0d | 0207 | UTILITIES SYSTEMS |
| 320 | 1.5.2.2 | Análise Tecnored | 1d | 2026-07-17 | 2026-07-20 | 319 | 38.15d | 0d | 0207 | UTILITIES SYSTEMS |
| 321 | 1.5.2.3 | Atendimento de comentários | 1d | 2026-07-20 | 2026-07-21 | 320 | 38.15d | 0d | 0207 | UTILITIES SYSTEMS |
| 322 | 1.5.2.4 | Aprovação | 1d | 2026-07-21 | 2026-07-22 | 321 | 38.15d |  | 0207 | UTILITIES SYSTEMS |
| 323 | 1.5.3 | **FG-F0009-0000-GE-U-00002** | 4d | 2026-07-17 | 2026-07-23 |  | 23.15d |  | 0207 | UTILITIES SYSTEMS |
| 324 | 1.5.3.1 | Emissão Inicial | 1d | 2026-07-17 | 2026-07-20 | 319 | 23.15d | 0d | 0207 | UTILITIES SYSTEMS |
| 325 | 1.5.3.2 | Análise Tecnored | 1d | 2026-07-20 | 2026-07-21 | 324 | 37.15d | 0d | 0207 | UTILITIES SYSTEMS |
| 326 | 1.5.3.3 | Atendimento de comentários | 1d | 2026-07-21 | 2026-07-22 | 325 | 37.15d | 0d | 0207 | UTILITIES SYSTEMS |
| 327 | 1.5.3.4 | Aprovação | 1d | 2026-07-22 | 2026-07-23 | 326 | 37.15d |  | 0207 | UTILITIES SYSTEMS |

| ID | WBS | Task | Duration | Start | Finish | Predecessors | Total slack | Free slack | COD_Projeto | Disciplina |
| --- | --- | --- | --- | --- | --- | --- | --- | --- | --- | --- |
| 328 | 1.5.4 | **FG-F0009-0000-GE-U-00003** | 4d | 2026-07-20 | 2026-07-24 |  | 23.15d |  | 0207 | UTILITIES SYSTEMS |
| 329 | 1.5.4.1 | Emissão Inicial | 1d | 2026-07-20 | 2026-07-21 | 324 | 23.15d | 0d | 0207 | UTILITIES SYSTEMS |
| 330 | 1.5.4.2 | Análise Tecnored | 1d | 2026-07-21 | 2026-07-22 | 329 | 36.15d | 0d | 0207 | UTILITIES SYSTEMS |
| 331 | 1.5.4.3 | Atendimento de comentários | 1d | 2026-07-22 | 2026-07-23 | 330 | 36.15d | 0d | 0207 | UTILITIES SYSTEMS |
| 332 | 1.5.4.4 | Aprovação | 1d | 2026-07-23 | 2026-07-24 | 331 | 36.15d |  | 0207 | UTILITIES SYSTEMS |
| 333 | 1.5.5 | **FG-F0009-0000-GE-U-00004** | 4d | 2026-07-21 | 2026-07-27 |  | 23.15d |  | 0207 | UTILITIES SYSTEMS |
| 334 | 1.5.5.1 | Emissão Inicial | 1d | 2026-07-21 | 2026-07-22 | 329 | 23.15d | 0d | 0207 | UTILITIES SYSTEMS |
| 335 | 1.5.5.2 | Análise Tecnored | 1d | 2026-07-22 | 2026-07-23 | 334 | 35.15d | 0d | 0207 | UTILITIES SYSTEMS |
| 336 | 1.5.5.3 | Atendimento de comentários | 1d | 2026-07-23 | 2026-07-24 | 335 | 35.15d | 0d | 0207 | UTILITIES SYSTEMS |
| 337 | 1.5.5.4 | Aprovação | 1d | 2026-07-24 | 2026-07-27 | 336 | 35.15d |  | 0207 | UTILITIES SYSTEMS |
| 338 | 1.5.6 | **MC-F0009-0207-MB-U-00001** | 6d | 2026-07-22 | 2026-07-30 |  | 23.15d |  | 0207 | UTILITIES SYSTEMS |
| 339 | 1.5.6.1 | Emissão Inicial | 3d | 2026-07-22 | 2026-07-27 | 334 | 23.15d | 0d | 0207 | UTILITIES SYSTEMS |
| 340 | 1.5.6.2 | Análise Tecnored | 1d | 2026-07-27 | 2026-07-28 | 339 | 32.15d | 0d | 0207 | UTILITIES SYSTEMS |
| 341 | 1.5.6.3 | Atendimento de comentários | 1d | 2026-07-28 | 2026-07-29 | 340 | 32.15d | 0d | 0207 | UTILITIES SYSTEMS |
| 342 | 1.5.6.4 | Aprovação | 1d | 2026-07-29 | 2026-07-30 | 341 | 32.15d |  | 0207 | UTILITIES SYSTEMS |
| 343 | 1.5.7 | **ET-F0009-0207-MB-U-00001** | 7d | 2026-07-27 | 2026-08-05 |  | 28.15d |  | 0207 | UTILITIES SYSTEMS |
| 344 | 1.5.7.1 | Emissão Inicial | 4d | 2026-07-27 | 2026-07-31 | 339 | 28.15d | 0d | 0207 | UTILITIES SYSTEMS |
| 345 | 1.5.7.2 | Análise Tecnored | 1d | 2026-07-31 | 2026-08-03 | 344 | 28.15d | 0d | 0207 | UTILITIES SYSTEMS |
| 346 | 1.5.7.3 | Atendimento de comentários | 1d | 2026-08-03 | 2026-08-04 | 345 | 28.15d | 0d | 0207 | UTILITIES SYSTEMS |
| 347 | 1.5.7.4 | Aprovação | 1d | 2026-08-04 | 2026-08-05 | 346 | 28.15d |  | 0207 | UTILITIES SYSTEMS |
| 348 | 1.5.8 | **MD-F0009-0207-MB-U-00001** | 4d | 2026-07-27 | 2026-07-31 |  | 28.15d |  | 0207 | UTILITIES SYSTEMS |
| 349 | 1.5.8.1 | Emissão Inicial | 1d | 2026-07-27 | 2026-07-28 | 339 | 28.15d | 0d | 0207 | UTILITIES SYSTEMS |
| 350 | 1.5.8.2 | Análise Tecnored | 1d | 2026-07-28 | 2026-07-29 | 349 | 31.15d | 0d | 0207 | UTILITIES SYSTEMS |
| 351 | 1.5.8.3 | Atendimento de comentários | 1d | 2026-07-29 | 2026-07-30 | 350 | 31.15d | 0d | 0207 | UTILITIES SYSTEMS |
| 352 | 1.5.8.4 | Aprovação | 1d | 2026-07-30 | 2026-07-31 | 351 | 31.15d |  | 0207 | UTILITIES SYSTEMS |

| ID | WBS | Task | Duration | Start | Finish | Predecessors | Total slack | Free slack | COD_Projeto | Disciplina |
| --- | --- | --- | --- | --- | --- | --- | --- | --- | --- | --- |
| 353 | 1.6 | **PIPING** | 20.85d | 2026-07-15 | 2026-08-12 |  | 23.15d |  |  |  |
| 354 | 1.6.1 | **ML-F0009-0207-MB-T-00001** | 5d | 2026-07-27 | 2026-08-03 |  | 23.15d |  | 0207 | PIPING |
| 355 | 1.6.1.1 | Emissão Inicial | 2d | 2026-07-27 | 2026-07-29 | 339 | 23.15d | 0d | 0207 | PIPING |
| 356 | 1.6.1.2 | Análise Tecnored | 1d | 2026-07-29 | 2026-07-30 | 355 | 30.15d | 0d | 0207 | PIPING |
| 357 | 1.6.1.3 | Atendimento de comentários | 1d | 2026-07-30 | 2026-07-31 | 356 | 30.15d | 0d | 0207 | PIPING |
| 358 | 1.6.1.4 | Aprovação | 1d | 2026-07-31 | 2026-08-03 | 357 | 30.15d |  | 0207 | PIPING |
| 359 | 1.6.2 | **ML-F0009-0207-MB-T-00002** | 5d | 2026-07-27 | 2026-08-03 |  | 29.15d |  | 0207 | PIPING |
| 360 | 1.6.2.1 | Emissão Inicial | 2d | 2026-07-27 | 2026-07-29 | 339 | 29.15d | 0d | 0207 | PIPING |
| 361 | 1.6.2.2 | Análise Tecnored | 1d | 2026-07-29 | 2026-07-30 | 360 | 30.15d | 0d | 0207 | PIPING |
| 362 | 1.6.2.3 | Atendimento de comentários | 1d | 2026-07-30 | 2026-07-31 | 361 | 30.15d | 0d | 0207 | PIPING |
| 363 | 1.6.2.4 | Aprovação | 1d | 2026-07-31 | 2026-08-03 | 362 | 30.15d |  | 0207 | PIPING |
| 364 | 1.6.3 | **ML-F0009-0207-MB-T-00003** | 5d | 2026-07-29 | 2026-08-05 |  | 23.15d |  | 0207 | PIPING |
| 365 | 1.6.3.1 | Emissão Inicial | 2d | 2026-07-29 | 2026-07-31 | 355 | 23.15d | 0d | 0207 | PIPING |
| 366 | 1.6.3.2 | Análise Tecnored | 1d | 2026-07-31 | 2026-08-03 | 365 | 28.15d | 0d | 0207 | PIPING |
| 367 | 1.6.3.3 | Atendimento de comentários | 1d | 2026-08-03 | 2026-08-04 | 366 | 28.15d | 0d | 0207 | PIPING |
| 368 | 1.6.3.4 | Aprovação | 1d | 2026-08-04 | 2026-08-05 | 367 | 28.15d |  | 0207 | PIPING |
| 369 | 1.6.4 | **AG-F0009-0000-MB-T-00001** | 14.85d | 2026-07-15 | 2026-08-04 |  | 29.15d |  | 0207 | PIPING |
| 370 | 1.6.4.1 | Emissão Inicial | 5d | 2026-07-15 | 2026-07-21 |  | 31d | 0d | 0207 | PIPING |
| 371 | 1.6.4.2 | Análise Tecnored | 1d | 2026-07-29 | 2026-07-30 | 360 | 29.15d | 0d | 0207 | PIPING |
| 372 | 1.6.4.3 | Atendimento de comentários | 2d | 2026-07-30 | 2026-08-03 | 371 | 29.15d | 0d | 0207 | PIPING |
| 373 | 1.6.4.4 | Aprovação | 1d | 2026-08-03 | 2026-08-04 | 372 | 29.15d |  | 0207 | PIPING |
| 374 | 1.6.5 | **AG-F0009-0000-MB-T-00002** | 8d | 2026-07-31 | 2026-08-12 |  | 23.15d |  | 0207 | PIPING |
| 375 | 1.6.5.1 | Emissão Inicial | 5d | 2026-07-31 | 2026-08-07 | 365 | 23.15d | 0d | 0207 | PIPING |
| 376 | 1.6.5.2 | Análise Tecnored | 1d | 2026-08-07 | 2026-08-10 | 375 | 23.15d | 0d | 0207 | PIPING |
| 377 | 1.6.5.3 | Atendimento de comentários | 1d | 2026-08-10 | 2026-08-11 | 376 | 23.15d | 0d | 0207 | PIPING |
| 378 | 1.6.5.4 | Aprovação | 1d | 2026-08-11 | 2026-08-12 | 377 | 23.15d |  | 0207 | PIPING |

| ID | WBS | Task | Duration | Start | Finish | Predecessors | Total slack | Free slack | COD_Projeto | Disciplina |
| --- | --- | --- | --- | --- | --- | --- | --- | --- | --- | --- |
| 379 | 1.6.6 | **AG-F0009-0000-MB-T-00003** | 8d | 2026-07-22 | 2026-07-31 |  | 31d |  | 0207 | PIPING |
| 380 | 1.6.6.1 | Emissão Inicial | 5d | 2026-07-22 | 2026-07-28 | 370 | 31d | 0d | 0207 | PIPING |
| 381 | 1.6.6.2 | Análise Tecnored | 1d | 2026-07-29 | 2026-07-29 | 380 | 31d | 0d | 0207 | PIPING |
| 382 | 1.6.6.3 | Atendimento de comentários | 1d | 2026-07-30 | 2026-07-30 | 381 | 31d | 0d | 0207 | PIPING |
| 383 | 1.6.6.4 | Aprovação | 1d | 2026-07-31 | 2026-07-31 | 382 | 31d |  | 0207 | PIPING |
| 384 | 1.6.7 | **PQ-F0009-0207-MB-T-00001** | 5d | 2026-07-28 | 2026-08-04 |  | 28.15d |  | 0207 | PIPING |
| 385 | 1.6.7.1 | Emissão Inicial | 2d | 2026-07-28 | 2026-07-30 | 349 | 28.15d | 0d | 0207 | PIPING |
| 386 | 1.6.7.2 | Análise Tecnored | 1d | 2026-07-30 | 2026-07-31 | 385 | 29.15d | 0d | 0207 | PIPING |
| 387 | 1.6.7.3 | Atendimento de comentários | 1d | 2026-07-31 | 2026-08-03 | 386 | 29.15d | 0d | 0207 | PIPING |
| 388 | 1.6.7.4 | Aprovação | 1d | 2026-08-03 | 2026-08-04 | 387 | 29.15d |  | 0207 | PIPING |
| 389 | 1.6.8 | **LK-F0009-0207-MB-T-00001** | 4d | 2026-07-30 | 2026-08-05 |  | 28.15d |  | 0207 | PIPING |
| 390 | 1.6.8.1 | Emissão Inicial | 1d | 2026-07-30 | 2026-07-31 | 385 | 28.15d | 0d | 0207 | PIPING |
| 391 | 1.6.8.2 | Análise Tecnored | 1d | 2026-07-31 | 2026-08-03 | 390 | 28.15d | 0d | 0207 | PIPING |
| 392 | 1.6.8.3 | Atendimento de comentários | 1d | 2026-08-03 | 2026-08-04 | 391 | 28.15d | 0d | 0207 | PIPING |
| 393 | 1.6.8.4 | Aprovação | 1d | 2026-08-04 | 2026-08-05 | 392 | 28.15d |  | 0207 | PIPING |
| 394 | 1.7 | **STEEL STRUCTURE** | 29d | 2026-08-05 | 2026-09-16 |  | 0d |  |  |  |
| 395 | 1.7.1 | **ML-F0009-0207-GE-S-00001** | 5d | 2026-08-05 | 2026-08-11 |  | 0d |  | 0207 | STEEL STRUCTURE |
| 396 | 1.7.1.1 | Emissão Inicial | 2d | 2026-08-05 | 2026-08-06 | 183 | 0d |  | 0207 | STEEL STRUCTURE |
| 397 | 1.7.1.2 | Análise Tecnored | 1d | 2026-08-07 | 2026-08-07 | 396 | 24d | 0d | 0207 | STEEL STRUCTURE |
| 398 | 1.7.1.3 | Atendimento de comentários | 1d | 2026-08-10 | 2026-08-10 | 397 | 24d | 0d | 0207 | STEEL STRUCTURE |
| 399 | 1.7.1.4 | Aprovação | 1d | 2026-08-11 | 2026-08-11 | 398 | 24d |  | 0207 | STEEL STRUCTURE |
| 400 | 1.7.2 | **ML-F0009-0207-GE-S-00002** | 5d | 2026-08-07 | 2026-08-13 |  | 0d |  | 0207 | STEEL STRUCTURE |
| 401 | 1.7.2.1 | Emissão Inicial | 2d | 2026-08-07 | 2026-08-10 | 396 | 0d |  | 0207 | STEEL STRUCTURE |
| 402 | 1.7.2.2 | Análise Tecnored | 1d | 2026-08-11 | 2026-08-11 | 401 | 22d | 0d | 0207 | STEEL STRUCTURE |
| 403 | 1.7.2.3 | Atendimento de comentários | 1d | 2026-08-12 | 2026-08-12 | 402 | 22d | 0d | 0207 | STEEL STRUCTURE |
| 404 | 1.7.2.4 | Aprovação | 1d | 2026-08-13 | 2026-08-13 | 403 | 22d |  | 0207 | STEEL STRUCTURE |

| ID | WBS | Task | Duration | Start | Finish | Predecessors | Total slack | Free slack | COD_Projeto | Disciplina |
| --- | --- | --- | --- | --- | --- | --- | --- | --- | --- | --- |
| 405 | 1.7.3 | **ML-F0009-0207-GE-S-00003** | 5d | 2026-08-11 | 2026-08-17 |  | 0d |  | 0207 | STEEL STRUCTURE |
| 406 | 1.7.3.1 | Emissão Inicial | 2d | 2026-08-11 | 2026-08-12 | 401 | 0d |  | 0207 | STEEL STRUCTURE |
| 407 | 1.7.3.2 | Análise Tecnored | 1d | 2026-08-13 | 2026-08-13 | 406 | 20d | 0d | 0207 | STEEL STRUCTURE |
| 408 | 1.7.3.3 | Atendimento de comentários | 1d | 2026-08-14 | 2026-08-14 | 407 | 20d | 0d | 0207 | STEEL STRUCTURE |
| 409 | 1.7.3.4 | Aprovação | 1d | 2026-08-17 | 2026-08-17 | 408 | 20d |  | 0207 | STEEL STRUCTURE |
| 410 | 1.7.4 | **ML-F0009-0207-GE-S-00004** | 5d | 2026-08-13 | 2026-08-19 |  | 0d |  | 0207 | STEEL STRUCTURE |
| 411 | 1.7.4.1 | Emissão Inicial | 2d | 2026-08-13 | 2026-08-14 | 406 | 0d |  | 0207 | STEEL STRUCTURE |
| 412 | 1.7.4.2 | Análise Tecnored | 1d | 2026-08-17 | 2026-08-17 | 411 | 18d | 0d | 0207 | STEEL STRUCTURE |
| 413 | 1.7.4.3 | Atendimento de comentários | 1d | 2026-08-18 | 2026-08-18 | 412 | 18d | 0d | 0207 | STEEL STRUCTURE |
| 414 | 1.7.4.4 | Aprovação | 1d | 2026-08-19 | 2026-08-19 | 413 | 18d |  | 0207 | STEEL STRUCTURE |
| 415 | 1.7.5 | **ML-F0009-0207-GE-S-00005** | 5d | 2026-08-17 | 2026-08-21 |  | 0d |  | 0207 | STEEL STRUCTURE |
| 416 | 1.7.5.1 | Emissão Inicial | 2d | 2026-08-17 | 2026-08-18 | 411 | 0d |  | 0207 | STEEL STRUCTURE |
| 417 | 1.7.5.2 | Análise Tecnored | 1d | 2026-08-19 | 2026-08-19 | 416 | 16d | 0d | 0207 | STEEL STRUCTURE |
| 418 | 1.7.5.3 | Atendimento de comentários | 1d | 2026-08-20 | 2026-08-20 | 417 | 16d | 0d | 0207 | STEEL STRUCTURE |
| 419 | 1.7.5.4 | Aprovação | 1d | 2026-08-21 | 2026-08-21 | 418 | 16d |  | 0207 | STEEL STRUCTURE |
| 420 | 1.7.6 | **ML-F0009-0207-GE-S-00006** | 5d | 2026-08-19 | 2026-08-25 |  | 0d |  | 0207 | STEEL STRUCTURE |
| 421 | 1.7.6.1 | Emissão Inicial | 2d | 2026-08-19 | 2026-08-20 | 416 | 0d |  | 0207 | STEEL STRUCTURE |
| 422 | 1.7.6.2 | Análise Tecnored | 1d | 2026-08-21 | 2026-08-21 | 421 | 14d | 0d | 0207 | STEEL STRUCTURE |
| 423 | 1.7.6.3 | Atendimento de comentários | 1d | 2026-08-24 | 2026-08-24 | 422 | 14d | 0d | 0207 | STEEL STRUCTURE |
| 424 | 1.7.6.4 | Aprovação | 1d | 2026-08-25 | 2026-08-25 | 423 | 14d |  | 0207 | STEEL STRUCTURE |
| 425 | 1.7.7 | **PQ-F0009-0207-GE-S-00001** | 5d | 2026-09-10 | 2026-09-16 |  | 0d |  | 0207 | STEEL STRUCTURE |
| 426 | 1.7.7.1 | Emissão Inicial | 2d | 2026-09-10 | 2026-09-11 | 431 | 0d |  | 0207 | STEEL STRUCTURE |
| 427 | 1.7.7.2 | Análise Tecnored | 1d | 2026-09-14 | 2026-09-14 | 426 | 0d |  | 0207 | STEEL STRUCTURE |
| 428 | 1.7.7.3 | Atendimento de comentários | 1d | 2026-09-15 | 2026-09-15 | 427 | 0d |  | 0207 | STEEL STRUCTURE |
| 429 | 1.7.7.4 | Aprovação | 1d | 2026-09-16 | 2026-09-16 | 428 | 0d |  | 0207 | STEEL STRUCTURE |

| ID | WBS | Task | Duration | Start | Finish | Predecessors | Total slack | Free slack | COD_Projeto | Disciplina |
| --- | --- | --- | --- | --- | --- | --- | --- | --- | --- | --- |
| 430 | 1.7.8 | **LM-F0009-0207-GE-S-00001** | 5d | 2026-09-04 | 2026-09-14 |  | 0d |  | 0207 | STEEL STRUCTURE |
| 431 | 1.7.8.1 | Emissão Inicial | 2d | 2026-09-04 | 2026-09-09 | 476 | 0d |  | 0207 | STEEL STRUCTURE |
| 432 | 1.7.8.2 | Análise Tecnored | 1d | 2026-09-10 | 2026-09-10 | 431 | 2d | 0d | 0207 | STEEL STRUCTURE |
| 433 | 1.7.8.3 | Atendimento de comentários | 1d | 2026-09-11 | 2026-09-11 | 432 | 2d | 0d | 0207 | STEEL STRUCTURE |
| 434 | 1.7.8.4 | Aprovação | 1d | 2026-09-14 | 2026-09-14 | 433 | 2d |  | 0207 | STEEL STRUCTURE |
| 435 | 1.7.9 | **MC-F0009-0207-GE-S-00001** | 8d | 2026-08-05 | 2026-08-14 |  | 21d |  | 0207 | STEEL STRUCTURE |
| 436 | 1.7.9.1 | Emissão Inicial | 5d | 2026-08-05 | 2026-08-11 | 183 | 21d | 0d | 0207 | STEEL STRUCTURE |
| 437 | 1.7.9.2 | Análise Tecnored | 1d | 2026-08-12 | 2026-08-12 | 436 | 21d | 0d | 0207 | STEEL STRUCTURE |
| 438 | 1.7.9.3 | Atendimento de comentários | 1d | 2026-08-13 | 2026-08-13 | 437 | 21d | 0d | 0207 | STEEL STRUCTURE |
| 439 | 1.7.9.4 | Aprovação | 1d | 2026-08-14 | 2026-08-14 | 438 | 21d |  | 0207 | STEEL STRUCTURE |
| 440 | 1.7.10 | **AG-F0009-0207-GE-S-00001** | 3d | 2026-08-21 | 2026-08-25 |  | 0d |  | 0207 | STEEL STRUCTURE |
| 441 | 1.7.10.1 | Emissão Inicial | 1d | 2026-08-21 | 2026-08-21 | 421 | 0d |  | 0207 | STEEL STRUCTURE |
| 442 | 1.7.10.2 | Análise Tecnored | 1d | 2026-08-24 | 2026-08-24 | 441 | 14d | 0d | 0207 | STEEL STRUCTURE |
| 443 | 1.7.10.3 | Atendimento de comentários | 0.5d | 2026-08-25 | 2026-08-25 | 442 | 14d | 0d | 0207 | STEEL STRUCTURE |
| 444 | 1.7.10.4 | Aprovação | 0.5d | 2026-08-25 | 2026-08-25 | 443 | 14d |  | 0207 | STEEL STRUCTURE |
| 445 | 1.7.11 | **AG-F0009-0207-GE-S-00002** | 3d | 2026-08-24 | 2026-08-26 |  |  |  | 0207 | STEEL STRUCTURE |
| 446 | 1.7.11.1 | Emissão Inicial | 1d | 2026-08-24 | 2026-08-24 | 441 | 0d |  | 0207 | STEEL STRUCTURE |
| 447 | 1.7.11.2 | Análise Tecnored | 1d | 2026-08-25 | 2026-08-25 | 446 | 13d | 0d | 0207 | STEEL STRUCTURE |
| 448 | 1.7.11.3 | Atendimento de comentários | 0.5d | 2026-08-26 | 2026-08-26 | 447 | 13d | 0d | 0207 | STEEL STRUCTURE |
| 449 | 1.7.11.4 | Aprovação | 0.5d | 2026-08-26 | 2026-08-26 | 448 | 13d |  | 0207 | STEEL STRUCTURE |
| 450 | 1.7.12 | **AG-F0009-0207-GE-S-00003** | 3d | 2026-08-25 | 2026-08-27 |  |  |  | 0207 | STEEL STRUCTURE |
| 451 | 1.7.12.1 | Emissão Inicial | 1d | 2026-08-25 | 2026-08-25 | 446 | 0d |  | 0207 | STEEL STRUCTURE |
| 452 | 1.7.12.2 | Análise Tecnored | 1d | 2026-08-26 | 2026-08-26 | 451 | 12d | 0d | 0207 | STEEL STRUCTURE |
| 453 | 1.7.12.3 | Atendimento de comentários | 0.5d | 2026-08-27 | 2026-08-27 | 452 | 12d | 0d | 0207 | STEEL STRUCTURE |
| 454 | 1.7.12.4 | Aprovação | 0.5d | 2026-08-27 | 2026-08-27 | 453 | 12d |  | 0207 | STEEL STRUCTURE |

| ID | WBS | Task | Duration | Start | Finish | Predecessors | Total slack | Free slack | COD_Projeto | Disciplina |
| --- | --- | --- | --- | --- | --- | --- | --- | --- | --- | --- |
| 455 | 1.7.13 | **AG-F0009-0207-GE-S-00004** | 3d | 2026-08-26 | 2026-08-28 |  |  |  | 0207 | STEEL STRUCTURE |
| 456 | 1.7.13.1 | Emissão Inicial | 1d | 2026-08-26 | 2026-08-26 | 451 | 0d |  | 0207 | STEEL STRUCTURE |
| 457 | 1.7.13.2 | Análise Tecnored | 1d | 2026-08-27 | 2026-08-27 | 456 | 11d | 0d | 0207 | STEEL STRUCTURE |
| 458 | 1.7.13.3 | Atendimento de comentários | 0.5d | 2026-08-28 | 2026-08-28 | 457 | 11d | 0d | 0207 | STEEL STRUCTURE |
| 459 | 1.7.13.4 | Aprovação | 0.5d | 2026-08-28 | 2026-08-28 | 458 | 11d |  | 0207 | STEEL STRUCTURE |
| 460 | 1.7.14 | **AG-F0009-0207-GE-S-00005** | 3d | 2026-08-27 | 2026-08-31 |  |  |  | 0207 | STEEL STRUCTURE |
| 461 | 1.7.14.1 | Emissão Inicial | 1d | 2026-08-27 | 2026-08-27 | 456 | 0d |  | 0207 | STEEL STRUCTURE |
| 462 | 1.7.14.2 | Análise Tecnored | 1d | 2026-08-28 | 2026-08-28 | 461 | 10d | 0d | 0207 | STEEL STRUCTURE |
| 463 | 1.7.14.3 | Atendimento de comentários | 0.5d | 2026-08-31 | 2026-08-31 | 462 | 10d | 0d | 0207 | STEEL STRUCTURE |
| 464 | 1.7.14.4 | Aprovação | 0.5d | 2026-08-31 | 2026-08-31 | 463 | 10d |  | 0207 | STEEL STRUCTURE |
| 465 | 1.7.15 | **AG-F0009-0207-GE-S-00006** | 3d | 2026-08-28 | 2026-09-01 |  |  |  | 0207 | STEEL STRUCTURE |
| 466 | 1.7.15.1 | Emissão Inicial | 1d | 2026-08-28 | 2026-08-28 | 461 | 0d |  | 0207 | STEEL STRUCTURE |
| 467 | 1.7.15.2 | Análise Tecnored | 1d | 2026-08-31 | 2026-08-31 | 466 | 9d | 0d | 0207 | STEEL STRUCTURE |
| 468 | 1.7.15.3 | Atendimento de comentários | 0.5d | 2026-09-01 | 2026-09-01 | 467 | 9d | 0d | 0207 | STEEL STRUCTURE |
| 469 | 1.7.15.4 | Aprovação | 0.5d | 2026-09-01 | 2026-09-01 | 468 | 9d |  | 0207 | STEEL STRUCTURE |
| 470 | 1.7.16 | **PL-F0009-0207-GE-S-00001** | 5d | 2026-08-31 | 2026-09-04 |  | 0d |  | 0207 | STEEL STRUCTURE |
| 471 | 1.7.16.1 | Emissão Inicial | 2d | 2026-08-31 | 2026-09-01 | 466 | 0d |  | 0207 | STEEL STRUCTURE |
| 472 | 1.7.16.2 | Análise Tecnored | 1d | 2026-09-02 | 2026-09-02 | 471 | 6d | 0d | 0207 | STEEL STRUCTURE |
| 473 | 1.7.16.3 | Atendimento de comentários | 1d | 2026-09-03 | 2026-09-03 | 472 | 6d | 0d | 0207 | STEEL STRUCTURE |
| 474 | 1.7.16.4 | Aprovação | 1d | 2026-09-04 | 2026-09-04 | 473 | 6d |  | 0207 | STEEL STRUCTURE |
| 475 | 1.7.17 | **PL-F0009-0207-GE-S-00002** | 5d | 2026-09-02 | 2026-09-10 |  | 0d |  | 0207 | STEEL STRUCTURE |
| 476 | 1.7.17.1 | Emissão Inicial | 2d | 2026-09-02 | 2026-09-03 | 471 | 0d |  | 0207 | STEEL STRUCTURE |
| 477 | 1.7.17.2 | Análise Tecnored | 1d | 2026-09-04 | 2026-09-04 | 476 | 4d | 0d | 0207 | STEEL STRUCTURE |
| 478 | 1.7.17.3 | Atendimento de comentários | 1d | 2026-09-09 | 2026-09-09 | 477 | 4d | 0d | 0207 | STEEL STRUCTURE |
| 479 | 1.7.17.4 | Aprovação | 1d | 2026-09-10 | 2026-09-10 | 478 | 4d |  | 0207 | STEEL STRUCTURE |

| ID | WBS | Task | Duration | Start | Finish | Predecessors | Total slack | Free slack | COD_Projeto | Disciplina |
| --- | --- | --- | --- | --- | --- | --- | --- | --- | --- | --- |
| 480 | 1.8 | **ELECTRICAL** | 26d | 2026-07-15 | 2026-08-19 |  | 18d |  |  |  |
| 481 | 1.8.1 | **ML-F0009-0207-MB-E-00001** | 5d | 2026-08-05 | 2026-08-11 |  | 18d |  | 0207 | ELECTRICAL |
| 482 | 1.8.1.1 | Emissão Inicial | 2d | 2026-08-05 | 2026-08-06 | 183 | 18d | 0d | 0207 | ELECTRICAL |
| 483 | 1.8.1.2 | Análise Tecnored | 1d | 2026-08-07 | 2026-08-07 | 482 | 24d | 0d | 0207 | ELECTRICAL |
| 484 | 1.8.1.3 | Atendimento de comentários | 1d | 2026-08-10 | 2026-08-10 | 483 | 24d | 0d | 0207 | ELECTRICAL |
| 485 | 1.8.1.4 | Aprovação | 1d | 2026-08-11 | 2026-08-11 | 484 | 24d |  | 0207 | ELECTRICAL |
| 486 | 1.8.2 | **RL-F0009-0207-GE-E-00001** | 5d | 2026-08-11 | 2026-08-17 |  | 20d |  | 0207 | ELECTRICAL |
| 487 | 1.8.2.1 | Emissão Inicial | 2d | 2026-08-11 | 2026-08-12 | 527 | 20d | 0d | 0207 | ELECTRICAL |
| 488 | 1.8.2.2 | Análise Tecnored | 1d | 2026-08-13 | 2026-08-13 | 487 | 20d | 0d | 0207 | ELECTRICAL |
| 489 | 1.8.2.3 | Atendimento de comentários | 1d | 2026-08-14 | 2026-08-14 | 488 | 20d | 0d | 0207 | ELECTRICAL |
| 490 | 1.8.2.4 | Aprovação | 1d | 2026-08-17 | 2026-08-17 | 489 | 20d |  | 0207 | ELECTRICAL |
| 491 | 1.8.3 | **LE-F0009-0000-GE-E-00001** | 5d | 2026-08-11 | 2026-08-17 |  | 18d |  | 0207 | ELECTRICAL |
| 492 | 1.8.3.1 | Emissão Inicial | 2d | 2026-08-11 | 2026-08-12 | 527 | 18d | 0d | 0207 | ELECTRICAL |
| 493 | 1.8.3.2 | Análise Tecnored | 1d | 2026-08-13 | 2026-08-13 | 492 | 20d | 0d | 0207 | ELECTRICAL |
| 494 | 1.8.3.3 | Atendimento de comentários | 1d | 2026-08-14 | 2026-08-14 | 493 | 20d | 0d | 0207 | ELECTRICAL |
| 495 | 1.8.3.4 | Aprovação | 1d | 2026-08-17 | 2026-08-17 | 494 | 20d |  | 0207 | ELECTRICAL |
| 496 | 1.8.4 | **LR-F0009-0207-MB-E-00001** | 4d | 2026-07-20 | 2026-07-23 |  | 37d |  | 0207 | ELECTRICAL |
| 497 | 1.8.4.1 | Emissão Inicial | 1d | 2026-07-20 | 2026-07-20 | 98 | 37d | 0d | 0207 | ELECTRICAL |
| 498 | 1.8.4.2 | Análise Tecnored | 1d | 2026-07-21 | 2026-07-21 | 497 | 37d | 0d | 0207 | ELECTRICAL |
| 499 | 1.8.4.3 | Atendimento de comentários | 1d | 2026-07-22 | 2026-07-22 | 498 | 37d | 0d | 0207 | ELECTRICAL |
| 500 | 1.8.4.4 | Aprovação | 1d | 2026-07-23 | 2026-07-23 | 499 | 37d |  | 0207 | ELECTRICAL |
| 501 | 1.8.5 | **DU-F0009-0207-MB-E-00001** | 7d | 2026-08-11 | 2026-08-19 |  | 18d |  | 0207 | ELECTRICAL |
| 502 | 1.8.5.1 | Emissão Inicial | 4d | 2026-08-11 | 2026-08-14 | 527 | 18d | 0d | 0207 | ELECTRICAL |
| 503 | 1.8.5.2 | Análise Tecnored | 1d | 2026-08-17 | 2026-08-17 | 502 | 18d | 0d | 0207 | ELECTRICAL |
| 504 | 1.8.5.3 | Atendimento de comentários | 1d | 2026-08-18 | 2026-08-18 | 503 | 18d | 0d | 0207 | ELECTRICAL |
| 505 | 1.8.5.4 | Aprovação | 1d | 2026-08-19 | 2026-08-19 | 504 | 18d |  | 0207 | ELECTRICAL |

| ID | WBS | Task | Duration | Start | Finish | Predecessors | Total slack | Free slack | COD_Projeto | Disciplina |
| --- | --- | --- | --- | --- | --- | --- | --- | --- | --- | --- |
| 506 | 1.8.6 | **FD-F0009-0207-MB-E-00004** | 5d | 2026-08-13 | 2026-08-19 |  | 18d |  | 0207 | ELECTRICAL |
| 507 | 1.8.6.1 | Emissão Inicial | 2d | 2026-08-13 | 2026-08-14 | 492 | 18d | 0d | 0207 | ELECTRICAL |
| 508 | 1.8.6.2 | Análise Tecnored | 1d | 2026-08-17 | 2026-08-17 | 507 | 18d | 0d | 0207 | ELECTRICAL |
| 509 | 1.8.6.3 | Atendimento de comentários | 1d | 2026-08-18 | 2026-08-18 | 508 | 18d | 0d | 0207 | ELECTRICAL |
| 510 | 1.8.6.4 | Aprovação | 1d | 2026-08-19 | 2026-08-19 | 509 | 18d |  | 0207 | ELECTRICAL |
| 511 | 1.8.7 | **LM-F0009-0207-MB-E-00001** | 5d | 2026-08-11 | 2026-08-17 |  | 18d |  | 0207 | ELECTRICAL |
| 512 | 1.8.7.1 | Emissão Inicial | 2d | 2026-08-11 | 2026-08-12 | 527 | 18d | 0d | 0207 | ELECTRICAL |
| 513 | 1.8.7.2 | Análise Tecnored | 1d | 2026-08-13 | 2026-08-13 | 512 | 20d | 0d | 0207 | ELECTRICAL |
| 514 | 1.8.7.3 | Atendimento de comentários | 1d | 2026-08-14 | 2026-08-14 | 513 | 20d | 0d | 0207 | ELECTRICAL |
| 515 | 1.8.7.4 | Aprovação | 1d | 2026-08-17 | 2026-08-17 | 514 | 20d |  | 0207 | ELECTRICAL |
| 516 | 1.8.8 | **PQ-F0009-0207-MB-E-00001** | 5d | 2026-08-13 | 2026-08-19 |  | 18d |  | 0207 | ELECTRICAL |
| 517 | 1.8.8.1 | Emissão Inicial | 2d | 2026-08-13 | 2026-08-14 | 512 | 18d | 0d | 0207 | ELECTRICAL |
| 518 | 1.8.8.2 | Análise Tecnored | 1d | 2026-08-17 | 2026-08-17 | 517 | 18d | 0d | 0207 | ELECTRICAL |
| 519 | 1.8.8.3 | Atendimento de comentários | 1d | 2026-08-18 | 2026-08-18 | 518 | 18d | 0d | 0207 | ELECTRICAL |
| 520 | 1.8.8.4 | Aprovação | 1d | 2026-08-19 | 2026-08-19 | 519 | 18d |  | 0207 | ELECTRICAL |
| 521 | 1.8.9 | **MC-F0009-0207-MB-E-00001** | 24d | 2026-07-15 | 2026-08-17 |  | 20d |  | 0207 | ELECTRICAL |
| 522 | 1.8.9.1 | Emissão Inicial | 2d | 2026-07-15 | 2026-07-16 |  | 42d |  | 0207 | ELECTRICAL |
| 523 | 1.8.9.2 | Análise Tecnored | 1d | 2026-08-13 | 2026-08-13 | 492 | 20d | 0d | 0207 | ELECTRICAL |
| 524 | 1.8.9.3 | Atendimento de comentários | 1d | 2026-08-14 | 2026-08-14 | 523 | 20d | 0d | 0207 | ELECTRICAL |
| 525 | 1.8.9.4 | Aprovação | 1d | 2026-08-17 | 2026-08-17 | 524 | 20d |  | 0207 | ELECTRICAL |
| 526 | 1.8.10 | **AG-F0009-0207-BM-E-00001** | 5d | 2026-08-07 | 2026-08-13 |  | 18d |  | 0207 | ELECTRICAL |
| 527 | 1.8.10.1 | Emissão Inicial | 2d | 2026-08-07 | 2026-08-10 | 482 | 18d | 0d | 0207 | ELECTRICAL |
| 528 | 1.8.10.2 | Análise Tecnored | 1d | 2026-08-11 | 2026-08-11 | 527 | 22d | 0d | 0207 | ELECTRICAL |
| 529 | 1.8.10.3 | Atendimento de comentários | 1d | 2026-08-12 | 2026-08-12 | 528 | 22d | 0d | 0207 | ELECTRICAL |
| 530 | 1.8.10.4 | Aprovação | 1d | 2026-08-13 | 2026-08-13 | 529 | 22d |  | 0207 | ELECTRICAL |

| ID | WBS | Task | Duration | Start | Finish | Predecessors | Total slack | Free slack | COD_Projeto | Disciplina |
| --- | --- | --- | --- | --- | --- | --- | --- | --- | --- | --- |
| 531 | 1.8.11 | **LC-F0009-0207-BM-E-00001** | 5d | 2026-08-11 | 2026-08-17 |  | 20d |  | 0207 | ELECTRICAL |
| 532 | 1.8.11.1 | Emissão Inicial | 2d | 2026-08-11 | 2026-08-12 | 527 | 20d | 0d | 0207 | ELECTRICAL |
| 533 | 1.8.11.2 | Análise Tecnored | 1d | 2026-08-13 | 2026-08-13 | 532 | 20d | 0d | 0207 | ELECTRICAL |
| 534 | 1.8.11.3 | Atendimento de comentários | 1d | 2026-08-14 | 2026-08-14 | 533 | 20d | 0d | 0207 | ELECTRICAL |
| 535 | 1.8.11.4 | Aprovação | 1d | 2026-08-17 | 2026-08-17 | 534 | 20d |  | 0207 | ELECTRICAL |
| 536 | 1.9 | **INSTRUMENTATION / AUTOMATION** | 28d | 2026-07-15 | 2026-08-21 |  | 0d |  |  |  |
| 537 | 1.9.1 | **LI-F0009-0000-GE-J-00001** | 5d | 2026-07-27 | 2026-08-03 |  | 30.15d |  | 0207 | INSTRUMENTATION / AUTOMATION |
| 538 | 1.9.1.1 | Emissão Inicial | 2d | 2026-07-27 | 2026-07-29 | 678 | 30.15d | 0d | 0207 | INSTRUMENTATION / AUTOMATION |
| 539 | 1.9.1.2 | Análise Tecnored | 1d | 2026-07-29 | 2026-07-30 | 538 | 30.15d | 0d | 0207 | INSTRUMENTATION / AUTOMATION |
| 540 | 1.9.1.3 | Atendimento de comentários | 1d | 2026-07-30 | 2026-07-31 | 539 | 30.15d | 0d | 0207 | INSTRUMENTATION / AUTOMATION |
| 541 | 1.9.1.4 | Aprovação | 1d | 2026-07-31 | 2026-08-03 | 540 | 30.15d |  | 0207 | INSTRUMENTATION / AUTOMATION |
| 542 | 1.9.2 | **LE-F0009-0207-GE-J-00001** | 5d | 2026-07-27 | 2026-08-03 |  | 30.15d |  | 0207 | INSTRUMENTATION / AUTOMATION |
| 543 | 1.9.2.1 | Emissão Inicial | 2d | 2026-07-27 | 2026-07-29 | 678 | 30.15d | 0d | 0207 | INSTRUMENTATION / AUTOMATION |
| 544 | 1.9.2.2 | Análise Tecnored | 1d | 2026-07-29 | 2026-07-30 | 543 | 30.15d | 0d | 0207 | INSTRUMENTATION / AUTOMATION |
| 545 | 1.9.2.3 | Atendimento de comentários | 1d | 2026-07-30 | 2026-07-31 | 544 | 30.15d | 0d | 0207 | INSTRUMENTATION / AUTOMATION |
| 546 | 1.9.2.4 | Aprovação | 1d | 2026-07-31 | 2026-08-03 | 545 | 30.15d |  | 0207 | INSTRUMENTATION / AUTOMATION |
| 547 | 1.9.3 | **MD-F0009-0207-GE-J-00001** | 5d | 2026-07-27 | 2026-08-03 |  | 30.15d |  | 0207 | INSTRUMENTATION / AUTOMATION |
| 548 | 1.9.3.1 | Emissão Inicial | 2d | 2026-07-27 | 2026-07-29 | 678 | 30.15d | 0d | 0207 | INSTRUMENTATION / AUTOMATION |
| 549 | 1.9.3.2 | Análise Tecnored | 1d | 2026-07-29 | 2026-07-30 | 548 | 30.15d | 0d | 0207 | INSTRUMENTATION / AUTOMATION |
| 550 | 1.9.3.3 | Atendimento de comentários | 1d | 2026-07-30 | 2026-07-31 | 549 | 30.15d | 0d | 0207 | INSTRUMENTATION / AUTOMATION |
| 551 | 1.9.3.4 | Aprovação | 1d | 2026-07-31 | 2026-08-03 | 550 | 30.15d |  | 0207 | INSTRUMENTATION / AUTOMATION |
| 552 | 1.9.4 | **PQ-F0009-0207-GE-J-00001** | 5d | 2026-08-17 | 2026-08-21 |  | 16d |  | 0207 | INSTRUMENTATION / AUTOMATION |
| 553 | 1.9.4.1 | Emissão Inicial | 2d | 2026-08-17 | 2026-08-18 | 693 | 16d | 0d | 0207 | INSTRUMENTATION / AUTOMATION |
| 554 | 1.9.4.2 | Análise Tecnored | 1d | 2026-08-19 | 2026-08-19 | 553 | 16d | 0d | 0207 | INSTRUMENTATION / AUTOMATION |
| 555 | 1.9.4.3 | Atendimento de comentários | 1d | 2026-08-20 | 2026-08-20 | 554 | 16d | 0d | 0207 | INSTRUMENTATION / AUTOMATION |
| 556 | 1.9.4.4 | Aprovação | 1d | 2026-08-21 | 2026-08-21 | 555 | 16d |  | 0207 | INSTRUMENTATION / AUTOMATION |

| ID | WBS | Task | Duration | Start | Finish | Predecessors | Total slack | Free slack | COD_Projeto | Disciplina |
| --- | --- | --- | --- | --- | --- | --- | --- | --- | --- | --- |
| 557 | 1.9.5 | **FG-F0009-0207-GE-J-00001** | 5d | 2026-07-15 | 2026-07-22 |  | 30.15d |  | 0207 | INSTRUMENTATION / AUTOMATION |
| 558 | 1.9.5.1 | Emissão Inicial | 2d | 2026-07-15 | 2026-07-17 | 77 | 30.15d | 0d | 0207 | INSTRUMENTATION / AUTOMATION |
| 559 | 1.9.5.2 | Análise Tecnored | 1d | 2026-07-17 | 2026-07-20 | 558 | 38.15d | 0d | 0207 | INSTRUMENTATION / AUTOMATION |
| 560 | 1.9.5.3 | Atendimento de comentários | 1d | 2026-07-20 | 2026-07-21 | 559 | 38.15d | 0d | 0207 | INSTRUMENTATION / AUTOMATION |
| 561 | 1.9.5.4 | Aprovação | 1d | 2026-07-21 | 2026-07-22 | 560 | 38.15d |  | 0207 | INSTRUMENTATION / AUTOMATION |
| 562 | 1.9.6 | **DT-F0009-0207-GE-J-00001** | 5d | 2026-07-17 | 2026-07-24 |  | 36.15d |  | 0207 | INSTRUMENTATION / AUTOMATION |
| 563 | 1.9.6.1 | Emissão Inicial | 2d | 2026-07-17 | 2026-07-21 | 558 | 36.15d | 0d | 0207 | INSTRUMENTATION / AUTOMATION |
| 564 | 1.9.6.2 | Análise Tecnored | 1d | 2026-07-21 | 2026-07-22 | 563 | 36.15d | 0d | 0207 | INSTRUMENTATION / AUTOMATION |
| 565 | 1.9.6.3 | Atendimento de comentários | 1d | 2026-07-22 | 2026-07-23 | 564 | 36.15d | 0d | 0207 | INSTRUMENTATION / AUTOMATION |
| 566 | 1.9.6.4 | Aprovação | 1d | 2026-07-23 | 2026-07-24 | 565 | 36.15d |  | 0207 | INSTRUMENTATION / AUTOMATION |
| 567 | 1.9.7 | **FD-F0009-0207-GE-J-00001** | 2d | 2026-07-17 | 2026-07-21 |  | 30.15d |  | 0207 | INSTRUMENTATION / AUTOMATION |
| 568 | 1.9.7.1 | Emissão Inicial | 0.5d | 2026-07-17 | 2026-07-20 | 558 | 30.15d | 0d | 0207 | INSTRUMENTATION / AUTOMATION |
| 569 | 1.9.7.2 | Análise Tecnored | 0.5d | 2026-07-20 | 2026-07-20 | 568 | 39.15d | 0d | 0207 | INSTRUMENTATION / AUTOMATION |
| 570 | 1.9.7.3 | Atendimento de comentários | 0.5d | 2026-07-20 | 2026-07-21 | 569 | 39.15d | 0d | 0207 | INSTRUMENTATION / AUTOMATION |
| 571 | 1.9.7.4 | Aprovação | 0.5d | 2026-07-21 | 2026-07-21 | 570 | 39.15d |  | 0207 | INSTRUMENTATION / AUTOMATION |
| 572 | 1.9.8 | **FD-F0009-0207-GE-J-00002** | 2d | 2026-07-15 | 2026-07-16 |  |  |  | 0207 | INSTRUMENTATION / AUTOMATION |
| 573 | 1.9.8.1 | Emissão Inicial | 0.5d | 2026-07-17 | 2026-07-20 | 568SS | 34.15d | 0d | 0207 | INSTRUMENTATION / AUTOMATION |
| 574 | 1.9.8.2 | Análise Tecnored | 0.5d | 2026-07-20 | 2026-07-20 | 573 | 39.15d | 0d | 0207 | INSTRUMENTATION / AUTOMATION |
| 575 | 1.9.8.3 | Atendimento de comentários | 0.5d | 2026-07-20 | 2026-07-21 | 574 | 39.15d | 0d | 0207 | INSTRUMENTATION / AUTOMATION |
| 576 | 1.9.8.4 | Aprovação | 0.5d | 2026-07-21 | 2026-07-21 | 575 | 39.15d |  | 0207 | INSTRUMENTATION / AUTOMATION |
| 577 | 1.9.9 | **FD-F0009-0207-GE-J-00003** | 2d | 2026-07-15 | 2026-07-16 |  |  |  | 0207 | INSTRUMENTATION / AUTOMATION |
| 578 | 1.9.9.1 | Emissão Inicial | 0.5d | 2026-07-20 | 2026-07-20 | 568 | 30.15d | 0d | 0207 | INSTRUMENTATION / AUTOMATION |
| 579 | 1.9.9.2 | Análise Tecnored | 0.5d | 2026-07-20 | 2026-07-21 | 578 | 38.65d | 0d | 0207 | INSTRUMENTATION / AUTOMATION |
| 580 | 1.9.9.3 | Atendimento de comentários | 0.5d | 2026-07-21 | 2026-07-21 | 579 | 38.65d | 0d | 0207 | INSTRUMENTATION / AUTOMATION |
| 581 | 1.9.9.4 | Aprovação | 0.5d | 2026-07-21 | 2026-07-22 | 580 | 38.65d |  | 0207 | INSTRUMENTATION / AUTOMATION |

| ID | WBS | Task | Duration | Start | Finish | Predecessors | Total slack | Free slack | COD_Projeto | Disciplina |
| --- | --- | --- | --- | --- | --- | --- | --- | --- | --- | --- |
| 582 | 1.9.10 | **FD-F0009-0207-GE-J-00004** | 2d | 2026-07-15 | 2026-07-17 |  |  |  | 0207 | INSTRUMENTATION / AUTOMATION |
| 583 | 1.9.10.1 | Emissão Inicial | 0.5d | 2026-07-20 | 2026-07-20 | 573 | 34.15d | 0d | 0207 | INSTRUMENTATION / AUTOMATION |
| 584 | 1.9.10.2 | Análise Tecnored | 0.5d | 2026-07-20 | 2026-07-21 | 583 | 38.65d | 0d | 0207 | INSTRUMENTATION / AUTOMATION |
| 585 | 1.9.10.3 | Atendimento de comentários | 0.5d | 2026-07-21 | 2026-07-21 | 584 | 38.65d | 0d | 0207 | INSTRUMENTATION / AUTOMATION |
| 586 | 1.9.10.4 | Aprovação | 0.5d | 2026-07-21 | 2026-07-22 | 585 | 38.65d |  | 0207 | INSTRUMENTATION / AUTOMATION |
| 587 | 1.9.11 | **FD-F0009-0207-GE-J-00005** | 2d | 2026-07-15 | 2026-07-17 |  |  |  | 0207 | INSTRUMENTATION / AUTOMATION |
| 588 | 1.9.11.1 | Emissão Inicial | 0.5d | 2026-07-20 | 2026-07-21 | 578 | 30.15d | 0d | 0207 | INSTRUMENTATION / AUTOMATION |
| 589 | 1.9.11.2 | Análise Tecnored | 0.5d | 2026-07-21 | 2026-07-21 | 588 | 38.15d | 0d | 0207 | INSTRUMENTATION / AUTOMATION |
| 590 | 1.9.11.3 | Atendimento de comentários | 0.5d | 2026-07-21 | 2026-07-22 | 589 | 38.15d | 0d | 0207 | INSTRUMENTATION / AUTOMATION |
| 591 | 1.9.11.4 | Aprovação | 0.5d | 2026-07-22 | 2026-07-22 | 590 | 38.15d |  | 0207 | INSTRUMENTATION / AUTOMATION |
| 592 | 1.9.12 | **FD-F0009-0207-GE-J-00006** | 2d | 2026-07-15 | 2026-07-17 |  |  |  | 0207 | INSTRUMENTATION / AUTOMATION |
| 593 | 1.9.12.1 | Emissão Inicial | 0.5d | 2026-07-20 | 2026-07-21 | 583 | 34.15d | 0d | 0207 | INSTRUMENTATION / AUTOMATION |
| 594 | 1.9.12.2 | Análise Tecnored | 0.5d | 2026-07-21 | 2026-07-21 | 593 | 38.15d | 0d | 0207 | INSTRUMENTATION / AUTOMATION |
| 595 | 1.9.12.3 | Atendimento de comentários | 0.5d | 2026-07-21 | 2026-07-22 | 594 | 38.15d | 0d | 0207 | INSTRUMENTATION / AUTOMATION |
| 596 | 1.9.12.4 | Aprovação | 0.5d | 2026-07-22 | 2026-07-22 | 595 | 38.15d |  | 0207 | INSTRUMENTATION / AUTOMATION |
| 597 | 1.9.13 | **FD-F0009-0207-GE-J-00007** | 2d | 2026-07-16 | 2026-07-17 |  |  |  | 0207 | INSTRUMENTATION / AUTOMATION |
| 598 | 1.9.13.1 | Emissão Inicial | 0.5d | 2026-07-21 | 2026-07-21 | 588 | 30.15d | 0d | 0207 | INSTRUMENTATION / AUTOMATION |
| 599 | 1.9.13.2 | Análise Tecnored | 0.5d | 2026-07-21 | 2026-07-22 | 598 | 37.65d | 0d | 0207 | INSTRUMENTATION / AUTOMATION |
| 600 | 1.9.13.3 | Atendimento de comentários | 0.5d | 2026-07-22 | 2026-07-22 | 599 | 37.65d | 0d | 0207 | INSTRUMENTATION / AUTOMATION |
| 601 | 1.9.13.4 | Aprovação | 0.5d | 2026-07-22 | 2026-07-23 | 600 | 37.65d |  | 0207 | INSTRUMENTATION / AUTOMATION |
| 602 | 1.9.14 | **FD-F0009-0207-GE-J-00008** | 2d | 2026-07-16 | 2026-07-17 |  |  |  | 0207 | INSTRUMENTATION / AUTOMATION |
| 603 | 1.9.14.1 | Emissão Inicial | 0.5d | 2026-07-21 | 2026-07-21 | 593 | 34.15d | 0d | 0207 | INSTRUMENTATION / AUTOMATION |
| 604 | 1.9.14.2 | Análise Tecnored | 0.5d | 2026-07-21 | 2026-07-22 | 603 | 37.65d | 0d | 0207 | INSTRUMENTATION / AUTOMATION |
| 605 | 1.9.14.3 | Atendimento de comentários | 0.5d | 2026-07-22 | 2026-07-22 | 604 | 37.65d | 0d | 0207 | INSTRUMENTATION / AUTOMATION |
| 606 | 1.9.14.4 | Aprovação | 0.5d | 2026-07-22 | 2026-07-23 | 605 | 37.65d |  | 0207 | INSTRUMENTATION / AUTOMATION |

| ID | WBS | Task | Duration | Start | Finish | Predecessors | Total slack | Free slack | COD_Projeto | Disciplina |
| --- | --- | --- | --- | --- | --- | --- | --- | --- | --- | --- |
| 607 | 1.9.15 | **FD-F0009-0207-GE-J-00009** | 2d | 2026-07-16 | 2026-07-17 |  |  |  | 0207 | INSTRUMENTATION / AUTOMATION |
| 608 | 1.9.15.1 | Emissão Inicial | 0.5d | 2026-07-21 | 2026-07-22 | 598 | 30.15d | 0d | 0207 | INSTRUMENTATION / AUTOMATION |
| 609 | 1.9.15.2 | Análise Tecnored | 0.5d | 2026-07-22 | 2026-07-22 | 608 | 37.15d | 0d | 0207 | INSTRUMENTATION / AUTOMATION |
| 610 | 1.9.15.3 | Atendimento de comentários | 0.5d | 2026-07-22 | 2026-07-23 | 609 | 37.15d | 0d | 0207 | INSTRUMENTATION / AUTOMATION |
| 611 | 1.9.15.4 | Aprovação | 0.5d | 2026-07-23 | 2026-07-23 | 610 | 37.15d |  | 0207 | INSTRUMENTATION / AUTOMATION |
| 612 | 1.9.16 | **FD-F0009-0207-GE-J-00010** | 2d | 2026-07-16 | 2026-07-20 |  |  |  | 0207 | INSTRUMENTATION / AUTOMATION |
| 613 | 1.9.16.1 | Emissão Inicial | 0.5d | 2026-07-21 | 2026-07-22 | 603 | 34.15d | 0d | 0207 | INSTRUMENTATION / AUTOMATION |
| 614 | 1.9.16.2 | Análise Tecnored | 0.5d | 2026-07-22 | 2026-07-22 | 613 | 37.15d | 0d | 0207 | INSTRUMENTATION / AUTOMATION |
| 615 | 1.9.16.3 | Atendimento de comentários | 0.5d | 2026-07-22 | 2026-07-23 | 614 | 37.15d | 0d | 0207 | INSTRUMENTATION / AUTOMATION |
| 616 | 1.9.16.4 | Aprovação | 0.5d | 2026-07-23 | 2026-07-23 | 615 | 37.15d |  | 0207 | INSTRUMENTATION / AUTOMATION |
| 617 | 1.9.17 | **FD-F0009-0207-GE-J-00011** | 2d | 2026-07-16 | 2026-07-20 |  |  |  | 0207 | INSTRUMENTATION / AUTOMATION |
| 618 | 1.9.17.1 | Emissão Inicial | 0.5d | 2026-07-22 | 2026-07-22 | 608 | 30.15d | 0d | 0207 | INSTRUMENTATION / AUTOMATION |
| 619 | 1.9.17.2 | Análise Tecnored | 0.5d | 2026-07-22 | 2026-07-23 | 618 | 36.65d | 0d | 0207 | INSTRUMENTATION / AUTOMATION |
| 620 | 1.9.17.3 | Atendimento de comentários | 0.5d | 2026-07-23 | 2026-07-23 | 619 | 36.65d | 0d | 0207 | INSTRUMENTATION / AUTOMATION |
| 621 | 1.9.17.4 | Aprovação | 0.5d | 2026-07-23 | 2026-07-24 | 620 | 36.65d |  | 0207 | INSTRUMENTATION / AUTOMATION |
| 622 | 1.9.18 | **FD-F0009-0207-GE-J-00012** | 2d | 2026-07-16 | 2026-07-20 |  |  |  | 0207 | INSTRUMENTATION / AUTOMATION |
| 623 | 1.9.18.1 | Emissão Inicial | 0.5d | 2026-07-22 | 2026-07-22 | 613 | 34.15d | 0d | 0207 | INSTRUMENTATION / AUTOMATION |
| 624 | 1.9.18.2 | Análise Tecnored | 0.5d | 2026-07-22 | 2026-07-23 | 623 | 36.65d | 0d | 0207 | INSTRUMENTATION / AUTOMATION |
| 625 | 1.9.18.3 | Atendimento de comentários | 0.5d | 2026-07-23 | 2026-07-23 | 624 | 36.65d | 0d | 0207 | INSTRUMENTATION / AUTOMATION |
| 626 | 1.9.18.4 | Aprovação | 0.5d | 2026-07-23 | 2026-07-24 | 625 | 36.65d |  | 0207 | INSTRUMENTATION / AUTOMATION |
| 627 | 1.9.19 | **FD-F0009-0207-GE-J-00013** | 2d | 2026-07-17 | 2026-07-20 |  |  |  | 0207 | INSTRUMENTATION / AUTOMATION |
| 628 | 1.9.19.1 | Emissão Inicial | 0.5d | 2026-07-22 | 2026-07-23 | 618 | 30.15d | 0d | 0207 | INSTRUMENTATION / AUTOMATION |
| 629 | 1.9.19.2 | Análise Tecnored | 0.5d | 2026-07-23 | 2026-07-23 | 628 | 36.15d | 0d | 0207 | INSTRUMENTATION / AUTOMATION |
| 630 | 1.9.19.3 | Atendimento de comentários | 0.5d | 2026-07-23 | 2026-07-24 | 629 | 36.15d | 0d | 0207 | INSTRUMENTATION / AUTOMATION |
| 631 | 1.9.19.4 | Aprovação | 0.5d | 2026-07-24 | 2026-07-24 | 630 | 36.15d |  | 0207 | INSTRUMENTATION / AUTOMATION |

| ID | WBS | Task | Duration | Start | Finish | Predecessors | Total slack | Free slack | COD_Projeto | Disciplina |
| --- | --- | --- | --- | --- | --- | --- | --- | --- | --- | --- |
| 632 | 1.9.20 | **FD-F0009-0207-GE-J-00014** | 2d | 2026-07-17 | 2026-07-20 |  |  |  | 0207 | INSTRUMENTATION / AUTOMATION |
| 633 | 1.9.20.1 | Emissão Inicial | 0.5d | 2026-07-22 | 2026-07-23 | 623 | 34.15d | 0d | 0207 | INSTRUMENTATION / AUTOMATION |
| 634 | 1.9.20.2 | Análise Tecnored | 0.5d | 2026-07-23 | 2026-07-23 | 633 | 36.15d | 0d | 0207 | INSTRUMENTATION / AUTOMATION |
| 635 | 1.9.20.3 | Atendimento de comentários | 0.5d | 2026-07-23 | 2026-07-24 | 634 | 36.15d | 0d | 0207 | INSTRUMENTATION / AUTOMATION |
| 636 | 1.9.20.4 | Aprovação | 0.5d | 2026-07-24 | 2026-07-24 | 635 | 36.15d |  | 0207 | INSTRUMENTATION / AUTOMATION |
| 637 | 1.9.21 | **FD-F0009-0207-GE-J-00015** | 2d | 2026-07-17 | 2026-07-20 |  |  |  | 0207 | INSTRUMENTATION / AUTOMATION |
| 638 | 1.9.21.1 | Emissão Inicial | 0.5d | 2026-07-23 | 2026-07-23 | 628 | 30.15d | 0d | 0207 | INSTRUMENTATION / AUTOMATION |
| 639 | 1.9.21.2 | Análise Tecnored | 0.5d | 2026-07-23 | 2026-07-24 | 638 | 35.65d | 0d | 0207 | INSTRUMENTATION / AUTOMATION |
| 640 | 1.9.21.3 | Atendimento de comentários | 0.5d | 2026-07-24 | 2026-07-24 | 639 | 35.65d | 0d | 0207 | INSTRUMENTATION / AUTOMATION |
| 641 | 1.9.21.4 | Aprovação | 0.5d | 2026-07-24 | 2026-07-27 | 640 | 35.65d |  | 0207 | INSTRUMENTATION / AUTOMATION |
| 642 | 1.9.22 | **FD-F0009-0207-GE-J-00016** | 2d | 2026-07-17 | 2026-07-21 |  |  |  | 0207 | INSTRUMENTATION / AUTOMATION |
| 643 | 1.9.22.1 | Emissão Inicial | 0.5d | 2026-07-23 | 2026-07-23 | 633 | 34.15d | 0d | 0207 | INSTRUMENTATION / AUTOMATION |
| 644 | 1.9.22.2 | Análise Tecnored | 0.5d | 2026-07-23 | 2026-07-24 | 643 | 35.65d | 0d | 0207 | INSTRUMENTATION / AUTOMATION |
| 645 | 1.9.22.3 | Atendimento de comentários | 0.5d | 2026-07-24 | 2026-07-24 | 644 | 35.65d | 0d | 0207 | INSTRUMENTATION / AUTOMATION |
| 646 | 1.9.22.4 | Aprovação | 0.5d | 2026-07-24 | 2026-07-27 | 645 | 35.65d |  | 0207 | INSTRUMENTATION / AUTOMATION |
| 647 | 1.9.23 | **FD-F0009-0207-GE-J-00017** | 2d | 2026-07-17 | 2026-07-21 |  |  |  | 0207 | INSTRUMENTATION / AUTOMATION |
| 648 | 1.9.23.1 | Emissão Inicial | 0.5d | 2026-07-23 | 2026-07-24 | 638 | 30.15d | 0d | 0207 | INSTRUMENTATION / AUTOMATION |
| 649 | 1.9.23.2 | Análise Tecnored | 0.5d | 2026-07-24 | 2026-07-24 | 648 | 35.15d | 0d | 0207 | INSTRUMENTATION / AUTOMATION |
| 650 | 1.9.23.3 | Atendimento de comentários | 0.5d | 2026-07-24 | 2026-07-27 | 649 | 35.15d | 0d | 0207 | INSTRUMENTATION / AUTOMATION |
| 651 | 1.9.23.4 | Aprovação | 0.5d | 2026-07-27 | 2026-07-27 | 650 | 35.15d |  | 0207 | INSTRUMENTATION / AUTOMATION |
| 652 | 1.9.24 | **FD-F0009-0207-GE-J-00018** | 2d | 2026-07-17 | 2026-07-21 |  |  |  | 0207 | INSTRUMENTATION / AUTOMATION |
| 653 | 1.9.24.1 | Emissão Inicial | 0.5d | 2026-07-23 | 2026-07-24 | 643 | 34.15d | 0d | 0207 | INSTRUMENTATION / AUTOMATION |
| 654 | 1.9.24.2 | Análise Tecnored | 0.5d | 2026-07-24 | 2026-07-24 | 653 | 35.15d | 0d | 0207 | INSTRUMENTATION / AUTOMATION |
| 655 | 1.9.24.3 | Atendimento de comentários | 0.5d | 2026-07-24 | 2026-07-27 | 654 | 35.15d | 0d | 0207 | INSTRUMENTATION / AUTOMATION |
| 656 | 1.9.24.4 | Aprovação | 0.5d | 2026-07-27 | 2026-07-27 | 655 | 35.15d |  | 0207 | INSTRUMENTATION / AUTOMATION |

| ID | WBS | Task | Duration | Start | Finish | Predecessors | Total slack | Free slack | COD_Projeto | Disciplina |
| --- | --- | --- | --- | --- | --- | --- | --- | --- | --- | --- |
| 657 | 1.9.25 | **FD-F0009-0207-GE-J-00019** | 2d | 2026-07-20 | 2026-07-21 |  |  |  | 0207 | INSTRUMENTATION / AUTOMATION |
| 658 | 1.9.25.1 | Emissão Inicial | 0.5d | 2026-07-24 | 2026-07-24 | 648 | 30.15d | 0d | 0207 | INSTRUMENTATION / AUTOMATION |
| 659 | 1.9.25.2 | Análise Tecnored | 0.5d | 2026-07-24 | 2026-07-27 | 658 | 34.65d | 0d | 0207 | INSTRUMENTATION / AUTOMATION |
| 660 | 1.9.25.3 | Atendimento de comentários | 0.5d | 2026-07-27 | 2026-07-27 | 659 | 34.65d | 0d | 0207 | INSTRUMENTATION / AUTOMATION |
| 661 | 1.9.25.4 | Aprovação | 0.5d | 2026-07-27 | 2026-07-28 | 660 | 34.65d |  | 0207 | INSTRUMENTATION / AUTOMATION |
| 662 | 1.9.26 | **FD-F0009-0207-GE-J-00020** | 2d | 2026-07-20 | 2026-07-21 |  |  |  | 0207 | INSTRUMENTATION / AUTOMATION |
| 663 | 1.9.26.1 | Emissão Inicial | 0.5d | 2026-07-24 | 2026-07-24 | 653 | 34.15d | 0d | 0207 | INSTRUMENTATION / AUTOMATION |
| 664 | 1.9.26.2 | Análise Tecnored | 0.5d | 2026-07-24 | 2026-07-27 | 663 | 34.65d | 0d | 0207 | INSTRUMENTATION / AUTOMATION |
| 665 | 1.9.26.3 | Atendimento de comentários | 0.5d | 2026-07-27 | 2026-07-27 | 664 | 34.65d | 0d | 0207 | INSTRUMENTATION / AUTOMATION |
| 666 | 1.9.26.4 | Aprovação | 0.5d | 2026-07-27 | 2026-07-28 | 665 | 34.65d |  | 0207 | INSTRUMENTATION / AUTOMATION |
| 667 | 1.9.27 | **FD-F0009-0207-GE-J-00021** | 2d | 2026-07-20 | 2026-07-21 |  |  |  | 0207 | INSTRUMENTATION / AUTOMATION |
| 668 | 1.9.27.1 | Emissão Inicial | 0.5d | 2026-07-24 | 2026-07-27 | 658 | 30.15d | 0d | 0207 | INSTRUMENTATION / AUTOMATION |
| 669 | 1.9.27.2 | Análise Tecnored | 0.5d | 2026-07-27 | 2026-07-27 | 668 | 34.15d | 0d | 0207 | INSTRUMENTATION / AUTOMATION |
| 670 | 1.9.27.3 | Atendimento de comentários | 0.5d | 2026-07-27 | 2026-07-28 | 669 | 34.15d | 0d | 0207 | INSTRUMENTATION / AUTOMATION |
| 671 | 1.9.27.4 | Aprovação | 0.5d | 2026-07-28 | 2026-07-28 | 670 | 34.15d |  | 0207 | INSTRUMENTATION / AUTOMATION |
| 672 | 1.9.28 | **FD-F0009-0207-GE-J-00022** | 2d | 2026-07-20 | 2026-07-22 |  |  |  | 0207 | INSTRUMENTATION / AUTOMATION |
| 673 | 1.9.28.1 | Emissão Inicial | 0.5d | 2026-07-24 | 2026-07-27 | 663 | 34.15d | 0d | 0207 | INSTRUMENTATION / AUTOMATION |
| 674 | 1.9.28.2 | Análise Tecnored | 0.5d | 2026-07-27 | 2026-07-27 | 673 | 34.15d | 0d | 0207 | INSTRUMENTATION / AUTOMATION |
| 675 | 1.9.28.3 | Atendimento de comentários | 0.5d | 2026-07-27 | 2026-07-28 | 674 | 34.15d | 0d | 0207 | INSTRUMENTATION / AUTOMATION |
| 676 | 1.9.28.4 | Aprovação | 0.5d | 2026-07-28 | 2026-07-28 | 675 | 34.15d |  | 0207 | INSTRUMENTATION / AUTOMATION |
| 677 | 1.9.29 | **FD-F0009-0207-GE-J-00023** | 2d | 2026-07-20 | 2026-07-21 |  |  |  | 0207 | INSTRUMENTATION / AUTOMATION |
| 678 | 1.9.29.1 | Emissão Inicial | 0.5d | 2026-07-27 | 2026-07-27 | 668 | 30.15d | 0d | 0207 | INSTRUMENTATION / AUTOMATION |
| 679 | 1.9.29.2 | Análise Tecnored | 0.5d | 2026-07-27 | 2026-07-28 | 678 | 33.65d | 0d | 0207 | INSTRUMENTATION / AUTOMATION |
| 680 | 1.9.29.3 | Atendimento de comentários | 0.5d | 2026-07-28 | 2026-07-28 | 679 | 33.65d | 0d | 0207 | INSTRUMENTATION / AUTOMATION |
| 681 | 1.9.29.4 | Aprovação | 0.5d | 2026-07-28 | 2026-07-29 | 680 | 33.65d |  | 0207 | INSTRUMENTATION / AUTOMATION |

| ID | WBS | Task | Duration | Start | Finish | Predecessors | Total slack | Free slack | COD_Projeto | Disciplina |
| --- | --- | --- | --- | --- | --- | --- | --- | --- | --- | --- |
| 682 | 1.9.30 | **DG-F0009-0207-GE-J00001** | 5d | 2026-07-17 | 2026-07-24 |  | 36.15d |  | 0207 | INSTRUMENTATION / AUTOMATION |
| 683 | 1.9.30.1 | Emissão Inicial | 2d | 2026-07-17 | 2026-07-21 | 558 | 36.15d | 0d | 0207 | INSTRUMENTATION / AUTOMATION |
| 684 | 1.9.30.2 | Análise Tecnored | 1d | 2026-07-21 | 2026-07-22 | 683 | 36.15d | 0d | 0207 | INSTRUMENTATION / AUTOMATION |
| 685 | 1.9.30.3 | Atendimento de comentários | 1d | 2026-07-22 | 2026-07-23 | 684 | 36.15d | 0d | 0207 | INSTRUMENTATION / AUTOMATION |
| 686 | 1.9.30.4 | Aprovação | 1d | 2026-07-23 | 2026-07-24 | 685 | 36.15d |  | 0207 | INSTRUMENTATION / AUTOMATION |
| 687 | 1.9.31 | **DI-F0009-0207-GE-J00001** | 5d | 2026-07-17 | 2026-07-24 |  | 36.15d |  | 0207 | INSTRUMENTATION / AUTOMATION |
| 688 | 1.9.31.1 | Emissão Inicial | 2d | 2026-07-17 | 2026-07-21 | 558 | 36.15d | 0d | 0207 | INSTRUMENTATION / AUTOMATION |
| 689 | 1.9.31.2 | Análise Tecnored | 1d | 2026-07-21 | 2026-07-22 | 688 | 36.15d | 0d | 0207 | INSTRUMENTATION / AUTOMATION |
| 690 | 1.9.31.3 | Atendimento de comentários | 1d | 2026-07-22 | 2026-07-23 | 689 | 36.15d | 0d | 0207 | INSTRUMENTATION / AUTOMATION |
| 691 | 1.9.31.4 | Aprovação | 1d | 2026-07-23 | 2026-07-24 | 690 | 36.15d |  | 0207 | INSTRUMENTATION / AUTOMATION |
| 692 | 1.9.32 | **AG-F0009-0207-GE-J00001** | 5d | 2026-08-13 | 2026-08-19 |  | 16d |  | 0207 | INSTRUMENTATION / AUTOMATION |
| 693 | 1.9.32.1 | Emissão Inicial | 2d | 2026-08-13 | 2026-08-14 | 138 | 16d | 0d | 0207 | INSTRUMENTATION / AUTOMATION |
| 694 | 1.9.32.2 | Análise Tecnored | 1d | 2026-08-17 | 2026-08-17 | 693 | 18d | 0d | 0207 | INSTRUMENTATION / AUTOMATION |
| 695 | 1.9.32.3 | Atendimento de comentários | 1d | 2026-08-18 | 2026-08-18 | 694 | 18d | 0d | 0207 | INSTRUMENTATION / AUTOMATION |
| 696 | 1.9.32.4 | Aprovação | 1d | 2026-08-19 | 2026-08-19 | 695 | 18d |  | 0207 | INSTRUMENTATION / AUTOMATION |
| 697 | 1.9.33 | **RE-F0009-0207-GE-J00001** | 5d | 2026-07-17 | 2026-07-24 |  | 36.15d |  | 0207 | INSTRUMENTATION / AUTOMATION |
| 698 | 1.9.33.1 | Emissão Inicial | 2d | 2026-07-17 | 2026-07-21 | 558 | 36.15d | 0d | 0207 | INSTRUMENTATION / AUTOMATION |
| 699 | 1.9.33.2 | Análise Tecnored | 1d | 2026-07-21 | 2026-07-22 | 698 | 36.15d | 0d | 0207 | INSTRUMENTATION / AUTOMATION |
| 700 | 1.9.33.3 | Atendimento de comentários | 1d | 2026-07-22 | 2026-07-23 | 699 | 36.15d | 0d | 0207 | INSTRUMENTATION / AUTOMATION |
| 701 | 1.9.33.4 | Aprovação | 1d | 2026-07-23 | 2026-07-24 | 700 | 36.15d |  | 0207 | INSTRUMENTATION / AUTOMATION |
| 702 | 1.9.34 | **LL-F0009-0207-GE-J00001** | 5d | 2026-07-17 | 2026-07-24 |  | 36.15d |  | 0207 | INSTRUMENTATION / AUTOMATION |
| 703 | 1.9.34.1 | Emissão Inicial | 2d | 2026-07-17 | 2026-07-21 | 558 | 36.15d | 0d | 0207 | INSTRUMENTATION / AUTOMATION |
| 704 | 1.9.34.2 | Análise Tecnored | 1d | 2026-07-21 | 2026-07-22 | 703 | 36.15d | 0d | 0207 | INSTRUMENTATION / AUTOMATION |
| 705 | 1.9.34.3 | Atendimento de comentários | 1d | 2026-07-22 | 2026-07-23 | 704 | 36.15d | 0d | 0207 | INSTRUMENTATION / AUTOMATION |
| 706 | 1.9.34.4 | Aprovação | 1d | 2026-07-23 | 2026-07-24 | 705 | 36.15d |  | 0207 | INSTRUMENTATION / AUTOMATION |

| ID | WBS | Task | Duration | Start | Finish | Predecessors | Total slack | Free slack | COD_Projeto | Disciplina |
| --- | --- | --- | --- | --- | --- | --- | --- | --- | --- | --- |
| 707 | 1.9.35 | **LB-F0009-0207-GE-J00001** | 5d | 2026-08-17 | 2026-08-21 |  | 16d |  | 0207 | INSTRUMENTATION / AUTOMATION |
| 708 | 1.9.35.1 | Emissão Inicial | 2d | 2026-08-17 | 2026-08-18 | 693 | 16d | 0d | 0207 | INSTRUMENTATION / AUTOMATION |
| 709 | 1.9.35.2 | Análise Tecnored | 1d | 2026-08-19 | 2026-08-19 | 708 | 16d | 0d | 0207 | INSTRUMENTATION / AUTOMATION |
| 710 | 1.9.35.3 | Atendimento de comentários | 1d | 2026-08-20 | 2026-08-20 | 709 | 16d | 0d | 0207 | INSTRUMENTATION / AUTOMATION |
| 711 | 1.9.35.4 | Aprovação | 1d | 2026-08-21 | 2026-08-21 | 710 | 16d |  | 0207 | INSTRUMENTATION / AUTOMATION |
