# CD - F0009 - 0207 - STOCKHOUSE - 20260722

Schedule from MS Project, 2026-07-13 to 2026-08-20, status date 2026-07-21, A marks actual dates.

## Calendars

- Padrão: Mon-Fri 09:00-12:00, 13:00-18:00; Sat-Sun off.

## Resources

| Resource |
| --- |
| Rodrigo |
| TECNORED |
| André |
| Ailton |
| Felipe, André |
| Carlos |
| Everton, Ricardo |
| Lazaro |
| João |
| Tarcizio |
| Felipe |
| André, Felipe |
| Calebe |
| Levy |
| Paulo |
| Marcio |
| Ricardo, Everton |
| Renato |

## Schedule

| ID | WBS | Task | Type | Duration | Start | Finish | Predecessors | Complete | Remaining | Baseline start | Baseline finish | Baseline duration | Total slack | Free slack | Resources | Work | Actual work | Baseline cost | Início_LB_R0 | Término_LB_R0 | COD_Projeto | Disciplina |
| --- | --- | --- | --- | --- | --- | --- | --- | --- | --- | --- | --- | --- | --- | --- | --- | --- | --- | --- | --- | --- | --- | --- |
| 1 | 1 | **F0009 - 0207 - STOCKHOUSE** |  | 29d | 2026-07-13 A | 2026-08-20 |  | 2% | 28.48d | 2026-07-13 | 2026-08-20 | 29d | 0d |  |  | 9637.6h | 145.51h |  | Seg 13/07/26 | Qui 20/08/26 |  |  |
| 2 | 1.1 | **PLANNING** |  | 11d | 2026-07-13 A | 2026-07-27 |  | 12% | 9.63d | 2026-07-13 | 2026-07-27 | 11d | 18d |  |  | 237.6h | 29.6h |  | Seg 13/07/26 | Seg 27/07/26 |  |  |
| 3 | 1.1.1 | **LD-F0009-0207-MB-G-00001** |  | 5.85d | 2026-07-13 A | 2026-07-20 |  | 32% | 4d | 2026-07-13 | 2026-07-20 | 5.85d | 23.15d |  | Renato | 93.6h | 29.6h |  | Seg 13/07/26 | Seg 20/07/26 | 0207 | PLANNING |
| 4 | 1.1.1.1 | Emissão Inicial |  | 1.85d | 2026-07-13 A | 2026-07-14 A |  | 100% |  | 2026-07-13 | 2026-07-14 | 1.85d |  |  | Renato | 14.8h | 14.8h |  | Seg 13/07/26 | Ter 14/07/26 | 0207 | PLANNING |
| 5 | 1.1.1.2 | Análise Tecnored |  | 1d | 2026-07-14 | 2026-07-15 | 4 |  |  | 2026-07-14 | 2026-07-15 | 1d | 23.15d | 0d | TECNORED | 8h |  |  | Ter 14/07/26 | Qua 15/07/26 | 0207 | PLANNING |
| 6 | 1.1.1.3 | Atendimento de comentários |  | 2d | 2026-07-15 | 2026-07-17 | 5 |  |  | 2026-07-15 | 2026-07-17 | 2d | 23.15d | 0d | Renato | 16h |  |  | Qua 15/07/26 | Sex 17/07/26 | 0207 | PLANNING |
| 7 | 1.1.1.4 | Aprovação |  | 1d | 2026-07-17 | 2026-07-20 | 6 |  |  | 2026-07-17 | 2026-07-20 | 1d | 23.15d |  | TECNORED | 8h |  |  | Sex 17/07/26 | Seg 20/07/26 | 0207 | PLANNING |
| 8 | 1.1.2 | **CR-F0009-0207-MB-G-00001** |  | 9d | 2026-07-15 | 2026-07-27 |  |  |  | 2026-07-15 | 2026-07-27 | 9d | 18d |  | Renato | 144h |  |  | Qua 15/07/26 | Seg 27/07/26 | 0207 | PLANNING |
| 9 | 1.1.2.1 | Emissão Inicial |  | 5d | 2026-07-15 | 2026-07-21 |  |  |  | 2026-07-15 | 2026-07-21 | 5d | 18d | 0d | Renato | 40h |  |  | Qua 15/07/26 | Ter 21/07/26 | 0207 | PLANNING |
| 10 | 1.1.2.2 | Análise Tecnored |  | 1d | 2026-07-22 | 2026-07-22 | 9 |  |  | 2026-07-22 | 2026-07-22 | 1d | 18d | 0d | TECNORED | 8h |  |  | Qua 22/07/26 | Qua 22/07/26 | 0207 | PLANNING |
| 11 | 1.1.2.3 | Atendimento de comentários |  | 2d | 2026-07-23 | 2026-07-24 | 10 |  |  | 2026-07-23 | 2026-07-24 | 2d | 18d | 0d | Renato | 16h |  |  | Qui 23/07/26 | Sex 24/07/26 | 0207 | PLANNING |
| 12 | 1.1.2.4 | Aprovação |  | 1d | 2026-07-27 | 2026-07-27 | 11 |  |  | 2026-07-27 | 2026-07-27 | 1d | 18d |  | TECNORED | 8h |  |  | Seg 27/07/26 | Seg 27/07/26 | 0207 | PLANNING |
| 13 | 1.2 | **COORDINATION** |  | 22d | 2026-07-15 A | 2026-08-13 |  | 10% | 19.8d | 2026-07-15 | 2026-08-13 | 22d | 5d |  |  | 960h | 80h |  | Qua 15/07/26 | Qui 13/08/26 |  |  |
| 14 | 1.2.1 | **CM-F0009-0000-MB-G-00001** |  | 7d | 2026-07-15 | 2026-07-23 |  |  |  | 2026-07-15 | 2026-07-23 | 7d | 20d |  | Renato | 112h |  |  | Qua 15/07/26 | Qui 23/07/26 | 0207 | COORDINATION |
| 15 | 1.2.1.1 | Emissão Inicial |  | 3d | 2026-07-15 | 2026-07-17 |  |  |  | 2026-07-15 | 2026-07-17 | 3d | 20d | 0d | Renato | 24h |  |  | Qua 15/07/26 | Sex 17/07/26 | 0207 | COORDINATION |
| 16 | 1.2.1.2 | Análise Tecnored |  | 1d | 2026-07-20 | 2026-07-20 | 15 |  |  | 2026-07-20 | 2026-07-20 | 1d | 20d | 0d | TECNORED | 8h |  |  | Seg 20/07/26 | Seg 20/07/26 | 0207 | COORDINATION |
| 17 | 1.2.1.3 | Atendimento de comentários |  | 2d | 2026-07-21 | 2026-07-22 | 16 |  |  | 2026-07-21 | 2026-07-22 | 2d | 20d | 0d | Renato | 16h |  |  | Ter 21/07/26 | Qua 22/07/26 | 0207 | COORDINATION |
| 18 | 1.2.1.4 | Aprovação |  | 1d | 2026-07-23 | 2026-07-23 | 17 |  |  | 2026-07-23 | 2026-07-23 | 1d | 20d |  | TECNORED | 8h |  |  | Qui 23/07/26 | Qui 23/07/26 | 0207 | COORDINATION |
| 19 | 1.2.2 | **PP-F0009-0000-MB-G-00001** | inactive | 9d | 2026-07-15 | 2026-07-27 |  |  |  |  |  |  | 1d |  | Renato | 144h |  | -0 | Qua 15/07/26 | Seg 27/07/26 | 0207 | COORDINATION |
| 20 | 1.2.2.1 | Emissão Inicial | inactive | 5d | 2026-07-15 | 2026-07-21 |  |  |  |  |  |  | 1d | 0d | Renato | 40h |  | -0 | Qua 15/07/26 | Ter 21/07/26 | 0207 | COORDINATION |
| 21 | 1.2.2.2 | Análise Tecnored | inactive | 1d | 2026-07-22 | 2026-07-22 | 20 |  |  |  |  |  | 18d | 0d | TECNORED | 8h |  | -0 | Qua 22/07/26 | Qua 22/07/26 | 0207 | COORDINATION |
| 22 | 1.2.2.3 | Atendimento de comentários | inactive | 2d | 2026-07-23 | 2026-07-24 | 21 |  |  |  |  |  | 18d | 0d | Renato | 16h |  | -0 | Qui 23/07/26 | Sex 24/07/26 | 0207 | COORDINATION |
| 23 | 1.2.2.4 | Aprovação | inactive | 1d | 2026-07-27 | 2026-07-27 | 22 |  |  |  |  |  | 18d |  | TECNORED | 8h |  | -0 | Seg 27/07/26 | Seg 27/07/26 | 0207 | COORDINATION |
| 24 | 1.2.3 | TAP | milestone | 1.1d | 2026-07-16 A | 2026-07-17 A |  | 100% |  | 2026-07-16 | 2026-07-17 | 1.1d |  |  |  |  |  |  | Qui 16/07/26 | Sex 17/07/26 |  | COORDINATION |

| ID | WBS | Task | Duration | Start | Finish | Predecessors | Complete | Remaining | Baseline start | Baseline finish | Baseline duration | Total slack | Free slack | Resources | Work | Actual work | Início_LB_R0 | Término_LB_R0 | COD_Projeto | Disciplina |
| --- | --- | --- | --- | --- | --- | --- | --- | --- | --- | --- | --- | --- | --- | --- | --- | --- | --- | --- | --- | --- |
| 25 | 1.2.4 | **OP-F0009-0000-MB-G-00001** | 7d | 2026-07-17 | 2026-07-28 |  |  |  | 2026-07-17 | 2026-07-28 | 7d | 17.9d |  | Renato | 112h |  | Sex 17/07/26 | Ter 28/07/26 | 0207 | COORDINATION |
| 26 | 1.2.4.1 | Emissão Inicial | 3d | 2026-07-17 | 2026-07-22 | 24 |  |  | 2026-07-17 | 2026-07-22 | 3d | 17.9d | 0d | Renato | 24h |  | Sex 17/07/26 | Qua 22/07/26 | 0207 | COORDINATION |
| 27 | 1.2.4.2 | Análise Tecnored | 1d | 2026-07-22 | 2026-07-23 | 26 |  |  | 2026-07-22 | 2026-07-23 | 1d | 17.9d | 0d | TECNORED | 8h |  | Qua 22/07/26 | Qui 23/07/26 | 0207 | COORDINATION |
| 28 | 1.2.4.3 | Atendimento de comentários | 2d | 2026-07-23 | 2026-07-27 | 27 |  |  | 2026-07-23 | 2026-07-27 | 2d | 17.9d | 0d | Renato | 16h |  | Qui 23/07/26 | Seg 27/07/26 | 0207 | COORDINATION |
| 29 | 1.2.4.4 | Aprovação | 1d | 2026-07-27 | 2026-07-28 | 28 |  |  | 2026-07-27 | 2026-07-28 | 1d | 17.9d |  | TECNORED | 8h |  | Seg 27/07/26 | Ter 28/07/26 | 0207 | COORDINATION |
| 30 | 1.2.5 | **MM-F0009-0000-MB-G-00001** | 9d | 2026-07-15 | 2026-07-27 |  |  |  | 2026-07-15 | 2026-07-27 | 9d | 18d |  | Renato | 144h |  | Qua 15/07/26 | Seg 27/07/26 | 0207 | COORDINATION |
| 31 | 1.2.5.1 | Emissão Inicial | 5d | 2026-07-15 | 2026-07-21 |  |  |  | 2026-07-15 | 2026-07-21 | 5d | 18d | 0d | Renato | 40h |  | Qua 15/07/26 | Ter 21/07/26 | 0207 | COORDINATION |
| 32 | 1.2.5.2 | Análise Tecnored | 1d | 2026-07-22 | 2026-07-22 | 31 |  |  | 2026-07-22 | 2026-07-22 | 1d | 18d | 0d | TECNORED | 8h |  | Qua 22/07/26 | Qua 22/07/26 | 0207 | COORDINATION |
| 33 | 1.2.5.3 | Atendimento de comentários | 2d | 2026-07-23 | 2026-07-24 | 32 |  |  | 2026-07-23 | 2026-07-24 | 2d | 18d | 0d | Renato | 16h |  | Qui 23/07/26 | Sex 24/07/26 | 0207 | COORDINATION |
| 34 | 1.2.5.4 | Aprovação | 1d | 2026-07-27 | 2026-07-27 | 33 |  |  | 2026-07-27 | 2026-07-27 | 1d | 18d |  | TECNORED | 8h |  | Seg 27/07/26 | Seg 27/07/26 | 0207 | COORDINATION |
| 35 | 1.2.6 | **MF-F0009-0000-MB-G-00001** | 7d | 2026-08-05 | 2026-08-13 |  |  |  | 2026-08-05 | 2026-08-13 | 7d | 5d |  | Renato | 112h |  | Qua 05/08/26 | Qui 13/08/26 | 0207 | COORDINATION |
| 36 | 1.2.6.1 | Emissão Inicial | 3d | 2026-08-05 | 2026-08-07 | 183, 365, 421, 482 |  |  | 2026-08-05 | 2026-08-07 | 3d | 5d | 0d | Renato | 24h |  | Qua 05/08/26 | Sex 07/08/26 | 0207 | COORDINATION |
| 37 | 1.2.6.2 | Análise Tecnored | 1d | 2026-08-10 | 2026-08-10 | 36 |  |  | 2026-08-10 | 2026-08-10 | 1d | 5d | 0d | TECNORED | 8h |  | Seg 10/08/26 | Seg 10/08/26 | 0207 | COORDINATION |
| 38 | 1.2.6.3 | Atendimento de comentários | 2d | 2026-08-11 | 2026-08-12 | 37 |  |  | 2026-08-11 | 2026-08-12 | 2d | 5d | 0d | Renato | 16h |  | Ter 11/08/26 | Qua 12/08/26 | 0207 | COORDINATION |
| 39 | 1.2.6.4 | Aprovação | 1d | 2026-08-13 | 2026-08-13 | 38 |  |  | 2026-08-13 | 2026-08-13 | 1d | 5d |  | TECNORED | 8h |  | Qui 13/08/26 | Qui 13/08/26 | 0207 | COORDINATION |
| 40 | 1.2.7 | **EA-F0009-0000-MB-G-00001** | 9d | 2026-07-15 A | 2026-07-27 |  | 56% | 4d | 2026-07-15 | 2026-07-27 | 9d | 18d |  | Renato | 144h | 80h | Qua 15/07/26 | Seg 27/07/26 | 0207 | COORDINATION |
| 41 | 1.2.7.1 | Emissão Inicial | 5d | 2026-07-15 A | 2026-07-21 A |  | 100% |  | 2026-07-15 | 2026-07-21 | 5d |  |  | Renato | 40h | 40h | Qua 15/07/26 | Ter 21/07/26 | 0207 | COORDINATION |
| 42 | 1.2.7.2 | Análise Tecnored | 1d | 2026-07-22 | 2026-07-22 | 41 |  |  | 2026-07-22 | 2026-07-22 | 1d | 18d | 0d | TECNORED | 8h |  | Qua 22/07/26 | Qua 22/07/26 | 0207 | COORDINATION |
| 43 | 1.2.7.3 | Atendimento de comentários | 2d | 2026-07-23 | 2026-07-24 | 42 |  |  | 2026-07-23 | 2026-07-24 | 2d | 18d | 0d | Renato | 16h |  | Qui 23/07/26 | Sex 24/07/26 | 0207 | COORDINATION |
| 44 | 1.2.7.4 | Aprovação | 1d | 2026-07-27 | 2026-07-27 | 43 |  |  | 2026-07-27 | 2026-07-27 | 1d | 18d |  | TECNORED | 8h |  | Seg 27/07/26 | Seg 27/07/26 | 0207 | COORDINATION |
| 45 | 1.2.8 | **RM-F0009-0000-GE-G-00001** | 7d | 2026-07-15 | 2026-07-23 |  |  |  | 2026-07-15 | 2026-07-23 | 7d | 20d |  | Renato | 112h |  | Qua 15/07/26 | Qui 23/07/26 | 0207 | COORDINATION |
| 46 | 1.2.8.1 | Emissão Inicial | 3d | 2026-07-15 | 2026-07-17 | 20FS+20ed |  |  | 2026-07-15 | 2026-07-17 | 3d | 20d | 0d | Renato | 24h |  | Qua 15/07/26 | Sex 17/07/26 | 0207 | COORDINATION |
| 47 | 1.2.8.2 | Análise Tecnored | 1d | 2026-07-20 | 2026-07-20 | 46 |  |  | 2026-07-20 | 2026-07-20 | 1d | 20d | 0d | TECNORED | 8h |  | Seg 20/07/26 | Seg 20/07/26 | 0207 | COORDINATION |
| 48 | 1.2.8.3 | Atendimento de comentários | 2d | 2026-07-21 | 2026-07-22 | 47 |  |  | 2026-07-21 | 2026-07-22 | 2d | 20d | 0d | Renato | 16h |  | Ter 21/07/26 | Qua 22/07/26 | 0207 | COORDINATION |
| 49 | 1.2.8.4 | Aprovação | 1d | 2026-07-23 | 2026-07-23 | 48 |  |  | 2026-07-23 | 2026-07-23 | 1d | 20d |  | TECNORED | 8h |  | Qui 23/07/26 | Qui 23/07/26 | 0207 | COORDINATION |

| ID | WBS | Task | Type | Duration | Start | Finish | Predecessors | Complete | Remaining | Baseline start | Baseline finish | Baseline duration | Total slack | Free slack | Resources | Work | Actual work | Baseline cost | Início_LB_R0 | Término_LB_R0 | COD_Projeto | Disciplina |
| --- | --- | --- | --- | --- | --- | --- | --- | --- | --- | --- | --- | --- | --- | --- | --- | --- | --- | --- | --- | --- | --- | --- |
| 50 | 1.2.9 | **RM-F0009-0000-GE-G-00002** |  | 7d | 2026-07-15 | 2026-07-23 |  |  |  | 2026-07-15 | 2026-07-23 | 7d | 20d |  | Renato | 112h |  |  | Qua 15/07/26 | Qui 23/07/26 | 0207 | COORDINATION |
| 51 | 1.2.9.1 | Emissão Inicial |  | 3d | 2026-07-15 | 2026-07-17 |  |  |  | 2026-07-15 | 2026-07-17 | 3d | 20d | 0d | Renato | 24h |  |  | Qua 15/07/26 | Sex 17/07/26 | 0207 | COORDINATION |
| 52 | 1.2.9.2 | Análise Tecnored |  | 1d | 2026-07-20 | 2026-07-20 | 51 |  |  | 2026-07-20 | 2026-07-20 | 1d | 20d | 0d | TECNORED | 8h |  |  | Seg 20/07/26 | Seg 20/07/26 | 0207 | COORDINATION |
| 53 | 1.2.9.3 | Atendimento de comentários |  | 2d | 2026-07-21 | 2026-07-22 | 52 |  |  | 2026-07-21 | 2026-07-22 | 2d | 20d | 0d | Renato | 16h |  |  | Ter 21/07/26 | Qua 22/07/26 | 0207 | COORDINATION |
| 54 | 1.2.9.4 | Aprovação |  | 1d | 2026-07-23 | 2026-07-23 | 53 |  |  | 2026-07-23 | 2026-07-23 | 1d | 20d |  | TECNORED | 8h |  |  | Qui 23/07/26 | Qui 23/07/26 | 0207 | COORDINATION |
| 55 | 1.2.10 | **RL-F0009-0000-GE-G-00001** | inactive | 7d | 2026-07-15 | 2026-07-23 |  |  |  |  |  |  | 20d |  | Renato | 112h |  | -0 | Qua 15/07/26 | Qui 23/07/26 | 0207 | COORDINATION |
| 56 | 1.2.10.1 | Emissão Inicial | inactive | 3d | 2026-07-15 | 2026-07-17 |  |  |  |  |  |  | 20d | 0d | Renato | 24h |  | -0 | Qua 15/07/26 | Sex 17/07/26 | 0207 | COORDINATION |
| 57 | 1.2.10.2 | Análise Tecnored | inactive | 1d | 2026-07-20 | 2026-07-20 | 56 |  |  |  |  |  | 20d | 0d | TECNORED | 8h |  | -0 | Seg 20/07/26 | Seg 20/07/26 | 0207 | COORDINATION |
| 58 | 1.2.10.3 | Atendimento de comentários | inactive | 2d | 2026-07-21 | 2026-07-22 | 57 |  |  |  |  |  | 20d | 0d | Renato | 16h |  | -0 | Ter 21/07/26 | Qua 22/07/26 | 0207 | COORDINATION |
| 59 | 1.2.10.4 | Aprovação | inactive | 1d | 2026-07-23 | 2026-07-23 | 58 |  |  |  |  |  | 20d |  | TECNORED | 8h |  | -0 | Qui 23/07/26 | Qui 23/07/26 | 0207 | COORDINATION |
| 60 | 1.2.11 | **LP-F0009-0207-MB-G-00001** |  | 7d | 2026-07-15 | 2026-07-23 |  |  |  | 2026-07-15 | 2026-07-23 | 7d | 20d |  | Renato | 112h |  |  | Qua 15/07/26 | Qui 23/07/26 | 0207 | COORDINATION |
| 61 | 1.2.11.1 | Emissão Inicial |  | 3d | 2026-07-15 | 2026-07-17 |  |  |  | 2026-07-15 | 2026-07-17 | 3d | 20d | 0d | Renato | 24h |  |  | Qua 15/07/26 | Sex 17/07/26 | 0207 | COORDINATION |
| 62 | 1.2.11.2 | Análise Tecnored |  | 1d | 2026-07-20 | 2026-07-20 | 61 |  |  | 2026-07-20 | 2026-07-20 | 1d | 20d | 0d | TECNORED | 8h |  |  | Seg 20/07/26 | Seg 20/07/26 | 0207 | COORDINATION |
| 63 | 1.2.11.3 | Atendimento de comentários |  | 2d | 2026-07-21 | 2026-07-22 | 62 |  |  | 2026-07-21 | 2026-07-22 | 2d | 20d | 0d | Renato | 16h |  |  | Ter 21/07/26 | Qua 22/07/26 | 0207 | COORDINATION |
| 64 | 1.2.11.4 | Aprovação |  | 1d | 2026-07-23 | 2026-07-23 | 63 |  |  | 2026-07-23 | 2026-07-23 | 1d | 20d |  | TECNORED | 8h |  |  | Qui 23/07/26 | Qui 23/07/26 | 0207 | COORDINATION |
| 65 | 1.3 | **PROCESS** |  | 12d | 2026-07-15 A | 2026-07-30 |  | 18% | 9.86d | 2026-07-15 | 2026-07-30 | 12d | 15d |  |  | 256h | 35.91h |  | Qua 15/07/26 | Qui 30/07/26 |  |  |
| 66 | 1.3.1 | **CA-F0009-0207-MB-G-00001** | inactive | 7d | 2026-07-21 | 2026-07-29 |  |  |  |  |  |  | 16d |  | André | 112h |  | -0 | Ter 21/07/26 | Qua 29/07/26 | 0207 | PROCESS |
| 67 | 1.3.1.1 | Emissão Inicial | inactive | 3d | 2026-07-21 | 2026-07-23 | 77, 92 |  |  |  |  |  | 16d | 0d | Rodrigo | 24h |  | -0 | Ter 21/07/26 | Qui 23/07/26 | 0207 | PROCESS |
| 68 | 1.3.1.2 | Análise Tecnored | inactive | 1d | 2026-07-24 | 2026-07-24 | 67 |  |  |  |  |  | 16d | 0d | TECNORED | 8h |  | -0 | Sex 24/07/26 | Sex 24/07/26 | 0207 | PROCESS |
| 69 | 1.3.1.3 | Atendimento de comentários | inactive | 2d | 2026-07-27 | 2026-07-28 | 68 |  |  |  |  |  | 16d | 0d | André | 16h |  | -0 | Seg 27/07/26 | Ter 28/07/26 | 0207 | PROCESS |
| 70 | 1.3.1.4 | Aprovação | inactive | 1d | 2026-07-29 | 2026-07-29 | 69 |  |  |  |  |  | 16d |  | TECNORED | 8h |  | -0 | Qua 29/07/26 | Qua 29/07/26 | 0207 | PROCESS |
| 71 | 1.3.2 | **DB-F0009-0207-MB-P-00001** | inactive | 4d | 2026-07-15 | 2026-07-20 |  |  |  |  |  |  | 23d |  | André | 64h |  | -0 | Qua 15/07/26 | Seg 20/07/26 | 0207 | PROCESS |
| 72 | 1.3.2.1 | Emissão Inicial | inactive | 1d | 2026-07-15 | 2026-07-15 |  |  |  |  |  |  | 23d | 0d | Rodrigo | 8h |  | -0 | Qua 15/07/26 | Qua 15/07/26 | 0207 | PROCESS |
| 73 | 1.3.2.2 | Análise Tecnored | inactive | 1d | 2026-07-16 | 2026-07-16 | 72 |  |  |  |  |  | 23d | 0d | TECNORED | 8h |  | -0 | Qui 16/07/26 | Qui 16/07/26 | 0207 | PROCESS |
| 74 | 1.3.2.3 | Atendimento de comentários | inactive | 1d | 2026-07-17 | 2026-07-17 | 73 |  |  |  |  |  | 23d | 0d | André | 8h |  | -0 | Sex 17/07/26 | Sex 17/07/26 | 0207 | PROCESS |
| 75 | 1.3.2.4 | Aprovação | inactive | 1d | 2026-07-20 | 2026-07-20 | 74 |  |  |  |  |  | 23d |  | TECNORED | 8h |  | -0 | Seg 20/07/26 | Seg 20/07/26 | 0207 | PROCESS |

| ID | WBS | Task | Type | Duration | Start | Finish | Predecessors | Complete | Remaining | Baseline start | Baseline finish | Baseline duration | Total slack | Free slack | Constraint | Resources | Work | Actual work | Baseline cost | Início_LB_R0 | Término_LB_R0 | COD_Projeto | Disciplina |
| --- | --- | --- | --- | --- | --- | --- | --- | --- | --- | --- | --- | --- | --- | --- | --- | --- | --- | --- | --- | --- | --- | --- | --- |
| 76 | 1.3.3 | **FG-F0009-0207-MB-P-00001** |  | 8d | 2026-07-15 A | 2026-07-24 |  | 36% | 5.15d | 2026-07-15 | 2026-07-24 | 8d | 19d |  |  | João | 128h | 35.91h |  | Qua 15/07/26 | Sex 24/07/26 | 0207 | PROCESS |
| 77 | 1.3.3.1 | Emissão Inicial |  | 4d | 2026-07-15 A | 2026-07-20 |  | 71% | 1.15d | 2026-07-15 | 2026-07-20 | 4d | 5d | 0d | finish no earlier than 2026-07-20 | Rodrigo | 32h | 22.8h |  | Qua 15/07/26 | Seg 20/07/26 | 0207 | PROCESS |
| 78 | 1.3.3.2 | Análise Tecnored |  | 1d | 2026-07-21 | 2026-07-21 | 77 |  |  | 2026-07-21 | 2026-07-21 | 1d | 19d | 0d |  | TECNORED | 8h |  |  | Ter 21/07/26 | Ter 21/07/26 | 0207 | PROCESS |
| 79 | 1.3.3.3 | Atendimento de comentários |  | 2d | 2026-07-22 | 2026-07-23 | 78 |  |  | 2026-07-22 | 2026-07-23 | 2d | 19d | 0d |  | André | 16h |  |  | Qua 22/07/26 | Qui 23/07/26 | 0207 | PROCESS |
| 80 | 1.3.3.4 | Aprovação |  | 1d | 2026-07-24 | 2026-07-24 | 79 |  |  | 2026-07-24 | 2026-07-24 | 1d | 19d |  |  | TECNORED | 8h |  |  | Sex 24/07/26 | Sex 24/07/26 | 0207 | PROCESS |
| 81 | 1.3.4 | **MD-F0009-0207-MB-P-00001** | inactive | 7d | 2026-07-27 | 2026-08-04 |  |  |  |  |  |  | 12d |  |  | Carlos | 112h |  | -0 | Seg 27/07/26 | Ter 04/08/26 | 0207 | PROCESS |
| 82 | 1.3.4.1 | Emissão Inicial | inactive | 3d | 2026-07-27 | 2026-07-29 | 87 |  |  |  |  |  | 12d | 0d |  | Rodrigo | 24h |  | -0 | Seg 27/07/26 | Qua 29/07/26 | 0207 | PROCESS |
| 83 | 1.3.4.2 | Análise Tecnored | inactive | 1d | 2026-07-30 | 2026-07-30 | 82 |  |  |  |  |  | 12d | 0d |  | TECNORED | 8h |  | -0 | Qui 30/07/26 | Qui 30/07/26 | 0207 | PROCESS |
| 84 | 1.3.4.3 | Atendimento de comentários | inactive | 2d | 2026-07-31 | 2026-08-03 | 83 |  |  |  |  |  | 12d | 0d |  | André | 16h |  | -0 | Sex 31/07/26 | Seg 03/08/26 | 0207 | PROCESS |
| 85 | 1.3.4.4 | Aprovação | inactive | 1d | 2026-08-04 | 2026-08-04 | 84 |  |  |  |  |  | 12d |  |  | TECNORED | 8h |  | -0 | Ter 04/08/26 | Ter 04/08/26 | 0207 | PROCESS |
| 86 | 1.3.5 | **MC-F0009-0207-MB-P-00001** |  | 8d | 2026-07-21 | 2026-07-30 |  |  |  | 2026-07-21 | 2026-07-30 | 8d | 15d |  |  | João | 128h |  |  | Ter 21/07/26 | Qui 30/07/26 | 0207 | PROCESS |
| 87 | 1.3.5.1 | Emissão Inicial |  | 4d | 2026-07-21 | 2026-07-24 | 77 |  |  | 2026-07-21 | 2026-07-24 | 4d | 15d | 0d | finish no earlier than 2026-07-22 | Rodrigo | 32h |  |  | Ter 21/07/26 | Sex 24/07/26 | 0207 | PROCESS |
| 88 | 1.3.5.2 | Análise Tecnored |  | 1d | 2026-07-27 | 2026-07-27 | 87 |  |  | 2026-07-27 | 2026-07-27 | 1d | 15d | 0d |  | TECNORED | 8h |  |  | Seg 27/07/26 | Seg 27/07/26 | 0207 | PROCESS |
| 89 | 1.3.5.3 | Atendimento de comentários |  | 2d | 2026-07-28 | 2026-07-29 | 88 |  |  | 2026-07-28 | 2026-07-29 | 2d | 15d | 0d |  | André | 16h |  |  | Ter 28/07/26 | Qua 29/07/26 | 0207 | PROCESS |
| 90 | 1.3.5.4 | Aprovação |  | 1d | 2026-07-30 | 2026-07-30 | 89 |  |  | 2026-07-30 | 2026-07-30 | 1d | 15d |  |  | TECNORED | 8h |  |  | Qui 30/07/26 | Qui 30/07/26 | 0207 | PROCESS |
| 91 | 1.3.6 | **ET-F0009-0207-MB-P-00001** | inactive | 7d | 2026-07-15 | 2026-07-23 |  |  |  |  |  |  | 17d |  |  | Rodrigo | 112h |  | -0 | Qua 15/07/26 | Qui 23/07/26 | 0207 | PROCESS |
| 92 | 1.3.6.1 | Emissão Inicial | inactive | 3d | 2026-07-15 | 2026-07-17 |  |  |  |  |  |  | 17d | 0d |  | Rodrigo | 24h |  | -0 | Qua 15/07/26 | Sex 17/07/26 | 0207 | PROCESS |
| 93 | 1.3.6.2 | Análise Tecnored | inactive | 1d | 2026-07-20 | 2026-07-20 | 92 |  |  |  |  |  | 20d | 0d |  | TECNORED | 8h |  | -0 | Seg 20/07/26 | Seg 20/07/26 | 0207 | PROCESS |
| 94 | 1.3.6.3 | Atendimento de comentários | inactive | 2d | 2026-07-21 | 2026-07-22 | 93 |  |  |  |  |  | 20d | 0d |  | André | 16h |  | -0 | Ter 21/07/26 | Qua 22/07/26 | 0207 | PROCESS |
| 95 | 1.3.6.4 | Aprovação | inactive | 1d | 2026-07-23 | 2026-07-23 | 94 |  |  |  |  |  | 20d |  |  | TECNORED | 8h |  | -0 | Qui 23/07/26 | Qui 23/07/26 | 0207 | PROCESS |
| 96 | 1.4 | **MECHANICAL** |  | 17d | 2026-07-21 | 2026-08-12 |  |  |  | 2026-07-21 | 2026-08-12 | 17d | 5d |  |  |  | 1968h |  |  | Ter 21/07/26 | Qua 12/08/26 |  |  |
| 97 | 1.4.1 | **LE-F0009-0207-MB-M-00001** |  | 12d | 2026-07-21 | 2026-08-05 |  |  |  | 2026-07-21 | 2026-08-05 | 12d | 9d |  |  | Tarcizio | 192h |  |  | Ter 21/07/26 | Qua 05/08/26 | 0207 | MECHANICAL |
| 98 | 1.4.1.1 | Emissão Inicial |  | 9d | 2026-07-21 | 2026-07-31 | 77 |  |  | 2026-07-21 | 2026-07-31 | 9d | 9d | 0d | finish no earlier than 2026-07-31 | Rodrigo | 72h |  |  | Ter 21/07/26 | Sex 31/07/26 | 0207 | MECHANICAL |
| 99 | 1.4.1.2 | Análise Tecnored |  | 1d | 2026-08-03 | 2026-08-03 | 98 |  |  | 2026-08-03 | 2026-08-03 | 1d | 11d | 0d |  | TECNORED | 8h |  |  | Seg 03/08/26 | Seg 03/08/26 | 0207 | MECHANICAL |
| 100 | 1.4.1.3 | Atendimento de comentários |  | 1d | 2026-08-04 | 2026-08-04 | 99 |  |  | 2026-08-04 | 2026-08-04 | 1d | 11d | 0d |  | André | 8h |  |  | Ter 04/08/26 | Ter 04/08/26 | 0207 | MECHANICAL |
| 101 | 1.4.1.4 | Aprovação |  | 1d | 2026-08-05 | 2026-08-05 | 100 |  |  | 2026-08-05 | 2026-08-05 | 1d | 11d |  |  | TECNORED | 8h |  |  | Qua 05/08/26 | Qua 05/08/26 | 0207 | MECHANICAL |

| ID | WBS | Task | Type | Duration | Start | Finish | Predecessors | Baseline start | Baseline finish | Baseline duration | Total slack | Free slack | Constraint | Resources | Work | Baseline cost | Início_LB_R0 | Término_LB_R0 | COD_Projeto | Disciplina |
| --- | --- | --- | --- | --- | --- | --- | --- | --- | --- | --- | --- | --- | --- | --- | --- | --- | --- | --- | --- | --- |
| 102 | 1.4.2 | **MD-F0009-0207-MB-M-00001** | inactive | 6d | 2026-07-15 | 2026-07-22 |  |  |  |  | 21d |  |  | Carlos | 96h | -0 | Qua 15/07/26 | Qua 22/07/26 | 0207 | MECHANICAL |
| 103 | 1.4.2.1 | Emissão Inicial | inactive | 3d | 2026-07-15 | 2026-07-17 |  |  |  |  | 21d | 0d |  | Rodrigo | 24h | -0 | Qua 15/07/26 | Sex 17/07/26 | 0207 | MECHANICAL |
| 104 | 1.4.2.2 | Análise Tecnored | inactive | 1d | 2026-07-20 | 2026-07-20 | 103 |  |  |  | 21d | 0d |  | TECNORED | 8h | -0 | Seg 20/07/26 | Seg 20/07/26 | 0207 | MECHANICAL |
| 105 | 1.4.2.3 | Atendimento de comentários | inactive | 1d | 2026-07-21 | 2026-07-21 | 104 |  |  |  | 21d | 0d |  | André | 8h | -0 | Ter 21/07/26 | Ter 21/07/26 | 0207 | MECHANICAL |
| 106 | 1.4.2.4 | Aprovação | inactive | 1d | 2026-07-22 | 2026-07-22 | 105 |  |  |  | 21d |  |  | TECNORED | 8h | -0 | Qua 22/07/26 | Qua 22/07/26 | 0207 | MECHANICAL |
| 107 | 1.4.3 | **MC-F0009-0207-MB-M-00001** |  | 12d | 2026-07-21 | 2026-08-05 |  | 2026-07-21 | 2026-08-05 | 12d | 9d |  |  | Tarcizio | 192h |  | Ter 21/07/26 | Qua 05/08/26 | 0207 | MECHANICAL |
| 108 | 1.4.3.1 | Emissão Inicial |  | 9d | 2026-07-21 | 2026-07-31 | 77 | 2026-07-21 | 2026-07-31 | 9d | 9d | 0d | finish no earlier than 2026-07-31 | Rodrigo | 72h |  | Ter 21/07/26 | Sex 31/07/26 | 0207 | MECHANICAL |
| 109 | 1.4.3.2 | Análise Tecnored |  | 1d | 2026-08-03 | 2026-08-03 | 108 | 2026-08-03 | 2026-08-03 | 1d | 11d | 0d |  | TECNORED | 8h |  | Seg 03/08/26 | Seg 03/08/26 | 0207 | MECHANICAL |
| 110 | 1.4.3.3 | Atendimento de comentários |  | 1d | 2026-08-04 | 2026-08-04 | 109 | 2026-08-04 | 2026-08-04 | 1d | 11d | 0d |  | André | 8h |  | Ter 04/08/26 | Ter 04/08/26 | 0207 | MECHANICAL |
| 111 | 1.4.3.4 | Aprovação |  | 1d | 2026-08-05 | 2026-08-05 | 110 | 2026-08-05 | 2026-08-05 | 1d | 11d |  |  | TECNORED | 8h |  | Qua 05/08/26 | Qua 05/08/26 | 0207 | MECHANICAL |
| 112 | 1.4.4 | **PQ-F0009-0207-MB-M-00001** |  | 4d | 2026-08-07 | 2026-08-12 |  | 2026-08-07 | 2026-08-12 | 4d | 6d |  |  | Tarcizio | 64h |  | Sex 07/08/26 | Qua 12/08/26 | 0207 | MECHANICAL |
| 113 | 1.4.4.1 | Emissão Inicial |  | 1d | 2026-08-07 | 2026-08-07 |  | 2026-08-07 | 2026-08-07 | 1d | 6d | 0d | finish no earlier than 2026-08-07 | Rodrigo | 8h |  | Sex 07/08/26 | Sex 07/08/26 | 0207 | MECHANICAL |
| 114 | 1.4.4.2 | Análise Tecnored |  | 1d | 2026-08-10 | 2026-08-10 | 113 | 2026-08-10 | 2026-08-10 | 1d | 6d | 0d |  | TECNORED | 8h |  | Seg 10/08/26 | Seg 10/08/26 | 0207 | MECHANICAL |
| 115 | 1.4.4.3 | Atendimento de comentários |  | 1d | 2026-08-11 | 2026-08-11 | 114 | 2026-08-11 | 2026-08-11 | 1d | 6d | 0d |  | André | 8h |  | Ter 11/08/26 | Ter 11/08/26 | 0207 | MECHANICAL |
| 116 | 1.4.4.4 | Aprovação |  | 1d | 2026-08-12 | 2026-08-12 | 115 | 2026-08-12 | 2026-08-12 | 1d | 6d |  |  | TECNORED | 8h |  | Qua 12/08/26 | Qua 12/08/26 | 0207 | MECHANICAL |
| 117 | 1.4.5 | **AG-F0009-0207-MB-M-00000** | inactive | 5d | 2026-08-14 | 2026-08-20 |  |  |  |  | -11d | 0d |  | Ailton | 80h | -0 | Sex 14/08/26 | Qui 20/08/26 | 0207 | MECHANICAL |
| 118 | 1.4.5.1 | Emissão Inicial | inactive | 2d | 2026-08-14 | 2026-08-17 | 183 |  |  |  | -11d | 0d |  | Rodrigo | 16h | -0 | Sex 14/08/26 | Seg 17/08/26 | 0207 | MECHANICAL |
| 119 | 1.4.5.2 | Análise Tecnored | inactive | 1d | 2026-08-18 | 2026-08-18 | 118 |  |  |  | 0d |  |  | TECNORED | 8h | -0 | Ter 18/08/26 | Ter 18/08/26 | 0207 | MECHANICAL |
| 120 | 1.4.5.3 | Atendimento de comentários | inactive | 1d | 2026-08-19 | 2026-08-19 | 119 |  |  |  | 0d |  |  | André | 8h | -0 | Qua 19/08/26 | Qua 19/08/26 | 0207 | MECHANICAL |
| 121 | 1.4.5.4 | Aprovação | inactive | 1d | 2026-08-20 | 2026-08-20 | 120 |  |  |  | 0d |  |  | TECNORED | 8h | -0 | Qui 20/08/26 | Qui 20/08/26 | 0207 | MECHANICAL |
| 122 | 1.4.6 | **AG-F0009-0207-MB-M-00001** |  | 5d | 2026-07-29 | 2026-08-04 |  | 2026-07-29 | 2026-08-04 | 5d | 3d |  |  | Felipe | 80h |  | Qua 29/07/26 | Ter 04/08/26 | 0207 | MECHANICAL |
| 123 | 1.4.6.1 | Emissão Inicial |  | 2d | 2026-07-29 | 2026-07-30 | 118SS | 2026-07-29 | 2026-07-30 | 2d | 3d | 0d | start no earlier than 2026-07-29 | Rodrigo | 16h |  | Qua 29/07/26 | Qui 30/07/26 | 0207 | MECHANICAL |
| 124 | 1.4.6.2 | Análise Tecnored |  | 1d | 2026-07-31 | 2026-07-31 | 123 | 2026-07-31 | 2026-07-31 | 1d | 12d | 0d |  | TECNORED | 8h |  | Sex 31/07/26 | Sex 31/07/26 | 0207 | MECHANICAL |
| 125 | 1.4.6.3 | Atendimento de comentários |  | 1d | 2026-08-03 | 2026-08-03 | 124 | 2026-08-03 | 2026-08-03 | 1d | 12d | 0d |  | André | 8h |  | Seg 03/08/26 | Seg 03/08/26 | 0207 | MECHANICAL |
| 126 | 1.4.6.4 | Aprovação |  | 1d | 2026-08-04 | 2026-08-04 | 125 | 2026-08-04 | 2026-08-04 | 1d | 12d |  |  | TECNORED | 8h |  | Ter 04/08/26 | Ter 04/08/26 | 0207 | MECHANICAL |

| ID | WBS | Task | Type | Duration | Start | Finish | Predecessors | Baseline start | Baseline finish | Baseline duration | Total slack | Free slack | Constraint | Resources | Work | Baseline cost | Início_LB_R0 | Término_LB_R0 | COD_Projeto | Disciplina |
| --- | --- | --- | --- | --- | --- | --- | --- | --- | --- | --- | --- | --- | --- | --- | --- | --- | --- | --- | --- | --- |
| 127 | 1.4.7 | **AG-F0009-0207-MB-M-00002** |  | 5d | 2026-07-29 | 2026-08-04 |  | 2026-07-29 | 2026-08-04 | 5d | 3d |  |  | Felipe | 80h |  | Qua 29/07/26 | Ter 04/08/26 | 0207 | MECHANICAL |
| 128 | 1.4.7.1 | Emissão Inicial |  | 2d | 2026-07-29 | 2026-07-30 | 118 | 2026-07-29 | 2026-07-30 | 2d | 3d | 0d | start no earlier than 2026-07-29 | Rodrigo | 16h |  | Qua 29/07/26 | Qui 30/07/26 | 0207 | MECHANICAL |
| 129 | 1.4.7.2 | Análise Tecnored |  | 1d | 2026-07-31 | 2026-07-31 | 128 | 2026-07-31 | 2026-07-31 | 1d | 12d | 0d |  | TECNORED | 8h |  | Sex 31/07/26 | Sex 31/07/26 | 0207 | MECHANICAL |
| 130 | 1.4.7.3 | Atendimento de comentários |  | 1d | 2026-08-03 | 2026-08-03 | 129 | 2026-08-03 | 2026-08-03 | 1d | 12d | 0d |  | André | 8h |  | Seg 03/08/26 | Seg 03/08/26 | 0207 | MECHANICAL |
| 131 | 1.4.7.4 | Aprovação |  | 1d | 2026-08-04 | 2026-08-04 | 130 | 2026-08-04 | 2026-08-04 | 1d | 12d |  |  | TECNORED | 8h |  | Ter 04/08/26 | Ter 04/08/26 | 0207 | MECHANICAL |
| 132 | 1.4.8 | **AG-F0009-0207-MB-M-00003** | inactive | 5d | 2026-07-31 | 2026-08-06 |  |  |  |  | 10d |  |  | Felipe | 80h | -0 | Sex 31/07/26 | Qui 06/08/26 | 0207 | MECHANICAL |
| 133 | 1.4.8.1 | Emissão Inicial | inactive | 2d | 2026-07-31 | 2026-08-03 | 123 |  |  |  | 10d | 0d |  | Rodrigo | 16h | -0 | Sex 31/07/26 | Seg 03/08/26 | 0207 | MECHANICAL |
| 134 | 1.4.8.2 | Análise Tecnored | inactive | 1d | 2026-08-04 | 2026-08-04 | 133 |  |  |  | 10d | 0d |  | TECNORED | 8h | -0 | Ter 04/08/26 | Ter 04/08/26 | 0207 | MECHANICAL |
| 135 | 1.4.8.3 | Atendimento de comentários | inactive | 1d | 2026-08-05 | 2026-08-05 | 134 |  |  |  | 10d | 0d |  | André | 8h | -0 | Qua 05/08/26 | Qua 05/08/26 | 0207 | MECHANICAL |
| 136 | 1.4.8.4 | Aprovação | inactive | 1d | 2026-08-06 | 2026-08-06 | 135 |  |  |  | 10d |  |  | TECNORED | 8h | -0 | Qui 06/08/26 | Qui 06/08/26 | 0207 | MECHANICAL |
| 137 | 1.4.9 | **AG-F0009-0207-MB-M-00004** | inactive | 5d | 2026-07-31 | 2026-08-06 |  |  |  |  | 10d |  |  | Felipe | 80h | -0 | Sex 31/07/26 | Qui 06/08/26 | 0207 | MECHANICAL |
| 138 | 1.4.9.1 | Emissão Inicial | inactive | 2d | 2026-07-31 | 2026-08-03 | 128 |  |  |  | 10d | 0d |  | Rodrigo | 16h | -0 | Sex 31/07/26 | Seg 03/08/26 | 0207 | MECHANICAL |
| 139 | 1.4.9.2 | Análise Tecnored | inactive | 1d | 2026-08-04 | 2026-08-04 | 138 |  |  |  | 10d | 0d |  | TECNORED | 8h | -0 | Ter 04/08/26 | Ter 04/08/26 | 0207 | MECHANICAL |
| 140 | 1.4.9.3 | Atendimento de comentários | inactive | 1d | 2026-08-05 | 2026-08-05 | 139 |  |  |  | 10d | 0d |  | André | 8h | -0 | Qua 05/08/26 | Qua 05/08/26 | 0207 | MECHANICAL |
| 141 | 1.4.9.4 | Aprovação | inactive | 1d | 2026-08-06 | 2026-08-06 | 140 |  |  |  | 10d |  |  | TECNORED | 8h | -0 | Qui 06/08/26 | Qui 06/08/26 | 0207 | MECHANICAL |
| 142 | 1.4.10 | **ML-F0009-0207-MB-M-00000** |  | 6d | 2026-07-24 | 2026-07-31 |  | 2026-07-24 | 2026-07-31 | 6d | 8d |  |  | Felipe, André | 96h |  | Sex 24/07/26 | Sex 31/07/26 | 0207 | MECHANICAL |
| 143 | 1.4.10.1 | Emissão Inicial |  | 3d | 2026-07-24 | 2026-07-28 |  | 2026-07-24 | 2026-07-28 | 3d | 8d | 0d | start no earlier than 2026-07-24 | Rodrigo | 24h |  | Sex 24/07/26 | Ter 28/07/26 | 0207 | MECHANICAL |
| 144 | 1.4.10.2 | Análise Tecnored |  | 1d | 2026-07-29 | 2026-07-29 | 143 | 2026-07-29 | 2026-07-29 | 1d | 14d | 0d |  | TECNORED | 8h |  | Qua 29/07/26 | Qua 29/07/26 | 0207 | MECHANICAL |
| 145 | 1.4.10.3 | Atendimento de comentários |  | 1d | 2026-07-30 | 2026-07-30 | 144 | 2026-07-30 | 2026-07-30 | 1d | 14d | 0d |  | André | 8h |  | Qui 30/07/26 | Qui 30/07/26 | 0207 | MECHANICAL |
| 146 | 1.4.10.4 | Aprovação |  | 1d | 2026-07-31 | 2026-07-31 | 145 | 2026-07-31 | 2026-07-31 | 1d | 14d |  |  | TECNORED | 8h |  | Sex 31/07/26 | Sex 31/07/26 | 0207 | MECHANICAL |
| 147 | 1.4.11 | **ML-F0009-0207-MB-M-00001** | inactive | 6d | 2026-07-24 | 2026-07-31 |  |  |  |  | 5d |  |  | Felipe, André | 96h | -0 | Sex 24/07/26 | Sex 31/07/26 | 0207 | MECHANICAL |
| 148 | 1.4.11.1 | Emissão Inicial | inactive | 3d | 2026-07-24 | 2026-07-28 | 143SS |  |  |  | 5d | 0d |  | Rodrigo | 24h | -0 | Sex 24/07/26 | Ter 28/07/26 | 0207 | MECHANICAL |
| 149 | 1.4.11.2 | Análise Tecnored | inactive | 1d | 2026-07-29 | 2026-07-29 | 148 |  |  |  | 14d | 0d |  | TECNORED | 8h | -0 | Qua 29/07/26 | Qua 29/07/26 | 0207 | MECHANICAL |
| 150 | 1.4.11.3 | Atendimento de comentários | inactive | 1d | 2026-07-30 | 2026-07-30 | 149 |  |  |  | 14d | 0d |  | André | 8h | -0 | Qui 30/07/26 | Qui 30/07/26 | 0207 | MECHANICAL |
| 151 | 1.4.11.4 | Aprovação | inactive | 1d | 2026-07-31 | 2026-07-31 | 150 |  |  |  | 14d |  |  | TECNORED | 8h | -0 | Sex 31/07/26 | Sex 31/07/26 | 0207 | MECHANICAL |

| ID | WBS | Task | Type | Duration | Start | Finish | Predecessors | Total slack | Free slack | Resources | Work | Baseline cost | Início_LB_R0 | Término_LB_R0 | COD_Projeto | Disciplina |
| --- | --- | --- | --- | --- | --- | --- | --- | --- | --- | --- | --- | --- | --- | --- | --- | --- |
| 152 | 1.4.12 | **ML-F0009-0207-MB-M-00002** | inactive | 6d | 2026-07-29 | 2026-08-05 |  | -11d | 0d | Felipe, André | 96h | -0 | Qua 29/07/26 | Qua 05/08/26 | 0207 | MECHANICAL |
| 153 | 1.4.12.1 | Emissão Inicial | inactive | 3d | 2026-07-29 | 2026-07-31 | 143 | -11d | 0d | Rodrigo | 24h | -0 | Qua 29/07/26 | Sex 31/07/26 | 0207 | MECHANICAL |
| 154 | 1.4.12.2 | Análise Tecnored | inactive | 1d | 2026-08-03 | 2026-08-03 | 153 | 11d | 0d | TECNORED | 8h | -0 | Seg 03/08/26 | Seg 03/08/26 | 0207 | MECHANICAL |
| 155 | 1.4.12.3 | Atendimento de comentários | inactive | 1d | 2026-08-04 | 2026-08-04 | 154 | 11d | 0d | André | 8h | -0 | Ter 04/08/26 | Ter 04/08/26 | 0207 | MECHANICAL |
| 156 | 1.4.12.4 | Aprovação | inactive | 1d | 2026-08-05 | 2026-08-05 | 155 | 11d |  | TECNORED | 8h | -0 | Qua 05/08/26 | Qua 05/08/26 | 0207 | MECHANICAL |
| 157 | 1.4.13 | **ML-F0009-0207-MB-M-00003** | inactive | 6d | 2026-07-29 | 2026-08-05 |  | 5d |  | Felipe, André | 96h | -0 | Qua 29/07/26 | Qua 05/08/26 | 0207 | MECHANICAL |
| 158 | 1.4.13.1 | Emissão Inicial | inactive | 3d | 2026-07-29 | 2026-07-31 | 148 | 5d | 0d | Rodrigo | 24h | -0 | Qua 29/07/26 | Sex 31/07/26 | 0207 | MECHANICAL |
| 159 | 1.4.13.2 | Análise Tecnored | inactive | 1d | 2026-08-03 | 2026-08-03 | 158 | 11d | 0d | TECNORED | 8h | -0 | Seg 03/08/26 | Seg 03/08/26 | 0207 | MECHANICAL |
| 160 | 1.4.13.3 | Atendimento de comentários | inactive | 1d | 2026-08-04 | 2026-08-04 | 159 | 11d | 0d | André | 8h | -0 | Ter 04/08/26 | Ter 04/08/26 | 0207 | MECHANICAL |
| 161 | 1.4.13.4 | Aprovação | inactive | 1d | 2026-08-05 | 2026-08-05 | 160 | 11d |  | TECNORED | 8h | -0 | Qua 05/08/26 | Qua 05/08/26 | 0207 | MECHANICAL |
| 162 | 1.4.14 | **ML-F0009-0207-MB-M-00004** | inactive | 6d | 2026-08-03 | 2026-08-10 |  | -11d | 0d | Felipe, André | 96h | -0 | Seg 03/08/26 | Seg 10/08/26 | 0207 | MECHANICAL |
| 163 | 1.4.14.1 | Emissão Inicial | inactive | 3d | 2026-08-03 | 2026-08-05 | 153 | -11d | 0d | Rodrigo | 24h | -0 | Seg 03/08/26 | Qua 05/08/26 | 0207 | MECHANICAL |
| 164 | 1.4.14.2 | Análise Tecnored | inactive | 1d | 2026-08-06 | 2026-08-06 | 163 | 8d | 0d | TECNORED | 8h | -0 | Qui 06/08/26 | Qui 06/08/26 | 0207 | MECHANICAL |
| 165 | 1.4.14.3 | Atendimento de comentários | inactive | 1d | 2026-08-07 | 2026-08-07 | 164 | 8d | 0d | André | 8h | -0 | Sex 07/08/26 | Sex 07/08/26 | 0207 | MECHANICAL |
| 166 | 1.4.14.4 | Aprovação | inactive | 1d | 2026-08-10 | 2026-08-10 | 165 | 8d |  | TECNORED | 8h | -0 | Seg 10/08/26 | Seg 10/08/26 | 0207 | MECHANICAL |
| 167 | 1.4.15 | **ML-F0009-0207-MB-M-00005** | inactive | 6d | 2026-08-03 | 2026-08-10 |  | 5d |  | Felipe, André | 96h | -0 | Seg 03/08/26 | Seg 10/08/26 | 0207 | MECHANICAL |
| 168 | 1.4.15.1 | Emissão Inicial | inactive | 3d | 2026-08-03 | 2026-08-05 | 158 | 5d | 0d | Rodrigo | 24h | -0 | Seg 03/08/26 | Qua 05/08/26 | 0207 | MECHANICAL |
| 169 | 1.4.15.2 | Análise Tecnored | inactive | 1d | 2026-08-06 | 2026-08-06 | 168 | 8d | 0d | TECNORED | 8h | -0 | Qui 06/08/26 | Qui 06/08/26 | 0207 | MECHANICAL |
| 170 | 1.4.15.3 | Atendimento de comentários | inactive | 1d | 2026-08-07 | 2026-08-07 | 169 | 8d | 0d | André | 8h | -0 | Sex 07/08/26 | Sex 07/08/26 | 0207 | MECHANICAL |
| 171 | 1.4.15.4 | Aprovação | inactive | 1d | 2026-08-10 | 2026-08-10 | 170 | 8d |  | TECNORED | 8h | -0 | Seg 10/08/26 | Seg 10/08/26 | 0207 | MECHANICAL |
| 172 | 1.4.16 | **ML-F0009-0207-MB-M-00006** | inactive | 6d | 2026-08-06 | 2026-08-13 |  | -11d | 0d | Felipe, André | 96h | -0 | Qui 06/08/26 | Qui 13/08/26 | 0207 | MECHANICAL |
| 173 | 1.4.16.1 | Emissão Inicial | inactive | 3d | 2026-08-06 | 2026-08-10 | 163 | -11d | 0d | Rodrigo | 24h | -0 | Qui 06/08/26 | Seg 10/08/26 | 0207 | MECHANICAL |
| 174 | 1.4.16.2 | Análise Tecnored | inactive | 1d | 2026-08-11 | 2026-08-11 | 173 | 1d | 0d | TECNORED | 8h | -0 | Ter 11/08/26 | Ter 11/08/26 | 0207 | MECHANICAL |
| 175 | 1.4.16.3 | Atendimento de comentários | inactive | 1d | 2026-08-12 | 2026-08-12 | 174 | 1d | 0d | André | 8h | -0 | Qua 12/08/26 | Qua 12/08/26 | 0207 | MECHANICAL |
| 176 | 1.4.16.4 | Aprovação | inactive | 1d | 2026-08-13 | 2026-08-13 | 175 | 5d |  | TECNORED | 8h | -0 | Qui 13/08/26 | Qui 13/08/26 | 0207 | MECHANICAL |

| ID | WBS | Task | Type | Duration | Start | Finish | Predecessors | Baseline start | Baseline finish | Baseline duration | Total slack | Free slack | Constraint | Resources | Work | Baseline cost | Início_LB_R0 | Término_LB_R0 | COD_Projeto | Disciplina |
| --- | --- | --- | --- | --- | --- | --- | --- | --- | --- | --- | --- | --- | --- | --- | --- | --- | --- | --- | --- | --- |
| 177 | 1.4.17 | **ML-F0009-0207-MB-M-00007** | inactive | 6d | 2026-08-06 | 2026-08-13 |  |  |  |  | 5d |  |  | Felipe, André | 96h | -0 | Qui 06/08/26 | Qui 13/08/26 | 0207 | MECHANICAL |
| 178 | 1.4.17.1 | Emissão Inicial | inactive | 3d | 2026-08-06 | 2026-08-10 | 168 |  |  |  | 5d | 0d |  | Rodrigo | 24h | -0 | Qui 06/08/26 | Seg 10/08/26 | 0207 | MECHANICAL |
| 179 | 1.4.17.2 | Análise Tecnored | inactive | 1d | 2026-08-11 | 2026-08-11 | 178 |  |  |  | 5d | 0d |  | TECNORED | 8h | -0 | Ter 11/08/26 | Ter 11/08/26 | 0207 | MECHANICAL |
| 180 | 1.4.17.3 | Atendimento de comentários | inactive | 1d | 2026-08-12 | 2026-08-12 | 179 |  |  |  | 5d | 0d |  | André | 8h | -0 | Qua 12/08/26 | Qua 12/08/26 | 0207 | MECHANICAL |
| 181 | 1.4.17.4 | Aprovação | inactive | 1d | 2026-08-13 | 2026-08-13 | 180 |  |  |  | 5d |  |  | TECNORED | 8h | -0 | Qui 13/08/26 | Qui 13/08/26 | 0207 | MECHANICAL |
| 182 | 1.4.18 | **ML-F0009-0207-MB-M-00008** | inactive | 11d | 2026-07-31 | 2026-08-14 |  |  |  |  | -4d | 0d |  | Felipe, André | 136h | -0 | Sex 31/07/26 | Sex 14/08/26 | 0207 | MECHANICAL |
| 183 | 1.4.18.1 | Emissão Inicial | inactive | 3d | 2026-08-11 | 2026-08-13 | 173 |  |  |  | -11d | 0d |  | Rodrigo | 24h | -0 | Ter 11/08/26 | Qui 13/08/26 | 0207 | MECHANICAL |
| 184 | 1.4.18.2 | Análise Tecnored | inactive | 1d | 2026-08-14 | 2026-08-14 | 183 |  |  |  | 4d |  |  | TECNORED | 8h | -0 | Sex 14/08/26 | Sex 14/08/26 | 0207 | MECHANICAL |
| 185 | 1.4.18.3 | Atendimento de comentários | inactive | 1d | 2026-07-31 | 2026-07-31 | 303 |  |  |  | 13d | 0d |  | André | 8h | -0 | Sex 31/07/26 | Sex 31/07/26 | 0207 | MECHANICAL |
| 186 | 1.4.18.4 | Aprovação | inactive | 1d | 2026-08-03 | 2026-08-03 | 185 |  |  |  | 13d |  |  | TECNORED | 8h | -0 | Seg 03/08/26 | Seg 03/08/26 | 0207 | MECHANICAL |
| 187 | 1.4.19 | **AG-F0009-0207-MB-M-00005** |  | 6d | 2026-07-21 | 2026-07-28 |  | 2026-07-21 | 2026-07-28 | 6d | 5d |  |  | André, Felipe | 96h |  | Ter 21/07/26 | Ter 28/07/26 | 0207 | MECHANICAL |
| 188 | 1.4.19.1 | Emissão Inicial |  | 3d | 2026-07-21 | 2026-07-23 | 77 | 2026-07-21 | 2026-07-23 | 3d | 5d | 0d | finish no earlier than 2026-07-23 | Rodrigo | 24h |  | Ter 21/07/26 | Qui 23/07/26 | 0207 | MECHANICAL |
| 189 | 1.4.19.2 | Análise Tecnored |  | 1d | 2026-07-24 | 2026-07-24 | 188 | 2026-07-24 | 2026-07-24 | 1d | 17d | 0d |  | TECNORED | 8h |  | Sex 24/07/26 | Sex 24/07/26 | 0207 | MECHANICAL |
| 190 | 1.4.19.3 | Atendimento de comentários |  | 1d | 2026-07-27 | 2026-07-27 | 189 | 2026-07-27 | 2026-07-27 | 1d | 17d | 0d |  | André | 8h |  | Seg 27/07/26 | Seg 27/07/26 | 0207 | MECHANICAL |
| 191 | 1.4.19.4 | Aprovação |  | 1d | 2026-07-28 | 2026-07-28 | 190 | 2026-07-28 | 2026-07-28 | 1d | 17d |  |  | TECNORED | 8h |  | Ter 28/07/26 | Ter 28/07/26 | 0207 | MECHANICAL |
| 192 | 1.4.20 | **AG-F0009-0207-MB-M-00006** |  | 6d | 2026-07-24 | 2026-07-31 |  | 2026-07-24 | 2026-07-31 | 6d | 8d |  |  | Felipe, André | 96h |  | Sex 24/07/26 | Sex 31/07/26 | 0207 | MECHANICAL |
| 193 | 1.4.20.1 | Emissão Inicial |  | 3d | 2026-07-24 | 2026-07-28 | 188, 263 | 2026-07-24 | 2026-07-28 | 3d | 8d | 0d | finish no earlier than 2026-07-28 | Rodrigo | 24h |  | Sex 24/07/26 | Ter 28/07/26 | 0207 | MECHANICAL |
| 194 | 1.4.20.2 | Análise Tecnored |  | 1d | 2026-07-29 | 2026-07-29 | 193 | 2026-07-29 | 2026-07-29 | 1d | 14d | 0d |  | TECNORED | 8h |  | Qua 29/07/26 | Qua 29/07/26 | 0207 | MECHANICAL |
| 195 | 1.4.20.3 | Atendimento de comentários |  | 1d | 2026-07-30 | 2026-07-30 | 194 | 2026-07-30 | 2026-07-30 | 1d | 14d | 0d |  | André | 8h |  | Qui 30/07/26 | Qui 30/07/26 | 0207 | MECHANICAL |
| 196 | 1.4.20.4 | Aprovação |  | 1d | 2026-07-31 | 2026-07-31 | 195 | 2026-07-31 | 2026-07-31 | 1d | 14d |  |  | TECNORED | 8h |  | Sex 31/07/26 | Sex 31/07/26 | 0207 | MECHANICAL |
| 197 | 1.4.21 | **PL-F0009-0207-MB-M-00001** | inactive | 5d | 2026-08-06 | 2026-08-12 |  |  |  |  | 2d |  |  | Ailton | 80h | -0 | Qui 06/08/26 | Qua 12/08/26 | 0207 | MECHANICAL |
| 198 | 1.4.21.1 | Emissão Inicial | inactive | 2d | 2026-08-06 | 2026-08-07 | 253 |  |  |  | 2d | 0d |  | Rodrigo | 16h | -0 | Qui 06/08/26 | Sex 07/08/26 | 0207 | MECHANICAL |
| 199 | 1.4.21.2 | Análise Tecnored | inactive | 1d | 2026-08-10 | 2026-08-10 | 198 |  |  |  | 6d | 0d |  | TECNORED | 8h | -0 | Seg 10/08/26 | Seg 10/08/26 | 0207 | MECHANICAL |
| 200 | 1.4.21.3 | Atendimento de comentários | inactive | 1d | 2026-08-11 | 2026-08-11 | 199 |  |  |  | 6d | 0d |  | André | 8h | -0 | Ter 11/08/26 | Ter 11/08/26 | 0207 | MECHANICAL |
| 201 | 1.4.21.4 | Aprovação | inactive | 1d | 2026-08-12 | 2026-08-12 | 200 |  |  |  | 6d |  |  | TECNORED | 8h | -0 | Qua 12/08/26 | Qua 12/08/26 | 0207 | MECHANICAL |

| ID | WBS | Task | Type | Duration | Start | Finish | Predecessors | Baseline start | Baseline finish | Baseline duration | Total slack | Free slack | Constraint | Resources | Work | Baseline cost | Início_LB_R0 | Término_LB_R0 | COD_Projeto | Disciplina |
| --- | --- | --- | --- | --- | --- | --- | --- | --- | --- | --- | --- | --- | --- | --- | --- | --- | --- | --- | --- | --- |
| 202 | 1.4.22 | **AG-F0009-0207-MB-M-00007** |  | 6d | 2026-07-24 | 2026-07-31 |  | 2026-07-24 | 2026-07-31 | 6d | 8d |  |  | Felipe, André | 96h |  | Sex 24/07/26 | Sex 31/07/26 | 0207 | MECHANICAL |
| 203 | 1.4.22.1 | Emissão Inicial |  | 3d | 2026-07-24 | 2026-07-28 | 188, 263 | 2026-07-24 | 2026-07-28 | 3d | 8d | 0d | finish no earlier than 2026-07-28 | Rodrigo | 24h |  | Sex 24/07/26 | Ter 28/07/26 | 0207 | MECHANICAL |
| 204 | 1.4.22.2 | Análise Tecnored |  | 1d | 2026-07-29 | 2026-07-29 | 203 | 2026-07-29 | 2026-07-29 | 1d | 14d | 0d |  | TECNORED | 8h |  | Qua 29/07/26 | Qua 29/07/26 | 0207 | MECHANICAL |
| 205 | 1.4.22.3 | Atendimento de comentários |  | 1d | 2026-07-30 | 2026-07-30 | 204 | 2026-07-30 | 2026-07-30 | 1d | 14d | 0d |  | André | 8h |  | Qui 30/07/26 | Qui 30/07/26 | 0207 | MECHANICAL |
| 206 | 1.4.22.4 | Aprovação |  | 1d | 2026-07-31 | 2026-07-31 | 205 | 2026-07-31 | 2026-07-31 | 1d | 14d |  |  | TECNORED | 8h |  | Sex 31/07/26 | Sex 31/07/26 | 0207 | MECHANICAL |
| 207 | 1.4.23 | **PL-F0009-0207-MB-M-00002** | inactive | 5d | 2026-08-06 | 2026-08-12 |  |  |  |  | 2d |  |  | Ailton | 80h | -0 | Qui 06/08/26 | Qua 12/08/26 | 0207 | MECHANICAL |
| 208 | 1.4.23.1 | Emissão Inicial | inactive | 2d | 2026-08-06 | 2026-08-07 | 198SS |  |  |  | 2d | 0d |  | Rodrigo | 16h | -0 | Qui 06/08/26 | Sex 07/08/26 | 0207 | MECHANICAL |
| 209 | 1.4.23.2 | Análise Tecnored | inactive | 1d | 2026-08-10 | 2026-08-10 | 208 |  |  |  | 6d | 0d |  | TECNORED | 8h | -0 | Seg 10/08/26 | Seg 10/08/26 | 0207 | MECHANICAL |
| 210 | 1.4.23.3 | Atendimento de comentários | inactive | 1d | 2026-08-11 | 2026-08-11 | 209 |  |  |  | 6d | 0d |  | André | 8h | -0 | Ter 11/08/26 | Ter 11/08/26 | 0207 | MECHANICAL |
| 211 | 1.4.23.4 | Aprovação | inactive | 1d | 2026-08-12 | 2026-08-12 | 210 |  |  |  | 6d |  |  | TECNORED | 8h | -0 | Qua 12/08/26 | Qua 12/08/26 | 0207 | MECHANICAL |
| 212 | 1.4.24 | **AG-F0009-0207-MB-M-00008** |  | 6d | 2026-07-24 | 2026-07-31 |  | 2026-07-24 | 2026-07-31 | 6d | 5d |  |  | Felipe, André | 96h |  | Sex 24/07/26 | Sex 31/07/26 | 0207 | MECHANICAL |
| 213 | 1.4.24.1 | Emissão Inicial |  | 3d | 2026-07-24 | 2026-07-28 | 188 | 2026-07-24 | 2026-07-28 | 3d | 5d | 0d | finish no earlier than 2026-07-28 | Rodrigo | 24h |  | Sex 24/07/26 | Ter 28/07/26 | 0207 | MECHANICAL |
| 214 | 1.4.24.2 | Análise Tecnored |  | 1d | 2026-07-29 | 2026-07-29 | 213 | 2026-07-29 | 2026-07-29 | 1d | 14d | 0d |  | TECNORED | 8h |  | Qua 29/07/26 | Qua 29/07/26 | 0207 | MECHANICAL |
| 215 | 1.4.24.3 | Atendimento de comentários |  | 1d | 2026-07-30 | 2026-07-30 | 214 | 2026-07-30 | 2026-07-30 | 1d | 14d | 0d |  | André | 8h |  | Qui 30/07/26 | Qui 30/07/26 | 0207 | MECHANICAL |
| 216 | 1.4.24.4 | Aprovação |  | 1d | 2026-07-31 | 2026-07-31 | 215 | 2026-07-31 | 2026-07-31 | 1d | 14d |  |  | TECNORED | 8h |  | Sex 31/07/26 | Sex 31/07/26 | 0207 | MECHANICAL |
| 217 | 1.4.25 | **PL-F0009-0207-MB-M-00003** | inactive | 5d | 2026-08-10 | 2026-08-14 |  |  |  |  | 2d |  |  | Ailton | 80h | -0 | Seg 10/08/26 | Sex 14/08/26 | 0207 | MECHANICAL |
| 218 | 1.4.25.1 | Emissão Inicial | inactive | 2d | 2026-08-10 | 2026-08-11 | 208 |  |  |  | 2d | 0d |  | Rodrigo | 16h | -0 | Seg 10/08/26 | Ter 11/08/26 | 0207 | MECHANICAL |
| 219 | 1.4.25.2 | Análise Tecnored | inactive | 1d | 2026-08-12 | 2026-08-12 | 218 |  |  |  | 4d | 0d |  | TECNORED | 8h | -0 | Qua 12/08/26 | Qua 12/08/26 | 0207 | MECHANICAL |
| 220 | 1.4.25.3 | Atendimento de comentários | inactive | 1d | 2026-08-13 | 2026-08-13 | 219 |  |  |  | 4d | 0d |  | André | 8h | -0 | Qui 13/08/26 | Qui 13/08/26 | 0207 | MECHANICAL |
| 221 | 1.4.25.4 | Aprovação | inactive | 1d | 2026-08-14 | 2026-08-14 | 220 |  |  |  | 4d |  |  | TECNORED | 8h | -0 | Sex 14/08/26 | Sex 14/08/26 | 0207 | MECHANICAL |
| 222 | 1.4.26 | **AG-F0009-0207-MB-M-00009** |  | 6d | 2026-07-24 | 2026-07-31 |  | 2026-07-24 | 2026-07-31 | 6d | 8d |  |  | Felipe, André | 96h |  | Sex 24/07/26 | Sex 31/07/26 | 0207 | MECHANICAL |
| 223 | 1.4.26.1 | Emissão Inicial |  | 3d | 2026-07-24 | 2026-07-28 | 188, 263 | 2026-07-24 | 2026-07-28 | 3d | 8d | 0d | finish no earlier than 2026-07-28 | Rodrigo | 24h |  | Sex 24/07/26 | Ter 28/07/26 | 0207 | MECHANICAL |
| 224 | 1.4.26.2 | Análise Tecnored |  | 1d | 2026-07-29 | 2026-07-29 | 223 | 2026-07-29 | 2026-07-29 | 1d | 14d | 0d |  | TECNORED | 8h |  | Qua 29/07/26 | Qua 29/07/26 | 0207 | MECHANICAL |
| 225 | 1.4.26.3 | Atendimento de comentários |  | 1d | 2026-07-30 | 2026-07-30 | 224 | 2026-07-30 | 2026-07-30 | 1d | 14d | 0d |  | André | 8h |  | Qui 30/07/26 | Qui 30/07/26 | 0207 | MECHANICAL |
| 226 | 1.4.26.4 | Aprovação |  | 1d | 2026-07-31 | 2026-07-31 | 225 | 2026-07-31 | 2026-07-31 | 1d | 14d |  |  | TECNORED | 8h |  | Sex 31/07/26 | Sex 31/07/26 | 0207 | MECHANICAL |

| ID | WBS | Task | Type | Duration | Start | Finish | Predecessors | Baseline start | Baseline finish | Baseline duration | Total slack | Free slack | Constraint | Resources | Work | Baseline cost | Início_LB_R0 | Término_LB_R0 | COD_Projeto | Disciplina |
| --- | --- | --- | --- | --- | --- | --- | --- | --- | --- | --- | --- | --- | --- | --- | --- | --- | --- | --- | --- | --- |
| 227 | 1.4.27 | **PL-F0009-0207-MB-M-00004** | inactive | 5d | 2026-08-10 | 2026-08-14 |  |  |  |  | 2d |  |  | Ailton | 80h | -0 | Seg 10/08/26 | Sex 14/08/26 | 0207 | MECHANICAL |
| 228 | 1.4.27.1 | Emissão Inicial | inactive | 2d | 2026-08-10 | 2026-08-11 | 198 |  |  |  | 2d | 0d |  | Rodrigo | 16h | -0 | Seg 10/08/26 | Ter 11/08/26 | 0207 | MECHANICAL |
| 229 | 1.4.27.2 | Análise Tecnored | inactive | 1d | 2026-08-12 | 2026-08-12 | 228 |  |  |  | 4d | 0d |  | TECNORED | 8h | -0 | Qua 12/08/26 | Qua 12/08/26 | 0207 | MECHANICAL |
| 230 | 1.4.27.3 | Atendimento de comentários | inactive | 1d | 2026-08-13 | 2026-08-13 | 229 |  |  |  | 4d | 0d |  | André | 8h | -0 | Qui 13/08/26 | Qui 13/08/26 | 0207 | MECHANICAL |
| 231 | 1.4.27.4 | Aprovação | inactive | 1d | 2026-08-14 | 2026-08-14 | 230 |  |  |  | 4d |  |  | TECNORED | 8h | -0 | Sex 14/08/26 | Sex 14/08/26 | 0207 | MECHANICAL |
| 232 | 1.4.28 | **AG-F0009-0207-MB-M-00010** |  | 6d | 2026-07-29 | 2026-08-05 |  | 2026-07-29 | 2026-08-05 | 6d | 5d |  |  | Felipe, André | 96h |  | Qua 29/07/26 | Qua 05/08/26 | 0207 | MECHANICAL |
| 233 | 1.4.28.1 | Emissão Inicial |  | 3d | 2026-07-29 | 2026-07-31 | 213 | 2026-07-29 | 2026-07-31 | 3d | 5d | 0d | finish no earlier than 2026-07-28 | Rodrigo | 24h |  | Qua 29/07/26 | Sex 31/07/26 | 0207 | MECHANICAL |
| 234 | 1.4.28.2 | Análise Tecnored |  | 1d | 2026-08-03 | 2026-08-03 | 233 | 2026-08-03 | 2026-08-03 | 1d | 11d | 0d |  | TECNORED | 8h |  | Seg 03/08/26 | Seg 03/08/26 | 0207 | MECHANICAL |
| 235 | 1.4.28.3 | Atendimento de comentários |  | 1d | 2026-08-04 | 2026-08-04 | 234 | 2026-08-04 | 2026-08-04 | 1d | 11d | 0d |  | André | 8h |  | Ter 04/08/26 | Ter 04/08/26 | 0207 | MECHANICAL |
| 236 | 1.4.28.4 | Aprovação |  | 1d | 2026-08-05 | 2026-08-05 | 235 | 2026-08-05 | 2026-08-05 | 1d | 11d |  |  | TECNORED | 8h |  | Qua 05/08/26 | Qua 05/08/26 | 0207 | MECHANICAL |
| 237 | 1.4.29 | **PL-F0009-0207-MB-M-00005** | inactive | 5d | 2026-08-10 | 2026-08-14 |  |  |  |  | 4d |  |  | Ailton | 80h | -0 | Seg 10/08/26 | Sex 14/08/26 | 0207 | MECHANICAL |
| 238 | 1.4.29.1 | Emissão Inicial | inactive | 2d | 2026-08-10 | 2026-08-11 | 208 |  |  |  | 4d | 0d |  | Rodrigo | 16h | -0 | Seg 10/08/26 | Ter 11/08/26 | 0207 | MECHANICAL |
| 239 | 1.4.29.2 | Análise Tecnored | inactive | 1d | 2026-08-12 | 2026-08-12 | 238 |  |  |  | 4d | 0d |  | TECNORED | 8h | -0 | Qua 12/08/26 | Qua 12/08/26 | 0207 | MECHANICAL |
| 240 | 1.4.29.3 | Atendimento de comentários | inactive | 1d | 2026-08-13 | 2026-08-13 | 239 |  |  |  | 4d | 0d |  | André | 8h | -0 | Qui 13/08/26 | Qui 13/08/26 | 0207 | MECHANICAL |
| 241 | 1.4.29.4 | Aprovação | inactive | 1d | 2026-08-14 | 2026-08-14 | 240 |  |  |  | 4d |  |  | TECNORED | 8h | -0 | Sex 14/08/26 | Sex 14/08/26 | 0207 | MECHANICAL |
| 242 | 1.4.30 | **AG-F0009-0207-MB-M-00011** | inactive | 5d | 2026-07-29 | 2026-08-04 |  |  |  |  | 12d |  |  | Felipe, André | 80h | -0 | Qua 29/07/26 | Ter 04/08/26 | 0207 | MECHANICAL |
| 243 | 1.4.30.1 | Emissão Inicial | inactive | 2d | 2026-07-29 | 2026-07-30 | 223 |  |  |  | 12d | 0d |  | Rodrigo | 16h | -0 | Qua 29/07/26 | Qui 30/07/26 | 0207 | MECHANICAL |
| 244 | 1.4.30.2 | Análise Tecnored | inactive | 1d | 2026-07-31 | 2026-07-31 | 243 |  |  |  | 12d | 0d |  | TECNORED | 8h | -0 | Sex 31/07/26 | Sex 31/07/26 | 0207 | MECHANICAL |
| 245 | 1.4.30.3 | Atendimento de comentários | inactive | 1d | 2026-08-03 | 2026-08-03 | 244 |  |  |  | 12d | 0d |  | André | 8h | -0 | Seg 03/08/26 | Seg 03/08/26 | 0207 | MECHANICAL |
| 246 | 1.4.30.4 | Aprovação | inactive | 1d | 2026-08-04 | 2026-08-04 | 245 |  |  |  | 12d |  |  | TECNORED | 8h | -0 | Ter 04/08/26 | Ter 04/08/26 | 0207 | MECHANICAL |
| 247 | 1.4.31 | **PL-F0009-0207-MB-M-00006** | inactive | 5d | 2026-08-12 | 2026-08-18 |  |  |  |  | 2d |  |  | Ailton | 80h | -0 | Qua 12/08/26 | Ter 18/08/26 | 0207 | MECHANICAL |
| 248 | 1.4.31.1 | Emissão Inicial | inactive | 2d | 2026-08-12 | 2026-08-13 | 218 |  |  |  | 2d | 0d |  | Rodrigo | 16h | -0 | Qua 12/08/26 | Qui 13/08/26 | 0207 | MECHANICAL |
| 249 | 1.4.31.2 | Análise Tecnored | inactive | 1d | 2026-08-14 | 2026-08-14 | 248 |  |  |  | 2d | 0d |  | TECNORED | 8h | -0 | Sex 14/08/26 | Sex 14/08/26 | 0207 | MECHANICAL |
| 250 | 1.4.31.3 | Atendimento de comentários | inactive | 1d | 2026-08-17 | 2026-08-17 | 249 |  |  |  | 2d | 0d |  | André | 8h | -0 | Seg 17/08/26 | Seg 17/08/26 | 0207 | MECHANICAL |
| 251 | 1.4.31.4 | Aprovação | inactive | 1d | 2026-08-18 | 2026-08-18 | 250 |  |  |  | 2d |  |  | TECNORED | 8h | -0 | Ter 18/08/26 | Ter 18/08/26 | 0207 | MECHANICAL |

| ID | WBS | Task | Type | Duration | Start | Finish | Predecessors | Baseline start | Baseline finish | Baseline duration | Total slack | Free slack | Constraint | Resources | Work | Baseline cost | Início_LB_R0 | Término_LB_R0 | COD_Projeto | Disciplina |
| --- | --- | --- | --- | --- | --- | --- | --- | --- | --- | --- | --- | --- | --- | --- | --- | --- | --- | --- | --- | --- |
| 252 | 1.4.32 | **AG-F0009-0207-MB-M-00012** |  | 6d | 2026-08-03 | 2026-08-10 |  | 2026-08-03 | 2026-08-10 | 6d | 8d |  |  | André | 96h |  | Seg 03/08/26 | Seg 10/08/26 | 0207 | MECHANICAL |
| 253 | 1.4.32.1 | Emissão Inicial |  | 3d | 2026-08-03 | 2026-08-05 | 233 | 2026-08-03 | 2026-08-05 | 3d | 8d | 0d | finish no earlier than 2026-07-31 | Rodrigo | 24h |  | Seg 03/08/26 | Qua 05/08/26 | 0207 | MECHANICAL |
| 254 | 1.4.32.2 | Análise Tecnored |  | 1d | 2026-08-06 | 2026-08-06 | 253 | 2026-08-06 | 2026-08-06 | 1d | 8d | 0d |  | TECNORED | 8h |  | Qui 06/08/26 | Qui 06/08/26 | 0207 | MECHANICAL |
| 255 | 1.4.32.3 | Atendimento de comentários |  | 1d | 2026-08-07 | 2026-08-07 | 254 | 2026-08-07 | 2026-08-07 | 1d | 8d | 0d |  | André | 8h |  | Sex 07/08/26 | Sex 07/08/26 | 0207 | MECHANICAL |
| 256 | 1.4.32.4 | Aprovação |  | 1d | 2026-08-10 | 2026-08-10 | 255 | 2026-08-10 | 2026-08-10 | 1d | 8d |  |  | TECNORED | 8h |  | Seg 10/08/26 | Seg 10/08/26 | 0207 | MECHANICAL |
| 257 | 1.4.33 | **PL-F0009-0207-MB-M-00007** | inactive | 5d | 2026-08-12 | 2026-08-18 |  |  |  |  | 2d |  |  | Ailton | 80h | -0 | Qua 12/08/26 | Ter 18/08/26 | 0207 | MECHANICAL |
| 258 | 1.4.33.1 | Emissão Inicial | inactive | 2d | 2026-08-12 | 2026-08-13 | 228 |  |  |  | 2d | 0d |  | Rodrigo | 16h | -0 | Qua 12/08/26 | Qui 13/08/26 | 0207 | MECHANICAL |
| 259 | 1.4.33.2 | Análise Tecnored | inactive | 1d | 2026-08-14 | 2026-08-14 | 258 |  |  |  | 2d | 0d |  | TECNORED | 8h | -0 | Sex 14/08/26 | Sex 14/08/26 | 0207 | MECHANICAL |
| 260 | 1.4.33.3 | Atendimento de comentários | inactive | 1d | 2026-08-17 | 2026-08-17 | 259 |  |  |  | 2d | 0d |  | André | 8h | -0 | Seg 17/08/26 | Seg 17/08/26 | 0207 | MECHANICAL |
| 261 | 1.4.33.4 | Aprovação | inactive | 1d | 2026-08-18 | 2026-08-18 | 260 |  |  |  | 2d |  |  | TECNORED | 8h | -0 | Ter 18/08/26 | Ter 18/08/26 | 0207 | MECHANICAL |
| 262 | 1.4.34 | **FD-F0009-0207-MB-M-00001** |  | 4.5d | 2026-07-21 | 2026-07-27 |  | 2026-07-21 | 2026-07-27 | 4.5d | 8d |  |  | André, Felipe | 72h |  | Ter 21/07/26 | Seg 27/07/26 | 0207 | MECHANICAL |
| 263 | 1.4.34.1 | Emissão Inicial |  | 3d | 2026-07-21 | 2026-07-23 | 77 | 2026-07-21 | 2026-07-23 | 3d | 8d | 0d | finish no earlier than 2026-07-23 | Rodrigo | 24h |  | Ter 21/07/26 | Qui 23/07/26 | 0207 | MECHANICAL |
| 264 | 1.4.34.2 | Análise Tecnored |  | 0.5d | 2026-07-24 | 2026-07-24 | 263 | 2026-07-24 | 2026-07-24 | 0.5d | 18.5d | 0d |  | TECNORED | 4h |  | Sex 24/07/26 | Sex 24/07/26 | 0207 | MECHANICAL |
| 265 | 1.4.34.3 | Atendimento de comentários |  | 0.5d | 2026-07-24 | 2026-07-24 | 264 | 2026-07-24 | 2026-07-24 | 0.5d | 18.5d | 0d |  | André | 4h |  | Sex 24/07/26 | Sex 24/07/26 | 0207 | MECHANICAL |
| 266 | 1.4.34.4 | Aprovação |  | 0.5d | 2026-07-27 | 2026-07-27 | 265 | 2026-07-27 | 2026-07-27 | 0.5d | 18.5d |  |  | TECNORED | 4h |  | Seg 27/07/26 | Seg 27/07/26 | 0207 | MECHANICAL |
| 267 | 1.4.35 | **FD-F0009-0207-MB-M-00002** |  | 4.5d | 2026-07-24 | 2026-07-30 |  | 2026-07-24 | 2026-07-30 | 4.5d | 8d |  |  | Felipe, André | 72h |  | Sex 24/07/26 | Qui 30/07/26 | 0207 | MECHANICAL |
| 268 | 1.4.35.1 | Emissão Inicial |  | 3d | 2026-07-24 | 2026-07-28 | 263, 188 | 2026-07-24 | 2026-07-28 | 3d | 8d | 0d | finish no earlier than 2026-07-28 | Rodrigo | 24h |  | Sex 24/07/26 | Ter 28/07/26 | 0207 | MECHANICAL |
| 269 | 1.4.35.2 | Análise Tecnored |  | 0.5d | 2026-07-29 | 2026-07-29 | 268 | 2026-07-29 | 2026-07-29 | 0.5d | 15.5d | 0d |  | TECNORED | 4h |  | Qua 29/07/26 | Qua 29/07/26 | 0207 | MECHANICAL |
| 270 | 1.4.35.3 | Atendimento de comentários |  | 0.5d | 2026-07-29 | 2026-07-29 | 269 | 2026-07-29 | 2026-07-29 | 0.5d | 15.5d | 0d |  | André | 4h |  | Qua 29/07/26 | Qua 29/07/26 | 0207 | MECHANICAL |
| 271 | 1.4.35.4 | Aprovação |  | 0.5d | 2026-07-30 | 2026-07-30 | 270 | 2026-07-30 | 2026-07-30 | 0.5d | 15.5d |  |  | TECNORED | 4h |  | Qui 30/07/26 | Qui 30/07/26 | 0207 | MECHANICAL |
| 272 | 1.4.36 | **FD-F0009-0207-MB-M-00003** |  | 4.5d | 2026-07-24 | 2026-07-30 |  | 2026-07-24 | 2026-07-30 | 4.5d | 8d |  |  | Felipe, André | 72h |  | Sex 24/07/26 | Qui 30/07/26 | 0207 | MECHANICAL |
| 273 | 1.4.36.1 | Emissão Inicial |  | 3d | 2026-07-24 | 2026-07-28 | 188, 263 | 2026-07-24 | 2026-07-28 | 3d | 8d | 0d | finish no earlier than 2026-07-28 | Rodrigo | 24h |  | Sex 24/07/26 | Ter 28/07/26 | 0207 | MECHANICAL |
| 274 | 1.4.36.2 | Análise Tecnored |  | 0.5d | 2026-07-29 | 2026-07-29 | 273 | 2026-07-29 | 2026-07-29 | 0.5d | 15.5d | 0d |  | TECNORED | 4h |  | Qua 29/07/26 | Qua 29/07/26 | 0207 | MECHANICAL |
| 275 | 1.4.36.3 | Atendimento de comentários |  | 0.5d | 2026-07-29 | 2026-07-29 | 274 | 2026-07-29 | 2026-07-29 | 0.5d | 15.5d | 0d |  | André | 4h |  | Qua 29/07/26 | Qua 29/07/26 | 0207 | MECHANICAL |
| 276 | 1.4.36.4 | Aprovação |  | 0.5d | 2026-07-30 | 2026-07-30 | 275 | 2026-07-30 | 2026-07-30 | 0.5d | 15.5d |  |  | TECNORED | 4h |  | Qui 30/07/26 | Qui 30/07/26 | 0207 | MECHANICAL |

| ID | WBS | Task | Type | Duration | Start | Finish | Predecessors | Baseline start | Baseline finish | Baseline duration | Total slack | Free slack | Constraint | Resources | Work | Baseline cost | Início_LB_R0 | Término_LB_R0 | COD_Projeto | Disciplina |
| --- | --- | --- | --- | --- | --- | --- | --- | --- | --- | --- | --- | --- | --- | --- | --- | --- | --- | --- | --- | --- |
| 277 | 1.4.37 | **FD-F0009-0207-MB-M-00004** |  | 4.5d | 2026-07-24 | 2026-07-30 |  | 2026-07-24 | 2026-07-30 | 4.5d | 8d |  |  | Felipe, André | 72h |  | Sex 24/07/26 | Qui 30/07/26 | 0207 | MECHANICAL |
| 278 | 1.4.37.1 | Emissão Inicial |  | 3d | 2026-07-24 | 2026-07-28 | 188, 263 | 2026-07-24 | 2026-07-28 | 3d | 8d | 0d | finish no earlier than 2026-07-28 | Rodrigo | 24h |  | Sex 24/07/26 | Ter 28/07/26 | 0207 | MECHANICAL |
| 279 | 1.4.37.2 | Análise Tecnored |  | 0.5d | 2026-07-29 | 2026-07-29 | 278 | 2026-07-29 | 2026-07-29 | 0.5d | 15.5d | 0d |  | TECNORED | 4h |  | Qua 29/07/26 | Qua 29/07/26 | 0207 | MECHANICAL |
| 280 | 1.4.37.3 | Atendimento de comentários |  | 0.5d | 2026-07-29 | 2026-07-29 | 279 | 2026-07-29 | 2026-07-29 | 0.5d | 15.5d | 0d |  | André | 4h |  | Qua 29/07/26 | Qua 29/07/26 | 0207 | MECHANICAL |
| 281 | 1.4.37.4 | Aprovação |  | 0.5d | 2026-07-30 | 2026-07-30 | 280 | 2026-07-30 | 2026-07-30 | 0.5d | 15.5d |  |  | TECNORED | 4h |  | Qui 30/07/26 | Qui 30/07/26 | 0207 | MECHANICAL |
| 282 | 1.4.38 | **FD-F0009-0207-MB-M-00005** |  | 4.5d | 2026-07-24 | 2026-07-30 |  | 2026-07-24 | 2026-07-30 | 4.5d | 8d |  |  | Felipe, André | 72h |  | Sex 24/07/26 | Qui 30/07/26 | 0207 | MECHANICAL |
| 283 | 1.4.38.1 | Emissão Inicial |  | 3d | 2026-07-24 | 2026-07-28 | 188, 263 | 2026-07-24 | 2026-07-28 | 3d | 8d | 0d | finish no earlier than 2026-07-28 | Rodrigo | 24h |  | Sex 24/07/26 | Ter 28/07/26 | 0207 | MECHANICAL |
| 284 | 1.4.38.2 | Análise Tecnored |  | 0.5d | 2026-07-29 | 2026-07-29 | 283 | 2026-07-29 | 2026-07-29 | 0.5d | 15.5d | 0d |  | TECNORED | 4h |  | Qua 29/07/26 | Qua 29/07/26 | 0207 | MECHANICAL |
| 285 | 1.4.38.3 | Atendimento de comentários |  | 0.5d | 2026-07-29 | 2026-07-29 | 284 | 2026-07-29 | 2026-07-29 | 0.5d | 15.5d | 0d |  | André | 4h |  | Qua 29/07/26 | Qua 29/07/26 | 0207 | MECHANICAL |
| 286 | 1.4.38.4 | Aprovação |  | 0.5d | 2026-07-30 | 2026-07-30 | 285 | 2026-07-30 | 2026-07-30 | 0.5d | 15.5d |  |  | TECNORED | 4h |  | Qui 30/07/26 | Qui 30/07/26 | 0207 | MECHANICAL |
| 287 | 1.4.39 | **FD-F0009-0207-MB-M-00006** | inactive | 2.5d | 2026-07-29 | 2026-07-31 |  |  |  |  | 13.5d |  |  | Felipe, André | 40h | -0 | Qua 29/07/26 | Sex 31/07/26 | 0207 | MECHANICAL |
| 288 | 1.4.39.1 | Emissão Inicial | inactive | 1d | 2026-07-29 | 2026-07-29 | 283 |  |  |  | 13.5d | 0d |  | Rodrigo | 8h | -0 | Qua 29/07/26 | Qua 29/07/26 | 0207 | MECHANICAL |
| 289 | 1.4.39.2 | Análise Tecnored | inactive | 0.5d | 2026-07-30 | 2026-07-30 | 288 |  |  |  | 14.5d | 0d |  | TECNORED | 4h | -0 | Qui 30/07/26 | Qui 30/07/26 | 0207 | MECHANICAL |
| 290 | 1.4.39.3 | Atendimento de comentários | inactive | 0.5d | 2026-07-30 | 2026-07-30 | 289 |  |  |  | 14.5d | 0d |  | André | 4h | -0 | Qui 30/07/26 | Qui 30/07/26 | 0207 | MECHANICAL |
| 291 | 1.4.39.4 | Aprovação | inactive | 0.5d | 2026-07-31 | 2026-07-31 | 290 |  |  |  | 14.5d |  |  | TECNORED | 4h | -0 | Sex 31/07/26 | Sex 31/07/26 | 0207 | MECHANICAL |
| 292 | 1.4.40 | **FD-F0009-0207-MB-M-00007** | inactive | 2.5d | 2026-07-30 | 2026-08-03 |  |  |  |  | 13.5d |  |  | Felipe, André | 40h | -0 | Qui 30/07/26 | Seg 03/08/26 | 0207 | MECHANICAL |
| 293 | 1.4.40.1 | Emissão Inicial | inactive | 1d | 2026-07-30 | 2026-07-30 | 288 |  |  |  | 13.5d | 0d |  | Rodrigo | 8h | -0 | Qui 30/07/26 | Qui 30/07/26 | 0207 | MECHANICAL |
| 294 | 1.4.40.2 | Análise Tecnored | inactive | 0.5d | 2026-07-31 | 2026-07-31 | 293 |  |  |  | 13.5d | 0d |  | TECNORED | 4h | -0 | Sex 31/07/26 | Sex 31/07/26 | 0207 | MECHANICAL |
| 295 | 1.4.40.3 | Atendimento de comentários | inactive | 0.5d | 2026-07-31 | 2026-07-31 | 294 |  |  |  | 13.5d | 0d |  | André | 4h | -0 | Sex 31/07/26 | Sex 31/07/26 | 0207 | MECHANICAL |
| 296 | 1.4.40.4 | Aprovação | inactive | 0.5d | 2026-08-03 | 2026-08-03 | 295 |  |  |  | 13.5d |  |  | TECNORED | 4h | -0 | Seg 03/08/26 | Seg 03/08/26 | 0207 | MECHANICAL |
| 297 | 1.4.41 | **FD-F0009-0207-MB-M-00008** |  | 4.5d | 2026-08-03 | 2026-08-07 |  | 2026-08-03 | 2026-08-07 | 4.5d | 9.5d |  |  | André | 72h |  | Seg 03/08/26 | Sex 07/08/26 | 0207 | MECHANICAL |
| 298 | 1.4.41.1 | Emissão Inicial |  | 3d | 2026-08-03 | 2026-08-05 | 143, 193, 203, 213, 223, 233, 268, 273, 278, 283 | 2026-08-03 | 2026-08-05 | 3d | 9.5d | 0d | finish no earlier than 2026-07-31 | Rodrigo | 24h |  | Seg 03/08/26 | Qua 05/08/26 | 0207 | MECHANICAL |
| 299 | 1.4.41.2 | Análise Tecnored |  | 0.5d | 2026-08-06 | 2026-08-06 | 298 | 2026-08-06 | 2026-08-06 | 0.5d | 9.5d | 0d |  | TECNORED | 4h |  | Qui 06/08/26 | Qui 06/08/26 | 0207 | MECHANICAL |
| 300 | 1.4.41.3 | Atendimento de comentários |  | 0.5d | 2026-08-06 | 2026-08-06 | 299 | 2026-08-06 | 2026-08-06 | 0.5d | 9.5d | 0d |  | André | 4h |  | Qui 06/08/26 | Qui 06/08/26 | 0207 | MECHANICAL |
| 301 | 1.4.41.4 | Aprovação |  | 0.5d | 2026-08-07 | 2026-08-07 | 300 | 2026-08-07 | 2026-08-07 | 0.5d | 9.5d |  |  | TECNORED | 4h |  | Sex 07/08/26 | Sex 07/08/26 | 0207 | MECHANICAL |

| ID | WBS | Task | Type | Duration | Start | Finish | Predecessors | Baseline start | Baseline finish | Baseline duration | Total slack | Free slack | Constraint | Resources | Work | Baseline cost | Início_LB_R0 | Término_LB_R0 | COD_Projeto | Disciplina |
| --- | --- | --- | --- | --- | --- | --- | --- | --- | --- | --- | --- | --- | --- | --- | --- | --- | --- | --- | --- | --- |
| 302 | 1.4.42 | **RL-F0009-0207-MB-M-00001** |  | 5d | 2026-07-29 | 2026-08-04 |  | 2026-07-29 | 2026-08-04 | 5d | 12d |  |  | Everton, Ricardo | 80h |  | Qua 29/07/26 | Ter 04/08/26 | 0207 | MECHANICAL |
| 303 | 1.4.42.1 | Emissão Inicial |  | 2d | 2026-07-29 | 2026-07-30 | 173 | 2026-07-29 | 2026-07-30 | 2d | 12d | 0d |  | Rodrigo | 16h |  | Qua 29/07/26 | Qui 30/07/26 | 0207 | MECHANICAL |
| 304 | 1.4.42.2 | Análise Tecnored |  | 1d | 2026-07-31 | 2026-07-31 | 303 | 2026-07-31 | 2026-07-31 | 1d | 12d | 0d |  | TECNORED | 8h |  | Sex 31/07/26 | Sex 31/07/26 | 0207 | MECHANICAL |
| 305 | 1.4.42.3 | Atendimento de comentários |  | 1d | 2026-08-03 | 2026-08-03 | 304 | 2026-08-03 | 2026-08-03 | 1d | 12d | 0d |  | André | 8h |  | Seg 03/08/26 | Seg 03/08/26 | 0207 | MECHANICAL |
| 306 | 1.4.42.4 | Aprovação |  | 1d | 2026-08-04 | 2026-08-04 | 305 | 2026-08-04 | 2026-08-04 | 1d | 12d |  |  | TECNORED | 8h |  | Ter 04/08/26 | Ter 04/08/26 | 0207 | MECHANICAL |
| 307 | 1.4.43 | **RL-F0009-0207-MB-M-00002** |  | 5d | 2026-07-29 | 2026-08-04 |  | 2026-07-29 | 2026-08-04 | 5d | 12d |  |  | Everton, Ricardo | 80h |  | Qua 29/07/26 | Ter 04/08/26 | 0207 | MECHANICAL |
| 308 | 1.4.43.1 | Emissão Inicial |  | 2d | 2026-07-29 | 2026-07-30 | 175 | 2026-07-29 | 2026-07-30 | 2d | 12d | 0d |  | Rodrigo | 16h |  | Qua 29/07/26 | Qui 30/07/26 | 0207 | MECHANICAL |
| 309 | 1.4.43.2 | Análise Tecnored |  | 1d | 2026-07-31 | 2026-07-31 | 308 | 2026-07-31 | 2026-07-31 | 1d | 12d | 0d |  | TECNORED | 8h |  | Sex 31/07/26 | Sex 31/07/26 | 0207 | MECHANICAL |
| 310 | 1.4.43.3 | Atendimento de comentários |  | 1d | 2026-08-03 | 2026-08-03 | 309 | 2026-08-03 | 2026-08-03 | 1d | 12d | 0d |  | André | 8h |  | Seg 03/08/26 | Seg 03/08/26 | 0207 | MECHANICAL |
| 311 | 1.4.43.4 | Aprovação |  | 1d | 2026-08-04 | 2026-08-04 | 310 | 2026-08-04 | 2026-08-04 | 1d | 12d |  |  | TECNORED | 8h |  | Ter 04/08/26 | Ter 04/08/26 | 0207 | MECHANICAL |
| 312 | 1.5 | **UTILITIES SYSTEMS** |  | 12d | 2026-07-21 | 2026-08-05 |  | 2026-07-21 | 2026-08-05 | 12d | 11d |  |  |  | 432h |  | Ter 21/07/26 | Qua 05/08/26 |  |  |
| 313 | 1.5.1 | **DB-F0009-0207-MB-U-00001** | inactive | 4d | 2026-07-21 | 2026-07-24 |  |  |  |  | 12d |  |  | André | 64h | -0 | Ter 21/07/26 | Sex 24/07/26 | 0207 | UTILITIES SYSTEMS |
| 314 | 1.5.1.1 | Emissão Inicial | inactive | 1d | 2026-07-21 | 2026-07-21 | 77 |  |  |  | 12d | 0d |  | Rodrigo | 8h | -0 | Ter 21/07/26 | Ter 21/07/26 | 0207 | UTILITIES SYSTEMS |
| 315 | 1.5.1.2 | Análise Tecnored | inactive | 1d | 2026-07-22 | 2026-07-22 | 314 |  |  |  | 19d | 0d |  | TECNORED | 8h | -0 | Qua 22/07/26 | Qua 22/07/26 | 0207 | UTILITIES SYSTEMS |
| 316 | 1.5.1.3 | Atendimento de comentários | inactive | 1d | 2026-07-23 | 2026-07-23 | 315 |  |  |  | 19d | 0d |  | André | 8h | -0 | Qui 23/07/26 | Qui 23/07/26 | 0207 | UTILITIES SYSTEMS |
| 317 | 1.5.1.4 | Aprovação | inactive | 1d | 2026-07-24 | 2026-07-24 | 316 |  |  |  | 19d |  |  | TECNORED | 8h | -0 | Sex 24/07/26 | Sex 24/07/26 | 0207 | UTILITIES SYSTEMS |
| 318 | 1.5.2 | **FG-F0009-0000-GE-U-00001** |  | 4d | 2026-07-23 | 2026-07-28 |  | 2026-07-23 | 2026-07-28 | 4d | 11d |  |  | Calebe | 64h |  | Qui 23/07/26 | Ter 28/07/26 | 0207 | UTILITIES SYSTEMS |
| 319 | 1.5.2.1 | Emissão Inicial |  | 2d | 2026-07-23 | 2026-07-24 | 314 | 2026-07-23 | 2026-07-24 | 2d | 11d | 0d | finish no earlier than 2026-07-24 | Rodrigo | 16h |  | Qui 23/07/26 | Sex 24/07/26 | 0207 | UTILITIES SYSTEMS |
| 320 | 1.5.2.2 | Análise Tecnored |  | 1d | 2026-07-27 | 2026-07-27 | 319 | 2026-07-27 | 2026-07-27 | 1d | 17d | 0d |  | TECNORED | 8h |  | Seg 27/07/26 | Seg 27/07/26 | 0207 | UTILITIES SYSTEMS |
| 321 | 1.5.2.3 | Atendimento de comentários |  | 0.5d | 2026-07-28 | 2026-07-28 | 320 | 2026-07-28 | 2026-07-28 | 0.5d | 17d | 0d |  | André | 4h |  | Ter 28/07/26 | Ter 28/07/26 | 0207 | UTILITIES SYSTEMS |
| 322 | 1.5.2.4 | Aprovação |  | 0.5d | 2026-07-28 | 2026-07-28 | 321 | 2026-07-28 | 2026-07-28 | 0.5d | 17d |  |  | TECNORED | 4h |  | Ter 28/07/26 | Ter 28/07/26 | 0207 | UTILITIES SYSTEMS |
| 323 | 1.5.3 | **FG-F0009-0000-GE-U-00002** |  | 4d | 2026-07-27 | 2026-07-30 |  | 2026-07-27 | 2026-07-30 | 4d | 11d |  |  | Calebe | 64h |  | Seg 27/07/26 | Qui 30/07/26 | 0207 | UTILITIES SYSTEMS |
| 324 | 1.5.3.1 | Emissão Inicial |  | 2d | 2026-07-27 | 2026-07-28 | 319 | 2026-07-27 | 2026-07-28 | 2d | 11d | 0d | finish no earlier than 2026-07-24 | Rodrigo | 16h |  | Seg 27/07/26 | Ter 28/07/26 | 0207 | UTILITIES SYSTEMS |
| 325 | 1.5.3.2 | Análise Tecnored |  | 1d | 2026-07-29 | 2026-07-29 | 324 | 2026-07-29 | 2026-07-29 | 1d | 15d | 0d |  | TECNORED | 8h |  | Qua 29/07/26 | Qua 29/07/26 | 0207 | UTILITIES SYSTEMS |
| 326 | 1.5.3.3 | Atendimento de comentários |  | 0.5d | 2026-07-30 | 2026-07-30 | 325 | 2026-07-30 | 2026-07-30 | 0.5d | 15d | 0d |  | André | 4h |  | Qui 30/07/26 | Qui 30/07/26 | 0207 | UTILITIES SYSTEMS |
| 327 | 1.5.3.4 | Aprovação |  | 0.5d | 2026-07-30 | 2026-07-30 | 326 | 2026-07-30 | 2026-07-30 | 0.5d | 15d |  |  | TECNORED | 4h |  | Qui 30/07/26 | Qui 30/07/26 | 0207 | UTILITIES SYSTEMS |

| ID | WBS | Task | Type | Duration | Start | Finish | Predecessors | Baseline start | Baseline finish | Baseline duration | Total slack | Free slack | Constraint | Resources | Work | Baseline cost | Início_LB_R0 | Término_LB_R0 | COD_Projeto | Disciplina |
| --- | --- | --- | --- | --- | --- | --- | --- | --- | --- | --- | --- | --- | --- | --- | --- | --- | --- | --- | --- | --- |
| 328 | 1.5.4 | **FG-F0009-0000-GE-U-00003** |  | 4d | 2026-07-29 | 2026-08-03 |  | 2026-07-29 | 2026-08-03 | 4d | 11d |  |  | Calebe | 64h |  | Qua 29/07/26 | Seg 03/08/26 | 0207 | UTILITIES SYSTEMS |
| 329 | 1.5.4.1 | Emissão Inicial |  | 2d | 2026-07-29 | 2026-07-30 | 324 | 2026-07-29 | 2026-07-30 | 2d | 11d | 0d | finish no earlier than 2026-07-24 | Rodrigo | 16h |  | Qua 29/07/26 | Qui 30/07/26 | 0207 | UTILITIES SYSTEMS |
| 330 | 1.5.4.2 | Análise Tecnored |  | 1d | 2026-07-31 | 2026-07-31 | 329 | 2026-07-31 | 2026-07-31 | 1d | 13d | 0d |  | TECNORED | 8h |  | Sex 31/07/26 | Sex 31/07/26 | 0207 | UTILITIES SYSTEMS |
| 331 | 1.5.4.3 | Atendimento de comentários |  | 0.5d | 2026-08-03 | 2026-08-03 | 330 | 2026-08-03 | 2026-08-03 | 0.5d | 13d | 0d |  | André | 4h |  | Seg 03/08/26 | Seg 03/08/26 | 0207 | UTILITIES SYSTEMS |
| 332 | 1.5.4.4 | Aprovação |  | 0.5d | 2026-08-03 | 2026-08-03 | 331 | 2026-08-03 | 2026-08-03 | 0.5d | 13d |  |  | TECNORED | 4h |  | Seg 03/08/26 | Seg 03/08/26 | 0207 | UTILITIES SYSTEMS |
| 333 | 1.5.5 | **FG-F0009-0000-GE-U-00004** |  | 4d | 2026-07-31 | 2026-08-05 |  | 2026-07-31 | 2026-08-05 | 4d | 11d |  |  | Calebe | 64h |  | Sex 31/07/26 | Qua 05/08/26 | 0207 | UTILITIES SYSTEMS |
| 334 | 1.5.5.1 | Emissão Inicial |  | 2d | 2026-07-31 | 2026-08-03 | 329 | 2026-07-31 | 2026-08-03 | 2d | 11d | 0d | finish no earlier than 2026-07-24 | Rodrigo | 16h |  | Sex 31/07/26 | Seg 03/08/26 | 0207 | UTILITIES SYSTEMS |
| 335 | 1.5.5.2 | Análise Tecnored |  | 1d | 2026-08-04 | 2026-08-04 | 334 | 2026-08-04 | 2026-08-04 | 1d | 11d | 0d |  | TECNORED | 8h |  | Ter 04/08/26 | Ter 04/08/26 | 0207 | UTILITIES SYSTEMS |
| 336 | 1.5.5.3 | Atendimento de comentários |  | 0.5d | 2026-08-05 | 2026-08-05 | 335 | 2026-08-05 | 2026-08-05 | 0.5d | 11d | 0d |  | André | 4h |  | Qua 05/08/26 | Qua 05/08/26 | 0207 | UTILITIES SYSTEMS |
| 337 | 1.5.5.4 | Aprovação |  | 0.5d | 2026-08-05 | 2026-08-05 | 336 | 2026-08-05 | 2026-08-05 | 0.5d | 11d |  |  | TECNORED | 4h |  | Qua 05/08/26 | Qua 05/08/26 | 0207 | UTILITIES SYSTEMS |
| 338 | 1.5.6 | **MC-F0009-0207-MB-U-00001** |  | 5d | 2026-07-21 | 2026-07-27 |  | 2026-07-21 | 2026-07-27 | 5d | 14d |  |  | Carlos | 80h |  | Ter 21/07/26 | Seg 27/07/26 | 0207 | UTILITIES SYSTEMS |
| 339 | 1.5.6.1 | Emissão Inicial |  | 2d | 2026-07-21 | 2026-07-22 | 77 | 2026-07-21 | 2026-07-22 | 2d | 14d | 0d | start no earlier than 2026-07-21 | Rodrigo | 16h |  | Ter 21/07/26 | Qua 22/07/26 | 0207 | UTILITIES SYSTEMS |
| 340 | 1.5.6.2 | Análise Tecnored |  | 1d | 2026-07-23 | 2026-07-23 | 339 | 2026-07-23 | 2026-07-23 | 1d | 18d | 0d |  | TECNORED | 8h |  | Qui 23/07/26 | Qui 23/07/26 | 0207 | UTILITIES SYSTEMS |
| 341 | 1.5.6.3 | Atendimento de comentários |  | 1d | 2026-07-24 | 2026-07-24 | 340 | 2026-07-24 | 2026-07-24 | 1d | 18d | 0d |  | André | 8h |  | Sex 24/07/26 | Sex 24/07/26 | 0207 | UTILITIES SYSTEMS |
| 342 | 1.5.6.4 | Aprovação |  | 1d | 2026-07-27 | 2026-07-27 | 341 | 2026-07-27 | 2026-07-27 | 1d | 18d |  |  | TECNORED | 8h |  | Seg 27/07/26 | Seg 27/07/26 | 0207 | UTILITIES SYSTEMS |
| 343 | 1.5.7 | **ET-F0009-0207-MB-U-00001** |  | 6d | 2026-07-23 | 2026-07-30 |  | 2026-07-23 | 2026-07-30 | 6d | 15d |  |  | Carlos | 96h |  | Qui 23/07/26 | Qui 30/07/26 | 0207 | UTILITIES SYSTEMS |
| 344 | 1.5.7.1 | Emissão Inicial |  | 3d | 2026-07-23 | 2026-07-27 | 339 | 2026-07-23 | 2026-07-27 | 3d | 15d | 0d | finish no earlier than 2026-07-27 | Rodrigo | 24h |  | Qui 23/07/26 | Seg 27/07/26 | 0207 | UTILITIES SYSTEMS |
| 345 | 1.5.7.2 | Análise Tecnored |  | 1d | 2026-07-28 | 2026-07-28 | 344 | 2026-07-28 | 2026-07-28 | 1d | 15d | 0d |  | TECNORED | 8h |  | Ter 28/07/26 | Ter 28/07/26 | 0207 | UTILITIES SYSTEMS |
| 346 | 1.5.7.3 | Atendimento de comentários |  | 1d | 2026-07-29 | 2026-07-29 | 345 | 2026-07-29 | 2026-07-29 | 1d | 15d | 0d |  | André | 8h |  | Qua 29/07/26 | Qua 29/07/26 | 0207 | UTILITIES SYSTEMS |
| 347 | 1.5.7.4 | Aprovação |  | 1d | 2026-07-30 | 2026-07-30 | 346 | 2026-07-30 | 2026-07-30 | 1d | 15d |  |  | TECNORED | 8h |  | Qui 30/07/26 | Qui 30/07/26 | 0207 | UTILITIES SYSTEMS |
| 348 | 1.5.8 | **MD-F0009-0207-MB-U-00001** | inactive | 4d | 2026-07-23 | 2026-07-28 |  |  |  |  | 17d |  |  | Carlos | 64h | -0 | Qui 23/07/26 | Ter 28/07/26 | 0207 | UTILITIES SYSTEMS |
| 349 | 1.5.8.1 | Emissão Inicial | inactive | 1d | 2026-07-23 | 2026-07-23 | 339 |  |  |  | 17d | 0d |  | Rodrigo | 8h | -0 | Qui 23/07/26 | Qui 23/07/26 | 0207 | UTILITIES SYSTEMS |
| 350 | 1.5.8.2 | Análise Tecnored | inactive | 1d | 2026-07-24 | 2026-07-24 | 349 |  |  |  | 17d | 0d |  | TECNORED | 8h | -0 | Sex 24/07/26 | Sex 24/07/26 | 0207 | UTILITIES SYSTEMS |
| 351 | 1.5.8.3 | Atendimento de comentários | inactive | 1d | 2026-07-27 | 2026-07-27 | 350 |  |  |  | 17d | 0d |  | André | 8h | -0 | Seg 27/07/26 | Seg 27/07/26 | 0207 | UTILITIES SYSTEMS |
| 352 | 1.5.8.4 | Aprovação | inactive | 1d | 2026-07-28 | 2026-07-28 | 351 |  |  |  | 17d |  |  | TECNORED | 8h | -0 | Ter 28/07/26 | Ter 28/07/26 | 0207 | UTILITIES SYSTEMS |

| ID | WBS | Task | Type | Duration | Start | Finish | Predecessors | Baseline start | Baseline finish | Baseline duration | Total slack | Free slack | Constraint | Resources | Work | Baseline cost | Início_LB_R0 | Término_LB_R0 | COD_Projeto | Disciplina |
| --- | --- | --- | --- | --- | --- | --- | --- | --- | --- | --- | --- | --- | --- | --- | --- | --- | --- | --- | --- | --- |
| 353 | 1.6 | **PIPING** |  | 16d | 2026-07-23 | 2026-08-13 |  | 2026-07-23 | 2026-08-13 | 16d | 5d |  |  |  | 408h |  | Qui 23/07/26 | Qui 13/08/26 |  |  |
| 354 | 1.6.1 | **ML-F0009-0207-MB-T-00001** | inactive | 5d | 2026-07-23 | 2026-07-29 |  |  |  |  | 10d |  |  | Felipe, André | 80h | -0 | Qui 23/07/26 | Qua 29/07/26 | 0207 | PIPING |
| 355 | 1.6.1.1 | Emissão Inicial | inactive | 2d | 2026-07-23 | 2026-07-24 | 339 |  |  |  | 10d | 0d |  | Rodrigo | 16h | -0 | Qui 23/07/26 | Sex 24/07/26 | 0207 | PIPING |
| 356 | 1.6.1.2 | Análise Tecnored | inactive | 1d | 2026-07-27 | 2026-07-27 | 355 |  |  |  | 16d | 0d |  | TECNORED | 8h | -0 | Seg 27/07/26 | Seg 27/07/26 | 0207 | PIPING |
| 357 | 1.6.1.3 | Atendimento de comentários | inactive | 1d | 2026-07-28 | 2026-07-28 | 356 |  |  |  | 16d | 0d |  | André | 8h | -0 | Ter 28/07/26 | Ter 28/07/26 | 0207 | PIPING |
| 358 | 1.6.1.4 | Aprovação | inactive | 1d | 2026-07-29 | 2026-07-29 | 357 |  |  |  | 16d |  |  | TECNORED | 8h | -0 | Qua 29/07/26 | Qua 29/07/26 | 0207 | PIPING |
| 359 | 1.6.2 | **ML-F0009-0207-MB-T-00002** | inactive | 5d | 2026-07-23 | 2026-07-29 |  |  |  |  | 15d |  |  | Felipe, André | 80h | -0 | Qui 23/07/26 | Qua 29/07/26 | 0207 | PIPING |
| 360 | 1.6.2.1 | Emissão Inicial | inactive | 2d | 2026-07-23 | 2026-07-24 | 339 |  |  |  | 15d | 0d |  | Rodrigo | 16h | -0 | Qui 23/07/26 | Sex 24/07/26 | 0207 | PIPING |
| 361 | 1.6.2.2 | Análise Tecnored | inactive | 1d | 2026-07-27 | 2026-07-27 | 360 |  |  |  | 16d | 0d |  | TECNORED | 8h | -0 | Seg 27/07/26 | Seg 27/07/26 | 0207 | PIPING |
| 362 | 1.6.2.3 | Atendimento de comentários | inactive | 1d | 2026-07-28 | 2026-07-28 | 361 |  |  |  | 16d | 0d |  | André | 8h | -0 | Ter 28/07/26 | Ter 28/07/26 | 0207 | PIPING |
| 363 | 1.6.2.4 | Aprovação | inactive | 1d | 2026-07-29 | 2026-07-29 | 362 |  |  |  | 16d |  |  | TECNORED | 8h | -0 | Qua 29/07/26 | Qua 29/07/26 | 0207 | PIPING |
| 364 | 1.6.3 | **ML-F0009-0207-MB-T-00003** | inactive | 5d | 2026-07-27 | 2026-07-31 |  |  |  |  | 10d |  |  | Felipe, André | 80h | -0 | Seg 27/07/26 | Sex 31/07/26 | 0207 | PIPING |
| 365 | 1.6.3.1 | Emissão Inicial | inactive | 2d | 2026-07-27 | 2026-07-28 | 355 |  |  |  | 10d | 0d |  | Rodrigo | 16h | -0 | Seg 27/07/26 | Ter 28/07/26 | 0207 | PIPING |
| 366 | 1.6.3.2 | Análise Tecnored | inactive | 1d | 2026-07-29 | 2026-07-29 | 365 |  |  |  | 14d | 0d |  | TECNORED | 8h | -0 | Qua 29/07/26 | Qua 29/07/26 | 0207 | PIPING |
| 367 | 1.6.3.3 | Atendimento de comentários | inactive | 1d | 2026-07-30 | 2026-07-30 | 366 |  |  |  | 14d | 0d |  | André | 8h | -0 | Qui 30/07/26 | Qui 30/07/26 | 0207 | PIPING |
| 368 | 1.6.3.4 | Aprovação | inactive | 1d | 2026-07-31 | 2026-07-31 | 367 |  |  |  | 14d |  |  | TECNORED | 8h | -0 | Sex 31/07/26 | Sex 31/07/26 | 0207 | PIPING |
| 369 | 1.6.4 | **AG-F0009-0000-MB-T-00001** |  | 12d | 2026-07-23 | 2026-08-07 |  | 2026-07-23 | 2026-08-07 | 12d | 9d |  |  | Levy | 152h |  | Qui 23/07/26 | Sex 07/08/26 | 0207 | PIPING |
| 370 | 1.6.4.1 | Emissão Inicial |  | 3d | 2026-08-05 | 2026-08-07 | 123, 128 | 2026-08-05 | 2026-08-07 | 3d | 5d | 0d | start no earlier than 2026-08-05 | Rodrigo | 24h |  | Qua 05/08/26 | Sex 07/08/26 | 0207 | PIPING |
| 371 | 1.6.4.2 | Análise Tecnored |  | 1d | 2026-07-23 | 2026-07-23 | 360 | 2026-07-23 | 2026-07-23 | 1d | 17d | 0d |  | TECNORED | 8h |  | Qui 23/07/26 | Qui 23/07/26 | 0207 | PIPING |
| 372 | 1.6.4.3 | Atendimento de comentários |  | 2d | 2026-07-24 | 2026-07-27 | 371 | 2026-07-24 | 2026-07-27 | 2d | 17d | 0d |  | André | 16h |  | Sex 24/07/26 | Seg 27/07/26 | 0207 | PIPING |
| 373 | 1.6.4.4 | Aprovação |  | 1d | 2026-07-28 | 2026-07-28 | 372 | 2026-07-28 | 2026-07-28 | 1d | 17d |  |  | TECNORED | 8h |  | Ter 28/07/26 | Ter 28/07/26 | 0207 | PIPING |
| 374 | 1.6.5 | **AG-F0009-0000-MB-T-00002** |  | 6d | 2026-08-05 | 2026-08-12 |  | 2026-08-05 | 2026-08-12 | 6d | 5d |  |  | Levy | 96h |  | Qua 05/08/26 | Qua 12/08/26 | 0207 | PIPING |
| 375 | 1.6.5.1 | Emissão Inicial |  | 3d | 2026-08-05 | 2026-08-07 | 123, 128 | 2026-08-05 | 2026-08-07 | 3d | 5d | 0d | start no earlier than 2026-08-05 | Rodrigo | 24h |  | Qua 05/08/26 | Sex 07/08/26 | 0207 | PIPING |
| 376 | 1.6.5.2 | Análise Tecnored |  | 1d | 2026-08-10 | 2026-08-10 | 375 | 2026-08-10 | 2026-08-10 | 1d | 6d | 0d |  | TECNORED | 8h |  | Seg 10/08/26 | Seg 10/08/26 | 0207 | PIPING |
| 377 | 1.6.5.3 | Atendimento de comentários |  | 1d | 2026-08-11 | 2026-08-11 | 376 | 2026-08-11 | 2026-08-11 | 1d | 6d | 0d |  | André | 8h |  | Ter 11/08/26 | Ter 11/08/26 | 0207 | PIPING |
| 378 | 1.6.5.4 | Aprovação |  | 1d | 2026-08-12 | 2026-08-12 | 377 | 2026-08-12 | 2026-08-12 | 1d | 6d |  |  | TECNORED | 8h |  | Qua 12/08/26 | Qua 12/08/26 | 0207 | PIPING |

| ID | WBS | Task | Type | Duration | Start | Finish | Predecessors | Baseline start | Baseline finish | Baseline duration | Total slack | Free slack | Constraint | Resources | Work | Baseline cost | Início_LB_R0 | Término_LB_R0 | COD_Projeto | Disciplina |
| --- | --- | --- | --- | --- | --- | --- | --- | --- | --- | --- | --- | --- | --- | --- | --- | --- | --- | --- | --- | --- |
| 379 | 1.6.6 | **AG-F0009-0000-MB-T-00003** |  | 6d | 2026-08-05 | 2026-08-12 |  | 2026-08-05 | 2026-08-12 | 6d | 5d |  |  | Levy | 96h |  | Qua 05/08/26 | Qua 12/08/26 | 0207 | PIPING |
| 380 | 1.6.6.1 | Emissão Inicial |  | 3d | 2026-08-05 | 2026-08-07 | 123, 128 | 2026-08-05 | 2026-08-07 | 3d | 5d | 0d | start no earlier than 2026-08-05 | Rodrigo | 24h |  | Qua 05/08/26 | Sex 07/08/26 | 0207 | PIPING |
| 381 | 1.6.6.2 | Análise Tecnored |  | 1d | 2026-08-10 | 2026-08-10 | 380 | 2026-08-10 | 2026-08-10 | 1d | 6d | 0d |  | TECNORED | 8h |  | Seg 10/08/26 | Seg 10/08/26 | 0207 | PIPING |
| 382 | 1.6.6.3 | Atendimento de comentários |  | 1d | 2026-08-11 | 2026-08-11 | 381 | 2026-08-11 | 2026-08-11 | 1d | 6d | 0d |  | André | 8h |  | Ter 11/08/26 | Ter 11/08/26 | 0207 | PIPING |
| 383 | 1.6.6.4 | Aprovação |  | 1d | 2026-08-12 | 2026-08-12 | 382 | 2026-08-12 | 2026-08-12 | 1d | 6d |  |  | TECNORED | 8h |  | Qua 12/08/26 | Qua 12/08/26 | 0207 | PIPING |
| 384 | 1.6.7 | **PQ-F0009-0207-MB-T-00001** |  | 4d | 2026-08-10 | 2026-08-13 |  | 2026-08-10 | 2026-08-13 | 4d | 5d |  |  | Carlos | 64h |  | Seg 10/08/26 | Qui 13/08/26 | 0207 | PIPING |
| 385 | 1.6.7.1 | Emissão Inicial |  | 1d | 2026-08-10 | 2026-08-10 | 370, 375, 380 | 2026-08-10 | 2026-08-10 | 1d | 5d | 0d | start no earlier than 2026-08-10 | Rodrigo | 8h |  | Seg 10/08/26 | Seg 10/08/26 | 0207 | PIPING |
| 386 | 1.6.7.2 | Análise Tecnored |  | 1d | 2026-08-11 | 2026-08-11 | 385 | 2026-08-11 | 2026-08-11 | 1d | 5d | 0d |  | TECNORED | 8h |  | Ter 11/08/26 | Ter 11/08/26 | 0207 | PIPING |
| 387 | 1.6.7.3 | Atendimento de comentários |  | 1d | 2026-08-12 | 2026-08-12 | 386 | 2026-08-12 | 2026-08-12 | 1d | 5d | 0d |  | André | 8h |  | Qua 12/08/26 | Qua 12/08/26 | 0207 | PIPING |
| 388 | 1.6.7.4 | Aprovação |  | 1d | 2026-08-13 | 2026-08-13 | 387 | 2026-08-13 | 2026-08-13 | 1d | 5d |  |  | TECNORED | 8h |  | Qui 13/08/26 | Qui 13/08/26 | 0207 | PIPING |
| 389 | 1.6.8 | **LK-F0009-0207-MB-T-00001** | inactive | 4d | 2026-08-11 | 2026-08-14 |  |  |  |  | 4d |  |  | Everton, Ricardo | 64h | -0 | Ter 11/08/26 | Sex 14/08/26 | 0207 | PIPING |
| 390 | 1.6.8.1 | Emissão Inicial | inactive | 1d | 2026-08-11 | 2026-08-11 | 385 |  |  |  | 4d | 0d |  | Rodrigo | 8h | -0 | Ter 11/08/26 | Ter 11/08/26 | 0207 | PIPING |
| 391 | 1.6.8.2 | Análise Tecnored | inactive | 1d | 2026-08-12 | 2026-08-12 | 390 |  |  |  | 4d | 0d |  | TECNORED | 8h | -0 | Qua 12/08/26 | Qua 12/08/26 | 0207 | PIPING |
| 392 | 1.6.8.3 | Atendimento de comentários | inactive | 1d | 2026-08-13 | 2026-08-13 | 391 |  |  |  | 4d | 0d |  | André | 8h | -0 | Qui 13/08/26 | Qui 13/08/26 | 0207 | PIPING |
| 393 | 1.6.8.4 | Aprovação | inactive | 1d | 2026-08-14 | 2026-08-14 | 392 |  |  |  | 4d |  |  | TECNORED | 8h | -0 | Sex 14/08/26 | Sex 14/08/26 | 0207 | PIPING |
| 394 | 1.7 | **STEEL STRUCTURE** |  | 15d | 2026-07-24 | 2026-08-13 |  | 2026-07-24 | 2026-08-13 | 15d | 5d |  |  |  | 1040h |  | Sex 24/07/26 | Qui 13/08/26 |  |  |
| 395 | 1.7.1 | **ML-F0009-0207-GE-S-00001** |  | 5d | 2026-07-24 | 2026-07-30 |  | 2026-07-24 | 2026-07-30 | 5d | 8d |  |  | Paulo | 80h |  | Sex 24/07/26 | Qui 30/07/26 | 0207 | STEEL STRUCTURE |
| 396 | 1.7.1.1 | Emissão Inicial |  | 3d | 2026-07-24 | 2026-07-28 | 188, 263 | 2026-07-24 | 2026-07-28 | 3d | 8d | 0d | finish no earlier than 2026-07-28 | Rodrigo | 24h |  | Sex 24/07/26 | Ter 28/07/26 | 0207 | STEEL STRUCTURE |
| 397 | 1.7.1.2 | Análise Tecnored |  | 1d | 2026-07-29 | 2026-07-29 | 396 | 2026-07-29 | 2026-07-29 | 1d | 15d | 0d |  | TECNORED | 8h |  | Qua 29/07/26 | Qua 29/07/26 | 0207 | STEEL STRUCTURE |
| 398 | 1.7.1.3 | Atendimento de comentários |  | 0.5d | 2026-07-30 | 2026-07-30 | 397 | 2026-07-30 | 2026-07-30 | 0.5d | 15d | 0d |  | André | 4h |  | Qui 30/07/26 | Qui 30/07/26 | 0207 | STEEL STRUCTURE |
| 399 | 1.7.1.4 | Aprovação |  | 0.5d | 2026-07-30 | 2026-07-30 | 398 | 2026-07-30 | 2026-07-30 | 0.5d | 15d |  |  | TECNORED | 4h |  | Qui 30/07/26 | Qui 30/07/26 | 0207 | STEEL STRUCTURE |
| 400 | 1.7.2 | **ML-F0009-0207-GE-S-00002** |  | 5d | 2026-07-24 | 2026-07-30 |  | 2026-07-24 | 2026-07-30 | 5d | 8d |  |  | Paulo | 80h |  | Sex 24/07/26 | Qui 30/07/26 | 0207 | STEEL STRUCTURE |
| 401 | 1.7.2.1 | Emissão Inicial |  | 3d | 2026-07-24 | 2026-07-28 | 188, 263 | 2026-07-24 | 2026-07-28 | 3d | 8d | 0d | finish no earlier than 2026-07-28 | Rodrigo | 24h |  | Sex 24/07/26 | Ter 28/07/26 | 0207 | STEEL STRUCTURE |
| 402 | 1.7.2.2 | Análise Tecnored |  | 1d | 2026-07-29 | 2026-07-29 | 401 | 2026-07-29 | 2026-07-29 | 1d | 15d | 0d |  | TECNORED | 8h |  | Qua 29/07/26 | Qua 29/07/26 | 0207 | STEEL STRUCTURE |
| 403 | 1.7.2.3 | Atendimento de comentários |  | 0.5d | 2026-07-30 | 2026-07-30 | 402 | 2026-07-30 | 2026-07-30 | 0.5d | 15d | 0d |  | André | 4h |  | Qui 30/07/26 | Qui 30/07/26 | 0207 | STEEL STRUCTURE |
| 404 | 1.7.2.4 | Aprovação |  | 0.5d | 2026-07-30 | 2026-07-30 | 403 | 2026-07-30 | 2026-07-30 | 0.5d | 15d |  |  | TECNORED | 4h |  | Qui 30/07/26 | Qui 30/07/26 | 0207 | STEEL STRUCTURE |

| ID | WBS | Task | Type | Duration | Start | Finish | Predecessors | Baseline start | Baseline finish | Baseline duration | Total slack | Free slack | Constraint | Resources | Work | Baseline cost | Início_LB_R0 | Término_LB_R0 | COD_Projeto | Disciplina |
| --- | --- | --- | --- | --- | --- | --- | --- | --- | --- | --- | --- | --- | --- | --- | --- | --- | --- | --- | --- | --- |
| 405 | 1.7.3 | **ML-F0009-0207-GE-S-00003** |  | 5d | 2026-07-24 | 2026-07-30 |  | 2026-07-24 | 2026-07-30 | 5d | 8d |  |  | Paulo | 80h |  | Sex 24/07/26 | Qui 30/07/26 | 0207 | STEEL STRUCTURE |
| 406 | 1.7.3.1 | Emissão Inicial |  | 3d | 2026-07-24 | 2026-07-28 | 188, 263 | 2026-07-24 | 2026-07-28 | 3d | 8d | 0d | finish no earlier than 2026-07-28 | Rodrigo | 24h |  | Sex 24/07/26 | Ter 28/07/26 | 0207 | STEEL STRUCTURE |
| 407 | 1.7.3.2 | Análise Tecnored |  | 1d | 2026-07-29 | 2026-07-29 | 406 | 2026-07-29 | 2026-07-29 | 1d | 15d | 0d |  | TECNORED | 8h |  | Qua 29/07/26 | Qua 29/07/26 | 0207 | STEEL STRUCTURE |
| 408 | 1.7.3.3 | Atendimento de comentários |  | 0.5d | 2026-07-30 | 2026-07-30 | 407 | 2026-07-30 | 2026-07-30 | 0.5d | 15d | 0d |  | André | 4h |  | Qui 30/07/26 | Qui 30/07/26 | 0207 | STEEL STRUCTURE |
| 409 | 1.7.3.4 | Aprovação |  | 0.5d | 2026-07-30 | 2026-07-30 | 408 | 2026-07-30 | 2026-07-30 | 0.5d | 15d |  |  | TECNORED | 4h |  | Qui 30/07/26 | Qui 30/07/26 | 0207 | STEEL STRUCTURE |
| 410 | 1.7.4 | **ML-F0009-0207-GE-S-00004** |  | 4d | 2026-08-03 | 2026-08-06 |  | 2026-08-03 | 2026-08-06 | 4d | 6d |  |  | Paulo | 64h |  | Seg 03/08/26 | Qui 06/08/26 | 0207 | STEEL STRUCTURE |
| 411 | 1.7.4.1 | Emissão Inicial |  | 2d | 2026-08-03 | 2026-08-04 | 143, 193, 203, 213, 223, 233, 268, 273, 278, 283 | 2026-08-03 | 2026-08-04 | 2d | 6d | 0d | finish no earlier than 2026-07-30 | Rodrigo | 16h |  | Seg 03/08/26 | Ter 04/08/26 | 0207 | STEEL STRUCTURE |
| 412 | 1.7.4.2 | Análise Tecnored |  | 1d | 2026-08-05 | 2026-08-05 | 411 | 2026-08-05 | 2026-08-05 | 1d | 10d | 0d |  | TECNORED | 8h |  | Qua 05/08/26 | Qua 05/08/26 | 0207 | STEEL STRUCTURE |
| 413 | 1.7.4.3 | Atendimento de comentários |  | 0.5d | 2026-08-06 | 2026-08-06 | 412 | 2026-08-06 | 2026-08-06 | 0.5d | 10d | 0d |  | André | 4h |  | Qui 06/08/26 | Qui 06/08/26 | 0207 | STEEL STRUCTURE |
| 414 | 1.7.4.4 | Aprovação |  | 0.5d | 2026-08-06 | 2026-08-06 | 413 | 2026-08-06 | 2026-08-06 | 0.5d | 10d |  |  | TECNORED | 4h |  | Qui 06/08/26 | Qui 06/08/26 | 0207 | STEEL STRUCTURE |
| 415 | 1.7.5 | **ML-F0009-0207-GE-S-00005** |  | 4d | 2026-08-03 | 2026-08-06 |  | 2026-08-03 | 2026-08-06 | 4d | 5d |  |  | Paulo | 64h |  | Seg 03/08/26 | Qui 06/08/26 | 0207 | STEEL STRUCTURE |
| 416 | 1.7.5.1 | Emissão Inicial |  | 2d | 2026-08-03 | 2026-08-04 | 143, 193, 203, 213, 223, 233, 268, 273, 278, 283 | 2026-08-03 | 2026-08-04 | 2d | 5d | 0d | finish no earlier than 2026-07-30 | Rodrigo | 16h |  | Seg 03/08/26 | Ter 04/08/26 | 0207 | STEEL STRUCTURE |
| 417 | 1.7.5.2 | Análise Tecnored |  | 1d | 2026-08-05 | 2026-08-05 | 416 | 2026-08-05 | 2026-08-05 | 1d | 10d | 0d |  | TECNORED | 8h |  | Qua 05/08/26 | Qua 05/08/26 | 0207 | STEEL STRUCTURE |
| 418 | 1.7.5.3 | Atendimento de comentários |  | 0.5d | 2026-08-06 | 2026-08-06 | 417 | 2026-08-06 | 2026-08-06 | 0.5d | 10d | 0d |  | André | 4h |  | Qui 06/08/26 | Qui 06/08/26 | 0207 | STEEL STRUCTURE |
| 419 | 1.7.5.4 | Aprovação |  | 0.5d | 2026-08-06 | 2026-08-06 | 418 | 2026-08-06 | 2026-08-06 | 0.5d | 10d |  |  | TECNORED | 4h |  | Qui 06/08/26 | Qui 06/08/26 | 0207 | STEEL STRUCTURE |
| 420 | 1.7.6 | **ML-F0009-0207-GE-S-00006** | inactive | 2.5d | 2026-08-05 | 2026-08-07 |  |  |  |  | 4.5d |  |  | Paulo | 40h | -0 | Qua 05/08/26 | Sex 07/08/26 | 0207 | STEEL STRUCTURE |
| 421 | 1.7.6.1 | Emissão Inicial | inactive | 0.5d | 2026-08-05 | 2026-08-05 | 416 |  |  |  | 4.5d | 0d |  | Rodrigo | 4h | -0 | Qua 05/08/26 | Qua 05/08/26 | 0207 | STEEL STRUCTURE |
| 422 | 1.7.6.2 | Análise Tecnored | inactive | 1d | 2026-08-05 | 2026-08-06 | 421 |  |  |  | 9.5d | 0d |  | TECNORED | 8h | -0 | Qua 05/08/26 | Qui 06/08/26 | 0207 | STEEL STRUCTURE |
| 423 | 1.7.6.3 | Atendimento de comentários | inactive | 0.5d | 2026-08-06 | 2026-08-06 | 422 |  |  |  | 9.5d | 0d |  | André | 4h | -0 | Qui 06/08/26 | Qui 06/08/26 | 0207 | STEEL STRUCTURE |
| 424 | 1.7.6.4 | Aprovação | inactive | 0.5d | 2026-08-07 | 2026-08-07 | 423 |  |  |  | 9.5d |  |  | TECNORED | 4h | -0 | Sex 07/08/26 | Sex 07/08/26 | 0207 | STEEL STRUCTURE |
| 425 | 1.7.7 | **PQ-F0009-0207-GE-S-00001** |  | 6d | 2026-08-06 | 2026-08-13 |  | 2026-08-06 | 2026-08-13 | 6d | 5d |  |  | Paulo | 96h |  | Qui 06/08/26 | Qui 13/08/26 | 0207 | STEEL STRUCTURE |
| 426 | 1.7.7.1 | Emissão Inicial |  | 3d | 2026-08-06 | 2026-08-10 | 396, 401, 406, 411, 416, 436 | 2026-08-06 | 2026-08-10 | 3d | 5d | 0d | finish no earlier than 2026-08-10 | Rodrigo | 24h |  | Qui 06/08/26 | Seg 10/08/26 | 0207 | STEEL STRUCTURE |
| 427 | 1.7.7.2 | Análise Tecnored |  | 1d | 2026-08-11 | 2026-08-11 | 426 | 2026-08-11 | 2026-08-11 | 1d | 5d | 0d |  | TECNORED | 8h |  | Ter 11/08/26 | Ter 11/08/26 | 0207 | STEEL STRUCTURE |
| 428 | 1.7.7.3 | Atendimento de comentários |  | 1d | 2026-08-12 | 2026-08-12 | 427 | 2026-08-12 | 2026-08-12 | 1d | 5d | 0d |  | André | 8h |  | Qua 12/08/26 | Qua 12/08/26 | 0207 | STEEL STRUCTURE |
| 429 | 1.7.7.4 | Aprovação |  | 1d | 2026-08-13 | 2026-08-13 | 428 | 2026-08-13 | 2026-08-13 | 1d | 5d |  |  | TECNORED | 8h |  | Qui 13/08/26 | Qui 13/08/26 | 0207 | STEEL STRUCTURE |

| ID | WBS | Task | Type | Duration | Start | Finish | Predecessors | Baseline start | Baseline finish | Baseline duration | Total slack | Free slack | Constraint | Resources | Work | Baseline cost | Início_LB_R0 | Término_LB_R0 | COD_Projeto | Disciplina |
| --- | --- | --- | --- | --- | --- | --- | --- | --- | --- | --- | --- | --- | --- | --- | --- | --- | --- | --- | --- | --- |
| 430 | 1.7.8 | **LM-F0009-0207-GE-S-00001** | inactive | 5d | 2026-08-10 | 2026-08-14 |  |  |  |  | 4d |  |  | Everton, Ricardo | 80h | -0 | Seg 10/08/26 | Sex 14/08/26 | 0207 | STEEL STRUCTURE |
| 431 | 1.7.8.1 | Emissão Inicial | inactive | 2d | 2026-08-10 | 2026-08-11 | 476 |  |  |  | 4d | 0d |  | Rodrigo | 16h | -0 | Seg 10/08/26 | Ter 11/08/26 | 0207 | STEEL STRUCTURE |
| 432 | 1.7.8.2 | Análise Tecnored | inactive | 1d | 2026-08-12 | 2026-08-12 | 431 |  |  |  | 4d | 0d |  | TECNORED | 8h | -0 | Qua 12/08/26 | Qua 12/08/26 | 0207 | STEEL STRUCTURE |
| 433 | 1.7.8.3 | Atendimento de comentários | inactive | 1d | 2026-08-13 | 2026-08-13 | 432 |  |  |  | 4d | 0d |  | André | 8h | -0 | Qui 13/08/26 | Qui 13/08/26 | 0207 | STEEL STRUCTURE |
| 434 | 1.7.8.4 | Aprovação | inactive | 1d | 2026-08-14 | 2026-08-14 | 433 |  |  |  | 4d |  |  | TECNORED | 8h | -0 | Sex 14/08/26 | Sex 14/08/26 | 0207 | STEEL STRUCTURE |
| 435 | 1.7.9 | **MC-F0009-0207-GE-S-00001** |  | 5d | 2026-08-03 | 2026-08-07 |  | 2026-08-03 | 2026-08-07 | 5d | 6d |  |  | Paulo | 80h |  | Seg 03/08/26 | Sex 07/08/26 | 0207 | STEEL STRUCTURE |
| 436 | 1.7.9.1 | Emissão Inicial |  | 2d | 2026-08-03 | 2026-08-04 | 143, 193, 203, 213, 223, 233, 268, 273, 278, 283 | 2026-08-03 | 2026-08-04 | 2d | 6d | 0d | finish no earlier than 2026-07-30 | Rodrigo | 16h |  | Seg 03/08/26 | Ter 04/08/26 | 0207 | STEEL STRUCTURE |
| 437 | 1.7.9.2 | Análise Tecnored |  | 1d | 2026-08-05 | 2026-08-05 | 436 | 2026-08-05 | 2026-08-05 | 1d | 9d | 0d |  | TECNORED | 8h |  | Qua 05/08/26 | Qua 05/08/26 | 0207 | STEEL STRUCTURE |
| 438 | 1.7.9.3 | Atendimento de comentários |  | 1d | 2026-08-06 | 2026-08-06 | 437 | 2026-08-06 | 2026-08-06 | 1d | 9d | 0d |  | André | 8h |  | Qui 06/08/26 | Qui 06/08/26 | 0207 | STEEL STRUCTURE |
| 439 | 1.7.9.4 | Aprovação |  | 1d | 2026-08-07 | 2026-08-07 | 438 | 2026-08-07 | 2026-08-07 | 1d | 9d |  |  | TECNORED | 8h |  | Sex 07/08/26 | Sex 07/08/26 | 0207 | STEEL STRUCTURE |
| 440 | 1.7.10 | **AG-F0009-0207-GE-S-00001** |  | 5d | 2026-07-29 | 2026-08-04 |  | 2026-07-29 | 2026-08-04 | 5d | 8d |  |  | Ailton | 80h |  | Qua 29/07/26 | Ter 04/08/26 | 0207 | STEEL STRUCTURE |
| 441 | 1.7.10.1 | Emissão Inicial |  | 3d | 2026-07-29 | 2026-07-31 | 396, 401, 406 | 2026-07-29 | 2026-07-31 | 3d | 8d | 0d | finish no earlier than 2026-07-31 | Rodrigo | 24h |  | Qua 29/07/26 | Sex 31/07/26 | 0207 | STEEL STRUCTURE |
| 442 | 1.7.10.2 | Análise Tecnored |  | 1d | 2026-08-03 | 2026-08-03 | 441 | 2026-08-03 | 2026-08-03 | 1d | 12d | 0d |  | TECNORED | 8h |  | Seg 03/08/26 | Seg 03/08/26 | 0207 | STEEL STRUCTURE |
| 443 | 1.7.10.3 | Atendimento de comentários |  | 0.5d | 2026-08-04 | 2026-08-04 | 442 | 2026-08-04 | 2026-08-04 | 0.5d | 12d | 0d |  | André | 4h |  | Ter 04/08/26 | Ter 04/08/26 | 0207 | STEEL STRUCTURE |
| 444 | 1.7.10.4 | Aprovação |  | 0.5d | 2026-08-04 | 2026-08-04 | 443 | 2026-08-04 | 2026-08-04 | 0.5d | 12d |  |  | TECNORED | 4h |  | Ter 04/08/26 | Ter 04/08/26 | 0207 | STEEL STRUCTURE |
| 445 | 1.7.11 | **AG-F0009-0207-GE-S-00002** |  | 5d | 2026-07-29 | 2026-08-04 |  | 2026-07-29 | 2026-08-04 | 5d | 8d |  |  | Ailton | 80h |  | Qua 29/07/26 | Ter 04/08/26 | 0207 | STEEL STRUCTURE |
| 446 | 1.7.11.1 | Emissão Inicial |  | 3d | 2026-07-29 | 2026-07-31 | 396, 401, 406 | 2026-07-29 | 2026-07-31 | 3d | 8d | 0d | finish no earlier than 2026-07-31 | Rodrigo | 24h |  | Qua 29/07/26 | Sex 31/07/26 | 0207 | STEEL STRUCTURE |
| 447 | 1.7.11.2 | Análise Tecnored |  | 1d | 2026-08-03 | 2026-08-03 | 446 | 2026-08-03 | 2026-08-03 | 1d | 12d | 0d |  | TECNORED | 8h |  | Seg 03/08/26 | Seg 03/08/26 | 0207 | STEEL STRUCTURE |
| 448 | 1.7.11.3 | Atendimento de comentários |  | 0.5d | 2026-08-04 | 2026-08-04 | 447 | 2026-08-04 | 2026-08-04 | 0.5d | 12d | 0d |  | André | 4h |  | Ter 04/08/26 | Ter 04/08/26 | 0207 | STEEL STRUCTURE |
| 449 | 1.7.11.4 | Aprovação |  | 0.5d | 2026-08-04 | 2026-08-04 | 448 | 2026-08-04 | 2026-08-04 | 0.5d | 12d |  |  | TECNORED | 4h |  | Ter 04/08/26 | Ter 04/08/26 | 0207 | STEEL STRUCTURE |
| 450 | 1.7.12 | **AG-F0009-0207-GE-S-00003** |  | 5d | 2026-07-29 | 2026-08-04 |  | 2026-07-29 | 2026-08-04 | 5d | 8d |  |  | Ailton | 80h |  | Qua 29/07/26 | Ter 04/08/26 | 0207 | STEEL STRUCTURE |
| 451 | 1.7.12.1 | Emissão Inicial |  | 3d | 2026-07-29 | 2026-07-31 | 396, 401, 406 | 2026-07-29 | 2026-07-31 | 3d | 8d | 0d | finish no earlier than 2026-07-31 | Rodrigo | 24h |  | Qua 29/07/26 | Sex 31/07/26 | 0207 | STEEL STRUCTURE |
| 452 | 1.7.12.2 | Análise Tecnored |  | 1d | 2026-08-03 | 2026-08-03 | 451 | 2026-08-03 | 2026-08-03 | 1d | 12d | 0d |  | TECNORED | 8h |  | Seg 03/08/26 | Seg 03/08/26 | 0207 | STEEL STRUCTURE |
| 453 | 1.7.12.3 | Atendimento de comentários |  | 0.5d | 2026-08-04 | 2026-08-04 | 452 | 2026-08-04 | 2026-08-04 | 0.5d | 12d | 0d |  | André | 4h |  | Ter 04/08/26 | Ter 04/08/26 | 0207 | STEEL STRUCTURE |
| 454 | 1.7.12.4 | Aprovação |  | 0.5d | 2026-08-04 | 2026-08-04 | 453 | 2026-08-04 | 2026-08-04 | 0.5d | 12d |  |  | TECNORED | 4h |  | Ter 04/08/26 | Ter 04/08/26 | 0207 | STEEL STRUCTURE |

| ID | WBS | Task | Type | Duration | Start | Finish | Predecessors | Baseline start | Baseline finish | Baseline duration | Total slack | Free slack | Constraint | Resources | Work | Baseline cost | Início_LB_R0 | Término_LB_R0 | COD_Projeto | Disciplina |
| --- | --- | --- | --- | --- | --- | --- | --- | --- | --- | --- | --- | --- | --- | --- | --- | --- | --- | --- | --- | --- |
| 455 | 1.7.13 | **AG-F0009-0207-GE-S-00004** |  | 5d | 2026-08-05 | 2026-08-11 |  | 2026-08-05 | 2026-08-11 | 5d | 7d |  |  | Ailton | 80h |  | Qua 05/08/26 | Ter 11/08/26 | 0207 | STEEL STRUCTURE |
| 456 | 1.7.13.1 | Emissão Inicial |  | 3d | 2026-08-05 | 2026-08-07 | 451, 411, 416, 436, 441, 446 | 2026-08-05 | 2026-08-07 | 3d | 7d | 0d | finish no earlier than 2026-08-05 | Rodrigo | 24h |  | Qua 05/08/26 | Sex 07/08/26 | 0207 | STEEL STRUCTURE |
| 457 | 1.7.13.2 | Análise Tecnored |  | 1d | 2026-08-10 | 2026-08-10 | 456 | 2026-08-10 | 2026-08-10 | 1d | 7d | 0d |  | TECNORED | 8h |  | Seg 10/08/26 | Seg 10/08/26 | 0207 | STEEL STRUCTURE |
| 458 | 1.7.13.3 | Atendimento de comentários |  | 0.5d | 2026-08-11 | 2026-08-11 | 457 | 2026-08-11 | 2026-08-11 | 0.5d | 7d | 0d |  | André | 4h |  | Ter 11/08/26 | Ter 11/08/26 | 0207 | STEEL STRUCTURE |
| 459 | 1.7.13.4 | Aprovação |  | 0.5d | 2026-08-11 | 2026-08-11 | 458 | 2026-08-11 | 2026-08-11 | 0.5d | 7d |  |  | TECNORED | 4h |  | Ter 11/08/26 | Ter 11/08/26 | 0207 | STEEL STRUCTURE |
| 460 | 1.7.14 | **AG-F0009-0207-GE-S-00005** |  | 5d | 2026-08-05 | 2026-08-11 |  | 2026-08-05 | 2026-08-11 | 5d | 7d |  |  | Ailton | 80h |  | Qua 05/08/26 | Ter 11/08/26 | 0207 | STEEL STRUCTURE |
| 461 | 1.7.14.1 | Emissão Inicial |  | 3d | 2026-08-05 | 2026-08-07 | 411, 416, 436, 441, 446, 451 | 2026-08-05 | 2026-08-07 | 3d | 7d | 0d | finish no earlier than 2026-08-05 | Rodrigo | 24h |  | Qua 05/08/26 | Sex 07/08/26 | 0207 | STEEL STRUCTURE |
| 462 | 1.7.14.2 | Análise Tecnored |  | 1d | 2026-08-10 | 2026-08-10 | 461 | 2026-08-10 | 2026-08-10 | 1d | 7d | 0d |  | TECNORED | 8h |  | Seg 10/08/26 | Seg 10/08/26 | 0207 | STEEL STRUCTURE |
| 463 | 1.7.14.3 | Atendimento de comentários |  | 0.5d | 2026-08-11 | 2026-08-11 | 462 | 2026-08-11 | 2026-08-11 | 0.5d | 7d | 0d |  | André | 4h |  | Ter 11/08/26 | Ter 11/08/26 | 0207 | STEEL STRUCTURE |
| 464 | 1.7.14.4 | Aprovação |  | 0.5d | 2026-08-11 | 2026-08-11 | 463 | 2026-08-11 | 2026-08-11 | 0.5d | 7d |  |  | TECNORED | 4h |  | Ter 11/08/26 | Ter 11/08/26 | 0207 | STEEL STRUCTURE |
| 465 | 1.7.15 | **AG-F0009-0207-GE-S-00006** | inactive | 2.5d | 2026-08-10 | 2026-08-12 |  |  |  |  | 3.5d |  |  | Ailton | 40h | -0 | Seg 10/08/26 | Qua 12/08/26 | 0207 | STEEL STRUCTURE |
| 466 | 1.7.15.1 | Emissão Inicial | inactive | 0.5d | 2026-08-10 | 2026-08-10 | 461 |  |  |  | 3.5d | 0d |  | Rodrigo | 4h | -0 | Seg 10/08/26 | Seg 10/08/26 | 0207 | STEEL STRUCTURE |
| 467 | 1.7.15.2 | Análise Tecnored | inactive | 1d | 2026-08-10 | 2026-08-11 | 466 |  |  |  | 6.5d | 0d |  | TECNORED | 8h | -0 | Seg 10/08/26 | Ter 11/08/26 | 0207 | STEEL STRUCTURE |
| 468 | 1.7.15.3 | Atendimento de comentários | inactive | 0.5d | 2026-08-11 | 2026-08-11 | 467 |  |  |  | 6.5d | 0d |  | André | 4h | -0 | Ter 11/08/26 | Ter 11/08/26 | 0207 | STEEL STRUCTURE |
| 469 | 1.7.15.4 | Aprovação | inactive | 0.5d | 2026-08-12 | 2026-08-12 | 468 |  |  |  | 6.5d |  |  | TECNORED | 4h | -0 | Qua 12/08/26 | Qua 12/08/26 | 0207 | STEEL STRUCTURE |
| 470 | 1.7.16 | **PL-F0009-0207-GE-S-00001** | inactive | 5d | 2026-08-10 | 2026-08-17 |  |  |  |  | 3.5d |  |  | Felipe, André | 80h | -0 | Seg 10/08/26 | Seg 17/08/26 | 0207 | STEEL STRUCTURE |
| 471 | 1.7.16.1 | Emissão Inicial | inactive | 2d | 2026-08-10 | 2026-08-12 | 466 |  |  |  | 3.5d | 0d |  | Rodrigo | 16h | -0 | Seg 10/08/26 | Qua 12/08/26 | 0207 | STEEL STRUCTURE |
| 472 | 1.7.16.2 | Análise Tecnored | inactive | 1d | 2026-08-12 | 2026-08-13 | 471 |  |  |  | 3.5d | 0d |  | TECNORED | 8h | -0 | Qua 12/08/26 | Qui 13/08/26 | 0207 | STEEL STRUCTURE |
| 473 | 1.7.16.3 | Atendimento de comentários | inactive | 1d | 2026-08-13 | 2026-08-14 | 472 |  |  |  | 3.5d | 0d |  | André | 8h | -0 | Qui 13/08/26 | Sex 14/08/26 | 0207 | STEEL STRUCTURE |
| 474 | 1.7.16.4 | Aprovação | inactive | 1d | 2026-08-14 | 2026-08-17 | 473 |  |  |  | 3.5d |  |  | TECNORED | 8h | -0 | Sex 14/08/26 | Seg 17/08/26 | 0207 | STEEL STRUCTURE |
| 475 | 1.7.17 | **PL-F0009-0207-GE-S-00002** |  | 6d | 2026-08-05 | 2026-08-12 |  | 2026-08-05 | 2026-08-12 | 6d | 6d |  |  | Ailton | 96h |  | Qua 05/08/26 | Qua 12/08/26 | 0207 | STEEL STRUCTURE |
| 476 | 1.7.17.1 | Emissão Inicial |  | 3d | 2026-08-05 | 2026-08-07 | 411, 416, 436, 441, 446, 451 | 2026-08-05 | 2026-08-07 | 3d | 6d | 0d | finish no earlier than 2026-08-05 | Rodrigo | 24h |  | Qua 05/08/26 | Sex 07/08/26 | 0207 | STEEL STRUCTURE |
| 477 | 1.7.17.2 | Análise Tecnored |  | 1d | 2026-08-10 | 2026-08-10 | 476 | 2026-08-10 | 2026-08-10 | 1d | 6d | 0d |  | TECNORED | 8h |  | Seg 10/08/26 | Seg 10/08/26 | 0207 | STEEL STRUCTURE |
| 478 | 1.7.17.3 | Atendimento de comentários |  | 1d | 2026-08-11 | 2026-08-11 | 477 | 2026-08-11 | 2026-08-11 | 1d | 6d | 0d |  | André | 8h |  | Ter 11/08/26 | Ter 11/08/26 | 0207 | STEEL STRUCTURE |
| 479 | 1.7.17.4 | Aprovação |  | 1d | 2026-08-12 | 2026-08-12 | 478 | 2026-08-12 | 2026-08-12 | 1d | 6d |  |  | TECNORED | 8h |  | Qua 12/08/26 | Qua 12/08/26 | 0207 | STEEL STRUCTURE |

| ID | WBS | Task | Type | Duration | Start | Finish | Predecessors | Baseline start | Baseline finish | Baseline duration | Total slack | Free slack | Constraint | Resources | Work | Baseline cost | Início_LB_R0 | Término_LB_R0 | COD_Projeto | Disciplina |
| --- | --- | --- | --- | --- | --- | --- | --- | --- | --- | --- | --- | --- | --- | --- | --- | --- | --- | --- | --- | --- |
| 480 | 1.8 | **ELECTRICAL** |  | 14d | 2026-08-03 | 2026-08-20 |  | 2026-08-03 | 2026-08-20 | 14d | 0d |  |  |  | 904h |  | Seg 03/08/26 | Qui 20/08/26 |  |  |
| 481 | 1.8.1 | **ML-F0009-0207-MB-E-00001** | inactive | 5d | 2026-08-14 | 2026-08-20 |  |  |  |  | -4d | 0d |  | Paulo | 80h | -0 | Sex 14/08/26 | Qui 20/08/26 | 0207 | ELECTRICAL |
| 482 | 1.8.1.1 | Emissão Inicial | inactive | 2d | 2026-08-14 | 2026-08-17 | 183 |  |  |  | -4d | 0d |  | Rodrigo | 16h | -0 | Sex 14/08/26 | Seg 17/08/26 | 0207 | ELECTRICAL |
| 483 | 1.8.1.2 | Análise Tecnored | inactive | 1d | 2026-08-18 | 2026-08-18 | 482 |  |  |  | 0d |  |  | TECNORED | 8h | -0 | Ter 18/08/26 | Ter 18/08/26 | 0207 | ELECTRICAL |
| 484 | 1.8.1.3 | Atendimento de comentários | inactive | 1d | 2026-08-19 | 2026-08-19 | 483 |  |  |  | 0d |  |  | André | 8h | -0 | Qua 19/08/26 | Qua 19/08/26 | 0207 | ELECTRICAL |
| 485 | 1.8.1.4 | Aprovação | inactive | 1d | 2026-08-20 | 2026-08-20 | 484 |  |  |  | 0d |  |  | TECNORED | 8h | -0 | Qui 20/08/26 | Qui 20/08/26 | 0207 | ELECTRICAL |
| 486 | 1.8.2 | **RL-F0009-0207-GE-E-00001** |  | 5d | 2026-08-10 | 2026-08-14 |  | 2026-08-10 | 2026-08-14 | 5d | 4d |  |  | Everton, Ricardo | 80h |  | Seg 10/08/26 | Sex 14/08/26 | 0207 | ELECTRICAL |
| 487 | 1.8.2.1 | Emissão Inicial |  | 2d | 2026-08-10 | 2026-08-11 | 527, 532 | 2026-08-10 | 2026-08-11 | 2d | 4d | 0d |  | Rodrigo | 16h |  | Seg 10/08/26 | Ter 11/08/26 | 0207 | ELECTRICAL |
| 488 | 1.8.2.2 | Análise Tecnored |  | 1d | 2026-08-12 | 2026-08-12 | 487 | 2026-08-12 | 2026-08-12 | 1d | 4d | 0d |  | TECNORED | 8h |  | Qua 12/08/26 | Qua 12/08/26 | 0207 | ELECTRICAL |
| 489 | 1.8.2.3 | Atendimento de comentários |  | 1d | 2026-08-13 | 2026-08-13 | 488 | 2026-08-13 | 2026-08-13 | 1d | 4d | 0d |  | André | 8h |  | Qui 13/08/26 | Qui 13/08/26 | 0207 | ELECTRICAL |
| 490 | 1.8.2.4 | Aprovação |  | 1d | 2026-08-14 | 2026-08-14 | 489 | 2026-08-14 | 2026-08-14 | 1d | 4d |  |  | TECNORED | 8h |  | Sex 14/08/26 | Sex 14/08/26 | 0207 | ELECTRICAL |
| 491 | 1.8.3 | **LE-F0009-0000-GE-E-00001** | inactive | 5d | 2026-08-10 | 2026-08-14 |  |  |  |  | 4d |  |  | Rodrigo | 80h | -0 | Seg 10/08/26 | Sex 14/08/26 | 0207 | ELECTRICAL |
| 492 | 1.8.3.1 | Emissão Inicial | inactive | 2d | 2026-08-10 | 2026-08-11 | 527, 532 |  |  |  | 4d | 0d |  | Rodrigo | 16h | -0 | Seg 10/08/26 | Ter 11/08/26 | 0207 | ELECTRICAL |
| 493 | 1.8.3.2 | Análise Tecnored | inactive | 1d | 2026-08-12 | 2026-08-12 | 492 |  |  |  | 4d | 0d |  | TECNORED | 8h | -0 | Qua 12/08/26 | Qua 12/08/26 | 0207 | ELECTRICAL |
| 494 | 1.8.3.3 | Atendimento de comentários | inactive | 1d | 2026-08-13 | 2026-08-13 | 493 |  |  |  | 4d | 0d |  | André | 8h | -0 | Qui 13/08/26 | Qui 13/08/26 | 0207 | ELECTRICAL |
| 495 | 1.8.3.4 | Aprovação | inactive | 1d | 2026-08-14 | 2026-08-14 | 494 |  |  |  | 4d |  |  | TECNORED | 8h | -0 | Sex 14/08/26 | Sex 14/08/26 | 0207 | ELECTRICAL |
| 496 | 1.8.4 | **LR-F0009-0207-MB-E-00001** |  | 5d | 2026-08-03 | 2026-08-07 |  | 2026-08-03 | 2026-08-07 | 5d | 9d |  |  | Lazaro | 80h |  | Seg 03/08/26 | Sex 07/08/26 | 0207 | ELECTRICAL |
| 497 | 1.8.4.1 | Emissão Inicial |  | 2d | 2026-08-03 | 2026-08-04 | 98, 108 | 2026-08-03 | 2026-08-04 | 2d | 9d | 0d | finish no earlier than 2026-08-04 | Rodrigo | 16h |  | Seg 03/08/26 | Ter 04/08/26 | 0207 | ELECTRICAL |
| 498 | 1.8.4.2 | Análise Tecnored |  | 1d | 2026-08-05 | 2026-08-05 | 497 | 2026-08-05 | 2026-08-05 | 1d | 9d | 0d |  | TECNORED | 8h |  | Qua 05/08/26 | Qua 05/08/26 | 0207 | ELECTRICAL |
| 499 | 1.8.4.3 | Atendimento de comentários |  | 1d | 2026-08-06 | 2026-08-06 | 498 | 2026-08-06 | 2026-08-06 | 1d | 9d | 0d |  | André | 8h |  | Qui 06/08/26 | Qui 06/08/26 | 0207 | ELECTRICAL |
| 500 | 1.8.4.4 | Aprovação |  | 1d | 2026-08-07 | 2026-08-07 | 499 | 2026-08-07 | 2026-08-07 | 1d | 9d |  |  | TECNORED | 8h |  | Sex 07/08/26 | Sex 07/08/26 | 0207 | ELECTRICAL |
| 501 | 1.8.5 | **DU-F0009-0207-MB-E-00001** |  | 6d | 2026-08-10 | 2026-08-17 |  | 2026-08-10 | 2026-08-17 | 6d | 0d |  |  | Rodrigo | 96h |  | Seg 10/08/26 | Seg 17/08/26 | 0207 | ELECTRICAL |
| 502 | 1.8.5.1 | Emissão Inicial |  | 3d | 2026-08-10 | 2026-08-12 | 527, 537, 532 | 2026-08-10 | 2026-08-12 | 3d | 0d |  | finish no earlier than 2026-08-12 | Rodrigo | 24h |  | Seg 10/08/26 | Qua 12/08/26 | 0207 | ELECTRICAL |
| 503 | 1.8.5.2 | Análise Tecnored |  | 1d | 2026-08-13 | 2026-08-13 | 502 | 2026-08-13 | 2026-08-13 | 1d | 3d | 0d |  | TECNORED | 8h |  | Qui 13/08/26 | Qui 13/08/26 | 0207 | ELECTRICAL |
| 504 | 1.8.5.3 | Atendimento de comentários |  | 1d | 2026-08-14 | 2026-08-14 | 503 | 2026-08-14 | 2026-08-14 | 1d | 3d | 0d |  | André | 8h |  | Sex 14/08/26 | Sex 14/08/26 | 0207 | ELECTRICAL |
| 505 | 1.8.5.4 | Aprovação |  | 1d | 2026-08-17 | 2026-08-17 | 504 | 2026-08-17 | 2026-08-17 | 1d | 3d |  |  | TECNORED | 8h |  | Seg 17/08/26 | Seg 17/08/26 | 0207 | ELECTRICAL |

| ID | WBS | Task | Duration | Start | Finish | Predecessors | Baseline start | Baseline finish | Baseline duration | Total slack | Free slack | Constraint | Resources | Work | Início_LB_R0 | Término_LB_R0 | COD_Projeto | Disciplina |
| --- | --- | --- | --- | --- | --- | --- | --- | --- | --- | --- | --- | --- | --- | --- | --- | --- | --- | --- |
| 506 | 1.8.6 | **FD-F0009-0207-MB-E-00004** | 6d | 2026-08-10 | 2026-08-17 |  | 2026-08-10 | 2026-08-17 | 6d | 0d |  |  | Rodrigo | 96h | Seg 10/08/26 | Seg 17/08/26 | 0207 | ELECTRICAL |
| 507 | 1.8.6.1 | Emissão Inicial | 3d | 2026-08-10 | 2026-08-12 | 527, 537, 532 | 2026-08-10 | 2026-08-12 | 3d | 0d |  | finish no earlier than 2026-08-12 | Rodrigo | 24h | Seg 10/08/26 | Qua 12/08/26 | 0207 | ELECTRICAL |
| 508 | 1.8.6.2 | Análise Tecnored | 1d | 2026-08-13 | 2026-08-13 | 507 | 2026-08-13 | 2026-08-13 | 1d | 3d | 0d |  | TECNORED | 8h | Qui 13/08/26 | Qui 13/08/26 | 0207 | ELECTRICAL |
| 509 | 1.8.6.3 | Atendimento de comentários | 1d | 2026-08-14 | 2026-08-14 | 508 | 2026-08-14 | 2026-08-14 | 1d | 3d | 0d |  | André | 8h | Sex 14/08/26 | Sex 14/08/26 | 0207 | ELECTRICAL |
| 510 | 1.8.6.4 | Aprovação | 1d | 2026-08-17 | 2026-08-17 | 509 | 2026-08-17 | 2026-08-17 | 1d | 3d |  |  | TECNORED | 8h | Seg 17/08/26 | Seg 17/08/26 | 0207 | ELECTRICAL |
| 511 | 1.8.7 | **LM-F0009-0207-MB-E-00001** | 6d | 2026-08-13 | 2026-08-20 |  | 2026-08-13 | 2026-08-20 | 6d | 0d |  |  | Lazaro | 96h | Qui 13/08/26 | Qui 20/08/26 | 0207 | ELECTRICAL |
| 512 | 1.8.7.1 | Emissão Inicial | 3d | 2026-08-13 | 2026-08-17 | 502, 507, 522 | 2026-08-13 | 2026-08-17 | 3d | 0d |  | finish no earlier than 2026-08-17 | Rodrigo | 24h | Qui 13/08/26 | Seg 17/08/26 | 0207 | ELECTRICAL |
| 513 | 1.8.7.2 | Análise Tecnored | 1d | 2026-08-18 | 2026-08-18 | 512 | 2026-08-18 | 2026-08-18 | 1d | 0d |  |  | TECNORED | 8h | Ter 18/08/26 | Ter 18/08/26 | 0207 | ELECTRICAL |
| 514 | 1.8.7.3 | Atendimento de comentários | 1d | 2026-08-19 | 2026-08-19 | 513 | 2026-08-19 | 2026-08-19 | 1d | 0d |  |  | André | 8h | Qua 19/08/26 | Qua 19/08/26 | 0207 | ELECTRICAL |
| 515 | 1.8.7.4 | Aprovação | 1d | 2026-08-20 | 2026-08-20 | 514 | 2026-08-20 | 2026-08-20 | 1d | 0d |  |  | TECNORED | 8h | Qui 20/08/26 | Qui 20/08/26 | 0207 | ELECTRICAL |
| 516 | 1.8.8 | **PQ-F0009-0207-MB-E-00001** | 6d | 2026-08-13 | 2026-08-20 |  | 2026-08-13 | 2026-08-20 | 6d | 0d |  |  | Lazaro | 96h | Qui 13/08/26 | Qui 20/08/26 | 0207 | ELECTRICAL |
| 517 | 1.8.8.1 | Emissão Inicial | 3d | 2026-08-13 | 2026-08-17 | 502, 507, 522 | 2026-08-13 | 2026-08-17 | 3d | 0d |  | finish no earlier than 2026-08-17 | Rodrigo | 24h | Qui 13/08/26 | Seg 17/08/26 | 0207 | ELECTRICAL |
| 518 | 1.8.8.2 | Análise Tecnored | 1d | 2026-08-18 | 2026-08-18 | 517 | 2026-08-18 | 2026-08-18 | 1d | 0d |  |  | TECNORED | 8h | Ter 18/08/26 | Ter 18/08/26 | 0207 | ELECTRICAL |
| 519 | 1.8.8.3 | Atendimento de comentários | 1d | 2026-08-19 | 2026-08-19 | 518 | 2026-08-19 | 2026-08-19 | 1d | 0d |  |  | André | 8h | Qua 19/08/26 | Qua 19/08/26 | 0207 | ELECTRICAL |
| 520 | 1.8.8.4 | Aprovação | 1d | 2026-08-20 | 2026-08-20 | 519 | 2026-08-20 | 2026-08-20 | 1d | 0d |  |  | TECNORED | 8h | Qui 20/08/26 | Qui 20/08/26 | 0207 | ELECTRICAL |
| 521 | 1.8.9 | **MC-F0009-0207-MB-E-00001** | 3d | 2026-08-10 | 2026-08-12 |  | 2026-08-10 | 2026-08-12 | 3d | 0d |  |  | Rodrigo | 72h | Seg 10/08/26 | Qua 12/08/26 | 0207 | ELECTRICAL |
| 522 | 1.8.9.1 | Emissão Inicial | 3d | 2026-08-10 | 2026-08-12 | 527, 537, 532 | 2026-08-10 | 2026-08-12 | 3d | 0d |  | finish no earlier than 2026-08-12 | Rodrigo | 24h | Seg 10/08/26 | Qua 12/08/26 | 0207 | ELECTRICAL |
| 523 | 1.8.9.2 | Análise Tecnored | 1d | 2026-08-10 | 2026-08-10 | 492 | 2026-08-10 | 2026-08-10 | 1d | 6d | 0d |  | TECNORED | 8h | Seg 10/08/26 | Seg 10/08/26 | 0207 | ELECTRICAL |
| 524 | 1.8.9.3 | Atendimento de comentários | 1d | 2026-08-11 | 2026-08-11 | 523 | 2026-08-11 | 2026-08-11 | 1d | 6d | 0d |  | André | 8h | Ter 11/08/26 | Ter 11/08/26 | 0207 | ELECTRICAL |
| 525 | 1.8.9.4 | Aprovação | 1d | 2026-08-12 | 2026-08-12 | 524 | 2026-08-12 | 2026-08-12 | 1d | 6d |  |  | TECNORED | 8h | Qua 12/08/26 | Qua 12/08/26 | 0207 | ELECTRICAL |
| 526 | 1.8.10 | **AG-F0009-0207-BM-E-00001** | 6d | 2026-08-05 | 2026-08-12 |  | 2026-08-05 | 2026-08-12 | 6d | 0d |  |  | Rodrigo | 96h | Qua 05/08/26 | Qua 12/08/26 | 0207 | ELECTRICAL |
| 527 | 1.8.10.1 | Emissão Inicial | 3d | 2026-08-05 | 2026-08-07 | 123, 128 | 2026-08-05 | 2026-08-07 | 3d | 0d |  | finish no earlier than 2026-08-07 | Rodrigo | 24h | Qua 05/08/26 | Sex 07/08/26 | 0207 | ELECTRICAL |
| 528 | 1.8.10.2 | Análise Tecnored | 1d | 2026-08-10 | 2026-08-10 | 527 | 2026-08-10 | 2026-08-10 | 1d | 6d | 0d |  | TECNORED | 8h | Seg 10/08/26 | Seg 10/08/26 | 0207 | ELECTRICAL |
| 529 | 1.8.10.3 | Atendimento de comentários | 1d | 2026-08-11 | 2026-08-11 | 528 | 2026-08-11 | 2026-08-11 | 1d | 6d | 0d |  | André | 8h | Ter 11/08/26 | Ter 11/08/26 | 0207 | ELECTRICAL |
| 530 | 1.8.10.4 | Aprovação | 1d | 2026-08-12 | 2026-08-12 | 529 | 2026-08-12 | 2026-08-12 | 1d | 6d |  |  | TECNORED | 8h | Qua 12/08/26 | Qua 12/08/26 | 0207 | ELECTRICAL |

| ID | WBS | Task | Type | Duration | Start | Finish | Predecessors | Baseline start | Baseline finish | Baseline duration | Total slack | Free slack | Constraint | Resources | Work | Baseline cost | Início_LB_R0 | Término_LB_R0 | COD_Projeto | Disciplina |
| --- | --- | --- | --- | --- | --- | --- | --- | --- | --- | --- | --- | --- | --- | --- | --- | --- | --- | --- | --- | --- |
| 531 | 1.8.11 | **AG-F0009-0207-BM-E-00002** |  | 6d | 2026-08-05 | 2026-08-12 |  | 2026-08-05 | 2026-08-12 | 6d | 0d |  |  | Rodrigo | 96h |  | Qua 05/08/26 | Qua 12/08/26 | 0207 | ELECTRICAL |
| 532 | 1.8.11.1 | Emissão Inicial |  | 3d | 2026-08-05 | 2026-08-07 | 527SS | 2026-08-05 | 2026-08-07 | 3d | 0d |  | finish no earlier than 2026-08-07 | Rodrigo | 24h |  | Qua 05/08/26 | Sex 07/08/26 | 0207 | ELECTRICAL |
| 533 | 1.8.11.2 | Análise Tecnored |  | 1d | 2026-08-10 | 2026-08-10 | 532 | 2026-08-10 | 2026-08-10 | 1d | 6d | 0d |  | TECNORED | 8h |  | Seg 10/08/26 | Seg 10/08/26 | 0207 | ELECTRICAL |
| 534 | 1.8.11.3 | Atendimento de comentários |  | 1d | 2026-08-11 | 2026-08-11 | 533 | 2026-08-11 | 2026-08-11 | 1d | 6d | 0d |  | André | 8h |  | Ter 11/08/26 | Ter 11/08/26 | 0207 | ELECTRICAL |
| 535 | 1.8.11.4 | Aprovação |  | 1d | 2026-08-12 | 2026-08-12 | 534 | 2026-08-12 | 2026-08-12 | 1d | 6d |  |  | TECNORED | 8h |  | Qua 12/08/26 | Qua 12/08/26 | 0207 | ELECTRICAL |
| 536 | 1.8.12 | **LC-F0009-0207-BM-E-00001** |  | 6d | 2026-08-05 | 2026-08-12 |  | 2026-08-05 | 2026-08-12 | 6d | 0d |  |  | Rodrigo | 96h |  | Qua 05/08/26 | Qua 12/08/26 | 0207 | ELECTRICAL |
| 537 | 1.8.12.1 | Emissão Inicial |  | 3d | 2026-08-05 | 2026-08-07 | 123, 128 | 2026-08-05 | 2026-08-07 | 3d | 0d |  | finish no earlier than 2026-08-07 | Rodrigo | 24h |  | Qua 05/08/26 | Sex 07/08/26 | 0207 | ELECTRICAL |
| 538 | 1.8.12.2 | Análise Tecnored |  | 1d | 2026-08-10 | 2026-08-10 | 537 | 2026-08-10 | 2026-08-10 | 1d | 6d | 0d |  | TECNORED | 8h |  | Seg 10/08/26 | Seg 10/08/26 | 0207 | ELECTRICAL |
| 539 | 1.8.12.3 | Atendimento de comentários |  | 1d | 2026-08-11 | 2026-08-11 | 538 | 2026-08-11 | 2026-08-11 | 1d | 6d | 0d |  | André | 8h |  | Ter 11/08/26 | Ter 11/08/26 | 0207 | ELECTRICAL |
| 540 | 1.8.12.4 | Aprovação |  | 1d | 2026-08-12 | 2026-08-12 | 539 | 2026-08-12 | 2026-08-12 | 1d | 6d |  |  | TECNORED | 8h |  | Qua 12/08/26 | Qua 12/08/26 | 0207 | ELECTRICAL |
| 541 | 1.9 | **INSTRUMENTATION / AUTOMATION** |  | 18d | 2026-07-21 | 2026-08-13 |  | 2026-07-21 | 2026-08-13 | 18d | 5d |  |  |  | 3432h |  | Ter 21/07/26 | Qui 13/08/26 |  |  |
| 542 | 1.9.1 | **LI-F0009-0000-GE-J-00001** |  | 9d | 2026-07-24 | 2026-08-05 |  | 2026-07-24 | 2026-08-05 | 9d | 5d |  |  | Everton, Ricardo | 144h |  | Sex 24/07/26 | Qua 05/08/26 | 0207 | INSTRUMENTATION / AUTOMATION |
| 543 | 1.9.1.1 | Emissão Inicial |  | 6d | 2026-07-24 | 2026-07-31 | 563 | 2026-07-24 | 2026-07-31 | 6d | 5d | 0d | finish no earlier than 2026-07-31 | Rodrigo | 48h |  | Sex 24/07/26 | Sex 31/07/26 | 0207 | INSTRUMENTATION / AUTOMATION |
| 544 | 1.9.1.2 | Análise Tecnored |  | 1d | 2026-08-03 | 2026-08-03 | 543 | 2026-08-03 | 2026-08-03 | 1d | 11d | 0d |  | TECNORED | 8h |  | Seg 03/08/26 | Seg 03/08/26 | 0207 | INSTRUMENTATION / AUTOMATION |
| 545 | 1.9.1.3 | Atendimento de comentários |  | 1d | 2026-08-04 | 2026-08-04 | 544 | 2026-08-04 | 2026-08-04 | 1d | 11d | 0d |  | André | 8h |  | Ter 04/08/26 | Ter 04/08/26 | 0207 | INSTRUMENTATION / AUTOMATION |
| 546 | 1.9.1.4 | Aprovação |  | 1d | 2026-08-05 | 2026-08-05 | 545 | 2026-08-05 | 2026-08-05 | 1d | 11d |  |  | TECNORED | 8h |  | Qua 05/08/26 | Qua 05/08/26 | 0207 | INSTRUMENTATION / AUTOMATION |
| 547 | 1.9.2 | **LE-F0009-0207-GE-J-00001** |  | 9d | 2026-07-24 | 2026-08-05 |  | 2026-07-24 | 2026-08-05 | 9d | 5d |  |  | Everton, Ricardo | 144h |  | Sex 24/07/26 | Qua 05/08/26 | 0207 | INSTRUMENTATION / AUTOMATION |
| 548 | 1.9.2.1 | Emissão Inicial |  | 6d | 2026-07-24 | 2026-07-31 | 563 | 2026-07-24 | 2026-07-31 | 6d | 5d | 0d | finish no earlier than 2026-07-31 | Rodrigo | 48h |  | Sex 24/07/26 | Sex 31/07/26 | 0207 | INSTRUMENTATION / AUTOMATION |
| 549 | 1.9.2.2 | Análise Tecnored |  | 1d | 2026-08-03 | 2026-08-03 | 548 | 2026-08-03 | 2026-08-03 | 1d | 11d | 0d |  | TECNORED | 8h |  | Seg 03/08/26 | Seg 03/08/26 | 0207 | INSTRUMENTATION / AUTOMATION |
| 550 | 1.9.2.3 | Atendimento de comentários |  | 1d | 2026-08-04 | 2026-08-04 | 549 | 2026-08-04 | 2026-08-04 | 1d | 11d | 0d |  | André | 8h |  | Ter 04/08/26 | Ter 04/08/26 | 0207 | INSTRUMENTATION / AUTOMATION |
| 551 | 1.9.2.4 | Aprovação |  | 1d | 2026-08-05 | 2026-08-05 | 550 | 2026-08-05 | 2026-08-05 | 1d | 11d |  |  | TECNORED | 8h |  | Qua 05/08/26 | Qua 05/08/26 | 0207 | INSTRUMENTATION / AUTOMATION |
| 552 | 1.9.3 | **MD-F0009-0207-GE-J-00001** | inactive | 5d | 2026-07-31 | 2026-08-06 |  |  |  |  | 10d |  |  | Carlos | 80h | -0 | Sex 31/07/26 | Qui 06/08/26 | 0207 | INSTRUMENTATION / AUTOMATION |
| 553 | 1.9.3.1 | Emissão Inicial | inactive | 2d | 2026-07-31 | 2026-08-03 | 683 |  |  |  | 10d | 0d |  | Rodrigo | 16h | -0 | Sex 31/07/26 | Seg 03/08/26 | 0207 | INSTRUMENTATION / AUTOMATION |
| 554 | 1.9.3.2 | Análise Tecnored | inactive | 1d | 2026-08-04 | 2026-08-04 | 553 |  |  |  | 10d | 0d |  | TECNORED | 8h | -0 | Ter 04/08/26 | Ter 04/08/26 | 0207 | INSTRUMENTATION / AUTOMATION |
| 555 | 1.9.3.3 | Atendimento de comentários | inactive | 1d | 2026-08-05 | 2026-08-05 | 554 |  |  |  | 10d | 0d |  | André | 8h | -0 | Qua 05/08/26 | Qua 05/08/26 | 0207 | INSTRUMENTATION / AUTOMATION |
| 556 | 1.9.3.4 | Aprovação | inactive | 1d | 2026-08-06 | 2026-08-06 | 555 |  |  |  | 10d |  |  | TECNORED | 8h | -0 | Qui 06/08/26 | Qui 06/08/26 | 0207 | INSTRUMENTATION / AUTOMATION |

| ID | WBS | Task | Duration | Start | Finish | Predecessors | Baseline start | Baseline finish | Baseline duration | Total slack | Free slack | Constraint | Resources | Work | Início_LB_R0 | Término_LB_R0 | COD_Projeto | Disciplina |
| --- | --- | --- | --- | --- | --- | --- | --- | --- | --- | --- | --- | --- | --- | --- | --- | --- | --- | --- |
| 557 | 1.9.4 | **PQ-F0009-0207-GE-J-00001** | 6d | 2026-08-06 | 2026-08-13 |  | 2026-08-06 | 2026-08-13 | 6d | 5d |  |  | Marcio | 96h | Qui 06/08/26 | Qui 13/08/26 | 0207 | INSTRUMENTATION / AUTOMATION |
| 558 | 1.9.4.1 | Emissão Inicial | 3d | 2026-08-06 | 2026-08-10 | 543, 548, 693, 703, 713 | 2026-08-06 | 2026-08-10 | 3d | 5d | 0d | finish no earlier than 2026-08-10 | Rodrigo | 24h | Qui 06/08/26 | Seg 10/08/26 | 0207 | INSTRUMENTATION / AUTOMATION |
| 559 | 1.9.4.2 | Análise Tecnored | 1d | 2026-08-11 | 2026-08-11 | 558 | 2026-08-11 | 2026-08-11 | 1d | 5d | 0d |  | TECNORED | 8h | Ter 11/08/26 | Ter 11/08/26 | 0207 | INSTRUMENTATION / AUTOMATION |
| 560 | 1.9.4.3 | Atendimento de comentários | 1d | 2026-08-12 | 2026-08-12 | 559 | 2026-08-12 | 2026-08-12 | 1d | 5d | 0d |  | André | 8h | Qua 12/08/26 | Qua 12/08/26 | 0207 | INSTRUMENTATION / AUTOMATION |
| 561 | 1.9.4.4 | Aprovação | 1d | 2026-08-13 | 2026-08-13 | 560 | 2026-08-13 | 2026-08-13 | 1d | 5d |  |  | TECNORED | 8h | Qui 13/08/26 | Qui 13/08/26 | 0207 | INSTRUMENTATION / AUTOMATION |
| 562 | 1.9.5 | **FG-F0009-0207-GE-J-00001** | 6d | 2026-07-21 | 2026-07-28 |  | 2026-07-21 | 2026-07-28 | 6d | 5d |  |  | Paulo | 96h | Ter 21/07/26 | Ter 28/07/26 | 0207 | INSTRUMENTATION / AUTOMATION |
| 563 | 1.9.5.1 | Emissão Inicial | 3d | 2026-07-21 | 2026-07-23 | 77 | 2026-07-21 | 2026-07-23 | 3d | 5d | 0d | finish no earlier than 2026-07-23 | Rodrigo | 24h | Ter 21/07/26 | Qui 23/07/26 | 0207 | INSTRUMENTATION / AUTOMATION |
| 564 | 1.9.5.2 | Análise Tecnored | 1d | 2026-07-24 | 2026-07-24 | 563 | 2026-07-24 | 2026-07-24 | 1d | 17d | 0d |  | TECNORED | 8h | Sex 24/07/26 | Sex 24/07/26 | 0207 | INSTRUMENTATION / AUTOMATION |
| 565 | 1.9.5.3 | Atendimento de comentários | 1d | 2026-07-27 | 2026-07-27 | 564 | 2026-07-27 | 2026-07-27 | 1d | 17d | 0d |  | André | 8h | Seg 27/07/26 | Seg 27/07/26 | 0207 | INSTRUMENTATION / AUTOMATION |
| 566 | 1.9.5.4 | Aprovação | 1d | 2026-07-28 | 2026-07-28 | 565 | 2026-07-28 | 2026-07-28 | 1d | 17d |  |  | TECNORED | 8h | Ter 28/07/26 | Ter 28/07/26 | 0207 | INSTRUMENTATION / AUTOMATION |
| 567 | 1.9.6 | **DT-F0009-0207-GE-J-00001** | 5d | 2026-07-24 | 2026-07-30 |  | 2026-07-24 | 2026-07-30 | 5d | 15d |  |  | Everton, Ricardo | 80h | Sex 24/07/26 | Qui 30/07/26 | 0207 | INSTRUMENTATION / AUTOMATION |
| 568 | 1.9.6.1 | Emissão Inicial | 2d | 2026-07-24 | 2026-07-27 | 563 | 2026-07-24 | 2026-07-27 | 2d | 15d | 0d |  | Rodrigo | 16h | Sex 24/07/26 | Seg 27/07/26 | 0207 | INSTRUMENTATION / AUTOMATION |
| 569 | 1.9.6.2 | Análise Tecnored | 1d | 2026-07-28 | 2026-07-28 | 568 | 2026-07-28 | 2026-07-28 | 1d | 15d | 0d |  | TECNORED | 8h | Ter 28/07/26 | Ter 28/07/26 | 0207 | INSTRUMENTATION / AUTOMATION |
| 570 | 1.9.6.3 | Atendimento de comentários | 1d | 2026-07-29 | 2026-07-29 | 569 | 2026-07-29 | 2026-07-29 | 1d | 15d | 0d |  | André | 8h | Qua 29/07/26 | Qua 29/07/26 | 0207 | INSTRUMENTATION / AUTOMATION |
| 571 | 1.9.6.4 | Aprovação | 1d | 2026-07-30 | 2026-07-30 | 570 | 2026-07-30 | 2026-07-30 | 1d | 15d |  |  | TECNORED | 8h | Qui 30/07/26 | Qui 30/07/26 | 0207 | INSTRUMENTATION / AUTOMATION |
| 572 | 1.9.7 | **FD-F0009-0207-GE-J-00001** | 6.5d | 2026-07-24 | 2026-08-03 |  | 2026-07-24 | 2026-08-03 | 6.5d | 13.5d |  |  | Marcio | 104h | Sex 24/07/26 | Seg 03/08/26 | 0207 | INSTRUMENTATION / AUTOMATION |
| 573 | 1.9.7.1 | Emissão Inicial | 5d | 2026-07-24 | 2026-07-30 | 563 | 2026-07-24 | 2026-07-30 | 5d | 13.5d | 0d | finish no earlier than 2026-07-30 | Rodrigo | 40h | Sex 24/07/26 | Qui 30/07/26 | 0207 | INSTRUMENTATION / AUTOMATION |
| 574 | 1.9.7.2 | Análise Tecnored | 0.5d | 2026-07-31 | 2026-07-31 | 573 | 2026-07-31 | 2026-07-31 | 0.5d | 13.5d | 0d |  | TECNORED | 4h | Sex 31/07/26 | Sex 31/07/26 | 0207 | INSTRUMENTATION / AUTOMATION |
| 575 | 1.9.7.3 | Atendimento de comentários | 0.5d | 2026-07-31 | 2026-07-31 | 574 | 2026-07-31 | 2026-07-31 | 0.5d | 13.5d | 0d |  | André | 4h | Sex 31/07/26 | Sex 31/07/26 | 0207 | INSTRUMENTATION / AUTOMATION |
| 576 | 1.9.7.4 | Aprovação | 0.5d | 2026-08-03 | 2026-08-03 | 575 | 2026-08-03 | 2026-08-03 | 0.5d | 13.5d |  |  | TECNORED | 4h | Seg 03/08/26 | Seg 03/08/26 | 0207 | INSTRUMENTATION / AUTOMATION |
| 577 | 1.9.8 | **FD-F0009-0207-GE-J-00002** | 6.5d | 2026-07-24 | 2026-08-03 |  | 2026-07-24 | 2026-08-03 | 6.5d | 13.5d |  |  | Marcio | 104h | Sex 24/07/26 | Seg 03/08/26 | 0207 | INSTRUMENTATION / AUTOMATION |
| 578 | 1.9.8.1 | Emissão Inicial | 5d | 2026-07-24 | 2026-07-30 | 563 | 2026-07-24 | 2026-07-30 | 5d | 13.5d | 0d | finish no earlier than 2026-07-30 | Rodrigo | 40h | Sex 24/07/26 | Qui 30/07/26 | 0207 | INSTRUMENTATION / AUTOMATION |
| 579 | 1.9.8.2 | Análise Tecnored | 0.5d | 2026-07-31 | 2026-07-31 | 578 | 2026-07-31 | 2026-07-31 | 0.5d | 13.5d | 0d |  | TECNORED | 4h | Sex 31/07/26 | Sex 31/07/26 | 0207 | INSTRUMENTATION / AUTOMATION |
| 580 | 1.9.8.3 | Atendimento de comentários | 0.5d | 2026-07-31 | 2026-07-31 | 579 | 2026-07-31 | 2026-07-31 | 0.5d | 13.5d | 0d |  | André | 4h | Sex 31/07/26 | Sex 31/07/26 | 0207 | INSTRUMENTATION / AUTOMATION |
| 581 | 1.9.8.4 | Aprovação | 0.5d | 2026-08-03 | 2026-08-03 | 580 | 2026-08-03 | 2026-08-03 | 0.5d | 13.5d |  |  | TECNORED | 4h | Seg 03/08/26 | Seg 03/08/26 | 0207 | INSTRUMENTATION / AUTOMATION |

| ID | WBS | Task | Duration | Start | Finish | Predecessors | Baseline start | Baseline finish | Baseline duration | Total slack | Free slack | Constraint | Resources | Work | Início_LB_R0 | Término_LB_R0 | COD_Projeto | Disciplina |
| --- | --- | --- | --- | --- | --- | --- | --- | --- | --- | --- | --- | --- | --- | --- | --- | --- | --- | --- |
| 582 | 1.9.9 | **FD-F0009-0207-GE-J-00003** | 6.5d | 2026-07-24 | 2026-08-03 |  | 2026-07-24 | 2026-08-03 | 6.5d | 13.5d |  |  | Marcio | 104h | Sex 24/07/26 | Seg 03/08/26 | 0207 | INSTRUMENTATION / AUTOMATION |
| 583 | 1.9.9.1 | Emissão Inicial | 5d | 2026-07-24 | 2026-07-30 | 563 | 2026-07-24 | 2026-07-30 | 5d | 13.5d | 0d | finish no earlier than 2026-07-30 | Rodrigo | 40h | Sex 24/07/26 | Qui 30/07/26 | 0207 | INSTRUMENTATION / AUTOMATION |
| 584 | 1.9.9.2 | Análise Tecnored | 0.5d | 2026-07-31 | 2026-07-31 | 583 | 2026-07-31 | 2026-07-31 | 0.5d | 13.5d | 0d |  | TECNORED | 4h | Sex 31/07/26 | Sex 31/07/26 | 0207 | INSTRUMENTATION / AUTOMATION |
| 585 | 1.9.9.3 | Atendimento de comentários | 0.5d | 2026-07-31 | 2026-07-31 | 584 | 2026-07-31 | 2026-07-31 | 0.5d | 13.5d | 0d |  | André | 4h | Sex 31/07/26 | Sex 31/07/26 | 0207 | INSTRUMENTATION / AUTOMATION |
| 586 | 1.9.9.4 | Aprovação | 0.5d | 2026-08-03 | 2026-08-03 | 585 | 2026-08-03 | 2026-08-03 | 0.5d | 13.5d |  |  | TECNORED | 4h | Seg 03/08/26 | Seg 03/08/26 | 0207 | INSTRUMENTATION / AUTOMATION |
| 587 | 1.9.10 | **FD-F0009-0207-GE-J-00004** | 6.5d | 2026-07-24 | 2026-08-03 |  | 2026-07-24 | 2026-08-03 | 6.5d | 13.5d |  |  | Marcio | 104h | Sex 24/07/26 | Seg 03/08/26 | 0207 | INSTRUMENTATION / AUTOMATION |
| 588 | 1.9.10.1 | Emissão Inicial | 5d | 2026-07-24 | 2026-07-30 | 563 | 2026-07-24 | 2026-07-30 | 5d | 13.5d | 0d | finish no earlier than 2026-07-30 | Rodrigo | 40h | Sex 24/07/26 | Qui 30/07/26 | 0207 | INSTRUMENTATION / AUTOMATION |
| 589 | 1.9.10.2 | Análise Tecnored | 0.5d | 2026-07-31 | 2026-07-31 | 588 | 2026-07-31 | 2026-07-31 | 0.5d | 13.5d | 0d |  | TECNORED | 4h | Sex 31/07/26 | Sex 31/07/26 | 0207 | INSTRUMENTATION / AUTOMATION |
| 590 | 1.9.10.3 | Atendimento de comentários | 0.5d | 2026-07-31 | 2026-07-31 | 589 | 2026-07-31 | 2026-07-31 | 0.5d | 13.5d | 0d |  | André | 4h | Sex 31/07/26 | Sex 31/07/26 | 0207 | INSTRUMENTATION / AUTOMATION |
| 591 | 1.9.10.4 | Aprovação | 0.5d | 2026-08-03 | 2026-08-03 | 590 | 2026-08-03 | 2026-08-03 | 0.5d | 13.5d |  |  | TECNORED | 4h | Seg 03/08/26 | Seg 03/08/26 | 0207 | INSTRUMENTATION / AUTOMATION |
| 592 | 1.9.11 | **FD-F0009-0207-GE-J-00005** | 6.5d | 2026-07-24 | 2026-08-03 |  | 2026-07-24 | 2026-08-03 | 6.5d | 13.5d |  |  | Marcio | 104h | Sex 24/07/26 | Seg 03/08/26 | 0207 | INSTRUMENTATION / AUTOMATION |
| 593 | 1.9.11.1 | Emissão Inicial | 5d | 2026-07-24 | 2026-07-30 | 563 | 2026-07-24 | 2026-07-30 | 5d | 13.5d | 0d | finish no earlier than 2026-07-30 | Rodrigo | 40h | Sex 24/07/26 | Qui 30/07/26 | 0207 | INSTRUMENTATION / AUTOMATION |
| 594 | 1.9.11.2 | Análise Tecnored | 0.5d | 2026-07-31 | 2026-07-31 | 593 | 2026-07-31 | 2026-07-31 | 0.5d | 13.5d | 0d |  | TECNORED | 4h | Sex 31/07/26 | Sex 31/07/26 | 0207 | INSTRUMENTATION / AUTOMATION |
| 595 | 1.9.11.3 | Atendimento de comentários | 0.5d | 2026-07-31 | 2026-07-31 | 594 | 2026-07-31 | 2026-07-31 | 0.5d | 13.5d | 0d |  | André | 4h | Sex 31/07/26 | Sex 31/07/26 | 0207 | INSTRUMENTATION / AUTOMATION |
| 596 | 1.9.11.4 | Aprovação | 0.5d | 2026-08-03 | 2026-08-03 | 595 | 2026-08-03 | 2026-08-03 | 0.5d | 13.5d |  |  | TECNORED | 4h | Seg 03/08/26 | Seg 03/08/26 | 0207 | INSTRUMENTATION / AUTOMATION |
| 597 | 1.9.12 | **FD-F0009-0207-GE-J-00006** | 6.5d | 2026-07-24 | 2026-08-03 |  | 2026-07-24 | 2026-08-03 | 6.5d | 13.5d |  |  | Marcio | 104h | Sex 24/07/26 | Seg 03/08/26 | 0207 | INSTRUMENTATION / AUTOMATION |
| 598 | 1.9.12.1 | Emissão Inicial | 5d | 2026-07-24 | 2026-07-30 | 563 | 2026-07-24 | 2026-07-30 | 5d | 13.5d | 0d | finish no earlier than 2026-07-30 | Rodrigo | 40h | Sex 24/07/26 | Qui 30/07/26 | 0207 | INSTRUMENTATION / AUTOMATION |
| 599 | 1.9.12.2 | Análise Tecnored | 0.5d | 2026-07-31 | 2026-07-31 | 598 | 2026-07-31 | 2026-07-31 | 0.5d | 13.5d | 0d |  | TECNORED | 4h | Sex 31/07/26 | Sex 31/07/26 | 0207 | INSTRUMENTATION / AUTOMATION |
| 600 | 1.9.12.3 | Atendimento de comentários | 0.5d | 2026-07-31 | 2026-07-31 | 599 | 2026-07-31 | 2026-07-31 | 0.5d | 13.5d | 0d |  | André | 4h | Sex 31/07/26 | Sex 31/07/26 | 0207 | INSTRUMENTATION / AUTOMATION |
| 601 | 1.9.12.4 | Aprovação | 0.5d | 2026-08-03 | 2026-08-03 | 600 | 2026-08-03 | 2026-08-03 | 0.5d | 13.5d |  |  | TECNORED | 4h | Seg 03/08/26 | Seg 03/08/26 | 0207 | INSTRUMENTATION / AUTOMATION |
| 602 | 1.9.13 | **FD-F0009-0207-GE-J-00007** | 6.5d | 2026-07-24 | 2026-08-03 |  | 2026-07-24 | 2026-08-03 | 6.5d | 13.5d |  |  | Marcio | 104h | Sex 24/07/26 | Seg 03/08/26 | 0207 | INSTRUMENTATION / AUTOMATION |
| 603 | 1.9.13.1 | Emissão Inicial | 5d | 2026-07-24 | 2026-07-30 | 563 | 2026-07-24 | 2026-07-30 | 5d | 13.5d | 0d | finish no earlier than 2026-07-30 | Rodrigo | 40h | Sex 24/07/26 | Qui 30/07/26 | 0207 | INSTRUMENTATION / AUTOMATION |
| 604 | 1.9.13.2 | Análise Tecnored | 0.5d | 2026-07-31 | 2026-07-31 | 603 | 2026-07-31 | 2026-07-31 | 0.5d | 13.5d | 0d |  | TECNORED | 4h | Sex 31/07/26 | Sex 31/07/26 | 0207 | INSTRUMENTATION / AUTOMATION |
| 605 | 1.9.13.3 | Atendimento de comentários | 0.5d | 2026-07-31 | 2026-07-31 | 604 | 2026-07-31 | 2026-07-31 | 0.5d | 13.5d | 0d |  | André | 4h | Sex 31/07/26 | Sex 31/07/26 | 0207 | INSTRUMENTATION / AUTOMATION |
| 606 | 1.9.13.4 | Aprovação | 0.5d | 2026-08-03 | 2026-08-03 | 605 | 2026-08-03 | 2026-08-03 | 0.5d | 13.5d |  |  | TECNORED | 4h | Seg 03/08/26 | Seg 03/08/26 | 0207 | INSTRUMENTATION / AUTOMATION |

| ID | WBS | Task | Duration | Start | Finish | Predecessors | Baseline start | Baseline finish | Baseline duration | Total slack | Free slack | Constraint | Resources | Work | Início_LB_R0 | Término_LB_R0 | COD_Projeto | Disciplina |
| --- | --- | --- | --- | --- | --- | --- | --- | --- | --- | --- | --- | --- | --- | --- | --- | --- | --- | --- |
| 607 | 1.9.14 | **FD-F0009-0207-GE-J-00008** | 6.5d | 2026-07-24 | 2026-08-03 |  | 2026-07-24 | 2026-08-03 | 6.5d | 13.5d |  |  | Marcio | 104h | Sex 24/07/26 | Seg 03/08/26 | 0207 | INSTRUMENTATION / AUTOMATION |
| 608 | 1.9.14.1 | Emissão Inicial | 5d | 2026-07-24 | 2026-07-30 | 563 | 2026-07-24 | 2026-07-30 | 5d | 13.5d | 0d | finish no earlier than 2026-07-30 | Rodrigo | 40h | Sex 24/07/26 | Qui 30/07/26 | 0207 | INSTRUMENTATION / AUTOMATION |
| 609 | 1.9.14.2 | Análise Tecnored | 0.5d | 2026-07-31 | 2026-07-31 | 608 | 2026-07-31 | 2026-07-31 | 0.5d | 13.5d | 0d |  | TECNORED | 4h | Sex 31/07/26 | Sex 31/07/26 | 0207 | INSTRUMENTATION / AUTOMATION |
| 610 | 1.9.14.3 | Atendimento de comentários | 0.5d | 2026-07-31 | 2026-07-31 | 609 | 2026-07-31 | 2026-07-31 | 0.5d | 13.5d | 0d |  | André | 4h | Sex 31/07/26 | Sex 31/07/26 | 0207 | INSTRUMENTATION / AUTOMATION |
| 611 | 1.9.14.4 | Aprovação | 0.5d | 2026-08-03 | 2026-08-03 | 610 | 2026-08-03 | 2026-08-03 | 0.5d | 13.5d |  |  | TECNORED | 4h | Seg 03/08/26 | Seg 03/08/26 | 0207 | INSTRUMENTATION / AUTOMATION |
| 612 | 1.9.15 | **FD-F0009-0207-GE-J-00009** | 6.5d | 2026-07-24 | 2026-08-03 |  | 2026-07-24 | 2026-08-03 | 6.5d | 13.5d |  |  | Marcio | 104h | Sex 24/07/26 | Seg 03/08/26 | 0207 | INSTRUMENTATION / AUTOMATION |
| 613 | 1.9.15.1 | Emissão Inicial | 5d | 2026-07-24 | 2026-07-30 | 563 | 2026-07-24 | 2026-07-30 | 5d | 13.5d | 0d | finish no earlier than 2026-07-30 | Rodrigo | 40h | Sex 24/07/26 | Qui 30/07/26 | 0207 | INSTRUMENTATION / AUTOMATION |
| 614 | 1.9.15.2 | Análise Tecnored | 0.5d | 2026-07-31 | 2026-07-31 | 613 | 2026-07-31 | 2026-07-31 | 0.5d | 13.5d | 0d |  | TECNORED | 4h | Sex 31/07/26 | Sex 31/07/26 | 0207 | INSTRUMENTATION / AUTOMATION |
| 615 | 1.9.15.3 | Atendimento de comentários | 0.5d | 2026-07-31 | 2026-07-31 | 614 | 2026-07-31 | 2026-07-31 | 0.5d | 13.5d | 0d |  | André | 4h | Sex 31/07/26 | Sex 31/07/26 | 0207 | INSTRUMENTATION / AUTOMATION |
| 616 | 1.9.15.4 | Aprovação | 0.5d | 2026-08-03 | 2026-08-03 | 615 | 2026-08-03 | 2026-08-03 | 0.5d | 13.5d |  |  | TECNORED | 4h | Seg 03/08/26 | Seg 03/08/26 | 0207 | INSTRUMENTATION / AUTOMATION |
| 617 | 1.9.16 | **FD-F0009-0207-GE-J-00010** | 6.5d | 2026-07-24 | 2026-08-03 |  | 2026-07-24 | 2026-08-03 | 6.5d | 13.5d |  |  | Marcio | 104h | Sex 24/07/26 | Seg 03/08/26 | 0207 | INSTRUMENTATION / AUTOMATION |
| 618 | 1.9.16.1 | Emissão Inicial | 5d | 2026-07-24 | 2026-07-30 | 563 | 2026-07-24 | 2026-07-30 | 5d | 13.5d | 0d | finish no earlier than 2026-07-30 | Rodrigo | 40h | Sex 24/07/26 | Qui 30/07/26 | 0207 | INSTRUMENTATION / AUTOMATION |
| 619 | 1.9.16.2 | Análise Tecnored | 0.5d | 2026-07-31 | 2026-07-31 | 618 | 2026-07-31 | 2026-07-31 | 0.5d | 13.5d | 0d |  | TECNORED | 4h | Sex 31/07/26 | Sex 31/07/26 | 0207 | INSTRUMENTATION / AUTOMATION |
| 620 | 1.9.16.3 | Atendimento de comentários | 0.5d | 2026-07-31 | 2026-07-31 | 619 | 2026-07-31 | 2026-07-31 | 0.5d | 13.5d | 0d |  | André | 4h | Sex 31/07/26 | Sex 31/07/26 | 0207 | INSTRUMENTATION / AUTOMATION |
| 621 | 1.9.16.4 | Aprovação | 0.5d | 2026-08-03 | 2026-08-03 | 620 | 2026-08-03 | 2026-08-03 | 0.5d | 13.5d |  |  | TECNORED | 4h | Seg 03/08/26 | Seg 03/08/26 | 0207 | INSTRUMENTATION / AUTOMATION |
| 622 | 1.9.17 | **FD-F0009-0207-GE-J-00011** | 6.5d | 2026-07-24 | 2026-08-03 |  | 2026-07-24 | 2026-08-03 | 6.5d | 13.5d |  |  | Marcio | 104h | Sex 24/07/26 | Seg 03/08/26 | 0207 | INSTRUMENTATION / AUTOMATION |
| 623 | 1.9.17.1 | Emissão Inicial | 5d | 2026-07-24 | 2026-07-30 | 563 | 2026-07-24 | 2026-07-30 | 5d | 13.5d | 0d | finish no earlier than 2026-07-30 | Rodrigo | 40h | Sex 24/07/26 | Qui 30/07/26 | 0207 | INSTRUMENTATION / AUTOMATION |
| 624 | 1.9.17.2 | Análise Tecnored | 0.5d | 2026-07-31 | 2026-07-31 | 623 | 2026-07-31 | 2026-07-31 | 0.5d | 13.5d | 0d |  | TECNORED | 4h | Sex 31/07/26 | Sex 31/07/26 | 0207 | INSTRUMENTATION / AUTOMATION |
| 625 | 1.9.17.3 | Atendimento de comentários | 0.5d | 2026-07-31 | 2026-07-31 | 624 | 2026-07-31 | 2026-07-31 | 0.5d | 13.5d | 0d |  | André | 4h | Sex 31/07/26 | Sex 31/07/26 | 0207 | INSTRUMENTATION / AUTOMATION |
| 626 | 1.9.17.4 | Aprovação | 0.5d | 2026-08-03 | 2026-08-03 | 625 | 2026-08-03 | 2026-08-03 | 0.5d | 13.5d |  |  | TECNORED | 4h | Seg 03/08/26 | Seg 03/08/26 | 0207 | INSTRUMENTATION / AUTOMATION |
| 627 | 1.9.18 | **FD-F0009-0207-GE-J-00012** | 6.5d | 2026-07-24 | 2026-08-03 |  | 2026-07-24 | 2026-08-03 | 6.5d | 13.5d |  |  | Marcio | 104h | Sex 24/07/26 | Seg 03/08/26 | 0207 | INSTRUMENTATION / AUTOMATION |
| 628 | 1.9.18.1 | Emissão Inicial | 5d | 2026-07-24 | 2026-07-30 | 563 | 2026-07-24 | 2026-07-30 | 5d | 13.5d | 0d | finish no earlier than 2026-07-30 | Rodrigo | 40h | Sex 24/07/26 | Qui 30/07/26 | 0207 | INSTRUMENTATION / AUTOMATION |
| 629 | 1.9.18.2 | Análise Tecnored | 0.5d | 2026-07-31 | 2026-07-31 | 628 | 2026-07-31 | 2026-07-31 | 0.5d | 13.5d | 0d |  | TECNORED | 4h | Sex 31/07/26 | Sex 31/07/26 | 0207 | INSTRUMENTATION / AUTOMATION |
| 630 | 1.9.18.3 | Atendimento de comentários | 0.5d | 2026-07-31 | 2026-07-31 | 629 | 2026-07-31 | 2026-07-31 | 0.5d | 13.5d | 0d |  | André | 4h | Sex 31/07/26 | Sex 31/07/26 | 0207 | INSTRUMENTATION / AUTOMATION |
| 631 | 1.9.18.4 | Aprovação | 0.5d | 2026-08-03 | 2026-08-03 | 630 | 2026-08-03 | 2026-08-03 | 0.5d | 13.5d |  |  | TECNORED | 4h | Seg 03/08/26 | Seg 03/08/26 | 0207 | INSTRUMENTATION / AUTOMATION |

| ID | WBS | Task | Duration | Start | Finish | Predecessors | Baseline start | Baseline finish | Baseline duration | Total slack | Free slack | Constraint | Resources | Work | Início_LB_R0 | Término_LB_R0 | COD_Projeto | Disciplina |
| --- | --- | --- | --- | --- | --- | --- | --- | --- | --- | --- | --- | --- | --- | --- | --- | --- | --- | --- |
| 632 | 1.9.19 | **FD-F0009-0207-GE-J-00013** | 6.5d | 2026-07-24 | 2026-08-03 |  | 2026-07-24 | 2026-08-03 | 6.5d | 13.5d |  |  | Marcio | 104h | Sex 24/07/26 | Seg 03/08/26 | 0207 | INSTRUMENTATION / AUTOMATION |
| 633 | 1.9.19.1 | Emissão Inicial | 5d | 2026-07-24 | 2026-07-30 | 563 | 2026-07-24 | 2026-07-30 | 5d | 13.5d | 0d | finish no earlier than 2026-07-30 | Rodrigo | 40h | Sex 24/07/26 | Qui 30/07/26 | 0207 | INSTRUMENTATION / AUTOMATION |
| 634 | 1.9.19.2 | Análise Tecnored | 0.5d | 2026-07-31 | 2026-07-31 | 633 | 2026-07-31 | 2026-07-31 | 0.5d | 13.5d | 0d |  | TECNORED | 4h | Sex 31/07/26 | Sex 31/07/26 | 0207 | INSTRUMENTATION / AUTOMATION |
| 635 | 1.9.19.3 | Atendimento de comentários | 0.5d | 2026-07-31 | 2026-07-31 | 634 | 2026-07-31 | 2026-07-31 | 0.5d | 13.5d | 0d |  | André | 4h | Sex 31/07/26 | Sex 31/07/26 | 0207 | INSTRUMENTATION / AUTOMATION |
| 636 | 1.9.19.4 | Aprovação | 0.5d | 2026-08-03 | 2026-08-03 | 635 | 2026-08-03 | 2026-08-03 | 0.5d | 13.5d |  |  | TECNORED | 4h | Seg 03/08/26 | Seg 03/08/26 | 0207 | INSTRUMENTATION / AUTOMATION |
| 637 | 1.9.20 | **FD-F0009-0207-GE-J-00014** | 6.5d | 2026-07-24 | 2026-08-03 |  | 2026-07-24 | 2026-08-03 | 6.5d | 13.5d |  |  | Marcio | 104h | Sex 24/07/26 | Seg 03/08/26 | 0207 | INSTRUMENTATION / AUTOMATION |
| 638 | 1.9.20.1 | Emissão Inicial | 5d | 2026-07-24 | 2026-07-30 | 563 | 2026-07-24 | 2026-07-30 | 5d | 13.5d | 0d | finish no earlier than 2026-07-30 | Rodrigo | 40h | Sex 24/07/26 | Qui 30/07/26 | 0207 | INSTRUMENTATION / AUTOMATION |
| 639 | 1.9.20.2 | Análise Tecnored | 0.5d | 2026-07-31 | 2026-07-31 | 638 | 2026-07-31 | 2026-07-31 | 0.5d | 13.5d | 0d |  | TECNORED | 4h | Sex 31/07/26 | Sex 31/07/26 | 0207 | INSTRUMENTATION / AUTOMATION |
| 640 | 1.9.20.3 | Atendimento de comentários | 0.5d | 2026-07-31 | 2026-07-31 | 639 | 2026-07-31 | 2026-07-31 | 0.5d | 13.5d | 0d |  | André | 4h | Sex 31/07/26 | Sex 31/07/26 | 0207 | INSTRUMENTATION / AUTOMATION |
| 641 | 1.9.20.4 | Aprovação | 0.5d | 2026-08-03 | 2026-08-03 | 640 | 2026-08-03 | 2026-08-03 | 0.5d | 13.5d |  |  | TECNORED | 4h | Seg 03/08/26 | Seg 03/08/26 | 0207 | INSTRUMENTATION / AUTOMATION |
| 642 | 1.9.21 | **FD-F0009-0207-GE-J-00015** | 6.5d | 2026-07-24 | 2026-08-03 |  | 2026-07-24 | 2026-08-03 | 6.5d | 13.5d |  |  | Marcio | 104h | Sex 24/07/26 | Seg 03/08/26 | 0207 | INSTRUMENTATION / AUTOMATION |
| 643 | 1.9.21.1 | Emissão Inicial | 5d | 2026-07-24 | 2026-07-30 | 563 | 2026-07-24 | 2026-07-30 | 5d | 13.5d | 0d | finish no earlier than 2026-07-30 | Rodrigo | 40h | Sex 24/07/26 | Qui 30/07/26 | 0207 | INSTRUMENTATION / AUTOMATION |
| 644 | 1.9.21.2 | Análise Tecnored | 0.5d | 2026-07-31 | 2026-07-31 | 643 | 2026-07-31 | 2026-07-31 | 0.5d | 13.5d | 0d |  | TECNORED | 4h | Sex 31/07/26 | Sex 31/07/26 | 0207 | INSTRUMENTATION / AUTOMATION |
| 645 | 1.9.21.3 | Atendimento de comentários | 0.5d | 2026-07-31 | 2026-07-31 | 644 | 2026-07-31 | 2026-07-31 | 0.5d | 13.5d | 0d |  | André | 4h | Sex 31/07/26 | Sex 31/07/26 | 0207 | INSTRUMENTATION / AUTOMATION |
| 646 | 1.9.21.4 | Aprovação | 0.5d | 2026-08-03 | 2026-08-03 | 645 | 2026-08-03 | 2026-08-03 | 0.5d | 13.5d |  |  | TECNORED | 4h | Seg 03/08/26 | Seg 03/08/26 | 0207 | INSTRUMENTATION / AUTOMATION |
| 647 | 1.9.22 | **FD-F0009-0207-GE-J-00016** | 6.5d | 2026-07-24 | 2026-08-03 |  | 2026-07-24 | 2026-08-03 | 6.5d | 13.5d |  |  | Marcio | 104h | Sex 24/07/26 | Seg 03/08/26 | 0207 | INSTRUMENTATION / AUTOMATION |
| 648 | 1.9.22.1 | Emissão Inicial | 5d | 2026-07-24 | 2026-07-30 | 563 | 2026-07-24 | 2026-07-30 | 5d | 13.5d | 0d | finish no earlier than 2026-07-30 | Rodrigo | 40h | Sex 24/07/26 | Qui 30/07/26 | 0207 | INSTRUMENTATION / AUTOMATION |
| 649 | 1.9.22.2 | Análise Tecnored | 0.5d | 2026-07-31 | 2026-07-31 | 648 | 2026-07-31 | 2026-07-31 | 0.5d | 13.5d | 0d |  | TECNORED | 4h | Sex 31/07/26 | Sex 31/07/26 | 0207 | INSTRUMENTATION / AUTOMATION |
| 650 | 1.9.22.3 | Atendimento de comentários | 0.5d | 2026-07-31 | 2026-07-31 | 649 | 2026-07-31 | 2026-07-31 | 0.5d | 13.5d | 0d |  | André | 4h | Sex 31/07/26 | Sex 31/07/26 | 0207 | INSTRUMENTATION / AUTOMATION |
| 651 | 1.9.22.4 | Aprovação | 0.5d | 2026-08-03 | 2026-08-03 | 650 | 2026-08-03 | 2026-08-03 | 0.5d | 13.5d |  |  | TECNORED | 4h | Seg 03/08/26 | Seg 03/08/26 | 0207 | INSTRUMENTATION / AUTOMATION |
| 652 | 1.9.23 | **FD-F0009-0207-GE-J-00017** | 6.5d | 2026-07-24 | 2026-08-03 |  | 2026-07-24 | 2026-08-03 | 6.5d | 13.5d |  |  | Marcio | 104h | Sex 24/07/26 | Seg 03/08/26 | 0207 | INSTRUMENTATION / AUTOMATION |
| 653 | 1.9.23.1 | Emissão Inicial | 5d | 2026-07-24 | 2026-07-30 | 563 | 2026-07-24 | 2026-07-30 | 5d | 13.5d | 0d | finish no earlier than 2026-07-30 | Rodrigo | 40h | Sex 24/07/26 | Qui 30/07/26 | 0207 | INSTRUMENTATION / AUTOMATION |
| 654 | 1.9.23.2 | Análise Tecnored | 0.5d | 2026-07-31 | 2026-07-31 | 653 | 2026-07-31 | 2026-07-31 | 0.5d | 13.5d | 0d |  | TECNORED | 4h | Sex 31/07/26 | Sex 31/07/26 | 0207 | INSTRUMENTATION / AUTOMATION |
| 655 | 1.9.23.3 | Atendimento de comentários | 0.5d | 2026-07-31 | 2026-07-31 | 654 | 2026-07-31 | 2026-07-31 | 0.5d | 13.5d | 0d |  | André | 4h | Sex 31/07/26 | Sex 31/07/26 | 0207 | INSTRUMENTATION / AUTOMATION |
| 656 | 1.9.23.4 | Aprovação | 0.5d | 2026-08-03 | 2026-08-03 | 655 | 2026-08-03 | 2026-08-03 | 0.5d | 13.5d |  |  | TECNORED | 4h | Seg 03/08/26 | Seg 03/08/26 | 0207 | INSTRUMENTATION / AUTOMATION |

| ID | WBS | Task | Duration | Start | Finish | Predecessors | Baseline start | Baseline finish | Baseline duration | Total slack | Free slack | Constraint | Resources | Work | Início_LB_R0 | Término_LB_R0 | COD_Projeto | Disciplina |
| --- | --- | --- | --- | --- | --- | --- | --- | --- | --- | --- | --- | --- | --- | --- | --- | --- | --- | --- |
| 657 | 1.9.24 | **FD-F0009-0207-GE-J-00018** | 6.5d | 2026-07-24 | 2026-08-03 |  | 2026-07-24 | 2026-08-03 | 6.5d | 13.5d |  |  | Marcio | 104h | Sex 24/07/26 | Seg 03/08/26 | 0207 | INSTRUMENTATION / AUTOMATION |
| 658 | 1.9.24.1 | Emissão Inicial | 5d | 2026-07-24 | 2026-07-30 | 563 | 2026-07-24 | 2026-07-30 | 5d | 13.5d | 0d | finish no earlier than 2026-07-30 | Rodrigo | 40h | Sex 24/07/26 | Qui 30/07/26 | 0207 | INSTRUMENTATION / AUTOMATION |
| 659 | 1.9.24.2 | Análise Tecnored | 0.5d | 2026-07-31 | 2026-07-31 | 658 | 2026-07-31 | 2026-07-31 | 0.5d | 13.5d | 0d |  | TECNORED | 4h | Sex 31/07/26 | Sex 31/07/26 | 0207 | INSTRUMENTATION / AUTOMATION |
| 660 | 1.9.24.3 | Atendimento de comentários | 0.5d | 2026-07-31 | 2026-07-31 | 659 | 2026-07-31 | 2026-07-31 | 0.5d | 13.5d | 0d |  | André | 4h | Sex 31/07/26 | Sex 31/07/26 | 0207 | INSTRUMENTATION / AUTOMATION |
| 661 | 1.9.24.4 | Aprovação | 0.5d | 2026-08-03 | 2026-08-03 | 660 | 2026-08-03 | 2026-08-03 | 0.5d | 13.5d |  |  | TECNORED | 4h | Seg 03/08/26 | Seg 03/08/26 | 0207 | INSTRUMENTATION / AUTOMATION |
| 662 | 1.9.25 | **FD-F0009-0207-GE-J-00019** | 6.5d | 2026-07-24 | 2026-08-03 |  | 2026-07-24 | 2026-08-03 | 6.5d | 13.5d |  |  | Marcio | 104h | Sex 24/07/26 | Seg 03/08/26 | 0207 | INSTRUMENTATION / AUTOMATION |
| 663 | 1.9.25.1 | Emissão Inicial | 5d | 2026-07-24 | 2026-07-30 | 563 | 2026-07-24 | 2026-07-30 | 5d | 13.5d | 0d | finish no earlier than 2026-07-30 | Rodrigo | 40h | Sex 24/07/26 | Qui 30/07/26 | 0207 | INSTRUMENTATION / AUTOMATION |
| 664 | 1.9.25.2 | Análise Tecnored | 0.5d | 2026-07-31 | 2026-07-31 | 663 | 2026-07-31 | 2026-07-31 | 0.5d | 13.5d | 0d |  | TECNORED | 4h | Sex 31/07/26 | Sex 31/07/26 | 0207 | INSTRUMENTATION / AUTOMATION |
| 665 | 1.9.25.3 | Atendimento de comentários | 0.5d | 2026-07-31 | 2026-07-31 | 664 | 2026-07-31 | 2026-07-31 | 0.5d | 13.5d | 0d |  | André | 4h | Sex 31/07/26 | Sex 31/07/26 | 0207 | INSTRUMENTATION / AUTOMATION |
| 666 | 1.9.25.4 | Aprovação | 0.5d | 2026-08-03 | 2026-08-03 | 665 | 2026-08-03 | 2026-08-03 | 0.5d | 13.5d |  |  | TECNORED | 4h | Seg 03/08/26 | Seg 03/08/26 | 0207 | INSTRUMENTATION / AUTOMATION |
| 667 | 1.9.26 | **FD-F0009-0207-GE-J-00020** | 6.5d | 2026-07-24 | 2026-08-03 |  | 2026-07-24 | 2026-08-03 | 6.5d | 13.5d |  |  | Marcio | 104h | Sex 24/07/26 | Seg 03/08/26 | 0207 | INSTRUMENTATION / AUTOMATION |
| 668 | 1.9.26.1 | Emissão Inicial | 5d | 2026-07-24 | 2026-07-30 | 563 | 2026-07-24 | 2026-07-30 | 5d | 13.5d | 0d | finish no earlier than 2026-07-30 | Rodrigo | 40h | Sex 24/07/26 | Qui 30/07/26 | 0207 | INSTRUMENTATION / AUTOMATION |
| 669 | 1.9.26.2 | Análise Tecnored | 0.5d | 2026-07-31 | 2026-07-31 | 668 | 2026-07-31 | 2026-07-31 | 0.5d | 13.5d | 0d |  | TECNORED | 4h | Sex 31/07/26 | Sex 31/07/26 | 0207 | INSTRUMENTATION / AUTOMATION |
| 670 | 1.9.26.3 | Atendimento de comentários | 0.5d | 2026-07-31 | 2026-07-31 | 669 | 2026-07-31 | 2026-07-31 | 0.5d | 13.5d | 0d |  | André | 4h | Sex 31/07/26 | Sex 31/07/26 | 0207 | INSTRUMENTATION / AUTOMATION |
| 671 | 1.9.26.4 | Aprovação | 0.5d | 2026-08-03 | 2026-08-03 | 670 | 2026-08-03 | 2026-08-03 | 0.5d | 13.5d |  |  | TECNORED | 4h | Seg 03/08/26 | Seg 03/08/26 | 0207 | INSTRUMENTATION / AUTOMATION |
| 672 | 1.9.27 | **FD-F0009-0207-GE-J-00021** | 6.5d | 2026-07-24 | 2026-08-03 |  | 2026-07-24 | 2026-08-03 | 6.5d | 13.5d |  |  | Marcio | 104h | Sex 24/07/26 | Seg 03/08/26 | 0207 | INSTRUMENTATION / AUTOMATION |
| 673 | 1.9.27.1 | Emissão Inicial | 5d | 2026-07-24 | 2026-07-30 | 563 | 2026-07-24 | 2026-07-30 | 5d | 13.5d | 0d | finish no earlier than 2026-07-30 | Rodrigo | 40h | Sex 24/07/26 | Qui 30/07/26 | 0207 | INSTRUMENTATION / AUTOMATION |
| 674 | 1.9.27.2 | Análise Tecnored | 0.5d | 2026-07-31 | 2026-07-31 | 673 | 2026-07-31 | 2026-07-31 | 0.5d | 13.5d | 0d |  | TECNORED | 4h | Sex 31/07/26 | Sex 31/07/26 | 0207 | INSTRUMENTATION / AUTOMATION |
| 675 | 1.9.27.3 | Atendimento de comentários | 0.5d | 2026-07-31 | 2026-07-31 | 674 | 2026-07-31 | 2026-07-31 | 0.5d | 13.5d | 0d |  | André | 4h | Sex 31/07/26 | Sex 31/07/26 | 0207 | INSTRUMENTATION / AUTOMATION |
| 676 | 1.9.27.4 | Aprovação | 0.5d | 2026-08-03 | 2026-08-03 | 675 | 2026-08-03 | 2026-08-03 | 0.5d | 13.5d |  |  | TECNORED | 4h | Seg 03/08/26 | Seg 03/08/26 | 0207 | INSTRUMENTATION / AUTOMATION |
| 677 | 1.9.28 | **FD-F0009-0207-GE-J-00022** | 6.5d | 2026-07-24 | 2026-08-03 |  | 2026-07-24 | 2026-08-03 | 6.5d | 13.5d |  |  | Marcio | 104h | Sex 24/07/26 | Seg 03/08/26 | 0207 | INSTRUMENTATION / AUTOMATION |
| 678 | 1.9.28.1 | Emissão Inicial | 5d | 2026-07-24 | 2026-07-30 | 563 | 2026-07-24 | 2026-07-30 | 5d | 13.5d | 0d | finish no earlier than 2026-07-30 | Rodrigo | 40h | Sex 24/07/26 | Qui 30/07/26 | 0207 | INSTRUMENTATION / AUTOMATION |
| 679 | 1.9.28.2 | Análise Tecnored | 0.5d | 2026-07-31 | 2026-07-31 | 678 | 2026-07-31 | 2026-07-31 | 0.5d | 13.5d | 0d |  | TECNORED | 4h | Sex 31/07/26 | Sex 31/07/26 | 0207 | INSTRUMENTATION / AUTOMATION |
| 680 | 1.9.28.3 | Atendimento de comentários | 0.5d | 2026-07-31 | 2026-07-31 | 679 | 2026-07-31 | 2026-07-31 | 0.5d | 13.5d | 0d |  | André | 4h | Sex 31/07/26 | Sex 31/07/26 | 0207 | INSTRUMENTATION / AUTOMATION |
| 681 | 1.9.28.4 | Aprovação | 0.5d | 2026-08-03 | 2026-08-03 | 680 | 2026-08-03 | 2026-08-03 | 0.5d | 13.5d |  |  | TECNORED | 4h | Seg 03/08/26 | Seg 03/08/26 | 0207 | INSTRUMENTATION / AUTOMATION |

| ID | WBS | Task | Type | Duration | Start | Finish | Predecessors | Baseline start | Baseline finish | Baseline duration | Total slack | Free slack | Constraint | Resources | Work | Baseline cost | Início_LB_R0 | Término_LB_R0 | COD_Projeto | Disciplina |
| --- | --- | --- | --- | --- | --- | --- | --- | --- | --- | --- | --- | --- | --- | --- | --- | --- | --- | --- | --- | --- |
| 682 | 1.9.29 | **FD-F0009-0207-GE-J-00023** |  | 6.5d | 2026-07-24 | 2026-08-03 |  | 2026-07-24 | 2026-08-03 | 6.5d | 13.5d |  |  | Marcio | 104h |  | Sex 24/07/26 | Seg 03/08/26 | 0207 | INSTRUMENTATION / AUTOMATION |
| 683 | 1.9.29.1 | Emissão Inicial |  | 5d | 2026-07-24 | 2026-07-30 | 563 | 2026-07-24 | 2026-07-30 | 5d | 13.5d | 0d | finish no earlier than 2026-07-30 | Rodrigo | 40h |  | Sex 24/07/26 | Qui 30/07/26 | 0207 | INSTRUMENTATION / AUTOMATION |
| 684 | 1.9.29.2 | Análise Tecnored |  | 0.5d | 2026-07-31 | 2026-07-31 | 683 | 2026-07-31 | 2026-07-31 | 0.5d | 13.5d | 0d |  | TECNORED | 4h |  | Sex 31/07/26 | Sex 31/07/26 | 0207 | INSTRUMENTATION / AUTOMATION |
| 685 | 1.9.29.3 | Atendimento de comentários |  | 0.5d | 2026-07-31 | 2026-07-31 | 684 | 2026-07-31 | 2026-07-31 | 0.5d | 13.5d | 0d |  | André | 4h |  | Sex 31/07/26 | Sex 31/07/26 | 0207 | INSTRUMENTATION / AUTOMATION |
| 686 | 1.9.29.4 | Aprovação |  | 0.5d | 2026-08-03 | 2026-08-03 | 685 | 2026-08-03 | 2026-08-03 | 0.5d | 13.5d |  |  | TECNORED | 4h |  | Seg 03/08/26 | Seg 03/08/26 | 0207 | INSTRUMENTATION / AUTOMATION |
| 687 | 1.9.30 | **DG-F0009-0207-GE-J00001** | inactive | 5d | 2026-07-24 | 2026-07-30 |  |  |  |  | 15d |  |  | André | 80h | -0 | Sex 24/07/26 | Qui 30/07/26 | 0207 | INSTRUMENTATION / AUTOMATION |
| 688 | 1.9.30.1 | Emissão Inicial | inactive | 2d | 2026-07-24 | 2026-07-27 | 563 |  |  |  | 15d | 0d |  | Rodrigo | 16h | -0 | Sex 24/07/26 | Seg 27/07/26 | 0207 | INSTRUMENTATION / AUTOMATION |
| 689 | 1.9.30.2 | Análise Tecnored | inactive | 1d | 2026-07-28 | 2026-07-28 | 688 |  |  |  | 15d | 0d |  | TECNORED | 8h | -0 | Ter 28/07/26 | Ter 28/07/26 | 0207 | INSTRUMENTATION / AUTOMATION |
| 690 | 1.9.30.3 | Atendimento de comentários | inactive | 1d | 2026-07-29 | 2026-07-29 | 689 |  |  |  | 15d | 0d |  | André | 8h | -0 | Qua 29/07/26 | Qua 29/07/26 | 0207 | INSTRUMENTATION / AUTOMATION |
| 691 | 1.9.30.4 | Aprovação | inactive | 1d | 2026-07-30 | 2026-07-30 | 690 |  |  |  | 15d |  |  | TECNORED | 8h | -0 | Qui 30/07/26 | Qui 30/07/26 | 0207 | INSTRUMENTATION / AUTOMATION |
| 692 | 1.9.31 | **DI-F0009-0207-GE-J00001** |  | 9d | 2026-07-24 | 2026-08-05 |  | 2026-07-24 | 2026-08-05 | 9d | 5d |  |  | Everton, Ricardo | 144h |  | Sex 24/07/26 | Qua 05/08/26 | 0207 | INSTRUMENTATION / AUTOMATION |
| 693 | 1.9.31.1 | Emissão Inicial |  | 6d | 2026-07-24 | 2026-07-31 | 563 | 2026-07-24 | 2026-07-31 | 6d | 5d | 0d | finish no earlier than 2026-07-31 | Rodrigo | 48h |  | Sex 24/07/26 | Sex 31/07/26 | 0207 | INSTRUMENTATION / AUTOMATION |
| 694 | 1.9.31.2 | Análise Tecnored |  | 1d | 2026-08-03 | 2026-08-03 | 693 | 2026-08-03 | 2026-08-03 | 1d | 11d | 0d |  | TECNORED | 8h |  | Seg 03/08/26 | Seg 03/08/26 | 0207 | INSTRUMENTATION / AUTOMATION |
| 695 | 1.9.31.3 | Atendimento de comentários |  | 1d | 2026-08-04 | 2026-08-04 | 694 | 2026-08-04 | 2026-08-04 | 1d | 11d | 0d |  | André | 8h |  | Ter 04/08/26 | Ter 04/08/26 | 0207 | INSTRUMENTATION / AUTOMATION |
| 696 | 1.9.31.4 | Aprovação |  | 1d | 2026-08-05 | 2026-08-05 | 695 | 2026-08-05 | 2026-08-05 | 1d | 11d |  |  | TECNORED | 8h |  | Qua 05/08/26 | Qua 05/08/26 | 0207 | INSTRUMENTATION / AUTOMATION |
| 697 | 1.9.32 | **AG-F0009-0207-GE-J00001** |  | 6d | 2026-08-03 | 2026-08-10 |  | 2026-08-03 | 2026-08-10 | 6d | 8d |  |  | Ricardo, Everton | 96h |  | Seg 03/08/26 | Seg 10/08/26 | 0207 | INSTRUMENTATION / AUTOMATION |
| 698 | 1.9.32.1 | Emissão Inicial |  | 3d | 2026-08-03 | 2026-08-05 | 543, 548, 693, 703 | 2026-08-03 | 2026-08-05 | 3d | 8d | 0d | finish no earlier than 2026-08-05 | Rodrigo | 24h |  | Seg 03/08/26 | Qua 05/08/26 | 0207 | INSTRUMENTATION / AUTOMATION |
| 699 | 1.9.32.2 | Análise Tecnored |  | 1d | 2026-08-06 | 2026-08-06 | 698 | 2026-08-06 | 2026-08-06 | 1d | 8d | 0d |  | TECNORED | 8h |  | Qui 06/08/26 | Qui 06/08/26 | 0207 | INSTRUMENTATION / AUTOMATION |
| 700 | 1.9.32.3 | Atendimento de comentários |  | 1d | 2026-08-07 | 2026-08-07 | 699 | 2026-08-07 | 2026-08-07 | 1d | 8d | 0d |  | André | 8h |  | Sex 07/08/26 | Sex 07/08/26 | 0207 | INSTRUMENTATION / AUTOMATION |
| 701 | 1.9.32.4 | Aprovação |  | 1d | 2026-08-10 | 2026-08-10 | 700 | 2026-08-10 | 2026-08-10 | 1d | 8d |  |  | TECNORED | 8h |  | Seg 10/08/26 | Seg 10/08/26 | 0207 | INSTRUMENTATION / AUTOMATION |
| 702 | 1.9.33 | **RE-F0009-0207-GE-J00001** |  | 9d | 2026-07-24 | 2026-08-05 |  | 2026-07-24 | 2026-08-05 | 9d | 5d |  |  | Everton, Ricardo | 144h |  | Sex 24/07/26 | Qua 05/08/26 | 0207 | INSTRUMENTATION / AUTOMATION |
| 703 | 1.9.33.1 | Emissão Inicial |  | 6d | 2026-07-24 | 2026-07-31 | 563 | 2026-07-24 | 2026-07-31 | 6d | 5d | 0d | finish no earlier than 2026-07-31 | Rodrigo | 48h |  | Sex 24/07/26 | Sex 31/07/26 | 0207 | INSTRUMENTATION / AUTOMATION |
| 704 | 1.9.33.2 | Análise Tecnored |  | 1d | 2026-08-03 | 2026-08-03 | 703 | 2026-08-03 | 2026-08-03 | 1d | 11d | 0d |  | TECNORED | 8h |  | Seg 03/08/26 | Seg 03/08/26 | 0207 | INSTRUMENTATION / AUTOMATION |
| 705 | 1.9.33.3 | Atendimento de comentários |  | 1d | 2026-08-04 | 2026-08-04 | 704 | 2026-08-04 | 2026-08-04 | 1d | 11d | 0d |  | André | 8h |  | Ter 04/08/26 | Ter 04/08/26 | 0207 | INSTRUMENTATION / AUTOMATION |
| 706 | 1.9.33.4 | Aprovação |  | 1d | 2026-08-05 | 2026-08-05 | 705 | 2026-08-05 | 2026-08-05 | 1d | 11d |  |  | TECNORED | 8h |  | Qua 05/08/26 | Qua 05/08/26 | 0207 | INSTRUMENTATION / AUTOMATION |

| ID | WBS | Task | Type | Duration | Start | Finish | Predecessors | Baseline start | Baseline finish | Baseline duration | Total slack | Free slack | Constraint | Resources | Work | Baseline cost | Início_LB_R0 | Término_LB_R0 | COD_Projeto | Disciplina |
| --- | --- | --- | --- | --- | --- | --- | --- | --- | --- | --- | --- | --- | --- | --- | --- | --- | --- | --- | --- | --- |
| 707 | 1.9.34 | **LL-F0009-0207-GE-J00001** | inactive | 5d | 2026-07-24 | 2026-07-30 |  |  |  |  | 15d |  |  | Everton, Ricardo | 80h | -0 | Sex 24/07/26 | Qui 30/07/26 | 0207 | INSTRUMENTATION / AUTOMATION |
| 708 | 1.9.34.1 | Emissão Inicial | inactive | 2d | 2026-07-24 | 2026-07-27 | 563 |  |  |  | 15d | 0d |  | Rodrigo | 16h | -0 | Sex 24/07/26 | Seg 27/07/26 | 0207 | INSTRUMENTATION / AUTOMATION |
| 709 | 1.9.34.2 | Análise Tecnored | inactive | 1d | 2026-07-28 | 2026-07-28 | 708 |  |  |  | 15d | 0d |  | TECNORED | 8h | -0 | Ter 28/07/26 | Ter 28/07/26 | 0207 | INSTRUMENTATION / AUTOMATION |
| 710 | 1.9.34.3 | Atendimento de comentários | inactive | 1d | 2026-07-29 | 2026-07-29 | 709 |  |  |  | 15d | 0d |  | André | 8h | -0 | Qua 29/07/26 | Qua 29/07/26 | 0207 | INSTRUMENTATION / AUTOMATION |
| 711 | 1.9.34.4 | Aprovação | inactive | 1d | 2026-07-30 | 2026-07-30 | 710 |  |  |  | 15d |  |  | TECNORED | 8h | -0 | Qui 30/07/26 | Qui 30/07/26 | 0207 | INSTRUMENTATION / AUTOMATION |
| 712 | 1.9.35 | **LB-F0009-0207-GE-J00001** |  | 6d | 2026-08-03 | 2026-08-10 |  | 2026-08-03 | 2026-08-10 | 6d | 5d |  |  | Paulo | 96h |  | Seg 03/08/26 | Seg 10/08/26 | 0207 | INSTRUMENTATION / AUTOMATION |
| 713 | 1.9.35.1 | Emissão Inicial |  | 3d | 2026-08-03 | 2026-08-05 | 543, 548, 693, 703 | 2026-08-03 | 2026-08-05 | 3d | 5d | 0d | finish no earlier than 2026-08-05 | Rodrigo | 24h |  | Seg 03/08/26 | Qua 05/08/26 | 0207 | INSTRUMENTATION / AUTOMATION |
| 714 | 1.9.35.2 | Análise Tecnored |  | 1d | 2026-08-06 | 2026-08-06 | 713 | 2026-08-06 | 2026-08-06 | 1d | 8d | 0d |  | TECNORED | 8h |  | Qui 06/08/26 | Qui 06/08/26 | 0207 | INSTRUMENTATION / AUTOMATION |
| 715 | 1.9.35.3 | Atendimento de comentários |  | 1d | 2026-08-07 | 2026-08-07 | 714 | 2026-08-07 | 2026-08-07 | 1d | 8d | 0d |  | André | 8h |  | Sex 07/08/26 | Sex 07/08/26 | 0207 | INSTRUMENTATION / AUTOMATION |
| 716 | 1.9.35.4 | Aprovação |  | 1d | 2026-08-10 | 2026-08-10 | 715 | 2026-08-10 | 2026-08-10 | 1d | 8d |  |  | TECNORED | 8h |  | Seg 10/08/26 | Seg 10/08/26 | 0207 | INSTRUMENTATION / AUTOMATION |
