# CD - F0009 - 0207 - STOCKHOUSE - 20260724_Comp

Schedule from MS Project, 2026-07-13 to 2026-09-16.

## Calendars

- Padrão: Mon-Fri 09:00-12:00, 13:00-18:00; Sat-Sun off.

## Resources

| Resource |
| --- |
| Nomes dos recursos |
| Rodrigo |
| TECNORED |
| André |
| Ailton |
| Felipe, André |
| Carlos |
| Everton, Ricardo |
| Lazaro |
| João |
| Tarcizio |
| Felipe |
| André, Felipe |
| Calebe |
| Levy |
| Paulo |
| Marcio |
| Ricardo, Everton |

## Schedule

| ID | Task | Type | Duration | Start | Finish | Predecessors | Total slack | Free slack | Constraint | Resources | Work |
| --- | --- | --- | --- | --- | --- | --- | --- | --- | --- | --- | --- |
| 1 | Nome | manual | 1d | 2026-07-24 | 2026-07-24 |  |  |  |  | Nomes dos recursos | 8h |
| 2 | F0009 - 0207 - STOCKHOUSE |  | 32d | 2026-07-13 | 2026-08-25 |  | 2d |  | finish no earlier than 2026-08-25 |  |  |
| 3 | PLANNING |  | 11d | 2026-07-13 | 2026-07-27 |  | 23d |  | finish no earlier than 2026-07-27 |  |  |
| 4 | LD-F0009-0207-MB-G-00001 |  | 5.85d | 2026-07-13 | 2026-07-20 |  | 26.15d | 0d | finish no earlier than 2026-07-20 | Rodrigo | 46.8h |
| 5 | Emissão Inicial |  | 1.85d | 2026-07-13 | 2026-07-14 |  | 30.15d | 1d | finish no earlier than 2026-07-14 | Rodrigo | 14.8h |
| 6 | Análise Tecnored |  | 1d | 2026-07-20 | 2026-07-21 | 4 | 26.15d | 0d | finish no earlier than 2026-07-15 | TECNORED | 8h |
| 7 | Atendimento de comentários |  | 2d | 2026-07-15 | 2026-07-17 | 5 | 29.15d |  | finish no earlier than 2026-07-17 | André | 16h |
| 8 | Aprovação |  | 1d | 2026-07-21 | 2026-07-22 | 6 | 26.15d |  | finish no earlier than 2026-07-20 | TECNORED | 8h |
| 9 | CR-F0009-0207-MB-G-00001 |  | 9d | 2026-07-15 | 2026-07-27 |  | 21d | 0d | finish no earlier than 2026-07-27 | André | 72h |
| 10 | Emissão Inicial |  | 5d | 2026-07-15 | 2026-07-21 |  | 25d | 1d | finish no earlier than 2026-07-21 | Rodrigo | 40h |
| 11 | Análise Tecnored |  | 1d | 2026-07-28 | 2026-07-28 | 9 | 21d | 0d | finish no earlier than 2026-07-22 | TECNORED | 8h |
| 12 | Atendimento de comentários |  | 2d | 2026-07-23 | 2026-07-24 | 10 | 24d |  | finish no earlier than 2026-07-24 | André | 16h |
| 13 | Aprovação |  | 1d | 2026-07-29 | 2026-07-29 | 11 | 21d |  | finish no earlier than 2026-07-27 | TECNORED | 8h |
| 14 | COORDINATION |  | 26d | 2026-07-15 | 2026-08-19 |  | 6d |  | finish no earlier than 2026-08-19 |  |  |
| 15 | CM-F0009-0000-MB-G-00001 |  | 7d | 2026-07-15 | 2026-07-23 |  | 23d | 0d | finish no earlier than 2026-07-23 | André | 56h |
| 16 | Emissão Inicial |  | 3d | 2026-07-15 | 2026-07-17 |  | 27d | 1d | finish no earlier than 2026-07-17 | Rodrigo | 24h |
| 17 | Análise Tecnored |  | 1d | 2026-07-24 | 2026-07-24 | 15 | 23d | 0d | finish no earlier than 2026-07-20 | TECNORED | 8h |
| 18 | Atendimento de comentários |  | 2d | 2026-07-21 | 2026-07-22 | 16 | 26d |  | finish no earlier than 2026-07-22 | André | 16h |
| 19 | Aprovação |  | 1d | 2026-07-27 | 2026-07-27 | 17 | 23d |  | finish no earlier than 2026-07-23 | TECNORED | 8h |
| 20 | PP-F0009-0000-MB-G-00001 |  | 9d | 2026-07-15 | 2026-07-27 |  | 4d | 0d | finish no earlier than 2026-07-27 | Ailton | 72h |
| 21 | Emissão Inicial |  | 5d | 2026-07-15 | 2026-07-21 |  | 25d | 1d | finish no earlier than 2026-07-21 | Rodrigo | 40h |
| 22 | Análise Tecnored |  | 1d | 2026-07-28 | 2026-07-28 | 20 | 16d | 0d | finish no earlier than 2026-07-22 | TECNORED | 8h |
| 23 | Atendimento de comentários |  | 2d | 2026-07-23 | 2026-07-24 | 21 | 24d |  | finish no earlier than 2026-07-24 | André | 16h |
| 24 | Aprovação |  | 1d | 2026-07-29 | 2026-07-29 | 22 | 16d | 0d | finish no earlier than 2026-07-27 | TECNORED | 8h |
| 25 | TAP | manual | 1.1d | 2026-07-16 | 2026-07-16 |  |  |  |  |  |  |
| 26 | OP-F0009-0000-MB-G-00001 |  | 7d | 2026-07-16 | 2026-07-27 |  | 21.15d | 0d | finish no earlier than 2026-07-27 | Felipe, André | 56h |
| 27 | Emissão Inicial |  | 3d | 2026-07-30 | 2026-08-03 | 24 | 16d | 0d | finish no earlier than 2026-07-21 | Rodrigo | 24h |
| 28 | Análise Tecnored |  | 1d | 2026-07-27 | 2026-07-28 | 26 | 21.15d | 0d | finish no earlier than 2026-07-22 | TECNORED | 8h |
| 29 | Atendimento de comentários |  | 2d | 2026-08-04 | 2026-08-05 | 27 | 16d |  | finish no earlier than 2026-07-24 | André | 16h |
| 30 | Aprovação |  | 1d | 2026-07-28 | 2026-07-29 | 28 | 21.15d |  | finish no earlier than 2026-07-27 | TECNORED | 8h |
| 31 | MM-F0009-0000-MB-G-00001 |  | 9d | 2026-07-15 | 2026-07-27 |  | 21d | 0d | finish no earlier than 2026-07-27 | Felipe, André | 72h |
| 32 | Emissão Inicial |  | 5d | 2026-07-15 | 2026-07-21 |  | 25d | 1d | finish no earlier than 2026-07-21 | Rodrigo | 40h |
| 33 | Análise Tecnored |  | 1d | 2026-07-28 | 2026-07-28 | 31 | 21d | 0d | finish no earlier than 2026-07-22 | TECNORED | 8h |
| 34 | Atendimento de comentários |  | 2d | 2026-07-23 | 2026-07-24 | 32 | 24d |  | finish no earlier than 2026-07-24 | André | 16h |
| 35 | Aprovação |  | 1d | 2026-07-29 | 2026-07-29 | 33 | 21d |  | finish no earlier than 2026-07-27 | TECNORED | 8h |
| 36 | MF-F0009-0000-MB-G-00001 |  | 7d | 2026-08-10 | 2026-08-18 |  | 5d | 0d | finish no earlier than 2026-08-18 | Carlos | 56h |
| 37 | Emissão Inicial |  | 3d | 2026-08-12 | 2026-08-14 | 183, 365, 421, 482 | 7d | 0d | finish no earlier than 2026-08-12 | Rodrigo | 24h |
| 38 | Análise Tecnored |  | 1d | 2026-08-19 | 2026-08-19 | 36 | 5d | 0d | finish no earlier than 2026-08-13 | TECNORED | 8h |
| 39 | Atendimento de comentários |  | 2d | 2026-08-17 | 2026-08-18 | 37 | 7d |  | finish no earlier than 2026-08-17 | André | 16h |
| 40 | Aprovação |  | 1d | 2026-08-20 | 2026-08-20 | 38 | 5d |  | finish no earlier than 2026-08-18 | TECNORED | 8h |
| 41 | EA-F0009-0000-MB-G-00001 |  | 9d | 2026-07-15 | 2026-07-27 |  | 21d | 0d | finish no earlier than 2026-07-27 | Rodrigo | 72h |
| 42 | Emissão Inicial |  | 5d | 2026-07-15 | 2026-07-21 |  | 25d | 1d | finish no earlier than 2026-07-21 | Rodrigo | 40h |
| 43 | Análise Tecnored |  | 1d | 2026-07-28 | 2026-07-28 | 41 | 21d | 0d | finish no earlier than 2026-07-22 | TECNORED | 8h |
| 44 | Atendimento de comentários |  | 2d | 2026-07-23 | 2026-07-24 | 42 | 24d |  | finish no earlier than 2026-07-24 | André | 16h |
| 45 | Aprovação |  | 1d | 2026-07-29 | 2026-07-29 | 43 | 21d |  | finish no earlier than 2026-07-27 | TECNORED | 8h |
| 46 | RM-F0009-0000-GE-G-00001 |  | 7d | 2026-08-11 | 2026-08-19 |  | 4d | 0d | finish no earlier than 2026-08-19 | Everton, Ricardo | 56h |
| 47 | Emissão Inicial |  | 3d | 2026-08-17 | 2026-08-19 | 20FS+20ed | 4d | 0d | finish no earlier than 2026-08-13 | Rodrigo | 24h |
| 48 | Análise Tecnored |  | 1d | 2026-08-20 | 2026-08-20 | 46 | 4d | 0d | finish no earlier than 2026-08-14 | TECNORED | 8h |
| 49 | Atendimento de comentários |  | 2d | 2026-08-20 | 2026-08-21 | 47 | 4d |  | finish no earlier than 2026-08-18 | André | 16h |
| 50 | Aprovação |  | 1d | 2026-08-21 | 2026-08-21 | 48 | 4d |  | finish no earlier than 2026-08-19 | TECNORED | 8h |
| 51 | RM-F0009-0000-GE-G-00002 | inactive | 7d | 2026-07-15 | 2026-07-23 |  | 23d | 0d | finish no earlier than 2026-07-23 | Everton, Ricardo | 56h |
| 52 | Emissão Inicial | inactive | 3d | 2026-07-15 | 2026-07-17 |  | 27d | 1d | finish no earlier than 2026-07-17 | Rodrigo | 24h |
| 53 | Análise Tecnored | inactive | 1d | 2026-07-24 | 2026-07-24 | 51 | 23d | 0d | finish no earlier than 2026-07-20 | TECNORED | 8h |
| 54 | Atendimento de comentários | inactive | 2d | 2026-07-21 | 2026-07-22 | 52 | 26d |  | finish no earlier than 2026-07-22 | André | 16h |
| 55 | Aprovação | inactive | 1d | 2026-07-27 | 2026-07-27 | 53 | 23d |  | finish no earlier than 2026-07-23 | TECNORED | 8h |
| 56 | RL-F0009-0000-GE-G-00001 |  | 7d | 2026-07-15 | 2026-07-23 |  | 23d | 0d | finish no earlier than 2026-07-23 | Everton, Ricardo | 56h |
| 57 | Emissão Inicial |  | 3d | 2026-07-15 | 2026-07-17 |  | 27d | 1d | finish no earlier than 2026-07-17 | Rodrigo | 24h |
| 58 | Análise Tecnored |  | 1d | 2026-07-24 | 2026-07-24 | 56 | 23d | 0d | finish no earlier than 2026-07-20 | TECNORED | 8h |
| 59 | Atendimento de comentários |  | 2d | 2026-07-21 | 2026-07-22 | 57 | 26d |  | finish no earlier than 2026-07-22 | André | 16h |
| 60 | Aprovação |  | 1d | 2026-07-27 | 2026-07-27 | 58 | 23d |  | finish no earlier than 2026-07-23 | TECNORED | 8h |
| 61 | LP-F0009-0207-MB-G-00001 |  | 7d | 2026-07-15 | 2026-07-23 |  | 23d | 0d | finish no earlier than 2026-07-23 | Lazaro | 56h |
| 62 | Emissão Inicial |  | 3d | 2026-07-15 | 2026-07-17 |  | 27d | 1d | finish no earlier than 2026-07-17 | Rodrigo | 24h |
| 63 | Análise Tecnored |  | 1d | 2026-07-24 | 2026-07-24 | 61 | 23d | 0d | finish no earlier than 2026-07-20 | TECNORED | 8h |
| 64 | Atendimento de comentários |  | 2d | 2026-07-21 | 2026-07-22 | 62 | 26d |  | finish no earlier than 2026-07-22 | André | 16h |
| 65 | Aprovação |  | 1d | 2026-07-27 | 2026-07-27 | 63 | 23d |  | finish no earlier than 2026-07-23 | TECNORED | 8h |
| 66 | PROCESS |  | 9.85d | 2026-07-13 | 2026-07-24 |  | 24.15d |  | finish no earlier than 2026-07-24 |  |  |
| 67 | CA-F0009-0207-MB-G-00001 | inactive | 7d | 2026-07-20 | 2026-07-28 |  | 20d | 0d | finish no earlier than 2026-07-28 | André | 56h |
| 68 | Emissão Inicial | inactive | 3d | 2026-07-24 | 2026-07-28 | 77, 92 | 20d | 0d | finish no earlier than 2026-07-22 | Rodrigo | 24h |
| 69 | Análise Tecnored | inactive | 1d | 2026-07-29 | 2026-07-29 | 67 | 20d | 0d | finish no earlier than 2026-07-23 | TECNORED | 8h |
| 70 | Atendimento de comentários | inactive | 2d | 2026-07-29 | 2026-07-30 | 68 | 20d |  | finish no earlier than 2026-07-27 | André | 16h |

Notes:
- 1: Anotações

| ID | Task | Type | Duration | Start | Finish | Predecessors | Total slack | Free slack | Constraint | Resources | Work |
| --- | --- | --- | --- | --- | --- | --- | --- | --- | --- | --- | --- |
| 71 | Aprovação | inactive | 1d | 2026-07-30 | 2026-07-30 | 69 | 20d |  | finish no earlier than 2026-07-28 | TECNORED | 8h |
| 72 | DB-F0009-0207-MB-P-00001 | inactive | 7d | 2026-07-15 | 2026-07-23 |  | 23d | 0d | finish no earlier than 2026-07-23 | André | 56h |
| 73 | Emissão Inicial | inactive | 3d | 2026-07-15 | 2026-07-17 |  | 27d | 1d | finish no earlier than 2026-07-17 | Rodrigo | 24h |
| 74 | Análise Tecnored | inactive | 1d | 2026-07-24 | 2026-07-24 | 72 | 23d | 0d | finish no earlier than 2026-07-20 | TECNORED | 8h |
| 75 | Atendimento de comentários | inactive | 2d | 2026-07-21 | 2026-07-22 | 73 | 26d |  | finish no earlier than 2026-07-22 | André | 16h |
| 76 | Aprovação | inactive | 1d | 2026-07-27 | 2026-07-27 | 74 | 23d |  | finish no earlier than 2026-07-23 | TECNORED | 8h |
| 77 | FG-F0009-0207-MB-P-00001 |  | 6.85d | 2026-07-13 | 2026-07-21 |  | 17.15d | 0d | finish no earlier than 2026-07-21 | João | 54.8h |
| 78 | Emissão Inicial |  | 4d | 2026-07-15 | 2026-07-20 |  | 26d | 0d | finish no earlier than 2026-07-20 | Rodrigo | 32h |
| 79 | Análise Tecnored |  | 1d | 2026-07-21 | 2026-07-22 | 77 | 25.15d | 0d | finish no earlier than 2026-07-16 | TECNORED | 8h |
| 80 | Atendimento de comentários |  | 2d | 2026-07-21 | 2026-07-22 | 78 | 26d |  | finish no earlier than 2026-07-20 | André | 16h |
| 81 | Aprovação |  | 1d | 2026-07-22 | 2026-07-23 | 79 | 25.15d |  | finish no earlier than 2026-07-21 | TECNORED | 8h |
| 82 | MD-F0009-0207-MB-P-00001 | inactive | 7d | 2026-07-20 | 2026-07-29 |  | 19.15d | 0d | finish no earlier than 2026-07-29 | Carlos | 56h |
| 83 | Emissão Inicial | inactive | 3d | 2026-07-24 | 2026-07-29 | 87 | 19.15d | 0d | finish no earlier than 2026-07-23 | Rodrigo | 24h |
| 84 | Análise Tecnored | inactive | 1d | 2026-07-29 | 2026-07-30 | 82 | 19.15d | 0d | finish no earlier than 2026-07-24 | TECNORED | 8h |
| 85 | Atendimento de comentários | inactive | 2d | 2026-07-29 | 2026-07-31 | 83 | 19.15d |  | finish no earlier than 2026-07-28 | André | 16h |
| 86 | Aprovação | inactive | 1d | 2026-07-30 | 2026-07-31 | 84 | 19.15d |  | finish no earlier than 2026-07-29 | TECNORED | 8h |
| 87 | MC-F0009-0207-MB-P-00001 |  | 7d | 2026-07-15 | 2026-07-24 |  | 22.15d | 0d | finish no earlier than 2026-07-24 | João | 56h |
| 88 | Emissão Inicial |  | 4d | 2026-07-21 | 2026-07-27 | 77 | 21.15d | 0d | finish no earlier than 2026-07-22 | Rodrigo | 32h |
| 89 | Análise Tecnored |  | 1d | 2026-07-24 | 2026-07-27 | 87 | 22.15d | 0d | finish no earlier than 2026-07-21 | TECNORED | 8h |
| 90 | Atendimento de comentários |  | 2d | 2026-07-27 | 2026-07-29 | 88 | 21.15d |  | finish no earlier than 2026-07-23 | André | 16h |
| 91 | Aprovação |  | 1d | 2026-07-27 | 2026-07-28 | 89 | 22.15d |  | finish no earlier than 2026-07-24 | TECNORED | 8h |
| 92 | ET-F0009-0207-MB-P-00001 |  | 7d | 2026-07-15 | 2026-07-23 |  | 23d | 0d | finish no earlier than 2026-07-23 | Rodrigo | 56h |
| 93 | Emissão Inicial |  | 3d | 2026-07-15 | 2026-07-17 |  | 27d | 1d | finish no earlier than 2026-07-17 | Rodrigo | 24h |
| 94 | Análise Tecnored |  | 1d | 2026-07-24 | 2026-07-24 | 92 | 23d | 0d | finish no earlier than 2026-07-20 | TECNORED | 8h |
| 95 | Atendimento de comentários |  | 2d | 2026-07-21 | 2026-07-22 | 93 | 26d |  | finish no earlier than 2026-07-22 | André | 16h |
| 96 | Aprovação |  | 1d | 2026-07-27 | 2026-07-27 | 94 | 23d |  | finish no earlier than 2026-07-23 | TECNORED | 8h |
| 97 | MECHANICAL |  | 30d | 2026-07-15 | 2026-08-25 |  | 2d |  | finish no earlier than 2026-08-25 |  |  |
| 98 | LE-F0009-0207-MB-M-00001 |  | 6d | 2026-07-15 | 2026-07-22 |  | 23d | 0d | finish no earlier than 2026-07-22 | Tarcizio | 48h |
| 99 | Emissão Inicial |  | 9d | 2026-07-21 | 2026-08-03 | 77 | 17.15d | 0d | finish no earlier than 2026-07-31 | Rodrigo | 72h |
| 100 | Análise Tecnored |  | 1d | 2026-07-23 | 2026-07-23 | 98 | 24d | 0d | finish no earlier than 2026-07-20 | TECNORED | 8h |
| 101 | Atendimento de comentários |  | 1d | 2026-08-03 | 2026-08-04 | 99 | 17.15d |  | finish no earlier than 2026-07-21 | André | 8h |
| 102 | Aprovação |  | 1d | 2026-07-24 | 2026-07-24 | 100 | 24d |  | finish no earlier than 2026-07-22 | TECNORED | 8h |
| 103 | MD-F0009-0207-MB-M-00001 | inactive | 6d | 2026-07-15 | 2026-07-22 |  | 24d | 0d | finish no earlier than 2026-07-22 | Carlos | 48h |
| 104 | Emissão Inicial | inactive | 3d | 2026-07-15 | 2026-07-17 |  | 28d | 1d | finish no earlier than 2026-07-17 | Rodrigo | 24h |
| 105 | Análise Tecnored | inactive | 1d | 2026-07-23 | 2026-07-23 | 103 | 24d | 0d | finish no earlier than 2026-07-20 | TECNORED | 8h |
| 106 | Atendimento de comentários | inactive | 1d | 2026-07-21 | 2026-07-21 | 104 | 27d |  | finish no earlier than 2026-07-21 | André | 8h |
| 107 | Aprovação | inactive | 1d | 2026-07-24 | 2026-07-24 | 105 | 24d |  | finish no earlier than 2026-07-22 | TECNORED | 8h |
| 108 | MC-F0009-0207-MB-M-00001 |  | 6d | 2026-07-15 | 2026-07-22 |  | 23d | 0d | finish no earlier than 2026-07-22 | Tarcizio | 48h |
| 109 | Emissão Inicial |  | 9d | 2026-07-21 | 2026-08-03 | 77 | 17.15d | 0d | finish no earlier than 2026-07-31 | Rodrigo | 72h |
| 110 | Análise Tecnored |  | 1d | 2026-07-23 | 2026-07-23 | 108 | 24d | 0d | finish no earlier than 2026-07-20 | TECNORED | 8h |
| 111 | Atendimento de comentários |  | 1d | 2026-08-03 | 2026-08-04 | 109 | 17.15d |  | finish no earlier than 2026-07-21 | André | 8h |
| 112 | Aprovação |  | 1d | 2026-07-24 | 2026-07-24 | 110 | 24d |  | finish no earlier than 2026-07-22 | TECNORED | 8h |
| 113 | PQ-F0009-0207-MB-M-00001 |  | 6d | 2026-07-15 | 2026-07-22 |  | 24d | 0d | finish no earlier than 2026-07-22 | Tarcizio | 48h |
| 114 | Emissão Inicial |  | 1d | 2026-08-07 | 2026-08-07 |  | 13d | 0d | finish no earlier than 2026-08-07 | Rodrigo | 8h |
| 115 | Análise Tecnored |  | 1d | 2026-07-23 | 2026-07-23 | 113 | 24d | 0d | finish no earlier than 2026-07-20 | TECNORED | 8h |
| 116 | Atendimento de comentários |  | 1d | 2026-08-10 | 2026-08-10 | 114 | 13d |  | finish no earlier than 2026-07-21 | André | 8h |
| 117 | Aprovação |  | 1d | 2026-07-24 | 2026-07-24 | 115 | 24d |  | finish no earlier than 2026-07-22 | TECNORED | 8h |
| 118 | AG-F0009-0207-MB-M-00000 |  | 5d | 2026-08-05 | 2026-08-11 |  | 10d | 0d | finish no earlier than 2026-08-11 | Ailton | 40h |
| 119 | Emissão Inicial |  | 2d | 2026-08-06 | 2026-08-07 | 183 | 13d | 0d | finish no earlier than 2026-08-06 | Rodrigo | 16h |
| 120 | Análise Tecnored |  | 1d | 2026-08-12 | 2026-08-12 | 118 | 10d | 0d | finish no earlier than 2026-08-07 | TECNORED | 8h |
| 121 | Atendimento de comentários |  | 1d | 2026-08-10 | 2026-08-10 | 119 | 13d |  | finish no earlier than 2026-08-10 | André | 8h |
| 122 | Aprovação |  | 1d | 2026-08-13 | 2026-08-13 | 120 | 10d |  | finish no earlier than 2026-08-11 | TECNORED | 8h |
| 123 | AG-F0009-0207-MB-M-00001 |  | 5d | 2026-08-05 | 2026-08-11 |  | 7d | 0d | finish no earlier than 2026-08-11 | Felipe | 40h |
| 124 | Emissão Inicial |  | 2d | 2026-08-24 | 2026-08-25 | 188, 263, 143, 193, 203, 213, 223, 233, 268, 273, 278, 283 | 1d | 0d | finish no earlier than 2026-07-30 | Rodrigo | 16h |
| 125 | Análise Tecnored |  | 1d | 2026-08-12 | 2026-08-12 | 123 | 10d | 0d | finish no earlier than 2026-08-07 | TECNORED | 8h |
| 126 | Atendimento de comentários |  | 1d | 2026-08-26 | 2026-08-26 | 124 | 1d |  | finish no earlier than 2026-08-10 | André | 8h |
| 127 | Aprovação |  | 1d | 2026-08-13 | 2026-08-13 | 125 | 10d |  | finish no earlier than 2026-08-11 | TECNORED | 8h |
| 128 | AG-F0009-0207-MB-M-00002 |  | 5d | 2026-08-07 | 2026-08-13 |  | 5d | 0d | finish no earlier than 2026-08-13 | Felipe | 40h |
| 129 | Emissão Inicial |  | 2d | 2026-08-24 | 2026-08-25 | 188, 263, 143, 193, 203, 213, 223, 233, 268, 273, 278, 283 | 1d | 0d | finish no earlier than 2026-07-30 | Rodrigo | 16h |
| 130 | Análise Tecnored |  | 1d | 2026-08-14 | 2026-08-14 | 128 | 8d | 0d | finish no earlier than 2026-08-11 | TECNORED | 8h |
| 131 | Atendimento de comentários |  | 1d | 2026-08-26 | 2026-08-26 | 129 | 1d |  | finish no earlier than 2026-08-12 | André | 8h |
| 132 | Aprovação |  | 1d | 2026-08-17 | 2026-08-17 | 130 | 8d |  | finish no earlier than 2026-08-13 | TECNORED | 8h |
| 133 | AG-F0009-0207-MB-M-00003 |  | 5d | 2026-08-07 | 2026-08-13 |  | 8d | 0d | finish no earlier than 2026-08-13 | Felipe | 40h |
| 134 | Emissão Inicial |  | 2d | 2026-08-12 | 2026-08-13 | 123 | 9d | 0d | finish no earlier than 2026-08-10 | Rodrigo | 16h |
| 135 | Análise Tecnored |  | 1d | 2026-08-14 | 2026-08-14 | 133 | 8d | 0d | finish no earlier than 2026-08-11 | TECNORED | 8h |
| 136 | Atendimento de comentários |  | 1d | 2026-08-14 | 2026-08-14 | 134 | 9d |  | finish no earlier than 2026-08-12 | André | 8h |
| 137 | Aprovação |  | 1d | 2026-08-17 | 2026-08-17 | 135 | 8d |  | finish no earlier than 2026-08-13 | TECNORED | 8h |
| 138 | AG-F0009-0207-MB-M-00004 |  | 5d | 2026-08-11 | 2026-08-17 |  | 6d | 0d | finish no earlier than 2026-08-17 | Felipe | 40h |
| 139 | Emissão Inicial |  | 2d | 2026-08-14 | 2026-08-17 | 128 | 7d | 0d | finish no earlier than 2026-08-12 | Rodrigo | 16h |
| 140 | Análise Tecnored |  | 1d | 2026-08-18 | 2026-08-18 | 138 | 6d | 0d | finish no earlier than 2026-08-13 | TECNORED | 8h |

| ID | Task | Type | Duration | Start | Finish | Predecessors | Total slack | Free slack | Constraint | Resources | Work |
| --- | --- | --- | --- | --- | --- | --- | --- | --- | --- | --- | --- |
| 141 | Atendimento de comentários |  | 1d | 2026-08-18 | 2026-08-18 | 139 | 7d |  | finish no earlier than 2026-08-14 | André | 8h |
| 142 | Aprovação |  | 1d | 2026-08-19 | 2026-08-19 | 140 | 6d |  | finish no earlier than 2026-08-17 | TECNORED | 8h |
| 143 | ML-F0009-0207-MB-M-00000 |  | 6d | 2026-07-15 | 2026-07-22 |  | 22d | 0d | finish no earlier than 2026-07-22 | Felipe, André | 48h |
| 144 | Emissão Inicial |  | 3d | 2026-08-18 | 2026-08-20 | 188, 263 | 4d | 0d | finish no earlier than 2026-07-28 | Rodrigo | 24h |
| 145 | Análise Tecnored |  | 1d | 2026-07-23 | 2026-07-23 | 143 | 24d | 0d | finish no earlier than 2026-07-20 | TECNORED | 8h |
| 146 | Atendimento de comentários |  | 1d | 2026-08-21 | 2026-08-21 | 144 | 4d |  | finish no earlier than 2026-07-21 | André | 8h |
| 147 | Aprovação |  | 1d | 2026-07-24 | 2026-07-24 | 145 | 24d |  | finish no earlier than 2026-07-22 | TECNORED | 8h |
| 148 | ML-F0009-0207-MB-M-00001 |  | 6d | 2026-07-15 | 2026-07-22 |  | 22d | 0d | finish no earlier than 2026-07-22 | Felipe, André | 48h |
| 149 | Emissão Inicial |  | 3d | 2026-07-15 | 2026-07-17 | 143SS | 28d | 1d | finish no earlier than 2026-07-17 | Rodrigo | 24h |
| 150 | Análise Tecnored |  | 1d | 2026-07-23 | 2026-07-23 | 148 | 24d | 0d | finish no earlier than 2026-07-20 | TECNORED | 8h |
| 151 | Atendimento de comentários |  | 1d | 2026-07-21 | 2026-07-21 | 149 | 27d |  | finish no earlier than 2026-07-21 | André | 8h |
| 152 | Aprovação |  | 1d | 2026-07-24 | 2026-07-24 | 150 | 24d |  | finish no earlier than 2026-07-22 | TECNORED | 8h |
| 153 | ML-F0009-0207-MB-M-00002 |  | 6d | 2026-07-20 | 2026-07-27 |  | 19d | 0d | finish no earlier than 2026-07-27 | Felipe, André | 48h |
| 154 | Emissão Inicial |  | 3d | 2026-07-23 | 2026-07-27 | 143 | 22d | 0d | finish no earlier than 2026-07-22 | Rodrigo | 24h |
| 155 | Análise Tecnored |  | 1d | 2026-07-28 | 2026-07-28 | 153 | 21d | 0d | finish no earlier than 2026-07-23 | TECNORED | 8h |
| 156 | Atendimento de comentários |  | 1d | 2026-07-28 | 2026-07-28 | 154 | 22d |  | finish no earlier than 2026-07-24 | André | 8h |
| 157 | Aprovação |  | 1d | 2026-07-29 | 2026-07-29 | 155 | 21d |  | finish no earlier than 2026-07-27 | TECNORED | 8h |
| 158 | ML-F0009-0207-MB-M-00003 |  | 6d | 2026-07-20 | 2026-07-27 |  | 19d | 0d | finish no earlier than 2026-07-27 | Felipe, André | 48h |
| 159 | Emissão Inicial |  | 3d | 2026-07-23 | 2026-07-27 | 148 | 22d | 0d | finish no earlier than 2026-07-22 | Rodrigo | 24h |
| 160 | Análise Tecnored |  | 1d | 2026-07-28 | 2026-07-28 | 158 | 21d | 0d | finish no earlier than 2026-07-23 | TECNORED | 8h |
| 161 | Atendimento de comentários |  | 1d | 2026-07-28 | 2026-07-28 | 159 | 22d |  | finish no earlier than 2026-07-24 | André | 8h |
| 162 | Aprovação |  | 1d | 2026-07-29 | 2026-07-29 | 160 | 21d |  | finish no earlier than 2026-07-27 | TECNORED | 8h |
| 163 | ML-F0009-0207-MB-M-00004 |  | 6d | 2026-07-23 | 2026-07-30 |  | 16d | 0d | finish no earlier than 2026-07-30 | Felipe, André | 48h |
| 164 | Emissão Inicial |  | 3d | 2026-07-28 | 2026-07-30 | 153 | 19d | 0d | finish no earlier than 2026-07-27 | Rodrigo | 24h |
| 165 | Análise Tecnored |  | 1d | 2026-07-31 | 2026-07-31 | 163 | 18d | 0d | finish no earlier than 2026-07-28 | TECNORED | 8h |
| 166 | Atendimento de comentários |  | 1d | 2026-07-31 | 2026-07-31 | 164 | 19d |  | finish no earlier than 2026-07-29 | André | 8h |
| 167 | Aprovação |  | 1d | 2026-08-03 | 2026-08-03 | 165 | 18d |  | finish no earlier than 2026-07-30 | TECNORED | 8h |
| 168 | ML-F0009-0207-MB-M-00005 |  | 6d | 2026-07-23 | 2026-07-30 |  | 16d | 0d | finish no earlier than 2026-07-30 | Felipe, André | 48h |
| 169 | Emissão Inicial |  | 3d | 2026-07-28 | 2026-07-30 | 158 | 19d | 0d | finish no earlier than 2026-07-27 | Rodrigo | 24h |
| 170 | Análise Tecnored |  | 1d | 2026-07-31 | 2026-07-31 | 168 | 18d | 0d | finish no earlier than 2026-07-28 | TECNORED | 8h |
| 171 | Atendimento de comentários |  | 1d | 2026-07-31 | 2026-07-31 | 169 | 19d |  | finish no earlier than 2026-07-29 | André | 8h |
| 172 | Aprovação |  | 1d | 2026-08-03 | 2026-08-03 | 170 | 18d |  | finish no earlier than 2026-07-30 | TECNORED | 8h |
| 173 | ML-F0009-0207-MB-M-00006 |  | 6d | 2026-07-28 | 2026-08-04 |  | 14d | 0d | finish no earlier than 2026-08-04 | Felipe, André | 48h |
| 174 | Emissão Inicial |  | 3d | 2026-07-31 | 2026-08-04 | 163 | 16d | 0d | finish no earlier than 2026-07-30 | Rodrigo | 24h |
| 175 | Análise Tecnored |  | 1d | 2026-08-05 | 2026-08-05 | 173 | 15d | 0d | finish no earlier than 2026-07-31 | TECNORED | 8h |
| 176 | Atendimento de comentários |  | 1d | 2026-08-05 | 2026-08-05 | 174 | 16d |  | finish no earlier than 2026-08-03 | André | 8h |
| 177 | Aprovação |  | 1d | 2026-08-06 | 2026-08-06 | 175 | 15d |  | finish no earlier than 2026-08-04 | TECNORED | 8h |
| 178 | ML-F0009-0207-MB-M-00007 |  | 6d | 2026-07-28 | 2026-08-04 |  | 15d | 0d | finish no earlier than 2026-08-04 | Felipe, André | 48h |
| 179 | Emissão Inicial |  | 3d | 2026-07-31 | 2026-08-04 | 168 | 16d | 0d | finish no earlier than 2026-07-30 | Rodrigo | 24h |
| 180 | Análise Tecnored |  | 1d | 2026-08-05 | 2026-08-05 | 178 | 15d | 0d | finish no earlier than 2026-07-31 | TECNORED | 8h |
| 181 | Atendimento de comentários |  | 1d | 2026-08-05 | 2026-08-05 | 179 | 16d |  | finish no earlier than 2026-08-03 | André | 8h |
| 182 | Aprovação |  | 1d | 2026-08-06 | 2026-08-06 | 180 | 15d |  | finish no earlier than 2026-08-04 | TECNORED | 8h |
| 183 | ML-F0009-0207-MB-M-00008 |  | 4d | 2026-07-31 | 2026-08-05 |  | 11d | 0d | finish no earlier than 2026-08-05 | Felipe, André | 32h |
| 184 | Emissão Inicial |  | 3d | 2026-08-05 | 2026-08-07 | 173 | 14d |  | finish no earlier than 2026-08-04 | Rodrigo | 24h |
| 185 | Análise Tecnored |  | 1d | 2026-08-06 | 2026-08-06 | 183 | 14d | 0d | finish no earlier than 2026-08-05 | TECNORED | 8h |
| 186 | Atendimento de comentários |  | 1d | 2026-07-31 | 2026-07-31 | 303 | 19d |  | finish no earlier than 2026-07-31 | André | 8h |
| 187 | Aprovação |  | 1d | 2026-08-07 | 2026-08-07 | 185 | 14d |  | finish no earlier than 2026-08-03 | TECNORED | 8h |
| 188 | AG-F0009-0207-MB-M-00005 |  | 5d | 2026-08-11 | 2026-08-17 |  | 4d | 0d | finish no earlier than 2026-08-17 | André, Felipe | 40h |
| 189 | Emissão Inicial |  | 3d | 2026-07-21 | 2026-07-24 | 77 | 23.15d | 14.15d | finish no earlier than 2026-07-23 | Rodrigo | 24h |
| 190 | Análise Tecnored |  | 1d | 2026-08-18 | 2026-08-18 | 188 | 6d | 0d | finish no earlier than 2026-08-13 | TECNORED | 8h |
| 191 | Atendimento de comentários |  | 1d | 2026-08-14 | 2026-08-14 | 189 | 9d |  | finish no earlier than 2026-08-14 | André | 8h |
| 192 | Aprovação |  | 1d | 2026-08-19 | 2026-08-19 | 190 | 6d |  | finish no earlier than 2026-08-17 | TECNORED | 8h |
| 193 | AG-F0009-0207-MB-M-00006 |  | 5d | 2026-08-13 | 2026-08-19 |  | 2d | 0d | finish no earlier than 2026-08-19 | Felipe, André | 40h |
| 194 | Emissão Inicial |  | 3d | 2026-08-18 | 2026-08-20 | 188, 263 | 4d | 0d | finish no earlier than 2026-07-28 | Rodrigo | 24h |
| 195 | Análise Tecnored |  | 1d | 2026-08-20 | 2026-08-20 | 193 | 4d | 0d | finish no earlier than 2026-08-17 | TECNORED | 8h |
| 196 | Atendimento de comentários |  | 1d | 2026-08-21 | 2026-08-21 | 194 | 4d |  | finish no earlier than 2026-08-18 | André | 8h |
| 197 | Aprovação |  | 1d | 2026-08-21 | 2026-08-21 | 195 | 4d |  | finish no earlier than 2026-08-19 | TECNORED | 8h |
| 198 | PL-F0009-0207-MB-M-00001 | inactive | 5d | 2026-08-21 | 2026-08-27 |  | 0d |  | finish no earlier than 2026-08-27 | Ailton | 40h |
| 199 | Emissão Inicial | inactive | 2d | 2026-08-26 | 2026-08-27 | 253 | 0d |  | finish no earlier than 2026-08-24 | Rodrigo | 16h |
| 200 | Análise Tecnored | inactive | 1d | 2026-08-28 | 2026-08-28 | 198 | 0d |  | finish no earlier than 2026-08-25 | TECNORED | 8h |
| 201 | Atendimento de comentários | inactive | 1d | 2026-08-28 | 2026-08-28 | 199 | 0d |  | finish no earlier than 2026-08-26 | André | 8h |
| 202 | Aprovação | inactive | 1d | 2026-08-31 | 2026-08-31 | 200 | 0d |  | finish no earlier than 2026-08-27 | TECNORED | 8h |
| 203 | AG-F0009-0207-MB-M-00007 |  | 5d | 2026-08-13 | 2026-08-19 |  | 2d | 0d | finish no earlier than 2026-08-19 | Felipe, André | 40h |
| 204 | Emissão Inicial |  | 3d | 2026-08-18 | 2026-08-20 | 188, 263 | 4d | 0d | finish no earlier than 2026-07-28 | Rodrigo | 24h |
| 205 | Análise Tecnored |  | 1d | 2026-08-20 | 2026-08-20 | 203 | 4d | 0d | finish no earlier than 2026-08-17 | TECNORED | 8h |
| 206 | Atendimento de comentários |  | 1d | 2026-08-21 | 2026-08-21 | 204 | 4d |  | finish no earlier than 2026-08-18 | André | 8h |
| 207 | Aprovação |  | 1d | 2026-08-21 | 2026-08-21 | 205 | 4d |  | finish no earlier than 2026-08-19 | TECNORED | 8h |
| 208 | PL-F0009-0207-MB-M-00002 | inactive | 5d | 2026-08-21 | 2026-08-27 |  | 0d |  | finish no earlier than 2026-08-27 | Ailton | 40h |
| 209 | Emissão Inicial | inactive | 2d | 2026-08-21 | 2026-08-24 | 198SS | 2d | 1d | finish no earlier than 2026-08-24 | Rodrigo | 16h |
| 210 | Análise Tecnored | inactive | 1d | 2026-08-28 | 2026-08-28 | 208 | 0d |  | finish no earlier than 2026-08-25 | TECNORED | 8h |

| ID | Task | Type | Duration | Start | Finish | Predecessors | Total slack | Free slack | Constraint | Resources | Work |
| --- | --- | --- | --- | --- | --- | --- | --- | --- | --- | --- | --- |
| 211 | Atendimento de comentários | inactive | 1d | 2026-08-26 | 2026-08-26 | 209 | 1d |  | finish no earlier than 2026-08-26 | André | 8h |
| 212 | Aprovação | inactive | 1d | 2026-08-31 | 2026-08-31 | 210 | 0d |  | finish no earlier than 2026-08-27 | TECNORED | 8h |
| 213 | AG-F0009-0207-MB-M-00008 |  | 5d | 2026-08-13 | 2026-08-19 |  | 2d | 0d | finish no earlier than 2026-08-19 | Felipe, André | 40h |
| 214 | Emissão Inicial |  | 3d | 2026-08-18 | 2026-08-20 | 188, 263 | 4d | 0d | finish no earlier than 2026-07-28 | Rodrigo | 24h |
| 215 | Análise Tecnored |  | 1d | 2026-08-20 | 2026-08-20 | 213 | 4d | 0d | finish no earlier than 2026-08-17 | TECNORED | 8h |
| 216 | Atendimento de comentários |  | 1d | 2026-08-21 | 2026-08-21 | 214 | 4d |  | finish no earlier than 2026-08-18 | André | 8h |
| 217 | Aprovação |  | 1d | 2026-08-21 | 2026-08-21 | 215 | 4d |  | finish no earlier than 2026-08-19 | TECNORED | 8h |
| 218 | PL-F0009-0207-MB-M-00003 | inactive | 5d | 2026-08-25 | 2026-08-31 |  | 0d |  | finish no earlier than 2026-08-31 | Ailton | 40h |
| 219 | Emissão Inicial | inactive | 2d | 2026-08-28 | 2026-08-31 | 208 | 0d |  | finish no earlier than 2026-08-26 | Rodrigo | 16h |
| 220 | Análise Tecnored | inactive | 1d | 2026-09-01 | 2026-09-01 | 218 | 0d |  | finish no earlier than 2026-08-27 | TECNORED | 8h |
| 221 | Atendimento de comentários | inactive | 1d | 2026-09-01 | 2026-09-01 | 219 | 0d |  | finish no earlier than 2026-08-28 | André | 8h |
| 222 | Aprovação | inactive | 1d | 2026-09-02 | 2026-09-02 | 220 | 0d |  | finish no earlier than 2026-08-31 | TECNORED | 8h |
| 223 | AG-F0009-0207-MB-M-00009 |  | 5d | 2026-08-17 | 2026-08-21 |  | 0d |  | finish no earlier than 2026-08-21 | Felipe, André | 40h |
| 224 | Emissão Inicial |  | 3d | 2026-08-18 | 2026-08-20 | 188, 263 | 4d | 0d | finish no earlier than 2026-07-28 | Rodrigo | 24h |
| 225 | Análise Tecnored |  | 1d | 2026-08-24 | 2026-08-24 | 223 | 2d | 0d | finish no earlier than 2026-08-19 | TECNORED | 8h |
| 226 | Atendimento de comentários |  | 1d | 2026-08-21 | 2026-08-21 | 224 | 4d |  | finish no earlier than 2026-08-20 | André | 8h |
| 227 | Aprovação |  | 1d | 2026-08-25 | 2026-08-25 | 225 | 2d |  | finish no earlier than 2026-08-21 | TECNORED | 8h |
| 228 | PL-F0009-0207-MB-M-00004 | inactive | 5d | 2026-08-25 | 2026-08-31 |  | 0d |  | finish no earlier than 2026-08-31 | Ailton | 40h |
| 229 | Emissão Inicial | inactive | 2d | 2026-08-28 | 2026-08-31 | 198 | 0d |  | finish no earlier than 2026-08-26 | Rodrigo | 16h |
| 230 | Análise Tecnored | inactive | 1d | 2026-09-01 | 2026-09-01 | 228 | 0d |  | finish no earlier than 2026-08-27 | TECNORED | 8h |
| 231 | Atendimento de comentários | inactive | 1d | 2026-09-01 | 2026-09-01 | 229 | 0d |  | finish no earlier than 2026-08-28 | André | 8h |
| 232 | Aprovação | inactive | 1d | 2026-09-02 | 2026-09-02 | 230 | 0d |  | finish no earlier than 2026-08-31 | TECNORED | 8h |
| 233 | AG-F0009-0207-MB-M-00010 |  | 5d | 2026-08-17 | 2026-08-21 |  | 0d |  | finish no earlier than 2026-08-21 | Felipe, André | 40h |
| 234 | Emissão Inicial |  | 3d | 2026-08-18 | 2026-08-20 | 188, 263 | 4d | 0d | finish no earlier than 2026-07-28 | Rodrigo | 24h |
| 235 | Análise Tecnored |  | 1d | 2026-08-24 | 2026-08-24 | 233 | 2d | 0d | finish no earlier than 2026-08-19 | TECNORED | 8h |
| 236 | Atendimento de comentários |  | 1d | 2026-08-21 | 2026-08-21 | 234 | 4d |  | finish no earlier than 2026-08-20 | André | 8h |
| 237 | Aprovação |  | 1d | 2026-08-25 | 2026-08-25 | 235 | 2d |  | finish no earlier than 2026-08-21 | TECNORED | 8h |
| 238 | PL-F0009-0207-MB-M-00005 | inactive | 5d | 2026-08-25 | 2026-08-31 |  | 0d |  | finish no earlier than 2026-08-31 | Ailton | 40h |
| 239 | Emissão Inicial | inactive | 2d | 2026-08-28 | 2026-08-31 | 208 | 0d |  | finish no earlier than 2026-08-26 | Rodrigo | 16h |
| 240 | Análise Tecnored | inactive | 1d | 2026-09-01 | 2026-09-01 | 238 | 0d |  | finish no earlier than 2026-08-27 | TECNORED | 8h |
| 241 | Atendimento de comentários | inactive | 1d | 2026-09-01 | 2026-09-01 | 239 | 0d |  | finish no earlier than 2026-08-28 | André | 8h |
| 242 | Aprovação | inactive | 1d | 2026-09-02 | 2026-09-02 | 240 | 0d |  | finish no earlier than 2026-08-31 | TECNORED | 8h |
| 243 | AG-F0009-0207-MB-M-00011 |  | 5d | 2026-08-19 | 2026-08-25 |  | 0d |  | finish no earlier than 2026-08-25 | Felipe, André | 40h |
| 244 | Emissão Inicial |  | 2d | 2026-08-24 | 2026-08-25 | 223 | 1d | 0d | finish no earlier than 2026-08-20 | Rodrigo | 16h |
| 245 | Análise Tecnored |  | 1d | 2026-08-26 | 2026-08-26 | 243 | 0d |  | finish no earlier than 2026-08-21 | TECNORED | 8h |
| 246 | Atendimento de comentários |  | 1d | 2026-08-26 | 2026-08-26 | 244 | 1d |  | finish no earlier than 2026-08-24 | André | 8h |
| 247 | Aprovação |  | 1d | 2026-08-27 | 2026-08-27 | 245 | 0d |  | finish no earlier than 2026-08-25 | TECNORED | 8h |
| 248 | PL-F0009-0207-MB-M-00006 | inactive | 5d | 2026-08-27 | 2026-09-02 |  | 0d |  | finish no earlier than 2026-09-02 | Ailton | 40h |
| 249 | Emissão Inicial | inactive | 2d | 2026-09-01 | 2026-09-02 | 218 | 0d |  | finish no earlier than 2026-08-28 | Rodrigo | 16h |
| 250 | Análise Tecnored | inactive | 1d | 2026-09-03 | 2026-09-03 | 248 | 0d |  | finish no earlier than 2026-08-31 | TECNORED | 8h |
| 251 | Atendimento de comentários | inactive | 1d | 2026-09-03 | 2026-09-03 | 249 | 0d |  | finish no earlier than 2026-09-01 | André | 8h |
| 252 | Aprovação | inactive | 1d | 2026-09-04 | 2026-09-04 | 250 | 0d |  | finish no earlier than 2026-09-02 | TECNORED | 8h |
| 253 | AG-F0009-0207-MB-M-00012 |  | 5d | 2026-08-19 | 2026-08-25 |  | 0d |  | finish no earlier than 2026-08-25 | André | 40h |
| 254 | Emissão Inicial |  | 3d | 2026-08-24 | 2026-08-26 | 143, 193, 203, 213, 223, 233, 268, 273, 278, 283 | 0d |  | finish no earlier than 2026-07-31 | Rodrigo | 24h |
| 255 | Análise Tecnored |  | 1d | 2026-08-26 | 2026-08-26 | 253 | 0d |  | finish no earlier than 2026-08-21 | TECNORED | 8h |
| 256 | Atendimento de comentários |  | 1d | 2026-08-27 | 2026-08-27 | 254 | 0d |  | finish no earlier than 2026-08-24 | André | 8h |
| 257 | Aprovação |  | 1d | 2026-08-27 | 2026-08-27 | 255 | 0d |  | finish no earlier than 2026-08-25 | TECNORED | 8h |
| 258 | PL-F0009-0207-MB-M-00007 | inactive | 5d | 2026-08-27 | 2026-09-02 |  | 0d |  | finish no earlier than 2026-09-02 | Ailton | 40h |
| 259 | Emissão Inicial | inactive | 2d | 2026-09-01 | 2026-09-02 | 228 | 0d |  | finish no earlier than 2026-08-28 | Rodrigo | 16h |
| 260 | Análise Tecnored | inactive | 1d | 2026-09-03 | 2026-09-03 | 258 | 0d |  | finish no earlier than 2026-08-31 | TECNORED | 8h |
| 261 | Atendimento de comentários | inactive | 1d | 2026-09-03 | 2026-09-03 | 259 | 0d |  | finish no earlier than 2026-09-01 | André | 8h |
| 262 | Aprovação | inactive | 1d | 2026-09-04 | 2026-09-04 | 260 | 0d |  | finish no earlier than 2026-09-02 | TECNORED | 8h |
| 263 | FD-F0009-0207-MB-M-00001 | inactive | 2.5d | 2026-08-31 | 2026-09-02 |  | -7.5d | 0d | finish no earlier than 2026-09-02 | André, Felipe | 20h |
| 264 | Emissão Inicial | inactive | 3d | 2026-07-21 | 2026-07-24 | 77 | 26.65d |  | finish no earlier than 2026-07-23 | Rodrigo | 24h |
| 265 | Análise Tecnored | inactive | 0.5d | 2026-09-02 | 2026-09-02 | 263 | 0d |  | finish no earlier than 2026-09-01 | TECNORED | 4h |
| 266 | Atendimento de comentários | inactive | 0.5d | 2026-09-01 | 2026-09-01 | 264 | 0d |  | finish no earlier than 2026-09-01 | André | 4h |
| 267 | Aprovação | inactive | 0.5d | 2026-09-03 | 2026-09-03 | 265 | 0d |  | finish no earlier than 2026-09-02 | TECNORED | 4h |
| 268 | FD-F0009-0207-MB-M-00002 | inactive, manual | 2.5d | 2026-09-01 | 2026-09-03 |  |  |  |  | Felipe, André | 20h |
| 269 | Emissão Inicial | inactive | 3d | 2026-09-02 | 2026-09-07 | 188, 263 | 0d |  | finish no earlier than 2026-07-28 | Rodrigo | 24h |
| 270 | Análise Tecnored | inactive | 0.5d | 2026-09-03 | 2026-09-03 | 268 | 0d |  | finish no earlier than 2026-09-02 | TECNORED | 4h |
| 271 | Atendimento de comentários | inactive | 0.5d | 2026-09-07 | 2026-09-07 | 269 | 0d |  | finish no earlier than 2026-09-02 | André | 4h |
| 272 | Aprovação | inactive | 0.5d | 2026-09-04 | 2026-09-04 | 270 | 0d |  | finish no earlier than 2026-09-03 | TECNORED | 4h |
| 273 | FD-F0009-0207-MB-M-00003 | inactive, manual | 2.5d | 2026-09-02 | 2026-09-04 |  |  |  |  | Felipe, André | 20h |
| 274 | Emissão Inicial | inactive | 3d | 2026-09-02 | 2026-09-07 | 188, 263 | 0d |  | finish no earlier than 2026-07-28 | Rodrigo | 24h |
| 275 | Análise Tecnored | inactive | 0.5d | 2026-09-04 | 2026-09-04 | 273 | 0d |  | finish no earlier than 2026-09-03 | TECNORED | 4h |
| 276 | Atendimento de comentários | inactive | 0.5d | 2026-09-07 | 2026-09-07 | 274 | 0d |  | finish no earlier than 2026-09-03 | André | 4h |
| 277 | Aprovação | inactive | 0.5d | 2026-09-07 | 2026-09-07 | 275 | 0d |  | finish no earlier than 2026-09-04 | TECNORED | 4h |
| 278 | FD-F0009-0207-MB-M-00004 | inactive, manual | 2.5d | 2026-09-03 | 2026-09-07 |  |  |  |  | Felipe, André | 20h |
| 279 | Emissão Inicial | inactive | 3d | 2026-09-02 | 2026-09-07 | 188, 263 | 0d |  | finish no earlier than 2026-07-28 | Rodrigo | 24h |
| 280 | Análise Tecnored | inactive | 0.5d | 2026-09-07 | 2026-09-07 | 278 | 1d |  | finish no earlier than 2026-09-04 | TECNORED | 4h |

| ID | Task | Type | Duration | Start | Finish | Predecessors | Total slack | Free slack | Constraint | Resources | Work |
| --- | --- | --- | --- | --- | --- | --- | --- | --- | --- | --- | --- |
| 281 | Atendimento de comentários | inactive | 0.5d | 2026-09-07 | 2026-09-07 | 279 | 0d |  | finish no earlier than 2026-09-04 | André | 4h |
| 282 | Aprovação | inactive | 0.5d | 2026-09-09 | 2026-09-09 | 280 | 0d |  | finish no earlier than 2026-09-09 | TECNORED | 4h |
| 283 | FD-F0009-0207-MB-M-00005 | inactive, manual | 2.5d | 2026-09-04 | 2026-09-08 |  |  |  |  | Felipe, André | 20h |
| 284 | Emissão Inicial | inactive | 3d | 2026-09-02 | 2026-09-07 | 188, 263 | 2d |  | finish no earlier than 2026-07-28 | Rodrigo | 24h |
| 285 | Análise Tecnored | inactive | 0.5d | 2026-09-09 | 2026-09-09 | 283 | 0.5d |  | finish no earlier than 2026-09-09 | TECNORED | 4h |
| 286 | Atendimento de comentários | inactive | 0.5d | 2026-09-09 | 2026-09-09 | 284 | 0d |  | finish no earlier than 2026-09-09 | André | 4h |
| 287 | Aprovação | inactive | 0.5d | 2026-09-10 | 2026-09-10 | 285 | 0d |  | finish no earlier than 2026-09-10 | TECNORED | 4h |
| 288 | FD-F0009-0207-MB-M-00006 | inactive, manual | 2.5d | 2026-09-09 | 2026-09-11 |  |  |  |  | Felipe, André | 20h |
| 289 | Emissão Inicial | inactive | 1d | 2026-09-09 | 2026-09-09 | 283 | 0.5d |  | finish no earlier than 2026-09-09 | Rodrigo | 8h |
| 290 | Análise Tecnored | inactive | 0.5d | 2026-09-11 | 2026-09-11 | 288 | 0d |  | finish no earlier than 2026-09-10 | TECNORED | 4h |
| 291 | Atendimento de comentários | inactive | 0.5d | 2026-09-10 | 2026-09-10 | 289 | 0d |  | finish no earlier than 2026-09-10 | André | 4h |
| 292 | Aprovação | inactive | 0.5d | 2026-09-14 | 2026-09-14 | 290 | 0d |  | finish no earlier than 2026-09-11 | TECNORED | 4h |
| 293 | FD-F0009-0207-MB-M-00007 | inactive, manual | 2.5d | 2026-09-10 | 2026-09-14 |  |  |  |  | Felipe, André | 20h |
| 294 | Emissão Inicial | inactive | 1d | 2026-09-11 | 2026-09-14 | 288 | 0d |  | finish no earlier than 2026-09-10 | Rodrigo | 8h |
| 295 | Análise Tecnored | inactive | 0.5d | 2026-09-14 | 2026-09-14 | 293 | 0d |  | finish no earlier than 2026-09-11 | TECNORED | 4h |
| 296 | Atendimento de comentários | inactive | 0.5d | 2026-09-14 | 2026-09-14 | 294 | 0d |  | finish no earlier than 2026-09-11 | André | 4h |
| 297 | Aprovação | inactive | 0.5d | 2026-09-15 | 2026-09-15 | 295 | 0d |  | finish no earlier than 2026-09-14 | TECNORED | 4h |
| 298 | FD-F0009-0207-MB-M-00008 | inactive, manual | 2.5d | 2026-09-11 | 2026-09-15 |  |  |  |  | André | 20h |
| 299 | Emissão Inicial | inactive | 3d | 2026-09-08 | 2026-09-11 | 143, 193, 203, 213, 223, 233, 268, 273, 278, 283 | 1d |  | finish no earlier than 2026-07-31 | Rodrigo | 24h |
| 300 | Análise Tecnored | inactive | 0.5d | 2026-09-15 | 2026-09-15 | 298 | 0d |  | finish no earlier than 2026-09-14 | TECNORED | 4h |
| 301 | Atendimento de comentários | inactive | 0.5d | 2026-09-14 | 2026-09-14 | 299 | 0d |  | finish no earlier than 2026-09-14 | André | 4h |
| 302 | Aprovação | inactive | 0.5d | 2026-09-16 | 2026-09-16 | 300 | 0d |  | finish no earlier than 2026-09-15 | TECNORED | 4h |
| 303 | RL-F0009-0207-MB-M-00001 | inactive | 5d | 2026-07-31 | 2026-08-06 |  | 13d | 0d | finish no earlier than 2026-08-06 | Everton, Ricardo | 40h |
| 304 | Emissão Inicial | inactive | 2d | 2026-08-05 | 2026-08-06 | 173 | 14d | 0d | finish no earlier than 2026-08-03 | Rodrigo | 16h |
| 305 | Análise Tecnored | inactive | 1d | 2026-08-07 | 2026-08-07 | 303 | 13d | 0d | finish no earlier than 2026-08-04 | TECNORED | 8h |
| 306 | Atendimento de comentários | inactive | 1d | 2026-08-07 | 2026-08-07 | 304 | 14d |  | finish no earlier than 2026-08-05 | André | 8h |
| 307 | Aprovação | inactive | 1d | 2026-08-10 | 2026-08-10 | 305 | 13d |  | finish no earlier than 2026-08-06 | TECNORED | 8h |
| 308 | RL-F0009-0207-MB-M-00002 | inactive | 5d | 2026-08-04 | 2026-08-10 |  | 11d | 0d | finish no earlier than 2026-08-10 | Everton, Ricardo | 40h |
| 309 | Emissão Inicial | inactive | 2d | 2026-08-06 | 2026-08-07 | 175 | 13d | 0d | finish no earlier than 2026-08-05 | Rodrigo | 16h |
| 310 | Análise Tecnored | inactive | 1d | 2026-08-11 | 2026-08-11 | 308 | 11d | 0d | finish no earlier than 2026-08-06 | TECNORED | 8h |
| 311 | Atendimento de comentários | inactive | 1d | 2026-08-10 | 2026-08-10 | 309 | 13d |  | finish no earlier than 2026-08-07 | André | 8h |
| 312 | Aprovação | inactive | 1d | 2026-08-12 | 2026-08-12 | 310 | 11d |  | finish no earlier than 2026-08-10 | TECNORED | 8h |
| 313 | UTILITIES SYSTEMS |  | 9d | 2026-07-15 | 2026-07-28 |  | 22.15d |  | finish no earlier than 2026-07-28 |  |  |
| 314 | DB-F0009-0207-MB-U-00001 | inactive | 4d | 2026-07-15 | 2026-07-21 |  | 25.15d | 0d | finish no earlier than 2026-07-21 | André | 32h |
| 315 | Emissão Inicial | inactive | 1d | 2026-07-21 | 2026-07-22 | 77 | 25.15d | 0d | finish no earlier than 2026-07-16 | Rodrigo | 8h |
| 316 | Análise Tecnored | inactive | 1d | 2026-07-21 | 2026-07-22 | 314 | 25.15d | 0d | finish no earlier than 2026-07-17 | TECNORED | 8h |
| 317 | Atendimento de comentários | inactive | 1d | 2026-07-22 | 2026-07-23 | 315 | 25.15d |  | finish no earlier than 2026-07-20 | André | 8h |
| 318 | Aprovação | inactive | 1d | 2026-07-22 | 2026-07-23 | 316 | 25.15d |  | finish no earlier than 2026-07-21 | TECNORED | 8h |
| 319 | FG-F0009-0000-GE-U-00001 |  | 2.5d | 2026-07-15 | 2026-07-20 |  | 27.15d | 0d | finish no earlier than 2026-07-20 | Calebe | 20h |
| 320 | Emissão Inicial |  | 2d | 2026-07-24 | 2026-07-28 | 339 | 21.65d | 0d | finish no earlier than 2026-07-24 | Rodrigo | 16h |
| 321 | Análise Tecnored |  | 1d | 2026-07-20 | 2026-07-21 | 319 | 27.15d | 0d | finish no earlier than 2026-07-17 | TECNORED | 8h |
| 322 | Atendimento de comentários |  | 0.5d | 2026-07-28 | 2026-07-29 | 320 | 21.65d |  | finish no earlier than 2026-07-17 | André | 4h |
| 323 | Aprovação |  | 0.5d | 2026-07-21 | 2026-07-21 | 321 | 27.15d |  | finish no earlier than 2026-07-20 | TECNORED | 4h |
| 324 | FG-F0009-0000-GE-U-00002 |  | 2.5d | 2026-07-16 | 2026-07-20 |  | 26.65d | 0d | finish no earlier than 2026-07-20 | Calebe | 20h |
| 325 | Emissão Inicial |  | 2d | 2026-07-24 | 2026-07-28 | 339 | 21.65d | 0d | finish no earlier than 2026-07-24 | Rodrigo | 16h |
| 326 | Análise Tecnored |  | 1d | 2026-07-20 | 2026-07-21 | 324 | 26.65d | 0d | finish no earlier than 2026-07-17 | TECNORED | 8h |
| 327 | Atendimento de comentários |  | 0.5d | 2026-07-28 | 2026-07-29 | 325 | 21.65d |  | finish no earlier than 2026-07-20 | André | 4h |
| 328 | Aprovação |  | 0.5d | 2026-07-21 | 2026-07-22 | 326 | 26.65d |  | finish no earlier than 2026-07-20 | TECNORED | 4h |
| 329 | FG-F0009-0000-GE-U-00003 |  | 2.5d | 2026-07-16 | 2026-07-21 |  | 26.15d | 0d | finish no earlier than 2026-07-21 | Calebe | 20h |
| 330 | Emissão Inicial |  | 2d | 2026-07-24 | 2026-07-28 | 339 | 21.65d | 0d | finish no earlier than 2026-07-24 | Rodrigo | 16h |
| 331 | Análise Tecnored |  | 1d | 2026-07-21 | 2026-07-22 | 329 | 26.15d | 0d | finish no earlier than 2026-07-20 | TECNORED | 8h |
| 332 | Atendimento de comentários |  | 0.5d | 2026-07-28 | 2026-07-29 | 330 | 21.65d |  | finish no earlier than 2026-07-20 | André | 4h |
| 333 | Aprovação |  | 0.5d | 2026-07-22 | 2026-07-22 | 331 | 26.15d |  | finish no earlier than 2026-07-21 | TECNORED | 4h |
| 334 | FG-F0009-0000-GE-U-00004 |  | 2.5d | 2026-07-17 | 2026-07-21 |  | 25.65d | 0d | finish no earlier than 2026-07-21 | Calebe | 20h |
| 335 | Emissão Inicial |  | 2d | 2026-07-24 | 2026-07-28 | 339 | 21.65d | 0d | finish no earlier than 2026-07-24 | Rodrigo | 16h |
| 336 | Análise Tecnored |  | 1d | 2026-07-21 | 2026-07-22 | 334 | 25.65d | 0d | finish no earlier than 2026-07-20 | TECNORED | 8h |
| 337 | Atendimento de comentários |  | 0.5d | 2026-07-28 | 2026-07-29 | 335 | 21.65d |  | finish no earlier than 2026-07-21 | André | 4h |
| 338 | Aprovação |  | 0.5d | 2026-07-22 | 2026-07-23 | 336 | 25.65d |  | finish no earlier than 2026-07-21 | TECNORED | 4h |
| 339 | MC-F0009-0207-MB-U-00001 |  | 5d | 2026-07-17 | 2026-07-24 |  | 20.15d | 0d | finish no earlier than 2026-07-24 | Carlos | 40h |
| 340 | Emissão Inicial |  | 2d | 2026-07-21 | 2026-07-23 | 77 | 24.15d | 0d | finish no earlier than 2026-07-22 | Rodrigo | 16h |
| 341 | Análise Tecnored |  | 1d | 2026-07-24 | 2026-07-27 | 339 | 22.15d | 0d | finish no earlier than 2026-07-22 | TECNORED | 8h |
| 342 | Atendimento de comentários |  | 1d | 2026-07-23 | 2026-07-24 | 340 | 24.15d |  | finish no earlier than 2026-07-23 | André | 8h |
| 343 | Aprovação |  | 1d | 2026-07-27 | 2026-07-28 | 341 | 22.15d |  | finish no earlier than 2026-07-24 | TECNORED | 8h |
| 344 | ET-F0009-0207-MB-U-00001 |  | 5d | 2026-07-21 | 2026-07-28 |  | 20.15d | 0d | finish no earlier than 2026-07-28 | Carlos | 40h |
| 345 | Emissão Inicial |  | 3d | 2026-07-24 | 2026-07-29 | 339 | 20.15d | 0d | finish no earlier than 2026-07-27 | Rodrigo | 24h |
| 346 | Análise Tecnored |  | 1d | 2026-07-28 | 2026-07-29 | 344 | 20.15d | 0d | finish no earlier than 2026-07-24 | TECNORED | 8h |
| 347 | Atendimento de comentários |  | 1d | 2026-07-29 | 2026-07-30 | 345 | 20.15d |  | finish no earlier than 2026-07-27 | André | 8h |
| 348 | Aprovação |  | 1d | 2026-07-29 | 2026-07-30 | 346 | 20.15d |  | finish no earlier than 2026-07-28 | TECNORED | 8h |
| 349 | MD-F0009-0207-MB-U-00001 | inactive | 4d | 2026-07-21 | 2026-07-27 |  | 21.15d | 0d | finish no earlier than 2026-07-27 | Carlos | 32h |
| 350 | Emissão Inicial | inactive | 1d | 2026-07-24 | 2026-07-27 | 339 | 22.15d | 0d | finish no earlier than 2026-07-22 | Rodrigo | 8h |

| ID | Task | Type | Duration | Start | Finish | Predecessors | Total slack | Free slack | Constraint | Resources | Work |
| --- | --- | --- | --- | --- | --- | --- | --- | --- | --- | --- | --- |
| 351 | Análise Tecnored | inactive | 1d | 2026-07-27 | 2026-07-28 | 349 | 21.15d | 0d | finish no earlier than 2026-07-23 | TECNORED | 8h |
| 352 | Atendimento de comentários | inactive | 1d | 2026-07-27 | 2026-07-28 | 350 | 22.15d |  | finish no earlier than 2026-07-24 | André | 8h |
| 353 | Aprovação | inactive | 1d | 2026-07-28 | 2026-07-29 | 351 | 21.15d |  | finish no earlier than 2026-07-27 | TECNORED | 8h |
| 354 | PIPING |  | 10.85d | 2026-07-15 | 2026-07-29 |  | 21.15d |  | finish no earlier than 2026-07-29 |  |  |
| 355 | ML-F0009-0207-MB-T-00001 | inactive | 5d | 2026-07-21 | 2026-07-28 |  | 19.15d | 0d | finish no earlier than 2026-07-28 | Felipe, André | 40h |
| 356 | Emissão Inicial | inactive | 2d | 2026-07-24 | 2026-07-28 | 339 | 21.15d | 0d | finish no earlier than 2026-07-23 | Rodrigo | 16h |
| 357 | Análise Tecnored | inactive | 1d | 2026-07-28 | 2026-07-29 | 355 | 20.15d | 0d | finish no earlier than 2026-07-24 | TECNORED | 8h |
| 358 | Atendimento de comentários | inactive | 1d | 2026-07-28 | 2026-07-29 | 356 | 21.15d |  | finish no earlier than 2026-07-27 | André | 8h |
| 359 | Aprovação | inactive | 1d | 2026-07-29 | 2026-07-30 | 357 | 20.15d |  | finish no earlier than 2026-07-28 | TECNORED | 8h |
| 360 | ML-F0009-0207-MB-T-00002 | inactive | 5d | 2026-07-21 | 2026-07-28 |  | 20.15d | 0d | finish no earlier than 2026-07-28 | Felipe, André | 40h |
| 361 | Emissão Inicial | inactive | 2d | 2026-07-24 | 2026-07-28 | 339 | 21.15d | 0d | finish no earlier than 2026-07-23 | Rodrigo | 16h |
| 362 | Análise Tecnored | inactive | 1d | 2026-07-28 | 2026-07-29 | 360 | 20.15d | 0d | finish no earlier than 2026-07-24 | TECNORED | 8h |
| 363 | Atendimento de comentários | inactive | 1d | 2026-07-28 | 2026-07-29 | 361 | 21.15d |  | finish no earlier than 2026-07-27 | André | 8h |
| 364 | Aprovação | inactive | 1d | 2026-07-29 | 2026-07-30 | 362 | 20.15d |  | finish no earlier than 2026-07-28 | TECNORED | 8h |
| 365 | ML-F0009-0207-MB-T-00003 | inactive | 5d | 2026-07-23 | 2026-07-30 |  | 15.15d | 0d | finish no earlier than 2026-07-30 | Felipe, André | 40h |
| 366 | Emissão Inicial | inactive | 2d | 2026-07-28 | 2026-07-30 | 355 | 19.15d | 0d | finish no earlier than 2026-07-27 | Rodrigo | 16h |
| 367 | Análise Tecnored | inactive | 1d | 2026-07-30 | 2026-07-31 | 365 | 18.15d | 0d | finish no earlier than 2026-07-28 | TECNORED | 8h |
| 368 | Atendimento de comentários | inactive | 1d | 2026-07-30 | 2026-07-31 | 366 | 19.15d |  | finish no earlier than 2026-07-29 | André | 8h |
| 369 | Aprovação | inactive | 1d | 2026-07-31 | 2026-08-03 | 367 | 18.15d |  | finish no earlier than 2026-07-30 | TECNORED | 8h |
| 370 | AG-F0009-0000-MB-T-00001 |  | 8.85d | 2026-07-15 | 2026-07-27 |  | 21.15d | 9.15d | finish no earlier than 2026-07-27 | Levy | 70.8h |
| 371 | Emissão Inicial |  | 3d | 2026-08-14 | 2026-08-18 | 123, 128 | 5d | 0d | finish no earlier than 2026-08-07 | Rodrigo | 24h |
| 372 | Análise Tecnored |  | 1d | 2026-07-21 | 2026-07-22 | 360 | 25.15d | 2d | finish no earlier than 2026-07-22 | TECNORED | 8h |
| 373 | Atendimento de comentários |  | 2d | 2026-08-19 | 2026-08-20 | 371 | 5d |  | finish no earlier than 2026-07-24 | André | 16h |
| 374 | Aprovação |  | 1d | 2026-07-24 | 2026-07-27 | 372 | 23.15d |  | finish no earlier than 2026-07-27 | TECNORED | 8h |
| 375 | AG-F0009-0000-MB-T-00002 |  | 6d | 2026-07-21 | 2026-07-29 |  | 19.15d | 0d | finish no earlier than 2026-07-29 | Levy | 48h |
| 376 | Emissão Inicial |  | 3d | 2026-08-14 | 2026-08-18 | 123, 128 | 6d | 0d | finish no earlier than 2026-08-07 | Rodrigo | 24h |
| 377 | Análise Tecnored |  | 1d | 2026-07-29 | 2026-07-30 | 375 | 19.15d | 0d | finish no earlier than 2026-07-27 | TECNORED | 8h |
| 378 | Atendimento de comentários |  | 1d | 2026-08-19 | 2026-08-19 | 376 | 6d |  | finish no earlier than 2026-07-28 | André | 8h |
| 379 | Aprovação |  | 1d | 2026-07-30 | 2026-07-31 | 377 | 19.15d |  | finish no earlier than 2026-07-29 | TECNORED | 8h |
| 380 | AG-F0009-0000-MB-T-00003 |  | 6d | 2026-07-20 | 2026-07-27 |  | 21d | 0d | finish no earlier than 2026-07-27 | Levy | 48h |
| 381 | Emissão Inicial |  | 3d | 2026-08-14 | 2026-08-18 | 123, 128 | 6d | 0d | finish no earlier than 2026-08-07 | Rodrigo | 24h |
| 382 | Análise Tecnored |  | 1d | 2026-07-28 | 2026-07-28 | 380 | 21d | 0d | finish no earlier than 2026-07-23 | TECNORED | 8h |
| 383 | Atendimento de comentários |  | 1d | 2026-08-19 | 2026-08-19 | 381 | 6d |  | finish no earlier than 2026-07-24 | André | 8h |
| 384 | Aprovação |  | 1d | 2026-07-29 | 2026-07-29 | 382 | 21d |  | finish no earlier than 2026-07-27 | TECNORED | 8h |
| 385 | PQ-F0009-0207-MB-T-00001 |  | 4d | 2026-07-21 | 2026-07-27 |  | 21.15d | 0d | finish no earlier than 2026-07-27 | Carlos | 32h |
| 386 | Emissão Inicial |  | 1d | 2026-08-10 | 2026-08-10 | 370, 375, 380 | 12d | 0d | finish no earlier than 2026-08-10 | Rodrigo | 8h |
| 387 | Análise Tecnored |  | 1d | 2026-07-27 | 2026-07-28 | 385 | 21.15d | 0d | finish no earlier than 2026-07-23 | TECNORED | 8h |
| 388 | Atendimento de comentários |  | 1d | 2026-08-11 | 2026-08-11 | 386 | 12d |  | finish no earlier than 2026-07-24 | André | 8h |
| 389 | Aprovação |  | 1d | 2026-07-28 | 2026-07-29 | 387 | 21.15d |  | finish no earlier than 2026-07-27 | TECNORED | 8h |
| 390 | LK-F0009-0207-MB-T-00001 | inactive | 4d | 2026-07-22 | 2026-07-28 |  | 20.15d | 0d | finish no earlier than 2026-07-28 | Everton, Ricardo | 32h |
| 391 | Emissão Inicial | inactive | 1d | 2026-07-27 | 2026-07-28 | 385 | 21.15d | 0d | finish no earlier than 2026-07-23 | Rodrigo | 8h |
| 392 | Análise Tecnored | inactive | 1d | 2026-07-28 | 2026-07-29 | 390 | 20.15d | 0d | finish no earlier than 2026-07-24 | TECNORED | 8h |
| 393 | Atendimento de comentários | inactive | 1d | 2026-07-28 | 2026-07-29 | 391 | 21.15d |  | finish no earlier than 2026-07-27 | André | 8h |
| 394 | Aprovação | inactive | 1d | 2026-07-29 | 2026-07-30 | 392 | 20.15d |  | finish no earlier than 2026-07-28 | TECNORED | 8h |
| 395 | STEEL STRUCTURE |  | 13d | 2026-08-05 | 2026-08-21 |  | 4d |  | finish no earlier than 2026-08-21 |  |  |
| 396 | ML-F0009-0207-GE-S-00001 |  | 2.5d | 2026-08-05 | 2026-08-07 |  | 10.5d | 0d | finish no earlier than 2026-08-07 | Paulo | 20h |
| 397 | Emissão Inicial |  | 3d | 2026-08-18 | 2026-08-20 | 188, 263 | 4.5d | 0d | finish no earlier than 2026-07-28 | Rodrigo | 24h |
| 398 | Análise Tecnored |  | 1d | 2026-08-07 | 2026-08-10 | 396 | 13d | 0d | finish no earlier than 2026-08-06 | TECNORED | 8h |
| 399 | Atendimento de comentários |  | 0.5d | 2026-08-21 | 2026-08-21 | 397 | 4.5d |  | finish no earlier than 2026-08-06 | André | 4h |
| 400 | Aprovação |  | 0.5d | 2026-08-10 | 2026-08-10 | 398 | 13d |  | finish no earlier than 2026-08-07 | TECNORED | 4h |
| 401 | ML-F0009-0207-GE-S-00002 |  | 2.5d | 2026-08-05 | 2026-08-07 |  | 10d | 0d | finish no earlier than 2026-08-07 | Paulo | 20h |
| 402 | Emissão Inicial |  | 3d | 2026-08-18 | 2026-08-20 | 188, 263 | 4.5d | 0d | finish no earlier than 2026-07-28 | Rodrigo | 24h |
| 403 | Análise Tecnored |  | 1d | 2026-08-10 | 2026-08-10 | 401 | 12.5d | 0d | finish no earlier than 2026-08-06 | TECNORED | 8h |
| 404 | Atendimento de comentários |  | 0.5d | 2026-08-21 | 2026-08-21 | 402 | 4.5d |  | finish no earlier than 2026-08-07 | André | 4h |
| 405 | Aprovação |  | 0.5d | 2026-08-11 | 2026-08-11 | 403 | 12.5d |  | finish no earlier than 2026-08-07 | TECNORED | 4h |
| 406 | ML-F0009-0207-GE-S-00003 |  | 2.5d | 2026-08-06 | 2026-08-10 |  | 9.5d | 0d | finish no earlier than 2026-08-10 | Paulo | 20h |
| 407 | Emissão Inicial |  | 3d | 2026-08-18 | 2026-08-20 | 188, 263 | 4.5d | 0d | finish no earlier than 2026-07-28 | Rodrigo | 24h |
| 408 | Análise Tecnored |  | 1d | 2026-08-10 | 2026-08-11 | 406 | 12d | 0d | finish no earlier than 2026-08-07 | TECNORED | 8h |
| 409 | Atendimento de comentários |  | 0.5d | 2026-08-21 | 2026-08-21 | 407 | 4.5d |  | finish no earlier than 2026-08-07 | André | 4h |
| 410 | Aprovação |  | 0.5d | 2026-08-11 | 2026-08-11 | 408 | 12d |  | finish no earlier than 2026-08-10 | TECNORED | 4h |
| 411 | ML-F0009-0207-GE-S-00004 |  | 2.5d | 2026-08-06 | 2026-08-10 |  | 9d | 0d | finish no earlier than 2026-08-10 | Paulo | 20h |
| 412 | Emissão Inicial |  | 2d | 2026-08-24 | 2026-08-25 | 143, 193, 203, 213, 223, 233, 268, 273, 278, 283 | 1.5d | 0d | finish no earlier than 2026-07-30 | Rodrigo | 16h |
| 413 | Análise Tecnored |  | 1d | 2026-08-11 | 2026-08-11 | 411 | 11.5d | 0d | finish no earlier than 2026-08-07 | TECNORED | 8h |
| 414 | Atendimento de comentários |  | 0.5d | 2026-08-26 | 2026-08-26 | 412 | 1.5d |  | finish no earlier than 2026-08-10 | André | 4h |
| 415 | Aprovação |  | 0.5d | 2026-08-12 | 2026-08-12 | 413 | 11.5d |  | finish no earlier than 2026-08-10 | TECNORED | 4h |
| 416 | ML-F0009-0207-GE-S-00005 |  | 2.5d | 2026-08-07 | 2026-08-11 |  | 8.5d | 0d | finish no earlier than 2026-08-11 | Paulo | 20h |
| 417 | Emissão Inicial |  | 2d | 2026-08-24 | 2026-08-25 | 143, 193, 203, 213, 223, 233, 268, 273, 278, 283 | 1.5d | 0d | finish no earlier than 2026-07-30 | Rodrigo | 16h |
| 418 | Análise Tecnored |  | 1d | 2026-08-11 | 2026-08-12 | 416 | 11d | 0d | finish no earlier than 2026-08-10 | TECNORED | 8h |
| 419 | Atendimento de comentários |  | 0.5d | 2026-08-26 | 2026-08-26 | 417 | 1.5d |  | finish no earlier than 2026-08-10 | André | 4h |
| 420 | Aprovação |  | 0.5d | 2026-08-12 | 2026-08-12 | 418 | 11d |  | finish no earlier than 2026-08-11 | TECNORED | 4h |

| ID | Task | Type | Duration | Start | Finish | Predecessors | Total slack | Free slack | Constraint | Resources | Work |
| --- | --- | --- | --- | --- | --- | --- | --- | --- | --- | --- | --- |
| 421 | ML-F0009-0207-GE-S-00006 |  | 2.5d | 2026-08-07 | 2026-08-11 |  | 7d | 0d | finish no earlier than 2026-08-11 | Paulo | 20h |
| 422 | Emissão Inicial |  | 0.5d | 2026-08-11 | 2026-08-11 | 416 | 11.5d | 0d | finish no earlier than 2026-08-07 | Rodrigo | 4h |
| 423 | Análise Tecnored |  | 1d | 2026-08-12 | 2026-08-12 | 421 | 10.5d | 0d | finish no earlier than 2026-08-10 | TECNORED | 8h |
| 424 | Atendimento de comentários |  | 0.5d | 2026-08-12 | 2026-08-12 | 422 | 11.5d |  | finish no earlier than 2026-08-11 | André | 4h |
| 425 | Aprovação |  | 0.5d | 2026-08-13 | 2026-08-13 | 423 | 10.5d |  | finish no earlier than 2026-08-11 | TECNORED | 4h |
| 426 | PQ-F0009-0207-GE-S-00001 |  | 5d | 2026-08-10 | 2026-08-14 |  | 7d | 0d | finish no earlier than 2026-08-14 | Paulo | 40h |
| 427 | Emissão Inicial |  | 3d | 2026-08-13 | 2026-08-17 | 396, 401, 406, 411, 416, 436 | 7d | 0d | finish no earlier than 2026-08-10 | Rodrigo | 24h |
| 428 | Análise Tecnored |  | 1d | 2026-08-17 | 2026-08-17 | 426 | 7d | 0d | finish no earlier than 2026-08-12 | TECNORED | 8h |
| 429 | Atendimento de comentários |  | 1d | 2026-08-18 | 2026-08-18 | 427 | 7d |  | finish no earlier than 2026-08-13 | André | 8h |
| 430 | Aprovação |  | 1d | 2026-08-18 | 2026-08-18 | 428 | 7d |  | finish no earlier than 2026-08-14 | TECNORED | 8h |
| 431 | LM-F0009-0207-GE-S-00001 | inactive | 5d | 2026-08-19 | 2026-08-25 |  | 0d |  | finish no earlier than 2026-08-25 | Everton, Ricardo | 40h |
| 432 | Emissão Inicial | inactive | 2d | 2026-08-24 | 2026-08-25 | 476 | 1d | 0d | finish no earlier than 2026-08-20 | Rodrigo | 16h |
| 433 | Análise Tecnored | inactive | 1d | 2026-08-26 | 2026-08-26 | 431 | 0d |  | finish no earlier than 2026-08-21 | TECNORED | 8h |
| 434 | Atendimento de comentários | inactive | 1d | 2026-08-26 | 2026-08-26 | 432 | 1d |  | finish no earlier than 2026-08-24 | André | 8h |
| 435 | Aprovação | inactive | 1d | 2026-08-27 | 2026-08-27 | 433 | 0d |  | finish no earlier than 2026-08-25 | TECNORED | 8h |
| 436 | MC-F0009-0207-GE-S-00001 |  | 6d | 2026-08-05 | 2026-08-12 |  | 7d | 0d | finish no earlier than 2026-08-12 | Paulo | 48h |
| 437 | Emissão Inicial |  | 2d | 2026-08-24 | 2026-08-25 | 143, 193, 203, 213, 223, 233, 268, 273, 278, 283 | 1d | 0d | finish no earlier than 2026-07-30 | Rodrigo | 16h |
| 438 | Análise Tecnored |  | 1d | 2026-08-13 | 2026-08-13 | 436 | 9d | 0d | finish no earlier than 2026-08-10 | TECNORED | 8h |
| 439 | Atendimento de comentários |  | 1d | 2026-08-26 | 2026-08-26 | 437 | 1d |  | finish no earlier than 2026-08-11 | André | 8h |
| 440 | Aprovação |  | 1d | 2026-08-14 | 2026-08-14 | 438 | 9d |  | finish no earlier than 2026-08-12 | TECNORED | 8h |
| 441 | AG-F0009-0207-GE-S-00001 |  | 2.5d | 2026-08-10 | 2026-08-12 |  | 7.5d | 0d | finish no earlier than 2026-08-12 | Ailton | 20h |
| 442 | Emissão Inicial |  | 3d | 2026-08-10 | 2026-08-13 | 396, 401, 406 | 10d | 0d | finish no earlier than 2026-07-31 | Rodrigo | 24h |
| 443 | Análise Tecnored |  | 1d | 2026-08-12 | 2026-08-13 | 441 | 10d | 0d | finish no earlier than 2026-08-11 | TECNORED | 8h |
| 444 | Atendimento de comentários |  | 0.5d | 2026-08-13 | 2026-08-13 | 442 | 10d |  | finish no earlier than 2026-08-11 | André | 4h |
| 445 | Aprovação |  | 0.5d | 2026-08-13 | 2026-08-13 | 443 | 10d |  | finish no earlier than 2026-08-12 | TECNORED | 4h |
| 446 | AG-F0009-0207-GE-S-00002 |  | 2.5d | 2026-08-10 | 2026-08-12 |  | 7d | 0d | finish no earlier than 2026-08-12 | Ailton | 20h |
| 447 | Emissão Inicial |  | 3d | 2026-08-10 | 2026-08-13 | 396, 401, 406 | 10d | 0d | finish no earlier than 2026-07-31 | Rodrigo | 24h |
| 448 | Análise Tecnored |  | 1d | 2026-08-13 | 2026-08-13 | 446 | 9.5d | 0d | finish no earlier than 2026-08-11 | TECNORED | 8h |
| 449 | Atendimento de comentários |  | 0.5d | 2026-08-13 | 2026-08-13 | 447 | 10d |  | finish no earlier than 2026-08-12 | André | 4h |
| 450 | Aprovação |  | 0.5d | 2026-08-14 | 2026-08-14 | 448 | 9.5d |  | finish no earlier than 2026-08-12 | TECNORED | 4h |
| 451 | AG-F0009-0207-GE-S-00003 |  | 2.5d | 2026-08-11 | 2026-08-13 |  | 6.5d | 0d | finish no earlier than 2026-08-13 | Ailton | 20h |
| 452 | Emissão Inicial |  | 3d | 2026-08-10 | 2026-08-13 | 396, 401, 406 | 10d | 0d | finish no earlier than 2026-07-31 | Rodrigo | 24h |
| 453 | Análise Tecnored |  | 1d | 2026-08-13 | 2026-08-14 | 451 | 9d | 0d | finish no earlier than 2026-08-12 | TECNORED | 8h |
| 454 | Atendimento de comentários |  | 0.5d | 2026-08-13 | 2026-08-13 | 452 | 10d |  | finish no earlier than 2026-08-12 | André | 4h |
| 455 | Aprovação |  | 0.5d | 2026-08-14 | 2026-08-14 | 453 | 9d |  | finish no earlier than 2026-08-13 | TECNORED | 4h |
| 456 | AG-F0009-0207-GE-S-00004 |  | 2.5d | 2026-08-11 | 2026-08-13 |  | 8.5d | 0d | finish no earlier than 2026-08-13 | Ailton | 20h |
| 457 | Emissão Inicial |  | 3d | 2026-08-13 | 2026-08-18 | 411, 416, 436, 441, 446, 451 | 7d | 0d | finish no earlier than 2026-08-05 | Rodrigo | 24h |
| 458 | Análise Tecnored |  | 1d | 2026-08-14 | 2026-08-14 | 456 | 8.5d | 0d | finish no earlier than 2026-08-12 | TECNORED | 8h |
| 459 | Atendimento de comentários |  | 0.5d | 2026-08-18 | 2026-08-18 | 457 | 7d |  | finish no earlier than 2026-08-13 | André | 4h |
| 460 | Aprovação |  | 0.5d | 2026-08-17 | 2026-08-17 | 458 | 8.5d |  | finish no earlier than 2026-08-13 | TECNORED | 4h |
| 461 | AG-F0009-0207-GE-S-00005 |  | 2.5d | 2026-08-12 | 2026-08-14 |  | 8d | 0d | finish no earlier than 2026-08-14 | Ailton | 20h |
| 462 | Emissão Inicial |  | 3d | 2026-08-13 | 2026-08-18 | 411, 416, 436, 441, 446, 451 | 7d | 0d | finish no earlier than 2026-08-05 | Rodrigo | 24h |
| 463 | Análise Tecnored |  | 1d | 2026-08-14 | 2026-08-17 | 461 | 8d | 0d | finish no earlier than 2026-08-13 | TECNORED | 8h |
| 464 | Atendimento de comentários |  | 0.5d | 2026-08-18 | 2026-08-18 | 462 | 7d |  | finish no earlier than 2026-08-13 | André | 4h |
| 465 | Aprovação |  | 0.5d | 2026-08-17 | 2026-08-17 | 463 | 8d |  | finish no earlier than 2026-08-14 | TECNORED | 4h |
| 466 | AG-F0009-0207-GE-S-00006 |  | 2.5d | 2026-08-12 | 2026-08-14 |  | 6d | 0d | finish no earlier than 2026-08-14 | Ailton | 20h |
| 467 | Emissão Inicial |  | 0.5d | 2026-08-14 | 2026-08-14 | 461 | 8.5d | 0d | finish no earlier than 2026-08-12 | Rodrigo | 4h |
| 468 | Análise Tecnored |  | 1d | 2026-08-17 | 2026-08-17 | 466 | 7.5d | 0d | finish no earlier than 2026-08-13 | TECNORED | 8h |
| 469 | Atendimento de comentários |  | 0.5d | 2026-08-17 | 2026-08-17 | 467 | 8.5d |  | finish no earlier than 2026-08-14 | André | 4h |
| 470 | Aprovação |  | 0.5d | 2026-08-18 | 2026-08-18 | 468 | 7.5d |  | finish no earlier than 2026-08-14 | TECNORED | 4h |
| 471 | PL-F0009-0207-GE-S-00001 |  | 5d | 2026-08-13 | 2026-08-19 |  | 4d | 0d | finish no earlier than 2026-08-19 | Felipe, André | 40h |
| 472 | Emissão Inicial |  | 2d | 2026-08-17 | 2026-08-18 | 466 | 6d | 0d | finish no earlier than 2026-08-14 | Rodrigo | 16h |
| 473 | Análise Tecnored |  | 1d | 2026-08-20 | 2026-08-20 | 471 | 4d | 0d | finish no earlier than 2026-08-17 | TECNORED | 8h |
| 474 | Atendimento de comentários |  | 1d | 2026-08-19 | 2026-08-19 | 472 | 6d |  | finish no earlier than 2026-08-18 | André | 8h |
| 475 | Aprovação |  | 1d | 2026-08-21 | 2026-08-21 | 473 | 4d |  | finish no earlier than 2026-08-19 | TECNORED | 8h |
| 476 | PL-F0009-0207-GE-S-00002 |  | 5d | 2026-08-17 | 2026-08-21 |  | 2d | 0d | finish no earlier than 2026-08-21 | Ailton | 40h |
| 477 | Emissão Inicial |  | 3d | 2026-08-13 | 2026-08-18 | 411, 416, 436, 441, 446, 451 | 6.5d | 1.5d | finish no earlier than 2026-08-05 | Rodrigo | 24h |
| 478 | Análise Tecnored |  | 1d | 2026-08-24 | 2026-08-24 | 476 | 2d | 0d | finish no earlier than 2026-08-19 | TECNORED | 8h |
| 479 | Atendimento de comentários |  | 1d | 2026-08-20 | 2026-08-20 | 477 | 5d |  | finish no earlier than 2026-08-20 | André | 8h |
| 480 | Aprovação |  | 1d | 2026-08-25 | 2026-08-25 | 478 | 2d |  | finish no earlier than 2026-08-21 | TECNORED | 8h |
| 481 | ELECTRICAL |  | 26d | 2026-07-15 | 2026-08-19 |  | 6d |  | finish no earlier than 2026-08-19 |  |  |
| 482 | ML-F0009-0207-MB-E-00001 |  | 5d | 2026-08-05 | 2026-08-11 |  | 7d | 0d | finish no earlier than 2026-08-11 | Paulo | 40h |
| 483 | Emissão Inicial |  | 2d | 2026-08-06 | 2026-08-07 | 183 | 13d | 0d | finish no earlier than 2026-08-06 | Rodrigo | 16h |
| 484 | Análise Tecnored |  | 1d | 2026-08-12 | 2026-08-12 | 482 | 10d | 0d | finish no earlier than 2026-08-07 | TECNORED | 8h |
| 485 | Atendimento de comentários |  | 1d | 2026-08-10 | 2026-08-10 | 483 | 13d |  | finish no earlier than 2026-08-10 | André | 8h |
| 486 | Aprovação |  | 1d | 2026-08-13 | 2026-08-13 | 484 | 10d |  | finish no earlier than 2026-08-11 | TECNORED | 8h |
| 487 | RL-F0009-0207-GE-E-00001 | inactive | 5d | 2026-08-11 | 2026-08-17 |  | 6d | 0d | finish no earlier than 2026-08-17 | Everton, Ricardo | 40h |
| 488 | Emissão Inicial | inactive | 2d | 2026-08-14 | 2026-08-17 | 527 | 7d | 0d | finish no earlier than 2026-08-12 | Rodrigo | 16h |
| 489 | Análise Tecnored | inactive | 1d | 2026-08-18 | 2026-08-18 | 487 | 6d | 0d | finish no earlier than 2026-08-13 | TECNORED | 8h |
| 490 | Atendimento de comentários | inactive | 1d | 2026-08-18 | 2026-08-18 | 488 | 7d |  | finish no earlier than 2026-08-14 | André | 8h |

| ID | Task | Type | Duration | Start | Finish | Predecessors | Total slack | Free slack | Constraint | Resources | Work |
| --- | --- | --- | --- | --- | --- | --- | --- | --- | --- | --- | --- |
| 491 | Aprovação | inactive | 1d | 2026-08-19 | 2026-08-19 | 489 | 6d |  | finish no earlier than 2026-08-17 | TECNORED | 8h |
| 492 | LE-F0009-0000-GE-E-00001 | inactive | 5d | 2026-08-11 | 2026-08-17 |  | 6d | 0d | finish no earlier than 2026-08-17 | Rodrigo | 40h |
| 493 | Emissão Inicial | inactive | 2d | 2026-08-14 | 2026-08-17 | 527 | 7d | 0d | finish no earlier than 2026-08-12 | Rodrigo | 16h |
| 494 | Análise Tecnored | inactive | 1d | 2026-08-18 | 2026-08-18 | 492 | 6d | 0d | finish no earlier than 2026-08-13 | TECNORED | 8h |
| 495 | Atendimento de comentários | inactive | 1d | 2026-08-18 | 2026-08-18 | 493 | 7d |  | finish no earlier than 2026-08-14 | André | 8h |
| 496 | Aprovação | inactive | 1d | 2026-08-19 | 2026-08-19 | 494 | 6d |  | finish no earlier than 2026-08-17 | TECNORED | 8h |
| 497 | LR-F0009-0207-MB-E-00001 |  | 4d | 2026-07-20 | 2026-07-23 |  | 23d | 0d | finish no earlier than 2026-07-23 | Lazaro | 32h |
| 498 | Emissão Inicial |  | 2d | 2026-08-03 | 2026-08-04 | 98, 108 | 16d | 0d | finish no earlier than 2026-08-04 | Rodrigo | 16h |
| 499 | Análise Tecnored |  | 1d | 2026-07-24 | 2026-07-24 | 497 | 23d | 0d | finish no earlier than 2026-07-21 | TECNORED | 8h |
| 500 | Atendimento de comentários |  | 1d | 2026-08-05 | 2026-08-05 | 498 | 16d |  | finish no earlier than 2026-07-22 | André | 8h |
| 501 | Aprovação |  | 1d | 2026-07-27 | 2026-07-27 | 499 | 23d |  | finish no earlier than 2026-07-23 | TECNORED | 8h |
| 502 | DU-F0009-0207-MB-E-00001 |  | 7d | 2026-08-11 | 2026-08-19 |  | 2d | 0d | finish no earlier than 2026-08-19 | Rodrigo | 56h |
| 503 | Emissão Inicial |  | 3d | 2026-08-18 | 2026-08-20 | 527, 532 | 4d | 0d | finish no earlier than 2026-08-12 | Rodrigo | 24h |
| 504 | Análise Tecnored |  | 1d | 2026-08-20 | 2026-08-20 | 502 | 4d | 0d | finish no earlier than 2026-08-17 | TECNORED | 8h |
| 505 | Atendimento de comentários |  | 1d | 2026-08-21 | 2026-08-21 | 503 | 4d |  | finish no earlier than 2026-08-18 | André | 8h |
| 506 | Aprovação |  | 1d | 2026-08-21 | 2026-08-21 | 504 | 4d |  | finish no earlier than 2026-08-19 | TECNORED | 8h |
| 507 | FD-F0009-0207-MB-E-00004 |  | 5d | 2026-08-11 | 2026-08-17 |  | 4d | 0d | finish no earlier than 2026-08-17 | Rodrigo | 40h |
| 508 | Emissão Inicial |  | 3d | 2026-08-18 | 2026-08-20 | 527, 532 | 4d | 0d | finish no earlier than 2026-08-12 | Rodrigo | 24h |
| 509 | Análise Tecnored |  | 1d | 2026-08-18 | 2026-08-18 | 507 | 6d | 0d | finish no earlier than 2026-08-13 | TECNORED | 8h |
| 510 | Atendimento de comentários |  | 1d | 2026-08-21 | 2026-08-21 | 508 | 4d |  | finish no earlier than 2026-08-14 | André | 8h |
| 511 | Aprovação |  | 1d | 2026-08-19 | 2026-08-19 | 509 | 6d |  | finish no earlier than 2026-08-17 | TECNORED | 8h |
| 512 | LM-F0009-0207-MB-E-00001 |  | 5d | 2026-08-11 | 2026-08-17 |  | 6d | 0d | finish no earlier than 2026-08-17 | Lazaro | 40h |
| 513 | Emissão Inicial |  | 3d | 2026-08-20 | 2026-08-24 | 502, 507, 522 | 2d | 0d | finish no earlier than 2026-08-17 | Rodrigo | 24h |
| 514 | Análise Tecnored |  | 1d | 2026-08-18 | 2026-08-18 | 512 | 6d | 0d | finish no earlier than 2026-08-13 | TECNORED | 8h |
| 515 | Atendimento de comentários |  | 1d | 2026-08-25 | 2026-08-25 | 513 | 2d |  | finish no earlier than 2026-08-14 | André | 8h |
| 516 | Aprovação |  | 1d | 2026-08-19 | 2026-08-19 | 514 | 6d |  | finish no earlier than 2026-08-17 | TECNORED | 8h |
| 517 | PQ-F0009-0207-MB-E-00001 |  | 5d | 2026-08-13 | 2026-08-19 |  | 4d | 0d | finish no earlier than 2026-08-19 | Lazaro | 40h |
| 518 | Emissão Inicial |  | 3d | 2026-08-20 | 2026-08-24 | 502, 507, 522 | 2d | 0d | finish no earlier than 2026-08-17 | Rodrigo | 24h |
| 519 | Análise Tecnored |  | 1d | 2026-08-20 | 2026-08-20 | 517 | 4d | 0d | finish no earlier than 2026-08-17 | TECNORED | 8h |
| 520 | Atendimento de comentários |  | 1d | 2026-08-25 | 2026-08-25 | 518 | 2d |  | finish no earlier than 2026-08-18 | André | 8h |
| 521 | Aprovação |  | 1d | 2026-08-21 | 2026-08-21 | 519 | 4d |  | finish no earlier than 2026-08-19 | TECNORED | 8h |
| 522 | MC-F0009-0207-MB-E-00001 |  | 22d | 2026-07-15 | 2026-08-13 |  | 6d | 4d | finish no earlier than 2026-08-13 | Rodrigo | 176h |
| 523 | Emissão Inicial |  | 3d | 2026-08-18 | 2026-08-20 | 527, 532 | 4d | 0d | finish no earlier than 2026-08-12 | Rodrigo | 24h |
| 524 | Análise Tecnored |  | 1d | 2026-08-11 | 2026-08-11 | 492 | 11d | 1d | finish no earlier than 2026-08-11 | TECNORED | 8h |
| 525 | Atendimento de comentários |  | 1d | 2026-08-21 | 2026-08-21 | 523 | 4d |  | finish no earlier than 2026-08-12 | André | 8h |
| 526 | Aprovação |  | 1d | 2026-08-13 | 2026-08-13 | 524 | 10d |  | finish no earlier than 2026-08-13 | TECNORED | 8h |
| 527 | AG-F0009-0207-BM-E-00001 |  | 5d | 2026-08-07 | 2026-08-13 |  | 6d | 0d | finish no earlier than 2026-08-13 | Rodrigo | 40h |
| 528 | Emissão Inicial |  | 3d | 2026-08-14 | 2026-08-18 | 123, 128 | 6d | 0d | finish no earlier than 2026-08-07 | Rodrigo | 24h |
| 529 | Análise Tecnored |  | 1d | 2026-08-14 | 2026-08-14 | 527 | 8d | 0d | finish no earlier than 2026-08-11 | TECNORED | 8h |
| 530 | Atendimento de comentários |  | 1d | 2026-08-19 | 2026-08-19 | 528 | 6d |  | finish no earlier than 2026-08-12 | André | 8h |
| 531 | Aprovação |  | 1d | 2026-08-17 | 2026-08-17 | 529 | 8d |  | finish no earlier than 2026-08-13 | TECNORED | 8h |
| 532 | LC-F0009-0207-BM-E-00001 |  | 5d | 2026-08-11 | 2026-08-17 |  | 4d | 0d | finish no earlier than 2026-08-17 | Rodrigo | 40h |
| 533 | Emissão Inicial |  | 3d | 2026-08-14 | 2026-08-18 | 123, 128 | 6d | 0d | finish no earlier than 2026-08-07 | Rodrigo | 24h |
| 534 | Análise Tecnored |  | 1d | 2026-08-18 | 2026-08-18 | 532 | 6d | 0d | finish no earlier than 2026-08-13 | TECNORED | 8h |
| 535 | Atendimento de comentários |  | 1d | 2026-08-19 | 2026-08-19 | 533 | 6d |  | finish no earlier than 2026-08-14 | André | 8h |
| 536 | Aprovação |  | 1d | 2026-08-19 | 2026-08-19 | 534 | 6d |  | finish no earlier than 2026-08-17 | TECNORED | 8h |
| 537 | INSTRUMENTATION / AUTOMATION |  | 28d | 2026-07-15 | 2026-08-21 |  | 4d |  | finish no earlier than 2026-08-21 |  |  |
| 538 | LI-F0009-0000-GE-J-00001 |  | 5d | 2026-07-27 | 2026-08-03 |  | 14.15d | 0d | finish no earlier than 2026-08-03 | Everton, Ricardo | 40h |
| 539 | Emissão Inicial |  | 6d | 2026-07-24 | 2026-07-31 | 558 | 18d | 0d | finish no earlier than 2026-07-31 | Rodrigo | 48h |
| 540 | Análise Tecnored |  | 1d | 2026-08-03 | 2026-08-04 | 538 | 16.15d | 0d | finish no earlier than 2026-07-30 | TECNORED | 8h |
| 541 | Atendimento de comentários |  | 1d | 2026-08-03 | 2026-08-03 | 539 | 18d |  | finish no earlier than 2026-07-31 | André | 8h |
| 542 | Aprovação |  | 1d | 2026-08-04 | 2026-08-05 | 540 | 16.15d |  | finish no earlier than 2026-08-03 | TECNORED | 8h |
| 543 | LE-F0009-0207-GE-J-00001 |  | 5d | 2026-07-27 | 2026-08-03 |  | 14.15d | 0d | finish no earlier than 2026-08-03 | Everton, Ricardo | 40h |
| 544 | Emissão Inicial |  | 6d | 2026-07-24 | 2026-07-31 | 558 | 18d | 0d | finish no earlier than 2026-07-31 | Rodrigo | 48h |
| 545 | Análise Tecnored |  | 1d | 2026-08-03 | 2026-08-04 | 543 | 16.15d | 0d | finish no earlier than 2026-07-30 | TECNORED | 8h |
| 546 | Atendimento de comentários |  | 1d | 2026-08-03 | 2026-08-03 | 544 | 18d |  | finish no earlier than 2026-07-31 | André | 8h |
| 547 | Aprovação |  | 1d | 2026-08-04 | 2026-08-05 | 545 | 16.15d |  | finish no earlier than 2026-08-03 | TECNORED | 8h |
| 548 | MD-F0009-0207-GE-J-00001 | inactive | 5d | 2026-07-27 | 2026-08-03 |  | 16.15d | 0d | finish no earlier than 2026-08-03 | Carlos | 40h |
| 549 | Emissão Inicial | inactive | 2d | 2026-07-27 | 2026-07-29 | 678 | 20.15d | 1d | finish no earlier than 2026-07-29 | Rodrigo | 16h |
| 550 | Análise Tecnored | inactive | 1d | 2026-08-03 | 2026-08-04 | 548 | 16.15d | 0d | finish no earlier than 2026-07-30 | TECNORED | 8h |
| 551 | Atendimento de comentários | inactive | 1d | 2026-07-30 | 2026-07-31 | 549 | 19.15d |  | finish no earlier than 2026-07-31 | André | 8h |
| 552 | Aprovação | inactive | 1d | 2026-08-04 | 2026-08-05 | 550 | 16.15d |  | finish no earlier than 2026-08-03 | TECNORED | 8h |
| 553 | PQ-F0009-0207-GE-J-00001 |  | 5d | 2026-08-17 | 2026-08-21 |  | 2d | 0d | finish no earlier than 2026-08-21 | Marcio | 40h |
| 554 | Emissão Inicial |  | 3d | 2026-08-24 | 2026-08-26 | 538, 543, 688, 698, 708 | 0d |  | finish no earlier than 2026-08-10 | Rodrigo | 24h |
| 555 | Análise Tecnored |  | 1d | 2026-08-24 | 2026-08-24 | 553 | 2d | 0d | finish no earlier than 2026-08-19 | TECNORED | 8h |
| 556 | Atendimento de comentários |  | 1d | 2026-08-27 | 2026-08-27 | 554 | 0d |  | finish no earlier than 2026-08-20 | André | 8h |
| 557 | Aprovação |  | 1d | 2026-08-25 | 2026-08-25 | 555 | 2d |  | finish no earlier than 2026-08-21 | TECNORED | 8h |
| 558 | FG-F0009-0207-GE-J-00001 |  | 5d | 2026-07-15 | 2026-07-22 |  | 19.15d | 0d | finish no earlier than 2026-07-22 | Paulo | 40h |
| 559 | Emissão Inicial |  | 3d | 2026-07-21 | 2026-07-24 | 77 | 23.15d | 0d | finish no earlier than 2026-07-23 | Rodrigo | 24h |
| 560 | Análise Tecnored |  | 1d | 2026-07-22 | 2026-07-23 | 558 | 24.15d | 0d | finish no earlier than 2026-07-20 | TECNORED | 8h |

| ID | Task | Type | Duration | Start | Finish | Predecessors | Total slack | Free slack | Constraint | Resources | Work |
| --- | --- | --- | --- | --- | --- | --- | --- | --- | --- | --- | --- |
| 561 | Atendimento de comentários |  | 1d | 2026-07-24 | 2026-07-27 | 559 | 23.15d |  | finish no earlier than 2026-07-21 | André | 8h |
| 562 | Aprovação |  | 1d | 2026-07-23 | 2026-07-24 | 560 | 24.15d |  | finish no earlier than 2026-07-22 | TECNORED | 8h |
| 563 | DT-F0009-0207-GE-J-00001 | inactive | 5d | 2026-07-17 | 2026-07-24 |  | 22.15d | 0d | finish no earlier than 2026-07-24 | Everton, Ricardo | 40h |
| 564 | Emissão Inicial | inactive | 2d | 2026-07-22 | 2026-07-24 | 558 | 23.15d | 0d | finish no earlier than 2026-07-21 | Rodrigo | 16h |
| 565 | Análise Tecnored | inactive | 1d | 2026-07-24 | 2026-07-27 | 563 | 22.15d | 0d | finish no earlier than 2026-07-22 | TECNORED | 8h |
| 566 | Atendimento de comentários | inactive | 1d | 2026-07-24 | 2026-07-27 | 564 | 23.15d |  | finish no earlier than 2026-07-23 | André | 8h |
| 567 | Aprovação | inactive | 1d | 2026-07-27 | 2026-07-28 | 565 | 22.15d |  | finish no earlier than 2026-07-24 | TECNORED | 8h |
| 568 | FD-F0009-0207-GE-J-00001 |  | 2d | 2026-07-17 | 2026-07-21 |  | 26.15d | 0d | finish no earlier than 2026-07-21 | Marcio | 16h |
| 569 | Emissão Inicial |  | 5d | 2026-07-24 | 2026-07-30 | 558 | 19.5d | 0d | finish no earlier than 2026-07-30 | Rodrigo | 40h |
| 570 | Análise Tecnored |  | 0.5d | 2026-07-21 | 2026-07-22 | 568 | 26.15d | 0d | finish no earlier than 2026-07-20 | TECNORED | 4h |
| 571 | Atendimento de comentários |  | 0.5d | 2026-07-31 | 2026-07-31 | 569 | 19.5d |  | finish no earlier than 2026-07-21 | André | 4h |
| 572 | Aprovação |  | 0.5d | 2026-07-22 | 2026-07-22 | 570 | 26.15d |  | finish no earlier than 2026-07-21 | TECNORED | 4h |
| 573 | FD-F0009-0207-GE-J-00002 | manual | 2d | 2026-07-15 | 2026-07-16 |  |  |  |  | Marcio | 16h |
| 574 | Emissão Inicial |  | 5d | 2026-07-24 | 2026-07-30 | 558 | 19.5d | 0d | finish no earlier than 2026-07-30 | Rodrigo | 40h |
| 575 | Análise Tecnored |  | 0.5d | 2026-07-20 | 2026-07-20 | 573 | 27.65d | 0.5d | finish no earlier than 2026-07-20 | TECNORED | 4h |
| 576 | Atendimento de comentários |  | 0.5d | 2026-07-31 | 2026-07-31 | 574 | 19.5d |  | finish no earlier than 2026-07-21 | André | 4h |
| 577 | Aprovação |  | 0.5d | 2026-07-21 | 2026-07-21 | 575 | 27.15d |  | finish no earlier than 2026-07-21 | TECNORED | 4h |
| 578 | FD-F0009-0207-GE-J-00003 | manual | 2d | 2026-07-15 | 2026-07-16 |  |  |  |  | Marcio | 16h |
| 579 | Emissão Inicial |  | 5d | 2026-07-24 | 2026-07-30 | 558 | 19.5d | 0d | finish no earlier than 2026-07-30 | Rodrigo | 40h |
| 580 | Análise Tecnored |  | 0.5d | 2026-07-20 | 2026-07-21 | 578 | 27.15d | 0.5d | finish no earlier than 2026-07-21 | TECNORED | 4h |
| 581 | Atendimento de comentários |  | 0.5d | 2026-07-31 | 2026-07-31 | 579 | 19.5d |  | finish no earlier than 2026-07-21 | André | 4h |
| 582 | Aprovação |  | 0.5d | 2026-07-21 | 2026-07-22 | 580 | 26.65d |  | finish no earlier than 2026-07-22 | TECNORED | 4h |
| 583 | FD-F0009-0207-GE-J-00004 | manual | 2d | 2026-07-15 | 2026-07-17 |  |  |  |  | Marcio | 16h |
| 584 | Emissão Inicial |  | 5d | 2026-07-24 | 2026-07-30 | 558 | 19.5d | 0d | finish no earlier than 2026-07-30 | Rodrigo | 40h |
| 585 | Análise Tecnored |  | 0.5d | 2026-07-20 | 2026-07-21 | 583 | 27.15d | 0.5d | finish no earlier than 2026-07-21 | TECNORED | 4h |
| 586 | Atendimento de comentários |  | 0.5d | 2026-07-31 | 2026-07-31 | 584 | 19.5d |  | finish no earlier than 2026-07-21 | André | 4h |
| 587 | Aprovação |  | 0.5d | 2026-07-21 | 2026-07-22 | 585 | 26.65d |  | finish no earlier than 2026-07-22 | TECNORED | 4h |
| 588 | FD-F0009-0207-GE-J-00005 | manual | 2d | 2026-07-15 | 2026-07-17 |  |  |  |  | Marcio | 16h |
| 589 | Emissão Inicial |  | 5d | 2026-07-24 | 2026-07-30 | 558 | 19.5d | 0d | finish no earlier than 2026-07-30 | Rodrigo | 40h |
| 590 | Análise Tecnored |  | 0.5d | 2026-07-21 | 2026-07-21 | 588 | 26.65d | 0.5d | finish no earlier than 2026-07-21 | TECNORED | 4h |
| 591 | Atendimento de comentários |  | 0.5d | 2026-07-31 | 2026-07-31 | 589 | 19.5d |  | finish no earlier than 2026-07-22 | André | 4h |
| 592 | Aprovação |  | 0.5d | 2026-07-22 | 2026-07-22 | 590 | 26.15d |  | finish no earlier than 2026-07-22 | TECNORED | 4h |
| 593 | FD-F0009-0207-GE-J-00006 | manual | 2d | 2026-07-15 | 2026-07-17 |  |  |  |  | Marcio | 16h |
| 594 | Emissão Inicial |  | 5d | 2026-07-24 | 2026-07-30 | 558 | 19.5d | 0d | finish no earlier than 2026-07-30 | Rodrigo | 40h |
| 595 | Análise Tecnored |  | 0.5d | 2026-07-21 | 2026-07-21 | 593 | 26.65d | 0.5d | finish no earlier than 2026-07-21 | TECNORED | 4h |
| 596 | Atendimento de comentários |  | 0.5d | 2026-07-31 | 2026-07-31 | 594 | 19.5d |  | finish no earlier than 2026-07-22 | André | 4h |
| 597 | Aprovação |  | 0.5d | 2026-07-22 | 2026-07-22 | 595 | 26.15d |  | finish no earlier than 2026-07-22 | TECNORED | 4h |
| 598 | FD-F0009-0207-GE-J-00007 | manual | 2d | 2026-07-16 | 2026-07-17 |  |  |  |  | Marcio | 16h |
| 599 | Emissão Inicial |  | 5d | 2026-07-24 | 2026-07-30 | 558 | 19.5d | 0d | finish no earlier than 2026-07-30 | Rodrigo | 40h |
| 600 | Análise Tecnored |  | 0.5d | 2026-07-21 | 2026-07-22 | 598 | 26.15d | 0.5d | finish no earlier than 2026-07-22 | TECNORED | 4h |
| 601 | Atendimento de comentários |  | 0.5d | 2026-07-31 | 2026-07-31 | 599 | 19.5d |  | finish no earlier than 2026-07-22 | André | 4h |
| 602 | Aprovação |  | 0.5d | 2026-07-22 | 2026-07-23 | 600 | 25.65d |  | finish no earlier than 2026-07-23 | TECNORED | 4h |
| 603 | FD-F0009-0207-GE-J-00008 | manual | 2d | 2026-07-16 | 2026-07-17 |  |  |  |  | Marcio | 16h |
| 604 | Emissão Inicial |  | 5d | 2026-07-24 | 2026-07-30 | 558 | 19.5d | 0d | finish no earlier than 2026-07-30 | Rodrigo | 40h |
| 605 | Análise Tecnored |  | 0.5d | 2026-07-21 | 2026-07-22 | 603 | 26.15d | 0.5d | finish no earlier than 2026-07-22 | TECNORED | 4h |
| 606 | Atendimento de comentários |  | 0.5d | 2026-07-31 | 2026-07-31 | 604 | 19.5d |  | finish no earlier than 2026-07-22 | André | 4h |
| 607 | Aprovação |  | 0.5d | 2026-07-22 | 2026-07-23 | 605 | 25.65d |  | finish no earlier than 2026-07-23 | TECNORED | 4h |
| 608 | FD-F0009-0207-GE-J-00009 | manual | 2d | 2026-07-16 | 2026-07-17 |  |  |  |  | Marcio | 16h |
| 609 | Emissão Inicial |  | 5d | 2026-07-24 | 2026-07-30 | 558 | 19.5d | 0d | finish no earlier than 2026-07-30 | Rodrigo | 40h |
| 610 | Análise Tecnored |  | 0.5d | 2026-07-22 | 2026-07-22 | 608 | 25.65d | 0.5d | finish no earlier than 2026-07-22 | TECNORED | 4h |
| 611 | Atendimento de comentários |  | 0.5d | 2026-07-31 | 2026-07-31 | 609 | 19.5d |  | finish no earlier than 2026-07-23 | André | 4h |
| 612 | Aprovação |  | 0.5d | 2026-07-23 | 2026-07-23 | 610 | 25.15d |  | finish no earlier than 2026-07-23 | TECNORED | 4h |
| 613 | FD-F0009-0207-GE-J-00010 | manual | 2d | 2026-07-16 | 2026-07-20 |  |  |  |  | Marcio | 16h |
| 614 | Emissão Inicial |  | 5d | 2026-07-24 | 2026-07-30 | 558 | 19.5d | 0d | finish no earlier than 2026-07-30 | Rodrigo | 40h |
| 615 | Análise Tecnored |  | 0.5d | 2026-07-22 | 2026-07-22 | 613 | 25.65d | 0.5d | finish no earlier than 2026-07-22 | TECNORED | 4h |
| 616 | Atendimento de comentários |  | 0.5d | 2026-07-31 | 2026-07-31 | 614 | 19.5d |  | finish no earlier than 2026-07-23 | André | 4h |
| 617 | Aprovação |  | 0.5d | 2026-07-23 | 2026-07-23 | 615 | 25.15d |  | finish no earlier than 2026-07-23 | TECNORED | 4h |
| 618 | FD-F0009-0207-GE-J-00011 | manual | 2d | 2026-07-16 | 2026-07-20 |  |  |  |  | Marcio | 16h |
| 619 | Emissão Inicial |  | 5d | 2026-07-24 | 2026-07-30 | 558 | 19.5d | 0d | finish no earlier than 2026-07-30 | Rodrigo | 40h |
| 620 | Análise Tecnored |  | 0.5d | 2026-07-22 | 2026-07-23 | 618 | 25.15d | 0.5d | finish no earlier than 2026-07-23 | TECNORED | 4h |
| 621 | Atendimento de comentários |  | 0.5d | 2026-07-31 | 2026-07-31 | 619 | 19.5d |  | finish no earlier than 2026-07-23 | André | 4h |
| 622 | Aprovação |  | 0.5d | 2026-07-23 | 2026-07-24 | 620 | 24.65d |  | finish no earlier than 2026-07-24 | TECNORED | 4h |
| 623 | FD-F0009-0207-GE-J-00012 | manual | 2d | 2026-07-16 | 2026-07-20 |  |  |  |  | Marcio | 16h |
| 624 | Emissão Inicial |  | 5d | 2026-07-24 | 2026-07-30 | 558 | 19.5d | 0d | finish no earlier than 2026-07-30 | Rodrigo | 40h |
| 625 | Análise Tecnored |  | 0.5d | 2026-07-22 | 2026-07-23 | 623 | 25.15d | 0.5d | finish no earlier than 2026-07-23 | TECNORED | 4h |
| 626 | Atendimento de comentários |  | 0.5d | 2026-07-31 | 2026-07-31 | 624 | 19.5d |  | finish no earlier than 2026-07-23 | André | 4h |
| 627 | Aprovação |  | 0.5d | 2026-07-23 | 2026-07-24 | 625 | 24.65d |  | finish no earlier than 2026-07-24 | TECNORED | 4h |
| 628 | FD-F0009-0207-GE-J-00013 | manual | 2d | 2026-07-17 | 2026-07-20 |  |  |  |  | Marcio | 16h |
| 629 | Emissão Inicial |  | 5d | 2026-07-24 | 2026-07-30 | 558 | 19.5d | 0d | finish no earlier than 2026-07-30 | Rodrigo | 40h |
| 630 | Análise Tecnored |  | 0.5d | 2026-07-23 | 2026-07-23 | 628 | 24.65d | 0.5d | finish no earlier than 2026-07-23 | TECNORED | 4h |

| ID | Task | Type | Duration | Start | Finish | Predecessors | Total slack | Free slack | Constraint | Resources | Work |
| --- | --- | --- | --- | --- | --- | --- | --- | --- | --- | --- | --- |
| 631 | Atendimento de comentários |  | 0.5d | 2026-07-31 | 2026-07-31 | 629 | 19.5d |  | finish no earlier than 2026-07-24 | André | 4h |
| 632 | Aprovação |  | 0.5d | 2026-07-24 | 2026-07-24 | 630 | 24.15d |  | finish no earlier than 2026-07-24 | TECNORED | 4h |
| 633 | FD-F0009-0207-GE-J-00014 | manual | 2d | 2026-07-17 | 2026-07-20 |  |  |  |  | Marcio | 16h |
| 634 | Emissão Inicial |  | 5d | 2026-07-24 | 2026-07-30 | 558 | 19.5d | 0d | finish no earlier than 2026-07-30 | Rodrigo | 40h |
| 635 | Análise Tecnored |  | 0.5d | 2026-07-23 | 2026-07-23 | 633 | 24.65d | 0.5d | finish no earlier than 2026-07-23 | TECNORED | 4h |
| 636 | Atendimento de comentários |  | 0.5d | 2026-07-31 | 2026-07-31 | 634 | 19.5d |  | finish no earlier than 2026-07-24 | André | 4h |
| 637 | Aprovação |  | 0.5d | 2026-07-24 | 2026-07-24 | 635 | 24.15d |  | finish no earlier than 2026-07-24 | TECNORED | 4h |
| 638 | FD-F0009-0207-GE-J-00015 | manual | 2d | 2026-07-17 | 2026-07-20 |  |  |  |  | Marcio | 16h |
| 639 | Emissão Inicial |  | 5d | 2026-07-24 | 2026-07-30 | 558 | 19.5d | 0d | finish no earlier than 2026-07-30 | Rodrigo | 40h |
| 640 | Análise Tecnored |  | 0.5d | 2026-07-23 | 2026-07-24 | 638 | 24.15d | 0.5d | finish no earlier than 2026-07-24 | TECNORED | 4h |
| 641 | Atendimento de comentários |  | 0.5d | 2026-07-31 | 2026-07-31 | 639 | 19.5d |  | finish no earlier than 2026-07-24 | André | 4h |
| 642 | Aprovação |  | 0.5d | 2026-07-24 | 2026-07-27 | 640 | 23.65d |  | finish no earlier than 2026-07-27 | TECNORED | 4h |
| 643 | FD-F0009-0207-GE-J-00016 | manual | 2d | 2026-07-17 | 2026-07-21 |  |  |  |  | Marcio | 16h |
| 644 | Emissão Inicial |  | 5d | 2026-07-24 | 2026-07-30 | 558 | 19.5d | 0d | finish no earlier than 2026-07-30 | Rodrigo | 40h |
| 645 | Análise Tecnored |  | 0.5d | 2026-07-23 | 2026-07-24 | 643 | 24.15d | 0.5d | finish no earlier than 2026-07-24 | TECNORED | 4h |
| 646 | Atendimento de comentários |  | 0.5d | 2026-07-31 | 2026-07-31 | 644 | 19.5d |  | finish no earlier than 2026-07-24 | André | 4h |
| 647 | Aprovação |  | 0.5d | 2026-07-24 | 2026-07-27 | 645 | 23.65d |  | finish no earlier than 2026-07-27 | TECNORED | 4h |
| 648 | FD-F0009-0207-GE-J-00017 | manual | 2d | 2026-07-17 | 2026-07-21 |  |  |  |  | Marcio | 16h |
| 649 | Emissão Inicial |  | 5d | 2026-07-24 | 2026-07-30 | 558 | 19.5d | 0d | finish no earlier than 2026-07-30 | Rodrigo | 40h |
| 650 | Análise Tecnored |  | 0.5d | 2026-07-24 | 2026-07-24 | 648 | 23.65d | 0.5d | finish no earlier than 2026-07-24 | TECNORED | 4h |
| 651 | Atendimento de comentários |  | 0.5d | 2026-07-31 | 2026-07-31 | 649 | 19.5d |  | finish no earlier than 2026-07-27 | André | 4h |
| 652 | Aprovação |  | 0.5d | 2026-07-27 | 2026-07-27 | 650 | 23.15d |  | finish no earlier than 2026-07-27 | TECNORED | 4h |
| 653 | FD-F0009-0207-GE-J-00018 | manual | 2d | 2026-07-17 | 2026-07-21 |  |  |  |  | Marcio | 16h |
| 654 | Emissão Inicial |  | 5d | 2026-07-24 | 2026-07-30 | 558 | 19.5d | 0d | finish no earlier than 2026-07-30 | Rodrigo | 40h |
| 655 | Análise Tecnored |  | 0.5d | 2026-07-24 | 2026-07-24 | 653 | 23.65d | 0.5d | finish no earlier than 2026-07-24 | TECNORED | 4h |
| 656 | Atendimento de comentários |  | 0.5d | 2026-07-31 | 2026-07-31 | 654 | 19.5d |  | finish no earlier than 2026-07-27 | André | 4h |
| 657 | Aprovação |  | 0.5d | 2026-07-27 | 2026-07-27 | 655 | 23.15d |  | finish no earlier than 2026-07-27 | TECNORED | 4h |
| 658 | FD-F0009-0207-GE-J-00019 | manual | 2d | 2026-07-20 | 2026-07-21 |  |  |  |  | Marcio | 16h |
| 659 | Emissão Inicial |  | 5d | 2026-07-24 | 2026-07-30 | 558 | 19.5d | 0d | finish no earlier than 2026-07-30 | Rodrigo | 40h |
| 660 | Análise Tecnored |  | 0.5d | 2026-07-24 | 2026-07-27 | 658 | 23.15d | 0.5d | finish no earlier than 2026-07-27 | TECNORED | 4h |
| 661 | Atendimento de comentários |  | 0.5d | 2026-07-31 | 2026-07-31 | 659 | 19.5d |  | finish no earlier than 2026-07-27 | André | 4h |
| 662 | Aprovação |  | 0.5d | 2026-07-27 | 2026-07-28 | 660 | 22.65d |  | finish no earlier than 2026-07-28 | TECNORED | 4h |
| 663 | FD-F0009-0207-GE-J-00020 | manual | 2d | 2026-07-20 | 2026-07-21 |  |  |  |  | Marcio | 16h |
| 664 | Emissão Inicial |  | 5d | 2026-07-24 | 2026-07-30 | 558 | 19.5d | 0d | finish no earlier than 2026-07-30 | Rodrigo | 40h |
| 665 | Análise Tecnored |  | 0.5d | 2026-07-24 | 2026-07-27 | 663 | 23.15d | 0.5d | finish no earlier than 2026-07-27 | TECNORED | 4h |
| 666 | Atendimento de comentários |  | 0.5d | 2026-07-31 | 2026-07-31 | 664 | 19.5d |  | finish no earlier than 2026-07-27 | André | 4h |
| 667 | Aprovação |  | 0.5d | 2026-07-27 | 2026-07-28 | 665 | 22.65d |  | finish no earlier than 2026-07-28 | TECNORED | 4h |
| 668 | FD-F0009-0207-GE-J-00021 | manual | 2d | 2026-07-20 | 2026-07-21 |  |  |  |  | Marcio | 16h |
| 669 | Emissão Inicial |  | 5d | 2026-07-24 | 2026-07-30 | 558 | 19.5d | 0d | finish no earlier than 2026-07-30 | Rodrigo | 40h |
| 670 | Análise Tecnored |  | 0.5d | 2026-07-27 | 2026-07-27 | 668 | 22.65d | 0.5d | finish no earlier than 2026-07-27 | TECNORED | 4h |
| 671 | Atendimento de comentários |  | 0.5d | 2026-07-31 | 2026-07-31 | 669 | 19.5d |  | finish no earlier than 2026-07-28 | André | 4h |
| 672 | Aprovação |  | 0.5d | 2026-07-28 | 2026-07-28 | 670 | 22.15d |  | finish no earlier than 2026-07-28 | TECNORED | 4h |
| 673 | FD-F0009-0207-GE-J-00022 | manual | 2d | 2026-07-20 | 2026-07-22 |  |  |  |  | Marcio | 16h |
| 674 | Emissão Inicial |  | 5d | 2026-07-24 | 2026-07-30 | 558 | 19.5d | 0d | finish no earlier than 2026-07-30 | Rodrigo | 40h |
| 675 | Análise Tecnored |  | 0.5d | 2026-07-27 | 2026-07-27 | 673 | 22.65d | 0.5d | finish no earlier than 2026-07-27 | TECNORED | 4h |
| 676 | Atendimento de comentários |  | 0.5d | 2026-07-31 | 2026-07-31 | 674 | 19.5d |  | finish no earlier than 2026-07-28 | André | 4h |
| 677 | Aprovação |  | 0.5d | 2026-07-28 | 2026-07-28 | 675 | 22.15d |  | finish no earlier than 2026-07-28 | TECNORED | 4h |
| 678 | FD-F0009-0207-GE-J-00023 | manual | 2d | 2026-07-20 | 2026-07-21 |  |  |  |  | Marcio | 16h |
| 679 | Emissão Inicial |  | 5d | 2026-07-24 | 2026-07-30 | 558 | 19.5d | 0d | finish no earlier than 2026-07-30 | Rodrigo | 40h |
| 680 | Análise Tecnored |  | 0.5d | 2026-07-27 | 2026-07-28 | 678 | 22.15d | 0.5d | finish no earlier than 2026-07-28 | TECNORED | 4h |
| 681 | Atendimento de comentários |  | 0.5d | 2026-07-31 | 2026-07-31 | 679 | 19.5d |  | finish no earlier than 2026-07-28 | André | 4h |
| 682 | Aprovação |  | 0.5d | 2026-07-28 | 2026-07-29 | 680 | 21.65d |  | finish no earlier than 2026-07-29 | TECNORED | 4h |
| 683 | DG-F0009-0207-GE-J00001 | inactive | 5d | 2026-07-17 | 2026-07-24 |  | 22.15d | 0d | finish no earlier than 2026-07-24 | André | 40h |
| 684 | Emissão Inicial | inactive | 2d | 2026-07-22 | 2026-07-24 | 558 | 23.15d | 0d | finish no earlier than 2026-07-21 | Rodrigo | 16h |
| 685 | Análise Tecnored | inactive | 1d | 2026-07-24 | 2026-07-27 | 683 | 22.15d | 0d | finish no earlier than 2026-07-22 | TECNORED | 8h |
| 686 | Atendimento de comentários | inactive | 1d | 2026-07-24 | 2026-07-27 | 684 | 23.15d |  | finish no earlier than 2026-07-23 | André | 8h |
| 687 | Aprovação | inactive | 1d | 2026-07-27 | 2026-07-28 | 685 | 22.15d |  | finish no earlier than 2026-07-24 | TECNORED | 8h |
| 688 | DI-F0009-0207-GE-J00001 |  | 5d | 2026-07-17 | 2026-07-24 |  | 20.15d | 0d | finish no earlier than 2026-07-24 | Everton, Ricardo | 40h |
| 689 | Emissão Inicial |  | 6d | 2026-07-24 | 2026-07-31 | 558 | 18d | 0d | finish no earlier than 2026-07-31 | Rodrigo | 48h |
| 690 | Análise Tecnored |  | 1d | 2026-07-24 | 2026-07-27 | 688 | 22.15d | 0d | finish no earlier than 2026-07-22 | TECNORED | 8h |
| 691 | Atendimento de comentários |  | 1d | 2026-08-03 | 2026-08-03 | 689 | 18d |  | finish no earlier than 2026-07-23 | André | 8h |
| 692 | Aprovação |  | 1d | 2026-07-27 | 2026-07-28 | 690 | 22.15d |  | finish no earlier than 2026-07-24 | TECNORED | 8h |
| 693 | AG-F0009-0207-GE-J00001 |  | 5d | 2026-08-13 | 2026-08-19 |  | 4d | 0d | finish no earlier than 2026-08-19 | Ricardo, Everton | 40h |
| 694 | Emissão Inicial |  | 3d | 2026-08-03 | 2026-08-06 | 538, 543, 688, 698 | 14.15d | 7.15d | finish no earlier than 2026-08-05 | Rodrigo | 24h |
| 695 | Análise Tecnored |  | 1d | 2026-08-20 | 2026-08-20 | 693 | 4d | 0d | finish no earlier than 2026-08-17 | TECNORED | 8h |
| 696 | Atendimento de comentários |  | 1d | 2026-08-18 | 2026-08-18 | 694 | 7d |  | finish no earlier than 2026-08-18 | André | 8h |
| 697 | Aprovação |  | 1d | 2026-08-21 | 2026-08-21 | 695 | 4d |  | finish no earlier than 2026-08-19 | TECNORED | 8h |
| 698 | RE-F0009-0207-GE-J00001 |  | 5d | 2026-07-17 | 2026-07-24 |  | 20.15d | 0d | finish no earlier than 2026-07-24 | Everton, Ricardo | 40h |
| 699 | Emissão Inicial |  | 6d | 2026-07-24 | 2026-07-31 | 558 | 18d | 0d | finish no earlier than 2026-07-31 | Rodrigo | 48h |
| 700 | Análise Tecnored |  | 1d | 2026-07-24 | 2026-07-27 | 698 | 22.15d | 0d | finish no earlier than 2026-07-22 | TECNORED | 8h |

| ID | Task | Type | Duration | Start | Finish | Predecessors | Total slack | Free slack | Constraint | Resources | Work |
| --- | --- | --- | --- | --- | --- | --- | --- | --- | --- | --- | --- |
| 701 | Atendimento de comentários |  | 1d | 2026-08-03 | 2026-08-03 | 699 | 18d |  | finish no earlier than 2026-07-23 | André | 8h |
| 702 | Aprovação |  | 1d | 2026-07-27 | 2026-07-28 | 700 | 22.15d |  | finish no earlier than 2026-07-24 | TECNORED | 8h |
| 703 | LL-F0009-0207-GE-J00001 | inactive | 5d | 2026-07-17 | 2026-07-24 |  | 22.15d | 0d | finish no earlier than 2026-07-24 | Everton, Ricardo | 40h |
| 704 | Emissão Inicial | inactive | 2d | 2026-07-22 | 2026-07-24 | 558 | 23.15d | 0d | finish no earlier than 2026-07-21 | Rodrigo | 16h |
| 705 | Análise Tecnored | inactive | 1d | 2026-07-24 | 2026-07-27 | 703 | 22.15d | 0d | finish no earlier than 2026-07-22 | TECNORED | 8h |
| 706 | Atendimento de comentários | inactive | 1d | 2026-07-24 | 2026-07-27 | 704 | 23.15d |  | finish no earlier than 2026-07-23 | André | 8h |
| 707 | Aprovação | inactive | 1d | 2026-07-27 | 2026-07-28 | 705 | 22.15d |  | finish no earlier than 2026-07-24 | TECNORED | 8h |
| 708 | LB-F0009-0207-GE-J00001 |  | 5d | 2026-08-17 | 2026-08-21 |  | 0d |  | finish no earlier than 2026-08-21 | Paulo | 40h |
| 709 | Emissão Inicial |  | 3d | 2026-08-03 | 2026-08-06 | 538, 543, 688, 698 | 14.15d | 9.15d | finish no earlier than 2026-08-05 | Rodrigo | 24h |
| 710 | Análise Tecnored |  | 1d | 2026-08-24 | 2026-08-24 | 708 | 2d | 0d | finish no earlier than 2026-08-19 | TECNORED | 8h |
| 711 | Atendimento de comentários |  | 1d | 2026-08-20 | 2026-08-20 | 709 | 5d |  | finish no earlier than 2026-08-20 | André | 8h |
| 712 | Aprovação |  | 1d | 2026-08-25 | 2026-08-25 | 710 | 2d |  | finish no earlier than 2026-08-21 | TECNORED | 8h |
