# Plano macro 0207 revisão 21072026

Schedule from MS Project, 2026-07-15 to 2026-08-17, status date 2026-07-17, A marks actual dates.

## Calendars

- Padrão: Mon-Fri 09:00-12:00, 13:00-18:00; Sat-Sun off.

## Resources

| Resource |
| --- |
| Tarcizio |
| André |
| Felipe |
| Carlos |
| Calebe |
| Levy |
| Paulo |
| Ailton |
| Lazaro |
| Rodrigo |
| Ricardo |
| Marcio |
| Everton |
| João |
| André,Felipe |

## Schedule

| ID | WBS | Task | Duration | Start | Finish | Predecessors | Complete | Remaining | Baseline start | Baseline finish | Baseline duration | Total slack | Free slack | Constraint | Resources | Work | Actual work |
| --- | --- | --- | --- | --- | --- | --- | --- | --- | --- | --- | --- | --- | --- | --- | --- | --- | --- |
| 1 | 1 | **F0009 - 0207 - Stock House** | 24d | 2026-07-15 A | 2026-08-17 |  | 6% | 22.68d | 2026-07-13 | 2026-08-18 | 27d | 0d |  |  |  | 968h | 51.2h |
| 2 | 1.1 | **Processo** | 6d | 2026-07-15 A | 2026-07-22 |  | 50% | 3d |  |  |  | 18d |  |  |  | 64h | 32h |
| 3 | 1.1.1 | MC | 4d | 2026-07-17 | 2026-07-22 |  |  |  |  |  |  | 18d |  |  | João | 32h |  |
| 4 | 1.1.2 | FG | 4d | 2026-07-15 A | 2026-07-20 A |  | 100% |  |  |  |  |  |  | finish no earlier than 2026-07-20 | João | 32h | 32h |
| 5 | 1.2 | **Mecânica** | 14d | 2026-07-21 A | 2026-08-07 |  | 5% | 13.3d | 2026-07-13 | 2026-08-07 | 20d | 6d |  |  |  | 280h | 16h |
| 6 | 1.2.1 | ML - silo | 3d | 2026-07-21 A | 2026-07-23 | 4 | 50% | 1.5d | 2026-07-16 | 2026-07-21 | 4d | 0d |  |  | André; Felipe | 40h | 16h |
| 7 | 1.2.2 | ML - Equipamentos | 3d | 2026-07-24 | 2026-07-28 | 6 |  |  | 2026-07-28 | 2026-07-29 | 2d | 0d |  |  | Felipe; André | 48h |  |
| 8 | 1.2.3 | ML - Despoeiramento | 3d | 2026-07-29 | 2026-07-31 | 7 |  |  | 2026-08-03 | 2026-08-04 | 2d | 0d |  |  | André | 24h |  |
| 9 | 1.2.4 | AG - silo | 2d | 2026-07-24 | 2026-07-27 | 6 |  |  | 2026-07-22 | 2026-07-23 | 2d | 4d |  |  | André | 16h |  |
| 10 | 1.2.5 | AG - Equipamentos | 2d | 2026-07-29 | 2026-07-30 | 6, 7 |  |  | 2026-07-30 | 2026-07-31 | 2d | 3d |  |  | Felipe | 16h |  |
| 11 | 1.2.6 | AG - Despoeiramento | 2d | 2026-08-03 | 2026-08-04 | 8, 9 |  |  | 2026-08-05 | 2026-08-06 | 2d | 0d |  |  | André | 16h |  |
| 12 | 1.2.7 | FD | 4d | 2026-08-03 | 2026-08-06 | 13 |  |  |  |  |  | 6d | 0d |  | Tarcizio | 32h |  |
| 13 | 1.2.8 | MC/LE | 9d | 2026-07-21 | 2026-07-31 | 4 |  |  |  |  |  | 6d | 0d |  | Tarcizio | 72h |  |
| 14 | 1.2.9 | PQ | 1d | 2026-08-07 | 2026-08-07 | 12 |  |  |  |  |  | 6d |  |  | Tarcizio | 8h |  |
| 15 | 1.2.10 | DR | 1d | 2026-08-03 | 2026-08-03 | 8 |  |  | 2026-08-06 | 2026-08-06 | 1d | 10d |  |  | Tarcizio | 8h |  |
| 16 | 1.3 | **Tubulação** | 15d | 2026-07-21 | 2026-08-10 |  |  |  | 2026-07-20 | 2026-08-10 | 16d | 5d |  |  |  | 88h |  |
| 17 | 1.3.1 | MC | 2d | 2026-07-21 | 2026-07-22 | 4 |  |  | 2026-07-20 | 2026-07-21 | 2d | 15d | 0d |  | Carlos | 16h |  |
| 18 | 1.3.2 | FG | 2d | 2026-07-23 | 2026-07-24 | 17 |  |  | 2026-07-22 | 2026-07-23 | 2d | 16d |  |  | Calebe | 16h |  |
| 19 | 1.3.3 | AG | 3d | 2026-08-05 | 2026-08-07 | 9, 10, 11 |  |  | 2026-08-06 | 2026-08-07 | 2d | 5d | 0d |  | Levy | 24h |  |
| 20 | 1.3.4 | PQ | 1d | 2026-08-10 | 2026-08-10 | 19 |  |  | 2026-08-10 | 2026-08-10 | 1d | 5d |  |  | Carlos | 8h |  |
| 21 | 1.3.5 | ET -Despoeiramento | 3d | 2026-07-23 | 2026-07-27 | 17 |  |  | 2026-08-10 | 2026-08-10 | 1d | 15d |  |  | Carlos | 24h |  |
| 22 | 1.4 | **Estrutura** | 12d | 2026-07-24 | 2026-08-10 |  |  |  | 2026-07-22 | 2026-08-17 | 19d | 1d |  |  |  | 152h |  |
| 23 | 1.4.1 | ML e MC - silos | 3d | 2026-07-24 | 2026-07-28 | 6 |  |  | 2026-07-22 | 2026-07-24 | 3d | 1d | 0d |  | Paulo | 24h |  |
| 24 | 1.4.2 | AG e PL - silos | 3d | 2026-07-29 | 2026-07-31 | 23 |  |  | 2026-07-27 | 2026-07-29 | 3d | 1d | 0d |  | Ailton | 24h |  |
| 25 | 1.4.3 | ML e MC Equipamentos | 2d | 2026-07-29 | 2026-07-30 | 7 |  |  | 2026-07-30 | 2026-07-31 | 2d | 2d | 1d |  | Paulo | 16h |  |
| 26 | 1.4.4 | AG e PL Equipamentos | 3d | 2026-08-03 | 2026-08-05 | 25, 24 |  |  | 2026-08-03 | 2026-08-06 | 4d | 1d | 0d |  | Ailton | 24h |  |
| 27 | 1.4.5 | ML e MC - Despoeiramento | 3d | 2026-08-03 | 2026-08-05 | 8 |  |  | 2026-08-05 | 2026-08-07 | 3d | 1d | 0d |  | Paulo | 24h |  |
| 28 | 1.4.6 | AG e PL - Despoeiramento | 2d | 2026-08-06 | 2026-08-07 | 27, 26 |  |  | 2026-08-10 | 2026-08-11 | 2d | 1d | 0d |  | Ailton | 16h |  |
| 29 | 1.4.7 | PQ | 3d | 2026-08-06 | 2026-08-10 | 23, 25, 27 |  |  | 2026-08-11 | 2026-08-13 | 3d | 5d |  |  | Paulo | 24h |  |

| ID | WBS | Task | Duration | Start | Finish | Predecessors | Complete | Remaining | Baseline start | Baseline finish | Baseline duration | Total slack | Free slack | Resources | Work | Actual work |
| --- | --- | --- | --- | --- | --- | --- | --- | --- | --- | --- | --- | --- | --- | --- | --- | --- |
| 30 | 1.5 | **Elétrica** | 11d | 2026-08-03 | 2026-08-17 |  |  |  | 2026-08-07 | 2026-08-18 | 8d | 0d |  |  | 88h |  |
| 31 | 1.5.1 | AG | 3d | 2026-08-05 | 2026-08-07 | 9, 10, 11 |  |  | 2026-08-07 | 2026-08-11 | 3d | 0d |  | Rodrigo | 24h |  |
| 32 | 1.5.2 | LR | 2d | 2026-08-03 | 2026-08-04 | 13 |  |  | 2026-08-12 | 2026-08-13 | 2d | 9d |  | Lazaro | 16h |  |
| 33 | 1.5.3 | MC/DU/FD/LC | 3d | 2026-08-10 | 2026-08-12 | 31 |  |  | 2026-08-12 | 2026-08-17 | 4d | 0d |  | Rodrigo | 24h |  |
| 34 | 1.5.4 | LM/PQ | 3d | 2026-08-13 | 2026-08-17 | 33 |  |  | 2026-08-18 | 2026-08-18 | 1d | 0d |  | Lazaro | 24h |  |
| 35 | 1.6 | **Automação** | 15d | 2026-07-21 A | 2026-08-10 |  | 2% | 14.74d | 2026-07-16 | 2026-08-12 | 20d | 5d |  |  | 256h | 3.2h |
| 36 | 1.6.1 | FG | 3d | 2026-07-21 A | 2026-07-23 | 4 | 13% | 2.6d | 2026-07-16 | 2026-07-22 | 5d | 5d | 0d | Paulo | 24h | 3.2h |
| 37 | 1.6.2 | AG | 3d | 2026-08-03 | 2026-08-05 | 40 |  |  | 2026-08-04 | 2026-08-06 | 3d | 8d |  | Ricardo; Everton | 48h |  |
| 38 | 1.6.3 | FD | 5d | 2026-07-24 | 2026-07-30 | 36 |  |  | 2026-07-23 | 2026-07-30 | 6d | 12d |  | Marcio | 40h |  |
| 39 | 1.6.4 | PQ | 3d | 2026-08-06 | 2026-08-10 | 40, 41 |  |  | 2026-08-07 | 2026-08-12 | 4d | 5d |  | Marcio | 24h |  |
| 40 | 1.6.5 | LI/LE/DI/RE | 6d | 2026-07-24 | 2026-07-31 | 36 |  |  | 2026-07-23 | 2026-08-03 | 8d | 5d | 0d | Everton; Ricardo | 96h |  |
| 41 | 1.6.6 | LB | 3d | 2026-08-03 | 2026-08-05 | 40 |  |  | 2026-08-04 | 2026-08-06 | 3d | 5d | 0d | Paulo | 24h |  |
| 42 | 1.7 | **Civil** | 5d | 2026-08-10 | 2026-08-14 |  |  |  |  |  |  | 1d |  |  | 40h |  |
| 43 | 1.7.1 | MC | 3d | 2026-08-10 | 2026-08-12 | 24, 26, 28 |  |  |  |  |  | 1d | 0d | Rodrigo | 24h |  |
| 44 | 1.7.2 | LM | 1d | 2026-08-13 | 2026-08-13 | 43 |  |  |  |  |  | 1d | 0d | Rodrigo | 8h |  |
| 45 | 1.7.3 | PQ | 1d | 2026-08-14 | 2026-08-14 | 44 |  |  |  |  |  | 1d |  | Rodrigo | 8h |  |
