# Plano macro 0207

Schedule from MS Project, 2026-07-13 to 2026-08-18, status date 2026-07-17, A marks actual dates.

## Calendars

- Padrão: Mon-Fri 09:00-12:00, 13:00-18:00; Sat-Sun off.

## Resources

| Resource |
| --- |
| Tarcizio |
| André |
| Felipe |
| Carlos |
| Calebe |
| Levy |
| Paulo |
| Ailton |
| Lazaro |
| Rodrigo |
| Ricardo |
| Marcio |
| Everton |
| João |
| André,Felipe |

## Schedule

| ID | WBS | Task | Duration | Start | Finish | Predecessors | Complete | Remaining | Baseline start | Baseline finish | Baseline duration | Total slack | Free slack | Constraint | Resources | Work | Actual work |
| --- | --- | --- | --- | --- | --- | --- | --- | --- | --- | --- | --- | --- | --- | --- | --- | --- | --- |
| 1 | 1 | **F0009 - 0207 - Stock House** | 27d | 2026-07-13 A | 2026-08-18 |  | 5% | 25.58d | 2026-07-13 | 2026-08-18 | 27d | 0d |  |  |  | 984h | 51.2h |
| 2 | 1.1 | **Processo** | 6d | 2026-07-21 | 2026-07-28 |  |  |  |  |  |  | 15d |  |  |  | 48h |  |
| 3 | 1.1.1 | MC/FG | 3d | 2026-07-21 | 2026-07-23 | 6 |  |  |  |  |  | 15d | 0d |  | João | 24h |  |
| 4 | 1.1.2 | ET | 3d | 2026-07-24 | 2026-07-28 | 3 |  |  |  |  |  | 15d |  |  | João | 24h |  |
| 5 | 1.2 | **Mecânica** | 21d | 2026-07-13 A | 2026-08-10 |  | 15% | 17.77d | 2026-07-13 | 2026-08-07 | 20d | 6d |  |  |  | 288h | 48h |
| 6 | 1.2.1 | FG | 6d | 2026-07-13 A | 2026-07-20 |  | 83% | 1d | 2026-07-13 | 2026-07-15 | 3d | 0.4d | 0d | start no earlier than 2026-07-13 | Tarcizio | 48h | 40h |
| 7 | 1.2.2 | ML - silo | 3d | 2026-07-21 A | 2026-07-23 | 6 | 33% | 2d | 2026-07-16 | 2026-07-21 | 4d | 0d |  |  | André; Felipe | 40h | 8h |
| 8 | 1.2.3 | ML - Equipamentos | 4d | 2026-07-24 | 2026-07-29 | 7 |  |  | 2026-07-28 | 2026-07-29 | 2d | 0d |  |  | Felipe; André | 64h |  |
| 9 | 1.2.4 | ML - Despoeiramento | 4d | 2026-07-30 | 2026-08-04 | 8 |  |  | 2026-08-03 | 2026-08-04 | 2d | 0d |  |  | André | 32h |  |
| 10 | 1.2.5 | ML - Correia | 4d | 2026-07-30 | 2026-08-04 | 8 |  |  | 2026-08-05 | 2026-08-05 | 1d | 1d | 0d |  | Felipe | 32h |  |
| 11 | 1.2.6 | AG - silo | 2d | 2026-08-05 | 2026-08-06 | 9 |  |  | 2026-07-22 | 2026-07-23 | 2d | 6d | 0d |  | André | 16h |  |
| 12 | 1.2.7 | AG - Equipamentos | 2d | 2026-08-05 | 2026-08-06 | 10 |  |  | 2026-07-30 | 2026-07-31 | 2d | 6d | 0d |  | Felipe | 16h |  |
| 13 | 1.2.8 | AG - Despoeiramento | 2d | 2026-08-07 | 2026-08-10 | 11 |  |  | 2026-08-05 | 2026-08-06 | 2d | 6d |  |  | André | 16h |  |
| 14 | 1.2.9 | AG - Correia | 2d | 2026-08-07 | 2026-08-10 | 12 |  |  | 2026-08-06 | 2026-08-07 | 2d | 6d |  |  | Felipe | 16h |  |
| 15 | 1.2.10 | MC/LE | 9d | 2026-07-21 | 2026-07-31 | 6 |  |  |  |  |  | 10d | 0d |  |  |  |  |
| 16 | 1.2.11 | DR | 1d | 2026-08-05 | 2026-08-05 | 10 |  |  | 2026-08-06 | 2026-08-06 | 1d | 9d |  |  | Tarcizio | 8h |  |
| 17 | 1.3 | **Tubulação** | 16d | 2026-07-21 | 2026-08-11 |  |  |  | 2026-07-20 | 2026-08-10 | 16d | 5d |  |  |  | 80h |  |
| 18 | 1.3.1 | MC | 2d | 2026-07-21 | 2026-07-22 | 6 |  |  | 2026-07-20 | 2026-07-21 | 2d | 17d | 0d |  | Carlos | 16h |  |
| 19 | 1.3.2 | FG | 2d | 2026-07-23 | 2026-07-24 | 6, 18 |  |  | 2026-07-22 | 2026-07-23 | 2d | 17d |  |  | Calebe | 16h |  |
| 20 | 1.3.3 | AG | 3d | 2026-08-05 | 2026-08-07 | 10 |  |  | 2026-08-06 | 2026-08-07 | 2d | 5d | 0d |  | Levy | 24h |  |
| 21 | 1.3.4 | PQ | 1d | 2026-08-10 | 2026-08-10 | 20 |  |  | 2026-08-10 | 2026-08-10 | 1d | 6d |  |  | Carlos | 8h |  |
| 22 | 1.3.5 | ET -Despoeiramento | 2d | 2026-08-10 | 2026-08-11 | 20 |  |  | 2026-08-10 | 2026-08-10 | 1d | 5d |  |  | Carlos | 16h |  |
| 23 | 1.4 | **Estrutura** | 18d | 2026-07-24 | 2026-08-18 |  |  |  | 2026-07-22 | 2026-08-17 | 19d | 0d |  |  |  | 224h |  |
| 24 | 1.4.1 | ML e MC - silos | 3d | 2026-07-24 | 2026-07-28 | 7 |  |  | 2026-07-22 | 2026-07-24 | 3d | 1d | 0d |  | Paulo | 24h |  |
| 25 | 1.4.2 | AG e PL - silos | 3d | 2026-07-29 | 2026-07-31 | 24 |  |  | 2026-07-27 | 2026-07-29 | 3d | 1d | 0d |  | Ailton | 24h |  |
| 26 | 1.4.3 | ML e MC Equipamentos | 2d | 2026-07-30 | 2026-07-31 | 8 |  |  | 2026-07-30 | 2026-07-31 | 2d | 1d | 0d |  | Paulo | 16h |  |
| 27 | 1.4.4 | AG e PL Equipamentos | 4d | 2026-08-03 | 2026-08-06 | 26, 25 |  |  | 2026-08-03 | 2026-08-06 | 4d | 1d |  |  | Ailton | 32h |  |
| 28 | 1.4.5 | ML e MC - Despoeiramento | 3d | 2026-08-05 | 2026-08-07 | 9 |  |  | 2026-08-05 | 2026-08-07 | 3d | 0d |  |  | Paulo | 24h |  |
| 29 | 1.4.6 | AG e PL - Despoeiramento | 2d | 2026-08-10 | 2026-08-11 | 28, 27 |  |  | 2026-08-10 | 2026-08-11 | 2d | 0d |  |  | Ailton | 16h |  |
| 30 | 1.4.7 | ML e MC - Correia | 3d | 2026-08-05 | 2026-08-07 | 10 |  |  | 2026-08-06 | 2026-08-10 | 3d | 2d | 0d |  | Paulo | 24h |  |
| 31 | 1.4.8 | AG e PL - Correia | 5d | 2026-08-12 | 2026-08-18 | 30, 29 |  |  | 2026-08-11 | 2026-08-17 | 5d | 0d |  |  | Ailton | 40h |  |
| 32 | 1.4.9 | PQ | 3d | 2026-08-10 | 2026-08-12 | 24, 26, 28, 30 |  |  | 2026-08-11 | 2026-08-13 | 3d | 4d |  |  | Tarcizio | 24h |  |

| ID | WBS | Task | Duration | Start | Finish | Predecessors | Complete | Remaining | Baseline start | Baseline finish | Baseline duration | Total slack | Free slack | Resources | Work | Actual work |
| --- | --- | --- | --- | --- | --- | --- | --- | --- | --- | --- | --- | --- | --- | --- | --- | --- |
| 33 | 1.5 | **Elétrica** | 11d | 2026-08-03 | 2026-08-17 |  |  |  | 2026-08-07 | 2026-08-18 | 8d | 1d |  |  | 88h |  |
| 34 | 1.5.1 | AG | 3d | 2026-08-05 | 2026-08-07 | 10 |  |  | 2026-08-07 | 2026-08-11 | 3d | 1d | 0d | Rodrigo | 24h |  |
| 35 | 1.5.2 | LR | 2d | 2026-08-03 | 2026-08-04 | 15 |  |  | 2026-08-12 | 2026-08-13 | 2d | 10d |  | Lazaro | 16h |  |
| 36 | 1.5.3 | MC/DU/FD/LC | 4d | 2026-08-10 | 2026-08-13 | 34 |  |  | 2026-08-12 | 2026-08-17 | 4d | 1d | 0d | Rodrigo | 32h |  |
| 37 | 1.5.4 | LM/PQ | 2d | 2026-08-14 | 2026-08-17 | 36 |  |  | 2026-08-18 | 2026-08-18 | 1d | 1d |  | Lazaro | 16h |  |
| 38 | 1.6 | **Automação** | 15d | 2026-07-21 A | 2026-08-10 |  | 2% | 14.74d | 2026-07-16 | 2026-08-12 | 20d | 6d |  |  | 256h | 3.2h |
| 39 | 1.6.1 | FG | 3d | 2026-07-21 A | 2026-07-23 | 6 | 13% | 2.6d | 2026-07-16 | 2026-07-22 | 5d | 6d | 0d | Paulo | 24h | 3.2h |
| 40 | 1.6.2 | AG | 3d | 2026-08-03 | 2026-08-05 | 43 |  |  | 2026-08-04 | 2026-08-06 | 3d | 9d |  | Ricardo; Everton | 48h |  |
| 41 | 1.6.3 | FD | 5d | 2026-07-24 | 2026-07-30 | 39 |  |  | 2026-07-23 | 2026-07-30 | 6d | 13d |  | Marcio | 40h |  |
| 42 | 1.6.4 | PQ | 3d | 2026-08-06 | 2026-08-10 | 43, 44 |  |  | 2026-08-07 | 2026-08-12 | 4d | 6d |  | Marcio | 24h |  |
| 43 | 1.6.5 | LI/LE/DI/RE | 6d | 2026-07-24 | 2026-07-31 | 39 |  |  | 2026-07-23 | 2026-08-03 | 8d | 6d | 0d | Everton; Ricardo | 96h |  |
| 44 | 1.6.6 | LB | 3d | 2026-08-03 | 2026-08-05 | 43 |  |  | 2026-08-04 | 2026-08-06 | 3d | 6d | 0d | Paulo | 24h |  |
| 45 | 1.7 | **Civil** | 5d | 2026-08-10 | 2026-08-14 |  |  |  |  |  |  | 2d |  |  |  |  |
| 46 | 1.7.1 | MC | 3d | 2026-08-10 | 2026-08-12 | 24, 26, 28, 30 |  |  |  |  |  | 2d | 0d |  |  |  |
| 47 | 1.7.2 | LM | 1d | 2026-08-13 | 2026-08-13 | 46 |  |  |  |  |  | 2d | 0d |  |  |  |
| 48 | 1.7.3 | PQ | 1d | 2026-08-14 | 2026-08-14 | 47 |  |  |  |  |  | 2d |  |  |  |  |
