# CR-F0009-0305-MB-F-00001

Schedule from MS Project, 2026-04-27 to 2026-08-03, status date 2026-07-06, A marks actual dates.

## Calendars

- Padrão: Mon-Fri 09:00-12:00, 13:00-18:00; Sat-Sun off. Exceptions (off unless hours are given): 2026-06-04 to 2026-06-05 (FERIADO), 2026-07-09 to 2026-07-10.

## Schedule

| ID | WBS | Task | Type | Duration | Start | Finish | Predecessors | Complete | Remaining | Baseline start | Baseline finish | Baseline duration | Baseline 1 start | Baseline 1 finish | Total slack | Constraint | Disciplina | Início_LB_R0 | Término_LB_R0 | Sprints |
| --- | --- | --- | --- | --- | --- | --- | --- | --- | --- | --- | --- | --- | --- | --- | --- | --- | --- | --- | --- | --- |
| 1 | 1 | **F0009 - Programa Marabá** |  | 62d | 2026-04-27 A | 2026-07-27 |  | 51% | 30.48d | 2026-04-27 | 2026-07-08 | 53d | 2026-04-27 | 2026-07-08 | 0d |  | GERAL | Seg 27/04/26 | Qua 08/07/26 | Sprint 2 |
| 2 | 1.1 | **Área 0000 -Documento geral** |  | 24d | 2026-05-19 A | 2026-06-23 |  | 50% | 12d | 2026-05-19 | 2026-05-22 | 3d | 2026-05-19 | 2026-05-22 | 0d |  | GERAL | Ter 19/05/26 | Sex 22/05/26 | Sprint 4 |
| 3 | 1.1.1 | **Marcos** |  | 24d | 2026-05-19 A | 2026-06-23 |  | 50% | 12d | 2026-05-19 | 2026-05-22 | 3d | 2026-05-19 | 2026-05-22 | 0d |  | MARCOS | Ter 19/05/26 | Sex 22/05/26 | Sprint 4 |
| 4 | 1.1.1.1 | Critério de projeto Processo | manual | 1d | 2026-06-05 | 2026-06-05 |  |  |  | 2026-05-19 | 2026-05-19 | 0d | 2026-05-19 | 2026-05-19 |  |  | MARCOS | Ter 19/05/26 | Ter 19/05/26 | Sprint 2 |
| 5 | 1.1.1.2 | Critério de projeto Mecânica | manual | 1d | 2026-05-19 A | 2026-05-19 A |  | 100% |  | 2026-05-19 | 2026-05-19 | 0d | 2026-05-19 | 2026-05-19 |  |  | MARCOS | Ter 19/05/26 | Ter 19/05/26 | Sprint 4 |
| 6 | 1.1.1.3 | Critério de projeto Tubulação | manual | 1d | 2026-05-22 A | 2026-05-22 A |  | 100% |  | 2026-05-22 | 2026-05-22 | 0d | 2026-05-22 | 2026-05-22 |  |  | MARCOS | Sex 22/05/26 | Sex 22/05/26 | Sprint 4 |
| 7 | 1.1.1.4 | Critério de projeto Elétrica | manual | 1d | 2026-06-05 A | 2026-06-05 A |  | 100% |  | 2026-05-22 | 2026-05-22 | 0d | 2026-05-22 | 2026-05-22 |  |  | MARCOS | Sex 22/05/26 | Sex 22/05/26 | Sprint 7 |
| 8 | 1.1.1.5 | Critério de projeto Automação | manual | 1d | 2026-06-05 A | 2026-06-05 |  |  | 1d | 2026-05-22 | 2026-05-22 | 0d | 2026-05-22 | 2026-05-22 |  |  | MARCOS | Sex 22/05/26 | Sex 22/05/26 | Sprint 7 |
| 9 | 1.1.1.6 | Critério de projeto Estrutura Metálica | manual | 1d | 2026-06-23 | 2026-06-23 |  |  |  | 2026-05-22 | 2026-05-22 | 0d | 2026-05-22 | 2026-05-22 |  |  | MARCOS | Sex 22/05/26 | Sex 22/05/26 | Sprint 2 |
| 10 | 1.2 | **Área 0305 - Hot Blast Stoves** |  | 62d | 2026-04-27 A | 2026-07-27 |  | 51% | 30.48d | 2026-04-27 | 2026-07-08 | 53d | 2026-04-27 | 2026-07-08 | 0d |  | GERAL | Seg 27/04/26 | Qua 08/07/26 | Sprint 2 |
| 11 | 1.2.1 | KOM - Início de projeto | milestone | 0d | 2026-04-27 A | 2026-04-27 A |  | 100% |  | 2026-04-27 | 2026-04-27 | 0d | 2026-04-27 | 2026-04-27 |  | start no earlier than 2026-04-27 | GERAL | Seg 27/04/26 | Seg 27/04/26 | Sprint 2 |
| 12 | 1.2.2 | **Pendências** |  | 0d | 2026-04-29 A | 2026-04-29 A |  | 100% |  | 2026-04-29 | 2026-04-29 | 0d | 2026-04-29 | 2026-04-29 |  |  | PENDÊNCIAS | Qua 29/04/26 | Qua 29/04/26 | Sprint 2 |
| 13 | 1.2.2.1 | Recebimento de dados de entrada | milestone | 0d | 2026-04-29 A | 2026-04-29 A |  | 100% |  | 2026-04-29 | 2026-04-29 | 0d | 2026-04-29 | 2026-04-29 |  |  | PENDÊNCIAS | Qua 29/04/26 | Qua 29/04/26 | Sprint 2 |
| 14 | 1.2.3 | **Planejamento** |  | 25.4d | 2026-04-27 A | 2026-06-01 A |  | 100% |  | 2026-04-27 | 2026-05-19 | 17d | 2026-04-27 | 2026-05-19 |  |  | PLANEJAMENTO | Seg 27/04/26 | Ter 19/05/26 | Sprint 2 |
| 15 | 1.2.3.1 | **LD-F0009-0305-MB-F-00001** |  | 24d | 2026-04-27 A | 2026-05-28 A |  | 100% |  | 2026-04-27 | 2026-05-19 | 17d | 2026-04-27 | 2026-05-19 |  |  | PLANEJAMENTO | Seg 27/04/26 | Ter 19/05/26 | Sprint 2 |
| 16 | 1.2.3.1.1 | Emissão inicial |  | 3d | 2026-04-27 A | 2026-04-29 A | 11 | 100% |  | 2026-04-27 | 2026-04-29 | 3d | 2026-04-27 | 2026-04-29 |  |  | PLANEJAMENTO | Seg 27/04/26 | Qua 29/04/26 | Sprint 2 |
| 17 | 1.2.3.1.2 | Análise Tecnored |  | 1d | 2026-04-30 A | 2026-04-30 A | 16 | 100% |  | 2026-04-30 | 2026-04-30 | 1d | 2026-04-30 | 2026-04-30 |  |  | PLANEJAMENTO | Qui 30/04/26 | Qui 30/04/26 | Sprint 2 |
| 18 | 1.2.3.1.3 | Atendimento de comentários |  | 6d | 2026-05-06 A | 2026-05-13 A | 17FS+3d | 100% |  | 2026-05-06 | 2026-05-13 | 6d | 2026-05-06 | 2026-05-13 |  |  | PLANEJAMENTO | Qua 06/05/26 | Qua 13/05/26 | Sprint 2 |
| 19 | 1.2.3.1.4 | Aprovação |  | 1d | 2026-05-28 A | 2026-05-28 A | 18FS+10d | 100% |  | 2026-05-19 | 2026-05-19 | 1d | 2026-05-19 | 2026-05-19 |  |  | PLANEJAMENTO | Ter 19/05/26 | Ter 19/05/26 | Sprint 5 |
| 20 | 1.2.3.2 | **CR-F0009-0305-MB-F-00001** |  | 22.4d | 2026-04-30 A | 2026-06-01 A |  | 100% |  | 2026-04-30 | 2026-05-19 | 13.4d | 2026-04-30 | 2026-05-19 |  |  | PLANEJAMENTO | Qui 30/04/26 | Ter 19/05/26 | Sprint 2 |
| 21 | 1.2.3.2.1 | Emissão inicial |  | 3d | 2026-04-30 A | 2026-05-04 A | 16 | 100% |  | 2026-04-30 | 2026-05-04 | 3d | 2026-04-30 | 2026-05-04 |  |  | PLANEJAMENTO | Qui 30/04/26 | Seg 04/05/26 | Sprint 2 |
| 22 | 1.2.3.2.2 | Análise Tecnored |  | 1d | 2026-05-05 A | 2026-05-05 A | 21 | 100% |  | 2026-05-05 | 2026-05-05 | 1d | 2026-05-05 | 2026-05-05 |  |  | PLANEJAMENTO | Ter 05/05/26 | Ter 05/05/26 | Sprint 2 |
| 23 | 1.2.3.2.3 | Atendimento de comentários |  | 2d | 2026-05-13 A | 2026-05-18 A | 22FS+8d | 100% |  | 2026-05-13 | 2026-05-18 | 2d | 2026-05-13 | 2026-05-18 |  |  | PLANEJAMENTO | Qua 13/05/26 | Seg 18/05/26 | Sprint 3 |
| 24 | 1.2.3.2.4 | Aprovação |  | 1d | 2026-05-29 A | 2026-06-01 A | 23FS+9d | 100% |  | 2026-05-18 | 2026-05-19 | 1d | 2026-05-18 | 2026-05-19 |  |  | PLANEJAMENTO | Seg 18/05/26 | Ter 19/05/26 | Sprint 5 |

| ID | WBS | Task | Type | Duration | Start | Finish | Predecessors | Complete | Remaining | Baseline start | Baseline finish | Baseline duration | Baseline 1 start | Baseline 1 finish | Total slack | Free slack | Constraint | Baseline cost | Sprints | Disciplina | Início_LB_R0 | Término_LB_R0 |
| --- | --- | --- | --- | --- | --- | --- | --- | --- | --- | --- | --- | --- | --- | --- | --- | --- | --- | --- | --- | --- | --- | --- |
| 25 | 1.2.3.3 | **LF-F0009-0305-MB-F-00001** | inactive | 7d | 2026-07-01 | 2026-07-13 |  |  |  |  |  |  |  |  | 10d |  |  | -0 | Sprint 10 |  |  |  |
| 26 | 1.2.3.3.1 | Emissão inicial | inactive | 3d | 2026-07-01 | 2026-07-03 | 11FS+45d |  |  |  |  |  |  |  | 10d | 0d |  | -0 | Sprint 10 |  |  |  |
| 27 | 1.2.3.3.2 | Análise Tecnored | inactive | 1d | 2026-07-06 | 2026-07-06 | 26 |  |  |  |  |  |  |  | 10d | 0d |  | -0 | Sprint 11 |  |  |  |
| 28 | 1.2.3.3.3 | Atendimento de comentários | inactive | 2d | 2026-07-07 | 2026-07-08 | 27 |  |  |  |  |  |  |  | 10d | 0d |  | -0 | Sprint 11 |  |  |  |
| 29 | 1.2.3.3.4 | Aprovação | inactive | 1d | 2026-07-13 | 2026-07-13 | 28 |  |  |  |  |  |  |  | 10d |  |  | -0 | Sprint 12 |  |  |  |
| 30 | 1.2.4 | **Coordenação** |  | 62d | 2026-04-27 A | 2026-07-27 |  | 40% | 37.37d | 2026-04-27 | 2026-07-08 | 53d | 2026-04-27 | 2026-07-08 | 0d |  |  |  | Sprint 2 | COORDENAÇÃO | Seg 27/04/26 | Qua 08/07/26 |
| 31 | 1.2.4.1 | **RM-F0009-0305-MB-G-00001** |  | 7d | 2026-07-01 A | 2026-07-13 |  | 34% | 4.6d | 2026-05-25 | 2026-06-02 | 7d | 2026-05-25 | 2026-06-02 | 10d |  |  |  | Sprint 10 | COORDENAÇÃO | Seg 25/05/26 | Ter 02/06/26 |
| 32 | 1.2.4.1.1 | Emissão inicial |  | 3d | 2026-07-01 A | 2026-07-03 | 11FS+23d | 80% | 0.6d | 2026-05-25 | 2026-05-27 | 3d | 2026-05-25 | 2026-05-27 | 10d | 0d | finish no earlier than 2026-06-28 |  | Sprint 10 | COORDENAÇÃO | Seg 25/05/26 | Qua 27/05/26 |
| 33 | 1.2.4.1.2 | Análise Tecnored |  | 1d | 2026-07-06 | 2026-07-06 | 32 |  |  | 2026-05-28 | 2026-05-28 | 1d | 2026-05-28 | 2026-05-28 | 10d | 0d |  |  | Sprint 11 | COORDENAÇÃO | Qui 28/05/26 | Qui 28/05/26 |
| 34 | 1.2.4.1.3 | Atendimento de comentários |  | 2d | 2026-07-07 | 2026-07-08 | 33 |  |  | 2026-05-29 | 2026-06-01 | 2d | 2026-05-29 | 2026-06-01 | 10d | 0d |  |  | Sprint 11 | COORDENAÇÃO | Sex 29/05/26 | Seg 01/06/26 |
| 35 | 1.2.4.1.4 | Aprovação |  | 1d | 2026-07-13 | 2026-07-13 | 34 |  |  | 2026-06-02 | 2026-06-02 | 1d | 2026-06-02 | 2026-06-02 | 10d |  |  |  | Sprint 12 | COORDENAÇÃO | Ter 02/06/26 | Ter 02/06/26 |
| 36 | 1.2.4.2 | **RM-F0009-0305MB-G-00002** | inactive | 7d | 2026-07-22 | 2026-07-30 |  |  |  | 2026-06-11 | 2026-06-19 | 7d | 2026-06-11 | 2026-06-19 | -3d | 0d |  |  | Sprint 13 | COORDENAÇÃO | Qui 11/06/26 | Sex 19/06/26 |
| 37 | 1.2.4.2.1 | Emissão inicial | inactive | 3d | 2026-07-22 | 2026-07-24 | 32FS+10d |  |  | 2026-06-11 | 2026-06-15 | 3d | 2026-06-11 | 2026-06-15 | -3d | 0d | start no earlier than 2026-06-22 |  | Sprint 13 | COORDENAÇÃO | Qui 11/06/26 | Seg 15/06/26 |
| 38 | 1.2.4.2.2 | Análise Tecnored | inactive | 1d | 2026-07-27 | 2026-07-27 | 37 |  |  | 2026-06-16 | 2026-06-16 | 1d | 2026-06-16 | 2026-06-16 | -3d | 0d |  |  | Fora do Período | COORDENAÇÃO | Ter 16/06/26 | Ter 16/06/26 |
| 39 | 1.2.4.2.3 | Atendimento de comentários | inactive | 2d | 2026-07-28 | 2026-07-29 | 38 |  |  | 2026-06-17 | 2026-06-18 | 2d | 2026-06-17 | 2026-06-18 | -3d | 0d |  |  | Fora do Período | COORDENAÇÃO | Qua 17/06/26 | Qui 18/06/26 |
| 40 | 1.2.4.2.4 | Aprovação | inactive | 1d | 2026-07-30 | 2026-07-30 | 39 |  |  | 2026-06-19 | 2026-06-19 | 1d | 2026-06-19 | 2026-06-19 | -3d | 0d |  |  | Fora do Período | COORDENAÇÃO | Sex 19/06/26 | Sex 19/06/26 |
| 41 | 1.2.4.3 | **RL-F0009-0305-MB-G-00001** |  | 4d | 2026-07-15 A | 2026-07-20 |  | 19% | 3.25d | 2026-06-30 | 2026-07-08 | 7d | 2026-06-30 | 2026-07-08 | 5d |  |  |  | Sprint 12 | COORDENAÇÃO | Ter 30/06/26 | Qua 08/07/26 |
| 42 | 1.2.4.3.1 | Emissão inicial |  | 1d | 2026-07-15 A | 2026-07-15 |  | 75% | 0.25d | 2026-06-30 | 2026-07-02 | 3d | 2026-06-30 | 2026-07-02 | 5d | 0d | finish no earlier than 2026-06-28 |  | Sprint 12 | COORDENAÇÃO | Ter 30/06/26 | Qui 02/07/26 |
| 43 | 1.2.4.3.2 | Análise Tecnored |  | 1d | 2026-07-16 | 2026-07-16 | 42 |  |  | 2026-07-03 | 2026-07-03 | 1d | 2026-07-03 | 2026-07-03 | 5d | 0d | start no earlier than 2026-06-26 |  | Sprint 12 | COORDENAÇÃO | Sex 03/07/26 | Sex 03/07/26 |
| 44 | 1.2.4.3.3 | Atendimento de comentários |  | 1d | 2026-07-17 | 2026-07-17 | 43 |  |  | 2026-07-06 | 2026-07-07 | 2d | 2026-07-06 | 2026-07-07 | 5d | 0d | start no earlier than 2026-06-29 |  | Sprint 12 | COORDENAÇÃO | Seg 06/07/26 | Ter 07/07/26 |
| 45 | 1.2.4.3.4 | Aprovação |  | 1d | 2026-07-20 | 2026-07-20 | 44 |  |  | 2026-07-08 | 2026-07-08 | 1d | 2026-07-08 | 2026-07-08 | 5d |  | start no earlier than 2026-06-30 |  | Sprint 13 | COORDENAÇÃO | Qua 08/07/26 | Qua 08/07/26 |
| 46 | 1.2.4.4 | **LP-F0009-0305-MB-G-00001** |  | 62d | 2026-04-27 A | 2026-07-27 |  | 57% | 26.57d | 2026-04-27 | 2026-06-16 | 37d | 2026-04-27 | 2026-06-16 | 0d |  |  |  | Sprint 2 | COORDENAÇÃO | Seg 27/04/26 | Ter 16/06/26 |
| 47 | 1.2.4.4.1 | Emissão inicial |  | 3d | 2026-04-27 A | 2026-04-29 A | 11 | 100% |  | 2026-04-27 | 2026-04-29 | 3d | 2026-04-27 | 2026-04-29 |  |  | finish no earlier than 2026-06-29 |  | Sprint 2 | COORDENAÇÃO | Seg 27/04/26 | Qua 29/04/26 |
| 48 | 1.2.4.4.2 | Análise Tecnored |  | 1d | 2026-04-30 A | 2026-04-30 A | 47 | 100% |  | 2026-04-30 | 2026-04-30 | 1d | 2026-04-30 | 2026-04-30 |  |  |  |  | Sprint 2 | COORDENAÇÃO | Qui 30/04/26 | Qui 30/04/26 |
| 49 | 1.2.4.4.3 | Atendimento de comentários |  | 2d | 2026-07-23 | 2026-07-24 | 48FS+55d |  |  | 2026-06-12 | 2026-06-15 | 2d | 2026-06-12 | 2026-06-15 | 0d |  | start no earlier than 2026-06-12 |  | Sprint 13 | COORDENAÇÃO | Sex 12/06/26 | Seg 15/06/26 |
| 50 | 1.2.4.4.4 | Aprovação |  | 1d | 2026-07-27 | 2026-07-27 | 49 |  |  | 2026-06-16 | 2026-06-16 | 1d | 2026-06-16 | 2026-06-16 | 0d |  | start no earlier than 2026-06-16 |  | Fora do Período | COORDENAÇÃO | Ter 16/06/26 | Ter 16/06/26 |

| ID | WBS | Task | Type | Duration | Start | Finish | Predecessors | Complete | Remaining | Baseline start | Baseline finish | Baseline duration | Baseline 1 start | Baseline 1 finish | Total slack | Free slack | Constraint | Baseline cost | Disciplina | Início_LB_R0 | Término_LB_R0 | Sprints |
| --- | --- | --- | --- | --- | --- | --- | --- | --- | --- | --- | --- | --- | --- | --- | --- | --- | --- | --- | --- | --- | --- | --- |
| 51 | 1.2.5 | **Processo** |  | 16d | 2026-06-18 A | 2026-07-13 |  | 60% | 6.4d | 2026-05-19 | 2026-06-25 | 28d | 2026-05-19 | 2026-06-25 | 10d |  |  |  | PROCESSOS | Ter 19/05/26 | Qui 25/06/26 | Sprint 8 |
| 52 | 1.2.5.1 | **CP-F0009-0305-MB-P-00001** | inactive | 22d | 2026-05-11 | 2026-06-11 |  |  |  |  |  |  |  |  | 30d |  |  | -0 |  |  |  | Sprint 3 |
| 53 | 1.2.5.1.1 | Emissão inicial | inactive | 5d | 2026-05-11 | 2026-05-15 | 21FS+4d |  |  |  |  |  |  |  | 43d | 13d |  | -0 |  |  |  | Sprint 3 |
| 54 | 1.2.5.1.2 | Análise Tecnored | inactive | 1d | 2026-06-08 | 2026-06-08 | 53, 4 |  |  |  |  |  |  |  | 30d | 0d |  | -0 |  |  |  | Sprint 7 |
| 55 | 1.2.5.1.3 | Atendimento de comentários | inactive | 2d | 2026-06-09 | 2026-06-10 | 54 |  |  |  |  |  |  |  | 30d | 0d |  | -0 |  |  |  | Sprint 7 |
| 56 | 1.2.5.1.4 | Aprovação | inactive | 1d | 2026-06-11 | 2026-06-11 | 55 |  |  |  |  |  |  |  | 30d |  |  | -0 |  |  |  | Sprint 7 |
| 57 | 1.2.5.2 | **MD-F0009-0305-MB-P-00001** | inactive | 7d | 2026-07-21 | 2026-07-29 |  |  |  | 2026-06-17 | 2026-06-25 | 7d | 2026-06-17 | 2026-06-25 | -2d | 0d |  |  |  |  |  | Sprint 13 |
| 58 | 1.2.5.2.1 | Emissão inicial | inactive | 3d | 2026-07-21 | 2026-07-23 | 63FS+20d |  |  | 2026-06-17 | 2026-06-19 | 3d | 2026-06-17 | 2026-06-19 | -2d | 0d |  |  |  |  |  | Sprint 13 |
| 59 | 1.2.5.2.2 | Análise Tecnored | inactive | 1d | 2026-07-24 | 2026-07-24 | 58 |  |  | 2026-06-22 | 2026-06-22 | 1d | 2026-06-22 | 2026-06-22 | -2d | 0d |  |  |  |  |  | Sprint 13 |
| 60 | 1.2.5.2.3 | Atendimento de comentários | inactive | 2d | 2026-07-27 | 2026-07-28 | 59 |  |  | 2026-06-23 | 2026-06-24 | 2d | 2026-06-23 | 2026-06-24 | -2d | 0d |  |  |  |  |  | Fora do Período |
| 61 | 1.2.5.2.4 | Aprovação | inactive | 1d | 2026-07-29 | 2026-07-29 | 60 |  |  | 2026-06-25 | 2026-06-25 | 1d | 2026-06-25 | 2026-06-25 | -2d | 0d |  |  |  |  |  | Fora do Período |
| 62 | 1.2.5.3 | **FG-F0009-0305-MB-P-00001** |  | 16d | 2026-06-18 A | 2026-07-13 |  | 60% | 6.4d | 2026-05-19 | 2026-05-25 | 5d | 2026-05-19 | 2026-05-25 | 10d |  |  |  | PROCESSOS | Ter 19/05/26 | Seg 25/05/26 | Sprint 8 |
| 63 | 1.2.5.3.1 | Emissão inicial |  | 1d | 2026-06-18 A | 2026-06-18 A | 53FS+8d, 4 | 100% |  | 2026-05-19 | 2026-05-19 | 1d | 2026-05-19 | 2026-05-19 |  |  | finish no earlier than 2026-06-18 |  | PROCESSOS | Ter 19/05/26 | Ter 19/05/26 | Sprint 8 |
| 64 | 1.2.5.3.2 | Análise Tecnored |  | 1d | 2026-06-19 A | 2026-06-19 A | 63 | 100% |  | 2026-05-20 | 2026-05-20 | 1d | 2026-05-20 | 2026-05-20 |  |  |  |  | PROCESSOS | Qua 20/05/26 | Qua 20/05/26 | Sprint 8 |
| 65 | 1.2.5.3.3 | Atendimento de comentários |  | 2d | 2026-06-30 A | 2026-07-01 | 64 | 50% | 1d | 2026-05-21 | 2026-05-22 | 2d | 2026-05-21 | 2026-05-22 | 10d | 0d |  |  | PROCESSOS | Qui 21/05/26 | Sex 22/05/26 | Sprint 10 |
| 66 | 1.2.5.3.4 | Aprovação |  | 1d | 2026-07-13 | 2026-07-13 | 65FS+5d |  |  | 2026-05-25 | 2026-05-25 | 1d | 2026-05-25 | 2026-05-25 | 10d |  |  |  | PROCESSOS | Seg 25/05/26 | Seg 25/05/26 | Sprint 12 |
| 67 | 1.2.6 | **Mecânica** |  | 43.75d | 2026-05-15 A | 2026-07-21 |  | 54% | 20.25d | 2026-05-19 | 2026-07-08 | 37d | 2026-05-19 | 2026-07-08 | 4.25d |  |  |  | MECÂNICA | Ter 19/05/26 | Qua 08/07/26 | Sprint 3 |
| 68 | 1.2.6.1 | **CP-F0009-0305-MB-M-00001** | inactive | 12d | 2026-05-08 | 2026-05-25 |  |  |  |  |  |  |  |  | 31.97d |  |  | -0 |  |  |  | Sprint 2 |
| 69 | 1.2.6.1.1 | Emissão inicial | inactive | 5d | 2026-05-08 | 2026-05-14 | 21FS+3d |  |  |  |  |  |  |  | 31.97d | 3d |  | -0 |  |  |  | Sprint 2 |
| 70 | 1.2.6.1.2 | Análise Tecnored | inactive | 1d | 2026-05-20 | 2026-05-20 | 69, 5 |  |  |  |  |  |  |  | 41d | 0d |  | -0 |  |  |  | Sprint 4 |
| 71 | 1.2.6.1.3 | Atendimento de comentários | inactive | 2d | 2026-05-21 | 2026-05-22 | 70 |  |  |  |  |  |  |  | 41d | 0d |  | -0 |  |  |  | Sprint 4 |
| 72 | 1.2.6.1.4 | Aprovação | inactive | 1d | 2026-05-25 | 2026-05-25 | 71 |  |  |  |  |  |  |  | 41d |  |  | -0 |  |  |  | Sprint 5 |
| 73 | 1.2.6.2 | **MD-F0009-0305-MB-M-00001** | inactive | 6d | 2026-06-02 | 2026-06-11 |  |  |  | 2026-05-26 | 2026-06-02 | 6d | 2026-05-26 | 2026-06-02 | 19.97d |  |  |  |  |  |  | Sprint 6 |
| 74 | 1.2.6.2.1 | Emissão inicial | inactive | 2d | 2026-06-02 | 2026-06-03 | 69, 81, 5 |  |  | 2026-05-26 | 2026-05-27 | 2d | 2026-05-26 | 2026-05-27 | 19.97d | 0d |  |  |  |  |  | Sprint 6 |
| 75 | 1.2.6.2.2 | Análise Tecnored | inactive | 1d | 2026-06-08 | 2026-06-08 | 74 |  |  | 2026-05-28 | 2026-05-28 | 1d | 2026-05-28 | 2026-05-28 | 30d | 0d |  |  |  |  |  | Sprint 7 |
| 76 | 1.2.6.2.3 | Atendimento de comentários | inactive | 2d | 2026-06-09 | 2026-06-10 | 75 |  |  | 2026-05-29 | 2026-06-01 | 2d | 2026-05-29 | 2026-06-01 | 30d | 0d |  |  |  |  |  | Sprint 7 |
| 77 | 1.2.6.2.4 | Aprovação | inactive | 1d | 2026-06-11 | 2026-06-11 | 76 |  |  | 2026-06-02 | 2026-06-02 | 1d | 2026-06-02 | 2026-06-02 | 30d |  |  |  |  |  |  | Sprint 7 |

| ID | WBS | Task | Duration | Start | Finish | Predecessors | Complete | Remaining | Baseline start | Baseline finish | Baseline duration | Baseline 1 start | Baseline 1 finish | Total slack | Free slack | Constraint | Disciplina | Início_LB_R0 | Término_LB_R0 | Sprints |
| --- | --- | --- | --- | --- | --- | --- | --- | --- | --- | --- | --- | --- | --- | --- | --- | --- | --- | --- | --- | --- |
| 78 | 1.2.6.3 | **LE-F0009-0305-MB-M-00001** | 6d | 2026-05-26 A | 2026-06-02 A |  | 100% |  | 2026-05-19 | 2026-05-26 | 6d | 2026-05-19 | 2026-05-26 |  |  |  | MECÂNICA | Ter 19/05/26 | Ter 26/05/26 | Sprint 5 |
| 79 | 1.2.6.3.1 | Emissão inicial | 2d | 2026-05-26 A | 2026-05-27 A | 69, 5FS+5d | 100% |  | 2026-05-19 | 2026-05-20 | 2d | 2026-05-19 | 2026-05-20 |  |  |  | MECÂNICA | Ter 19/05/26 | Qua 20/05/26 | Sprint 5 |
| 80 | 1.2.6.3.2 | Análise Tecnored | 1d | 2026-05-28 A | 2026-05-28 A | 79 | 100% |  | 2026-05-21 | 2026-05-21 | 1d | 2026-05-21 | 2026-05-21 |  |  |  | MECÂNICA | Qui 21/05/26 | Qui 21/05/26 | Sprint 5 |
| 81 | 1.2.6.3.3 | Atendimento de comentários | 2d | 2026-05-29 A | 2026-06-01 A | 80 | 100% |  | 2026-05-22 | 2026-05-25 | 2d | 2026-05-22 | 2026-05-25 |  |  |  | MECÂNICA | Sex 22/05/26 | Seg 25/05/26 | Sprint 5 |
| 82 | 1.2.6.3.4 | Aprovação | 1d | 2026-06-02 A | 2026-06-02 A | 81 | 100% |  | 2026-05-26 | 2026-05-26 | 1d | 2026-05-26 | 2026-05-26 |  |  |  | MECÂNICA | Ter 26/05/26 | Ter 26/05/26 | Sprint 6 |
| 83 | 1.2.6.4 | **PQ-F0009-0305-MB-M-00001** | 7d | 2026-07-01 A | 2026-07-13 |  | 42% | 4.03d | 2026-05-28 | 2026-06-05 | 7d | 2026-05-28 | 2026-06-05 | 10d |  |  | MECÂNICA | Qui 28/05/26 | Sex 05/06/26 | Sprint 10 |
| 84 | 1.2.6.4.1 | Emissão inicial | 3d | 2026-07-01 A | 2026-07-03 | 74 | 99% | 0.03d | 2026-05-28 | 2026-06-01 | 3d | 2026-05-28 | 2026-06-01 | 10d | 0d | start no earlier than 2026-07-01 | MECÂNICA | Qui 28/05/26 | Seg 01/06/26 | Sprint 10 |
| 85 | 1.2.6.4.2 | Análise Tecnored | 1d | 2026-07-06 | 2026-07-06 | 84 |  |  | 2026-06-02 | 2026-06-02 | 1d | 2026-06-02 | 2026-06-02 | 10d | 0d |  | MECÂNICA | Ter 02/06/26 | Ter 02/06/26 | Sprint 11 |
| 86 | 1.2.6.4.3 | Atendimento de comentários | 2d | 2026-07-07 | 2026-07-08 | 85 |  |  | 2026-06-03 | 2026-06-04 | 2d | 2026-06-03 | 2026-06-04 | 10d | 0d |  | MECÂNICA | Qua 03/06/26 | Qui 04/06/26 | Sprint 11 |
| 87 | 1.2.6.4.4 | Aprovação | 1d | 2026-07-13 | 2026-07-13 | 86 |  |  | 2026-06-05 | 2026-06-05 | 1d | 2026-06-05 | 2026-06-05 | 10d |  |  | MECÂNICA | Sex 05/06/26 | Sex 05/06/26 | Sprint 12 |
| 88 | 1.2.6.5 | **AG-F0009-0305-MB-L-00001** | 6d | 2026-07-13 | 2026-07-21 |  |  |  | 2026-06-22 | 2026-07-08 | 13d | 2026-06-22 | 2026-07-08 | 4.25d |  |  | MECÂNICA | Seg 22/06/26 | Qua 08/07/26 | Sprint 12 |
| 89 | 1.2.6.5.1 | Emissão inicial | 3d | 2026-07-13 | 2026-07-16 | 331 |  |  | 2026-06-22 | 2026-07-02 | 9d | 2026-06-22 | 2026-07-02 | 4.25d | 0d | finish no earlier than 2026-06-26 | MECÂNICA | Seg 22/06/26 | Qui 02/07/26 | Sprint 12 |
| 90 | 1.2.6.5.2 | Análise Tecnored | 1d | 2026-07-16 | 2026-07-17 | 89 |  |  | 2026-07-03 | 2026-07-03 | 1d | 2026-07-03 | 2026-07-03 | 4.25d | 0d |  | MECÂNICA | Sex 03/07/26 | Sex 03/07/26 | Sprint 12 |
| 91 | 1.2.6.5.3 | Atendimento de comentários | 1d | 2026-07-17 | 2026-07-20 | 90 |  |  | 2026-07-06 | 2026-07-07 | 2d | 2026-07-06 | 2026-07-07 | 4.25d | 0d |  | MECÂNICA | Seg 06/07/26 | Ter 07/07/26 | Sprint 12 |
| 92 | 1.2.6.5.4 | Aprovação | 1d | 2026-07-20 | 2026-07-21 | 91 |  |  | 2026-07-08 | 2026-07-08 | 1d | 2026-07-08 | 2026-07-08 | 4.25d |  |  | MECÂNICA | Qua 08/07/26 | Qua 08/07/26 | Sprint 13 |
| 93 | 1.2.6.6 | **AG-F0009-0305-MB-L-00002** | 6d | 2026-07-13 | 2026-07-21 |  |  |  | 2026-06-22 | 2026-07-08 | 13d | 2026-06-22 | 2026-07-08 | 4.25d |  |  | MECÂNICA | Seg 22/06/26 | Qua 08/07/26 | Sprint 12 |
| 94 | 1.2.6.6.1 | Emissão inicial | 3d | 2026-07-13 | 2026-07-16 | 331 |  |  | 2026-06-22 | 2026-07-02 | 9d | 2026-06-22 | 2026-07-02 | 4.25d | 0d |  | MECÂNICA | Seg 22/06/26 | Qui 02/07/26 | Sprint 12 |
| 95 | 1.2.6.6.2 | Análise Tecnored | 1d | 2026-07-16 | 2026-07-17 | 94 |  |  | 2026-07-03 | 2026-07-03 | 1d | 2026-07-03 | 2026-07-03 | 4.25d | 0d |  | MECÂNICA | Sex 03/07/26 | Sex 03/07/26 | Sprint 12 |
| 96 | 1.2.6.6.3 | Atendimento de comentários | 1d | 2026-07-17 | 2026-07-20 | 95 |  |  | 2026-07-06 | 2026-07-07 | 2d | 2026-07-06 | 2026-07-07 | 4.25d | 0d |  | MECÂNICA | Seg 06/07/26 | Ter 07/07/26 | Sprint 12 |
| 97 | 1.2.6.6.4 | Aprovação | 1d | 2026-07-20 | 2026-07-21 | 96 |  |  | 2026-07-08 | 2026-07-08 | 1d | 2026-07-08 | 2026-07-08 | 4.25d |  |  | MECÂNICA | Qua 08/07/26 | Qua 08/07/26 | Sprint 13 |
| 98 | 1.2.6.7 | **AG-F0009-0305-MB-L-00003** | 6d | 2026-07-13 | 2026-07-21 |  |  |  | 2026-06-22 | 2026-07-08 | 13d | 2026-06-22 | 2026-07-08 | 4.25d |  |  | MECÂNICA | Seg 22/06/26 | Qua 08/07/26 | Sprint 12 |
| 99 | 1.2.6.7.1 | Emissão inicial | 3d | 2026-07-13 | 2026-07-16 | 331 |  |  | 2026-06-22 | 2026-07-02 | 9d | 2026-06-22 | 2026-07-02 | 4.25d | 0d |  | MECÂNICA | Seg 22/06/26 | Qui 02/07/26 | Sprint 12 |
| 100 | 1.2.6.7.2 | Análise Tecnored | 1d | 2026-07-16 | 2026-07-17 | 99 |  |  | 2026-07-03 | 2026-07-03 | 1d | 2026-07-03 | 2026-07-03 | 4.25d | 0d |  | MECÂNICA | Sex 03/07/26 | Sex 03/07/26 | Sprint 12 |
| 101 | 1.2.6.7.3 | Atendimento de comentários | 1d | 2026-07-17 | 2026-07-20 | 100 |  |  | 2026-07-06 | 2026-07-07 | 2d | 2026-07-06 | 2026-07-07 | 4.25d | 0d |  | MECÂNICA | Seg 06/07/26 | Ter 07/07/26 | Sprint 12 |
| 102 | 1.2.6.7.4 | Aprovação | 1d | 2026-07-20 | 2026-07-21 | 101 |  |  | 2026-07-08 | 2026-07-08 | 1d | 2026-07-08 | 2026-07-08 | 4.25d |  |  | MECÂNICA | Qua 08/07/26 | Qua 08/07/26 | Sprint 13 |

| ID | WBS | Task | Duration | Start | Finish | Predecessors | Baseline start | Baseline finish | Baseline duration | Baseline 1 start | Baseline 1 finish | Total slack | Free slack | Disciplina | Início_LB_R0 | Término_LB_R0 | Sprints |
| --- | --- | --- | --- | --- | --- | --- | --- | --- | --- | --- | --- | --- | --- | --- | --- | --- | --- |
| 103 | 1.2.6.8 | **AG-F0009-0305-MB-L-00004** | 6d | 2026-07-13 | 2026-07-21 |  | 2026-06-22 | 2026-07-08 | 13d | 2026-06-22 | 2026-07-08 | 4.25d |  | MECÂNICA | Seg 22/06/26 | Qua 08/07/26 | Sprint 12 |
| 104 | 1.2.6.8.1 | Emissão inicial | 3d | 2026-07-13 | 2026-07-16 | 331 | 2026-06-22 | 2026-07-02 | 9d | 2026-06-22 | 2026-07-02 | 4.25d | 0d | MECÂNICA | Seg 22/06/26 | Qui 02/07/26 | Sprint 12 |
| 105 | 1.2.6.8.2 | Análise Tecnored | 1d | 2026-07-16 | 2026-07-17 | 104 | 2026-07-03 | 2026-07-03 | 1d | 2026-07-03 | 2026-07-03 | 4.25d | 0d | MECÂNICA | Sex 03/07/26 | Sex 03/07/26 | Sprint 12 |
| 106 | 1.2.6.8.3 | Atendimento de comentários | 1d | 2026-07-17 | 2026-07-20 | 105 | 2026-07-06 | 2026-07-07 | 2d | 2026-07-06 | 2026-07-07 | 4.25d | 0d | MECÂNICA | Seg 06/07/26 | Ter 07/07/26 | Sprint 12 |
| 107 | 1.2.6.8.4 | Aprovação | 1d | 2026-07-20 | 2026-07-21 | 106 | 2026-07-08 | 2026-07-08 | 1d | 2026-07-08 | 2026-07-08 | 4.25d |  | MECÂNICA | Qua 08/07/26 | Qua 08/07/26 | Sprint 13 |
| 108 | 1.2.6.9 | **AG-F0009-0305-MB-L-00005** | 6d | 2026-07-13 | 2026-07-21 |  | 2026-06-22 | 2026-07-08 | 13d | 2026-06-22 | 2026-07-08 | 4.25d |  | MECÂNICA | Seg 22/06/26 | Qua 08/07/26 | Sprint 12 |
| 109 | 1.2.6.9.1 | Emissão inicial | 3d | 2026-07-13 | 2026-07-16 | 331 | 2026-06-22 | 2026-07-02 | 9d | 2026-06-22 | 2026-07-02 | 4.25d | 0d | MECÂNICA | Seg 22/06/26 | Qui 02/07/26 | Sprint 12 |
| 110 | 1.2.6.9.2 | Análise Tecnored | 1d | 2026-07-16 | 2026-07-17 | 109 | 2026-07-03 | 2026-07-03 | 1d | 2026-07-03 | 2026-07-03 | 4.25d | 0d | MECÂNICA | Sex 03/07/26 | Sex 03/07/26 | Sprint 12 |
| 111 | 1.2.6.9.3 | Atendimento de comentários | 1d | 2026-07-17 | 2026-07-20 | 110 | 2026-07-06 | 2026-07-07 | 2d | 2026-07-06 | 2026-07-07 | 4.25d | 0d | MECÂNICA | Seg 06/07/26 | Ter 07/07/26 | Sprint 12 |
| 112 | 1.2.6.9.4 | Aprovação | 1d | 2026-07-20 | 2026-07-21 | 111 | 2026-07-08 | 2026-07-08 | 1d | 2026-07-08 | 2026-07-08 | 4.25d |  | MECÂNICA | Qua 08/07/26 | Qua 08/07/26 | Sprint 13 |
| 113 | 1.2.6.10 | **AG-F0009-0305-MB-L-00006** | 6d | 2026-07-13 | 2026-07-21 |  | 2026-06-22 | 2026-07-08 | 13d | 2026-06-22 | 2026-07-08 | 4.25d |  | MECÂNICA | Seg 22/06/26 | Qua 08/07/26 | Sprint 12 |
| 114 | 1.2.6.10.1 | Emissão inicial | 3d | 2026-07-13 | 2026-07-16 | 331 | 2026-06-22 | 2026-07-02 | 9d | 2026-06-22 | 2026-07-02 | 4.25d | 0d | MECÂNICA | Seg 22/06/26 | Qui 02/07/26 | Sprint 12 |
| 115 | 1.2.6.10.2 | Análise Tecnored | 1d | 2026-07-16 | 2026-07-17 | 114 | 2026-07-03 | 2026-07-03 | 1d | 2026-07-03 | 2026-07-03 | 4.25d | 0d | MECÂNICA | Sex 03/07/26 | Sex 03/07/26 | Sprint 12 |
| 116 | 1.2.6.10.3 | Atendimento de comentários | 1d | 2026-07-17 | 2026-07-20 | 115 | 2026-07-06 | 2026-07-07 | 2d | 2026-07-06 | 2026-07-07 | 4.25d | 0d | MECÂNICA | Seg 06/07/26 | Ter 07/07/26 | Sprint 12 |
| 117 | 1.2.6.10.4 | Aprovação | 1d | 2026-07-20 | 2026-07-21 | 116 | 2026-07-08 | 2026-07-08 | 1d | 2026-07-08 | 2026-07-08 | 4.25d |  | MECÂNICA | Qua 08/07/26 | Qua 08/07/26 | Sprint 13 |
| 118 | 1.2.6.11 | **AG-F0009-0305-MB-L-00007** | 6d | 2026-07-13 | 2026-07-21 |  | 2026-06-22 | 2026-07-08 | 13d | 2026-06-22 | 2026-07-08 | 4.25d |  | MECÂNICA | Seg 22/06/26 | Qua 08/07/26 | Sprint 12 |
| 119 | 1.2.6.11.1 | Emissão inicial | 3d | 2026-07-13 | 2026-07-16 | 331 | 2026-06-22 | 2026-07-02 | 9d | 2026-06-22 | 2026-07-02 | 4.25d | 0d | MECÂNICA | Seg 22/06/26 | Qui 02/07/26 | Sprint 12 |
| 120 | 1.2.6.11.2 | Análise Tecnored | 1d | 2026-07-16 | 2026-07-17 | 119 | 2026-07-03 | 2026-07-03 | 1d | 2026-07-03 | 2026-07-03 | 4.25d | 0d | MECÂNICA | Sex 03/07/26 | Sex 03/07/26 | Sprint 12 |
| 121 | 1.2.6.11.3 | Atendimento de comentários | 1d | 2026-07-17 | 2026-07-20 | 120 | 2026-07-06 | 2026-07-07 | 2d | 2026-07-06 | 2026-07-07 | 4.25d | 0d | MECÂNICA | Seg 06/07/26 | Ter 07/07/26 | Sprint 12 |
| 122 | 1.2.6.11.4 | Aprovação | 1d | 2026-07-20 | 2026-07-21 | 121 | 2026-07-08 | 2026-07-08 | 1d | 2026-07-08 | 2026-07-08 | 4.25d |  | MECÂNICA | Qua 08/07/26 | Qua 08/07/26 | Sprint 13 |
| 123 | 1.2.6.12 | **AG-F0009-0305-MB-L-00008** | 6d | 2026-07-13 | 2026-07-21 |  | 2026-06-22 | 2026-07-08 | 13d | 2026-06-22 | 2026-07-08 | 4.25d |  | MECÂNICA | Seg 22/06/26 | Qua 08/07/26 | Sprint 12 |
| 124 | 1.2.6.12.1 | Emissão inicial | 3d | 2026-07-13 | 2026-07-16 | 331 | 2026-06-22 | 2026-07-02 | 9d | 2026-06-22 | 2026-07-02 | 4.25d | 0d | MECÂNICA | Seg 22/06/26 | Qui 02/07/26 | Sprint 12 |
| 125 | 1.2.6.12.2 | Análise Tecnored | 1d | 2026-07-16 | 2026-07-17 | 124 | 2026-07-03 | 2026-07-03 | 1d | 2026-07-03 | 2026-07-03 | 4.25d | 0d | MECÂNICA | Sex 03/07/26 | Sex 03/07/26 | Sprint 12 |
| 126 | 1.2.6.12.3 | Atendimento de comentários | 1d | 2026-07-17 | 2026-07-20 | 125 | 2026-07-06 | 2026-07-07 | 2d | 2026-07-06 | 2026-07-07 | 4.25d | 0d | MECÂNICA | Seg 06/07/26 | Ter 07/07/26 | Sprint 12 |
| 127 | 1.2.6.12.4 | Aprovação | 1d | 2026-07-20 | 2026-07-21 | 126 | 2026-07-08 | 2026-07-08 | 1d | 2026-07-08 | 2026-07-08 | 4.25d |  | MECÂNICA | Qua 08/07/26 | Qua 08/07/26 | Sprint 13 |

| ID | WBS | Task | Duration | Start | Finish | Predecessors | Complete | Remaining | Baseline start | Baseline finish | Baseline duration | Baseline 1 start | Baseline 1 finish | Total slack | Free slack | Constraint | Disciplina | Início_LB_R0 | Término_LB_R0 | Sprints |
| --- | --- | --- | --- | --- | --- | --- | --- | --- | --- | --- | --- | --- | --- | --- | --- | --- | --- | --- | --- | --- |
| 128 | 1.2.6.13 | **AG-F0009-0305-MB-L-00009** | 6d | 2026-07-13 | 2026-07-21 |  |  |  | 2026-06-22 | 2026-07-08 | 13d | 2026-06-22 | 2026-07-08 | 4.25d |  |  | MECÂNICA | Seg 22/06/26 | Qua 08/07/26 | Sprint 12 |
| 129 | 1.2.6.13.1 | Emissão inicial | 3d | 2026-07-13 | 2026-07-16 | 331 |  |  | 2026-06-22 | 2026-07-02 | 9d | 2026-06-22 | 2026-07-02 | 4.25d | 0d |  | MECÂNICA | Seg 22/06/26 | Qui 02/07/26 | Sprint 12 |
| 130 | 1.2.6.13.2 | Análise Tecnored | 1d | 2026-07-16 | 2026-07-17 | 129 |  |  | 2026-07-03 | 2026-07-03 | 1d | 2026-07-03 | 2026-07-03 | 4.25d | 0d |  | MECÂNICA | Sex 03/07/26 | Sex 03/07/26 | Sprint 12 |
| 131 | 1.2.6.13.3 | Atendimento de comentários | 1d | 2026-07-17 | 2026-07-20 | 130 |  |  | 2026-07-06 | 2026-07-07 | 2d | 2026-07-06 | 2026-07-07 | 4.25d | 0d |  | MECÂNICA | Seg 06/07/26 | Ter 07/07/26 | Sprint 12 |
| 132 | 1.2.6.13.4 | Aprovação | 1d | 2026-07-20 | 2026-07-21 | 131 |  |  | 2026-07-08 | 2026-07-08 | 1d | 2026-07-08 | 2026-07-08 | 4.25d |  |  | MECÂNICA | Qua 08/07/26 | Qua 08/07/26 | Sprint 13 |
| 133 | 1.2.6.14 | **PL-F0009-0305-MB-M-00001** | 12d | 2026-06-22 A | 2026-07-07 |  | 67% | 4d | 2026-05-29 | 2026-06-15 | 12d | 2026-05-29 | 2026-06-15 | 12d |  |  | MECÂNICA | Sex 29/05/26 | Seg 15/06/26 | Sprint 9 |
| 134 | 1.2.6.14.1 | Emissão inicial | 8d | 2026-06-22 A | 2026-07-01 A | 185 | 100% |  | 2026-05-29 | 2026-06-09 | 8d | 2026-05-29 | 2026-06-09 |  |  | start no earlier than 2026-06-15 | MECÂNICA | Sex 29/05/26 | Ter 09/06/26 | Sprint 9 |
| 135 | 1.2.6.14.2 | Análise Tecnored | 1d | 2026-07-02 | 2026-07-02 | 134 |  |  | 2026-06-10 | 2026-06-10 | 1d | 2026-06-10 | 2026-06-10 | 12d | 0d |  | MECÂNICA | Qua 10/06/26 | Qua 10/06/26 | Sprint 10 |
| 136 | 1.2.6.14.3 | Atendimento de comentários | 2d | 2026-07-03 | 2026-07-06 | 135 |  |  | 2026-06-11 | 2026-06-12 | 2d | 2026-06-11 | 2026-06-12 | 12d | 0d |  | MECÂNICA | Qui 11/06/26 | Sex 12/06/26 | Sprint 10 |
| 137 | 1.2.6.14.4 | Aprovação | 1d | 2026-07-07 | 2026-07-07 | 136 |  |  | 2026-06-15 | 2026-06-15 | 1d | 2026-06-15 | 2026-06-15 | 12d |  |  | MECÂNICA | Seg 15/06/26 | Seg 15/06/26 | Sprint 11 |
| 138 | 1.2.6.15 | **PL-F0009-0305-MB-M-00002** | 12d | 2026-06-22 A | 2026-07-07 |  | 67% | 4d | 2026-05-29 | 2026-06-15 | 12d | 2026-05-29 | 2026-06-15 | 12d |  |  | MECÂNICA | Sex 29/05/26 | Seg 15/06/26 | Sprint 9 |
| 139 | 1.2.6.15.1 | Emissão inicial | 8d | 2026-06-22 A | 2026-07-01 A | 185 | 100% |  | 2026-05-29 | 2026-06-09 | 8d | 2026-05-29 | 2026-06-09 |  |  | start no earlier than 2026-06-15 | MECÂNICA | Sex 29/05/26 | Ter 09/06/26 | Sprint 9 |
| 140 | 1.2.6.15.2 | Análise Tecnored | 1d | 2026-07-02 | 2026-07-02 | 139 |  |  | 2026-06-10 | 2026-06-10 | 1d | 2026-06-10 | 2026-06-10 | 12d | 0d |  | MECÂNICA | Qua 10/06/26 | Qua 10/06/26 | Sprint 10 |
| 141 | 1.2.6.15.3 | Atendimento de comentários | 2d | 2026-07-03 | 2026-07-06 | 140 |  |  | 2026-06-11 | 2026-06-12 | 2d | 2026-06-11 | 2026-06-12 | 12d | 0d |  | MECÂNICA | Qui 11/06/26 | Sex 12/06/26 | Sprint 10 |
| 142 | 1.2.6.15.4 | Aprovação | 1d | 2026-07-07 | 2026-07-07 | 141 |  |  | 2026-06-15 | 2026-06-15 | 1d | 2026-06-15 | 2026-06-15 | 12d |  |  | MECÂNICA | Seg 15/06/26 | Seg 15/06/26 | Sprint 11 |
| 143 | 1.2.6.16 | **PL-F0009-0305-MB-M-00003** | 12d | 2026-06-22 A | 2026-07-07 |  | 67% | 4d | 2026-05-29 | 2026-06-15 | 12d | 2026-05-29 | 2026-06-15 | 12d |  |  | MECÂNICA | Sex 29/05/26 | Seg 15/06/26 | Sprint 9 |
| 144 | 1.2.6.16.1 | Emissão inicial | 8d | 2026-06-22 A | 2026-07-01 A | 185 | 100% |  | 2026-05-29 | 2026-06-09 | 8d | 2026-05-29 | 2026-06-09 |  |  | start no earlier than 2026-06-15 | MECÂNICA | Sex 29/05/26 | Ter 09/06/26 | Sprint 9 |
| 145 | 1.2.6.16.2 | Análise Tecnored | 1d | 2026-07-02 | 2026-07-02 | 144 |  |  | 2026-06-10 | 2026-06-10 | 1d | 2026-06-10 | 2026-06-10 | 12d | 0d |  | MECÂNICA | Qua 10/06/26 | Qua 10/06/26 | Sprint 10 |
| 146 | 1.2.6.16.3 | Atendimento de comentários | 2d | 2026-07-03 | 2026-07-06 | 145 |  |  | 2026-06-11 | 2026-06-12 | 2d | 2026-06-11 | 2026-06-12 | 12d | 0d |  | MECÂNICA | Qui 11/06/26 | Sex 12/06/26 | Sprint 10 |
| 147 | 1.2.6.16.4 | Aprovação | 1d | 2026-07-07 | 2026-07-07 | 146 |  |  | 2026-06-15 | 2026-06-15 | 1d | 2026-06-15 | 2026-06-15 | 12d |  |  | MECÂNICA | Seg 15/06/26 | Seg 15/06/26 | Sprint 11 |
| 148 | 1.2.6.17 | **PL-F0009-0305-MB-M-00004** | 12d | 2026-06-22 A | 2026-07-07 |  | 67% | 4d | 2026-05-29 | 2026-06-15 | 12d | 2026-05-29 | 2026-06-15 | 12d |  |  | MECÂNICA | Sex 29/05/26 | Seg 15/06/26 | Sprint 9 |
| 149 | 1.2.6.17.1 | Emissão inicial | 8d | 2026-06-22 A | 2026-07-01 A | 185 | 100% |  | 2026-05-29 | 2026-06-09 | 8d | 2026-05-29 | 2026-06-09 |  |  | start no earlier than 2026-06-15 | MECÂNICA | Sex 29/05/26 | Ter 09/06/26 | Sprint 9 |
| 150 | 1.2.6.17.2 | Análise Tecnored | 1d | 2026-07-02 | 2026-07-02 | 149 |  |  | 2026-06-10 | 2026-06-10 | 1d | 2026-06-10 | 2026-06-10 | 12d | 0d |  | MECÂNICA | Qua 10/06/26 | Qua 10/06/26 | Sprint 10 |
| 151 | 1.2.6.17.3 | Atendimento de comentários | 2d | 2026-07-03 | 2026-07-06 | 150 |  |  | 2026-06-11 | 2026-06-12 | 2d | 2026-06-11 | 2026-06-12 | 12d | 0d |  | MECÂNICA | Qui 11/06/26 | Sex 12/06/26 | Sprint 10 |
| 152 | 1.2.6.17.4 | Aprovação | 1d | 2026-07-07 | 2026-07-07 | 151 |  |  | 2026-06-15 | 2026-06-15 | 1d | 2026-06-15 | 2026-06-15 | 12d |  |  | MECÂNICA | Seg 15/06/26 | Seg 15/06/26 | Sprint 11 |

| ID | WBS | Task | Duration | Start | Finish | Predecessors | Complete | Remaining | Baseline start | Baseline finish | Baseline duration | Baseline 1 start | Baseline 1 finish | Total slack | Free slack | Constraint | Disciplina | Início_LB_R0 | Término_LB_R0 | Sprints |
| --- | --- | --- | --- | --- | --- | --- | --- | --- | --- | --- | --- | --- | --- | --- | --- | --- | --- | --- | --- | --- |
| 153 | 1.2.6.18 | **PL-F0009-0305-MB-M-00005** | 12d | 2026-06-22 A | 2026-07-07 |  | 67% | 4d | 2026-05-29 | 2026-06-15 | 12d | 2026-05-29 | 2026-06-15 | 12d |  |  | MECÂNICA | Sex 29/05/26 | Seg 15/06/26 | Sprint 9 |
| 154 | 1.2.6.18.1 | Emissão inicial | 8d | 2026-06-22 A | 2026-07-01 A | 185 | 100% |  | 2026-06-22 | 2026-07-01 | 8d | 2026-05-29 | 2026-06-09 |  |  | start no earlier than 2026-06-15 | MECÂNICA | Seg 22/06/26 | Qua 01/07/26 | Sprint 9 |
| 155 | 1.2.6.18.2 | Análise Tecnored | 1d | 2026-07-02 | 2026-07-02 | 154 |  |  | 2026-07-02 | 2026-07-02 | 1d | 2026-06-10 | 2026-06-10 | 12d | 0d |  | MECÂNICA | Qui 02/07/26 | Qui 02/07/26 | Sprint 10 |
| 156 | 1.2.6.18.3 | Atendimento de comentários | 2d | 2026-07-03 | 2026-07-06 | 155 |  |  | 2026-07-03 | 2026-07-06 | 2d | 2026-06-11 | 2026-06-12 | 12d | 0d |  | MECÂNICA | Sex 03/07/26 | Seg 06/07/26 | Sprint 10 |
| 157 | 1.2.6.18.4 | Aprovação | 1d | 2026-07-07 | 2026-07-07 | 156 |  |  | 2026-07-07 | 2026-07-07 | 1d | 2026-06-15 | 2026-06-15 | 12d |  |  | MECÂNICA | Ter 07/07/26 | Ter 07/07/26 | Sprint 11 |
| 158 | 1.2.6.19 | **PL-F0009-0305-MB-M-00006** | 12d | 2026-06-22 A | 2026-07-07 |  | 67% | 4d | 2026-05-29 | 2026-06-15 | 12d | 2026-05-29 | 2026-06-15 | 12d |  |  | MECÂNICA | Sex 29/05/26 | Seg 15/06/26 | Sprint 9 |
| 159 | 1.2.6.19.1 | Emissão inicial | 8d | 2026-06-22 A | 2026-07-01 A | 185 | 100% |  | 2026-06-22 | 2026-07-01 | 8d | 2026-05-29 | 2026-06-09 |  |  | start no earlier than 2026-06-15 | MECÂNICA | Seg 22/06/26 | Qua 01/07/26 | Sprint 9 |
| 160 | 1.2.6.19.2 | Análise Tecnored | 1d | 2026-07-02 | 2026-07-02 | 159 |  |  | 2026-07-02 | 2026-07-02 | 1d | 2026-06-10 | 2026-06-10 | 12d | 0d |  | MECÂNICA | Qui 02/07/26 | Qui 02/07/26 | Sprint 10 |
| 161 | 1.2.6.19.3 | Atendimento de comentários | 2d | 2026-07-03 | 2026-07-06 | 160 |  |  | 2026-07-03 | 2026-07-06 | 2d | 2026-06-11 | 2026-06-12 | 12d | 0d |  | MECÂNICA | Sex 03/07/26 | Seg 06/07/26 | Sprint 10 |
| 162 | 1.2.6.19.4 | Aprovação | 1d | 2026-07-07 | 2026-07-07 | 161 |  |  | 2026-07-07 | 2026-07-07 | 1d | 2026-06-15 | 2026-06-15 | 12d |  |  | MECÂNICA | Ter 07/07/26 | Ter 07/07/26 | Sprint 11 |
| 163 | 1.2.6.20 | **MC-F0009-0305-MB-M-00001** | 14d | 2026-06-01 A | 2026-06-22 |  | 86% | 2d | 2026-05-29 | 2026-06-17 | 14d | 2026-05-29 | 2026-06-17 | 23d |  |  | MECÂNICA | Sex 29/05/26 | Qua 17/06/26 | Sprint 6 |
| 164 | 1.2.6.20.1 | Emissão inicial | 10d | 2026-06-01 A | 2026-06-16 A | 185 | 100% |  | 2026-05-29 | 2026-06-11 | 10d | 2026-05-29 | 2026-06-11 |  |  |  | MECÂNICA | Sex 29/05/26 | Qui 11/06/26 | Sprint 6 |
| 165 | 1.2.6.20.2 | Análise Tecnored | 1d | 2026-06-17 A | 2026-06-17 A | 164 | 100% |  | 2026-06-12 | 2026-06-12 | 1d | 2026-06-12 | 2026-06-12 |  |  |  | MECÂNICA | Sex 12/06/26 | Sex 12/06/26 | Sprint 8 |
| 166 | 1.2.6.20.3 | Atendimento de comentários | 2d | 2026-06-18 A | 2026-06-19 | 165 | 50% | 1d | 2026-06-15 | 2026-06-16 | 2d | 2026-06-15 | 2026-06-16 | 23d | 0d |  | MECÂNICA | Seg 15/06/26 | Ter 16/06/26 | Sprint 8 |
| 167 | 1.2.6.20.4 | Aprovação | 1d | 2026-06-22 | 2026-06-22 | 166 |  |  | 2026-06-17 | 2026-06-17 | 1d | 2026-06-17 | 2026-06-17 | 23d |  |  | MECÂNICA | Qua 17/06/26 | Qua 17/06/26 | Sprint 9 |
| 168 | 1.2.6.21 | **MC-F0009-0305-MB-M-00002** | 14d | 2026-06-01 A | 2026-06-22 |  | 75% | 3.5d | 2026-05-29 | 2026-06-17 | 14d | 2026-05-29 | 2026-06-17 | 23d |  |  | MECÂNICA | Sex 29/05/26 | Qua 17/06/26 | Sprint 6 |
| 169 | 1.2.6.21.1 | Emissão inicial | 10d | 2026-06-01 A | 2026-06-16 A | 185 | 100% |  | 2026-06-01 | 2026-06-16 | 10d | 2026-05-29 | 2026-06-11 |  |  |  | MECÂNICA | Seg 01/06/26 | Ter 16/06/26 | Sprint 6 |
| 170 | 1.2.6.21.2 | Análise Tecnored | 1d | 2026-06-17 A | 2026-06-17 | 169 | 50% | 0.5d | 2026-06-17 | 2026-06-17 | 1d | 2026-06-12 | 2026-06-12 | 23d | 0d |  | MECÂNICA | Qua 17/06/26 | Qua 17/06/26 | Sprint 8 |
| 171 | 1.2.6.21.3 | Atendimento de comentários | 2d | 2026-06-18 | 2026-06-19 | 170 |  |  | 2026-06-18 | 2026-06-19 | 2d | 2026-06-15 | 2026-06-16 | 23d | 0d |  | MECÂNICA | Qui 18/06/26 | Sex 19/06/26 | Sprint 8 |
| 172 | 1.2.6.21.4 | Aprovação | 1d | 2026-06-22 | 2026-06-22 | 171 |  |  | 2026-06-22 | 2026-06-22 | 1d | 2026-06-17 | 2026-06-17 | 23d |  |  | MECÂNICA | Seg 22/06/26 | Seg 22/06/26 | Sprint 9 |
| 173 | 1.2.6.22 | **MC-F0009-0305-MB-M-00003** | 14d | 2026-06-01 A | 2026-06-22 |  | 86% | 2d | 2026-05-29 | 2026-06-17 | 14d | 2026-05-29 | 2026-06-17 | 23d |  |  | MECÂNICA | Sex 29/05/26 | Qua 17/06/26 | Sprint 6 |
| 174 | 1.2.6.22.1 | Emissão inicial | 10d | 2026-06-01 A | 2026-06-16 A | 185 | 100% |  | 2026-06-01 | 2026-06-16 | 10d | 2026-05-29 | 2026-06-11 |  |  |  | MECÂNICA | Seg 01/06/26 | Ter 16/06/26 | Sprint 6 |
| 175 | 1.2.6.22.2 | Análise Tecnored | 1d | 2026-06-17 A | 2026-06-17 A | 174 | 100% |  | 2026-06-17 | 2026-06-17 | 1d | 2026-06-12 | 2026-06-12 |  |  |  | MECÂNICA | Qua 17/06/26 | Qua 17/06/26 | Sprint 8 |
| 176 | 1.2.6.22.3 | Atendimento de comentários | 2d | 2026-06-18 A | 2026-06-19 | 175 | 50% | 1d | 2026-06-18 | 2026-06-19 | 2d | 2026-06-15 | 2026-06-16 | 23d | 0d |  | MECÂNICA | Qui 18/06/26 | Sex 19/06/26 | Sprint 8 |
| 177 | 1.2.6.22.4 | Aprovação | 1d | 2026-06-22 | 2026-06-22 | 176 |  |  | 2026-06-22 | 2026-06-22 | 1d | 2026-06-17 | 2026-06-17 | 23d |  |  | MECÂNICA | Seg 22/06/26 | Seg 22/06/26 | Sprint 9 |

| ID | WBS | Task | Duration | Start | Finish | Predecessors | Complete | Remaining | Baseline start | Baseline finish | Baseline duration | Baseline 1 start | Baseline 1 finish | Total slack | Free slack | Disciplina | Início_LB_R0 | Término_LB_R0 | Sprints |
| --- | --- | --- | --- | --- | --- | --- | --- | --- | --- | --- | --- | --- | --- | --- | --- | --- | --- | --- | --- |
| 178 | 1.2.6.23 | **MC-F0009-0305-MB-M-00004** | 14d | 2026-06-01 A | 2026-06-22 |  | 75% | 3.5d | 2026-05-29 | 2026-06-17 | 14d | 2026-05-29 | 2026-06-17 | 23d |  | MECÂNICA | Sex 29/05/26 | Qua 17/06/26 | Sprint 6 |
| 179 | 1.2.6.23.1 | Emissão inicial | 10d | 2026-06-01 A | 2026-06-16 A | 185 | 100% |  | 2026-06-01 | 2026-06-16 | 10d | 2026-05-29 | 2026-06-11 |  |  | MECÂNICA | Seg 01/06/26 | Ter 16/06/26 | Sprint 6 |
| 180 | 1.2.6.23.2 | Análise Tecnored | 1d | 2026-06-17 A | 2026-06-17 | 179 | 50% | 0.5d | 2026-06-17 | 2026-06-17 | 1d | 2026-06-12 | 2026-06-12 | 23d | 0d | MECÂNICA | Qua 17/06/26 | Qua 17/06/26 | Sprint 8 |
| 181 | 1.2.6.23.3 | Atendimento de comentários | 2d | 2026-06-18 | 2026-06-19 | 180 |  |  | 2026-06-18 | 2026-06-19 | 2d | 2026-06-15 | 2026-06-16 | 23d | 0d | MECÂNICA | Qui 18/06/26 | Sex 19/06/26 | Sprint 8 |
| 182 | 1.2.6.23.4 | Aprovação | 1d | 2026-06-22 | 2026-06-22 | 181 |  |  | 2026-06-22 | 2026-06-22 | 1d | 2026-06-17 | 2026-06-17 | 23d |  | MECÂNICA | Seg 22/06/26 | Seg 22/06/26 | Sprint 9 |
| 183 | 1.2.6.24 | **ML-F0009-0305-MB-M-00001** | 14d | 2026-05-15 A | 2026-06-03 |  | 92% | 1.17d | 2026-05-19 | 2026-06-02 | 11d | 2026-05-19 | 2026-06-02 | 34d |  | MECÂNICA | Ter 19/05/26 | Ter 02/06/26 | Sprint 3 |
| 184 | 1.2.6.24.1 | Emissão inicial | 8d | 2026-05-15 A | 2026-05-26 A | 69, 5 | 100% |  | 2026-05-15 | 2026-05-26 | 7d | 2026-05-19 | 2026-05-27 |  |  | MECÂNICA | Sex 15/05/26 | Ter 26/05/26 | Sprint 3 |
| 185 | 1.2.6.24.2 | Análise Tecnored | 1d | 2026-05-29 A | 2026-05-29 A | 184 | 100% |  | 2026-05-29 | 2026-05-29 | 1d | 2026-05-28 | 2026-05-28 |  |  | MECÂNICA | Sex 29/05/26 | Sex 29/05/26 | Sprint 5 |
| 186 | 1.2.6.24.3 | Atendimento de comentários | 2d | 2026-06-01 A | 2026-06-02 | 185 | 75% | 0.5d | 2026-06-01 | 2026-06-02 | 2d | 2026-05-29 | 2026-06-01 | 0.5d | 0d | MECÂNICA | Seg 01/06/26 | Ter 02/06/26 | Sprint 6 |
| 187 | 1.2.6.24.4 | Aprovação | 1d | 2026-06-03 A | 2026-06-03 | 186 | 50% | 0.5d | 2026-06-03 | 2026-06-03 | 1d | 2026-06-02 | 2026-06-02 | 34d |  | MECÂNICA | Qua 03/06/26 | Qua 03/06/26 | Sprint 6 |
| 188 | 1.2.6.25 | **FD-F0009-0305-MB-M-00001** | 7d | 2026-06-17 A | 2026-06-25 |  | 43% | 4d | 2026-06-12 | 2026-06-22 | 7d | 2026-06-12 | 2026-06-22 | 20d |  | MECÂNICA | Sex 12/06/26 | Seg 22/06/26 | Sprint 8 |
| 189 | 1.2.6.25.1 | Emissão inicial | 3d | 2026-06-17 A | 2026-06-19 A | 164, 169, 174, 179 | 100% |  | 2026-06-12 | 2026-06-16 | 3d | 2026-06-12 | 2026-06-16 |  |  | MECÂNICA | Sex 12/06/26 | Ter 16/06/26 | Sprint 8 |
| 190 | 1.2.6.25.2 | Análise Tecnored | 1d | 2026-06-22 | 2026-06-22 | 189 |  |  | 2026-06-17 | 2026-06-17 | 1d | 2026-06-17 | 2026-06-17 | 20d | 0d | MECÂNICA | Qua 17/06/26 | Qua 17/06/26 | Sprint 9 |
| 191 | 1.2.6.25.3 | Atendimento de comentários | 2d | 2026-06-23 | 2026-06-24 | 190 |  |  | 2026-06-18 | 2026-06-19 | 2d | 2026-06-18 | 2026-06-19 | 20d | 0d | MECÂNICA | Qui 18/06/26 | Sex 19/06/26 | Sprint 9 |
| 192 | 1.2.6.25.4 | Aprovação | 1d | 2026-06-25 | 2026-06-25 | 191 |  |  | 2026-06-22 | 2026-06-22 | 1d | 2026-06-22 | 2026-06-22 | 20d |  | MECÂNICA | Seg 22/06/26 | Seg 22/06/26 | Sprint 9 |
| 193 | 1.2.6.26 | **FD-F0009-0305-MB-M-00002** | 7d | 2026-06-17 A | 2026-06-25 |  | 50% | 3.5d | 2026-06-12 | 2026-06-22 | 7d | 2026-06-12 | 2026-06-22 | 20d |  | MECÂNICA | Sex 12/06/26 | Seg 22/06/26 | Sprint 8 |
| 194 | 1.2.6.26.1 | Emissão inicial | 3d | 2026-06-17 A | 2026-06-19 A | 164, 169, 174, 179 | 100% |  | 2026-06-12 | 2026-06-16 | 3d | 2026-06-12 | 2026-06-16 |  |  | MECÂNICA | Sex 12/06/26 | Ter 16/06/26 | Sprint 8 |
| 195 | 1.2.6.26.2 | Análise Tecnored | 1d | 2026-06-22 A | 2026-06-22 | 194 | 50% | 0.5d | 2026-06-17 | 2026-06-17 | 1d | 2026-06-17 | 2026-06-17 | 20d | 0d | MECÂNICA | Qua 17/06/26 | Qua 17/06/26 | Sprint 9 |
| 196 | 1.2.6.26.3 | Atendimento de comentários | 2d | 2026-06-23 | 2026-06-24 | 195 |  |  | 2026-06-18 | 2026-06-19 | 2d | 2026-06-18 | 2026-06-19 | 20d | 0d | MECÂNICA | Qui 18/06/26 | Sex 19/06/26 | Sprint 9 |
| 197 | 1.2.6.26.4 | Aprovação | 1d | 2026-06-25 | 2026-06-25 | 196 |  |  | 2026-06-22 | 2026-06-22 | 1d | 2026-06-22 | 2026-06-22 | 20d |  | MECÂNICA | Seg 22/06/26 | Seg 22/06/26 | Sprint 9 |
| 198 | 1.2.6.27 | **FD-F0009-0305-MB-M-00003** | 7d | 2026-06-17 A | 2026-06-25 |  | 43% | 4d | 2026-06-12 | 2026-06-22 | 7d | 2026-06-12 | 2026-06-22 | 20d |  | MECÂNICA | Sex 12/06/26 | Seg 22/06/26 | Sprint 8 |
| 199 | 1.2.6.27.1 | Emissão inicial | 3d | 2026-06-17 A | 2026-06-19 A | 164, 169, 174, 179 | 100% |  | 2026-06-12 | 2026-06-16 | 3d | 2026-06-12 | 2026-06-16 |  |  | MECÂNICA | Sex 12/06/26 | Ter 16/06/26 | Sprint 8 |
| 200 | 1.2.6.27.2 | Análise Tecnored | 1d | 2026-06-22 | 2026-06-22 | 199 |  |  | 2026-06-17 | 2026-06-17 | 1d | 2026-06-17 | 2026-06-17 | 20d | 0d | MECÂNICA | Qua 17/06/26 | Qua 17/06/26 | Sprint 9 |
| 201 | 1.2.6.27.3 | Atendimento de comentários | 2d | 2026-06-23 | 2026-06-24 | 200 |  |  | 2026-06-18 | 2026-06-19 | 2d | 2026-06-18 | 2026-06-19 | 20d | 0d | MECÂNICA | Qui 18/06/26 | Sex 19/06/26 | Sprint 9 |
| 202 | 1.2.6.27.4 | Aprovação | 1d | 2026-06-25 | 2026-06-25 | 201 |  |  | 2026-06-22 | 2026-06-22 | 1d | 2026-06-22 | 2026-06-22 | 20d |  | MECÂNICA | Seg 22/06/26 | Seg 22/06/26 | Sprint 9 |

| ID | WBS | Task | Type | Duration | Start | Finish | Predecessors | Complete | Remaining | Baseline start | Baseline finish | Baseline duration | Baseline 1 start | Baseline 1 finish | Total slack | Free slack | Constraint | Baseline cost | Disciplina | Início_LB_R0 | Término_LB_R0 | Sprints |
| --- | --- | --- | --- | --- | --- | --- | --- | --- | --- | --- | --- | --- | --- | --- | --- | --- | --- | --- | --- | --- | --- | --- |
| 203 | 1.2.7 | **Tubulação/Utilidades** |  | 26d | 2026-06-10 A | 2026-07-17 |  | 31% | 17.93d | 2026-05-20 | 2026-07-08 | 36d | 2026-05-20 | 2026-07-08 | 6d |  |  |  | TUBULAÇÃO / UTILIDADES | Qua 20/05/26 | Qua 08/07/26 | Sprint 7 |
| 204 | 1.2.7.1 | **CP-F0009-0305-MB-T-00001** | inactive | 15d | 2026-05-08 | 2026-05-28 |  |  |  |  |  |  |  |  | 38d |  |  | -0 |  |  |  | Sprint 2 |
| 205 | 1.2.7.1.1 | Emissão inicial | inactive | 5d | 2026-05-08 | 2026-05-14 | 21FS+3d |  |  |  |  |  |  |  | 44d | 6d |  | -0 |  |  |  | Sprint 2 |
| 206 | 1.2.7.1.2 | Análise Tecnored | inactive | 1d | 2026-05-25 | 2026-05-25 | 205, 6 |  |  |  |  |  |  |  | 38d | 0d |  | -0 |  |  |  | Sprint 5 |
| 207 | 1.2.7.1.3 | Atendimento de comentários | inactive | 2d | 2026-05-26 | 2026-05-27 | 206 |  |  |  |  |  |  |  | 38d | 0d |  | -0 |  |  |  | Sprint 5 |
| 208 | 1.2.7.1.4 | Aprovação | inactive | 1d | 2026-05-28 | 2026-05-28 | 207 |  |  |  |  |  |  |  | 38d |  |  | -0 |  |  |  | Sprint 5 |
| 209 | 1.2.7.2 | **MD-F0009-0305-MB-U-00001** | inactive | 7d | 2026-07-24 | 2026-08-03 |  |  |  | 2026-06-18 | 2026-06-26 | 7d | 2026-06-18 | 2026-06-26 | -5d | 0d |  |  |  |  |  | Sprint 13 |
| 210 | 1.2.7.2.1 | Emissão inicial | inactive | 3d | 2026-07-24 | 2026-07-28 | 254FS+5d, 284FS+5d, 304FS+5d |  |  | 2026-06-18 | 2026-06-22 | 3d | 2026-06-18 | 2026-06-22 | -5d | 0d |  |  |  |  |  | Sprint 13 |
| 211 | 1.2.7.2.2 | Análise Tecnored | inactive | 1d | 2026-07-29 | 2026-07-29 | 210 |  |  | 2026-06-23 | 2026-06-23 | 1d | 2026-06-23 | 2026-06-23 | -5d | 0d |  |  |  |  |  | Fora do Período |
| 212 | 1.2.7.2.3 | Atendimento de comentários | inactive | 2d | 2026-07-30 | 2026-07-31 | 211 |  |  | 2026-06-24 | 2026-06-25 | 2d | 2026-06-24 | 2026-06-25 | -5d | 0d |  |  |  |  |  | Fora do Período |
| 213 | 1.2.7.2.4 | Aprovação | inactive | 1d | 2026-08-03 | 2026-08-03 | 212 |  |  | 2026-06-26 | 2026-06-26 | 1d | 2026-06-26 | 2026-06-26 | -5d | 0d |  |  |  |  |  | Fora do Período |
| 214 | 1.2.7.3 | **ML-F0009-0305-MB-T-00001** |  | 7d | 2026-07-03 A | 2026-07-15 |  | 39% | 4.3d | 2026-05-28 | 2026-06-05 | 7d | 2026-05-28 | 2026-06-05 | 8d |  |  |  | TUBULAÇÃO / UTILIDADES | Qui 28/05/26 | Sex 05/06/26 | Sprint 10 |
| 215 | 1.2.7.3.1 | Emissão inicial |  | 3d | 2026-07-03 A | 2026-07-07 | 184, 245 | 90% | 0.3d | 2026-05-28 | 2026-06-01 | 3d | 2026-05-28 | 2026-06-01 | 7d | 0d | start no earlier than 2026-06-24 |  | TUBULAÇÃO / UTILIDADES | Qui 28/05/26 | Seg 01/06/26 | Sprint 10 |
| 216 | 1.2.7.3.2 | Análise Tecnored |  | 1d | 2026-07-08 | 2026-07-08 | 215 |  |  | 2026-06-02 | 2026-06-02 | 1d | 2026-06-02 | 2026-06-02 | 7d | 0d |  |  | TUBULAÇÃO / UTILIDADES | Ter 02/06/26 | Ter 02/06/26 | Sprint 11 |
| 217 | 1.2.7.3.3 | Atendimento de comentários |  | 2d | 2026-07-13 | 2026-07-14 | 216 |  |  | 2026-06-03 | 2026-06-04 | 2d | 2026-06-03 | 2026-06-04 | 8d | 0d |  |  | TUBULAÇÃO / UTILIDADES | Qua 03/06/26 | Qui 04/06/26 | Sprint 12 |
| 218 | 1.2.7.3.4 | Aprovação |  | 1d | 2026-07-15 | 2026-07-15 | 217 |  |  | 2026-06-05 | 2026-06-05 | 1d | 2026-06-05 | 2026-06-05 | 8d |  |  |  | TUBULAÇÃO / UTILIDADES | Sex 05/06/26 | Sex 05/06/26 | Sprint 12 |
| 219 | 1.2.7.4 | **ET-F0009-0305-MB-T-00001** | inactive | 7d | 2026-06-29 | 2026-07-07 |  |  |  | 2026-06-30 | 2026-07-08 | 7d | 2026-06-30 | 2026-07-08 | 12d |  |  |  | TUBULAÇÃO / UTILIDADES |  |  | Sprint 10 |
| 220 | 1.2.7.4.1 | Emissão inicial | inactive | 3d | 2026-06-29 | 2026-07-01 | 225FS+2d |  |  | 2026-06-30 | 2026-07-02 | 3d | 2026-06-30 | 2026-07-02 | 12d | 0d |  |  | TUBULAÇÃO / UTILIDADES |  |  | Sprint 10 |
| 221 | 1.2.7.4.2 | Análise Tecnored | inactive | 1d | 2026-07-02 | 2026-07-02 | 220 |  |  | 2026-07-03 | 2026-07-03 | 1d | 2026-07-03 | 2026-07-03 | 12d | 0d |  |  | TUBULAÇÃO / UTILIDADES |  |  | Sprint 10 |
| 222 | 1.2.7.4.3 | Atendimento de comentários | inactive | 2d | 2026-07-03 | 2026-07-06 | 221 |  |  | 2026-07-06 | 2026-07-07 | 2d | 2026-07-06 | 2026-07-07 | 12d | 0d |  |  | TUBULAÇÃO / UTILIDADES |  |  | Sprint 10 |
| 223 | 1.2.7.4.4 | Aprovação | inactive | 1d | 2026-07-07 | 2026-07-07 | 222 |  |  | 2026-07-08 | 2026-07-08 | 1d | 2026-07-08 | 2026-07-08 | 12d |  |  |  | TUBULAÇÃO / UTILIDADES |  |  | Sprint 11 |
| 224 | 1.2.7.5 | **FD-F0009-0305-MB-T-00001** | inactive | 7d | 2026-06-22 | 2026-06-30 |  |  |  | 2026-06-23 | 2026-07-01 | 7d | 2026-06-23 | 2026-07-01 | 10d |  |  |  | TUBULAÇÃO / UTILIDADES | Ter 23/06/26 | Qua 01/07/26 | Sprint 9 |
| 225 | 1.2.7.5.1 | Emissão inicial | inactive | 3d | 2026-06-22 | 2026-06-24 | 245 |  |  | 2026-06-23 | 2026-06-25 | 3d | 2026-06-23 | 2026-06-25 | 10d | 0d | start no earlier than 2026-06-22 |  | TUBULAÇÃO / UTILIDADES | Ter 23/06/26 | Qui 25/06/26 | Sprint 9 |
| 226 | 1.2.7.5.2 | Análise Tecnored | inactive | 1d | 2026-06-25 | 2026-06-25 | 225 |  |  | 2026-06-26 | 2026-06-26 | 1d | 2026-06-26 | 2026-06-26 | 17d | 0d |  |  | TUBULAÇÃO / UTILIDADES | Sex 26/06/26 | Sex 26/06/26 | Sprint 9 |
| 227 | 1.2.7.5.3 | Atendimento de comentários | inactive | 2d | 2026-06-26 | 2026-06-29 | 226 |  |  | 2026-06-29 | 2026-06-30 | 2d | 2026-06-29 | 2026-06-30 | 17d | 0d |  |  | TUBULAÇÃO / UTILIDADES | Seg 29/06/26 | Ter 30/06/26 | Sprint 9 |
| 228 | 1.2.7.5.4 | Aprovação | inactive | 1d | 2026-06-30 | 2026-06-30 | 227 |  |  | 2026-07-01 | 2026-07-01 | 1d | 2026-07-01 | 2026-07-01 | 17d |  |  |  | TUBULAÇÃO / UTILIDADES | Qua 01/07/26 | Qua 01/07/26 | Sprint 10 |

| ID | WBS | Task | Type | Duration | Start | Finish | Predecessors | Complete | Remaining | Baseline start | Baseline finish | Baseline duration | Baseline 1 start | Baseline 1 finish | Total slack | Free slack | Constraint | Disciplina | Sprints | Início_LB_R0 | Término_LB_R0 |
| --- | --- | --- | --- | --- | --- | --- | --- | --- | --- | --- | --- | --- | --- | --- | --- | --- | --- | --- | --- | --- | --- |
| 229 | 1.2.7.6 | **FD-F0009-0305-MB-T-00002** | inactive | 7d | 2026-06-29 | 2026-07-07 |  |  |  | 2026-06-23 | 2026-07-01 | 7d | 2026-06-23 | 2026-07-01 | 12d |  |  | TUBULAÇÃO / UTILIDADES | Sprint 10 |  |  |
| 230 | 1.2.7.6.1 | Emissão inicial | inactive | 3d | 2026-06-29 | 2026-07-01 | 240 |  |  | 2026-06-23 | 2026-06-25 | 3d | 2026-06-23 | 2026-06-25 | 12d | 0d |  | TUBULAÇÃO / UTILIDADES | Sprint 10 |  |  |
| 231 | 1.2.7.6.2 | Análise Tecnored | inactive | 1d | 2026-07-02 | 2026-07-02 | 230 |  |  | 2026-06-26 | 2026-06-26 | 1d | 2026-06-26 | 2026-06-26 | 12d | 0d |  | TUBULAÇÃO / UTILIDADES | Sprint 10 |  |  |
| 232 | 1.2.7.6.3 | Atendimento de comentários | inactive | 2d | 2026-07-03 | 2026-07-06 | 231 |  |  | 2026-06-29 | 2026-06-30 | 2d | 2026-06-29 | 2026-06-30 | 12d | 0d |  | TUBULAÇÃO / UTILIDADES | Sprint 10 |  |  |
| 233 | 1.2.7.6.4 | Aprovação | inactive | 1d | 2026-07-07 | 2026-07-07 | 232 |  |  | 2026-07-01 | 2026-07-01 | 1d | 2026-07-01 | 2026-07-01 | 12d |  |  | TUBULAÇÃO / UTILIDADES | Sprint 11 |  |  |
| 234 | 1.2.7.7 | **PQ-F0009-0305-MB-T-00001** |  | 7d | 2026-07-07 | 2026-07-17 |  |  |  | 2026-06-23 | 2026-07-01 | 7d | 2026-06-23 | 2026-07-01 | 6d |  |  | TUBULAÇÃO / UTILIDADES | Sprint 11 | Ter 23/06/26 | Qua 01/07/26 |
| 235 | 1.2.7.7.1 | Emissão inicial |  | 3d | 2026-07-07 | 2026-07-13 |  |  |  | 2026-06-23 | 2026-06-25 | 3d | 2026-06-23 | 2026-06-25 | 6d | 0d | start no earlier than 2026-07-07 | TUBULAÇÃO / UTILIDADES | Sprint 11 | Ter 23/06/26 | Qui 25/06/26 |
| 236 | 1.2.7.7.2 | Análise Tecnored |  | 1d | 2026-07-14 | 2026-07-14 | 235 |  |  | 2026-06-26 | 2026-06-26 | 1d | 2026-06-26 | 2026-06-26 | 6d | 0d |  | TUBULAÇÃO / UTILIDADES | Sprint 12 | Sex 26/06/26 | Sex 26/06/26 |
| 237 | 1.2.7.7.3 | Atendimento de comentários |  | 2d | 2026-07-15 | 2026-07-16 | 236 |  |  | 2026-06-29 | 2026-06-30 | 2d | 2026-06-29 | 2026-06-30 | 6d | 0d |  | TUBULAÇÃO / UTILIDADES | Sprint 12 | Seg 29/06/26 | Ter 30/06/26 |
| 238 | 1.2.7.7.4 | Aprovação |  | 1d | 2026-07-17 | 2026-07-17 | 237 |  |  | 2026-07-01 | 2026-07-01 | 1d | 2026-07-01 | 2026-07-01 | 6d |  |  | TUBULAÇÃO / UTILIDADES | Sprint 12 | Qua 01/07/26 | Qua 01/07/26 |
| 239 | 1.2.7.8 | **MC-F0009-0305-MB-T-00001** | inactive | 9d | 2026-06-22 | 2026-07-02 |  |  |  | 2026-06-18 | 2026-06-26 | 7d | 2026-06-18 | 2026-06-26 | 10d |  |  | TUBULAÇÃO / UTILIDADES | Sprint 9 | Qui 18/06/26 | Sex 26/06/26 |
| 240 | 1.2.7.8.1 | Emissão inicial | inactive | 5d | 2026-06-22 | 2026-06-26 | 225SS |  |  | 2026-06-18 | 2026-06-22 | 3d | 2026-06-18 | 2026-06-22 | 10d | 0d |  | TUBULAÇÃO / UTILIDADES | Sprint 9 | Qui 18/06/26 | Seg 22/06/26 |
| 241 | 1.2.7.8.2 | Análise Tecnored | inactive | 1d | 2026-06-29 | 2026-06-29 | 240 |  |  | 2026-06-23 | 2026-06-23 | 1d | 2026-06-23 | 2026-06-23 | 10d | 0d |  | TUBULAÇÃO / UTILIDADES | Sprint 10 | Ter 23/06/26 | Ter 23/06/26 |
| 242 | 1.2.7.8.3 | Atendimento de comentários | inactive | 2d | 2026-06-30 | 2026-07-01 | 241 |  |  | 2026-06-24 | 2026-06-25 | 2d | 2026-06-24 | 2026-06-25 | 10d | 0d |  | TUBULAÇÃO / UTILIDADES | Sprint 10 | Qua 24/06/26 | Qui 25/06/26 |
| 243 | 1.2.7.8.4 | Aprovação | inactive | 1d | 2026-07-02 | 2026-07-02 | 242 |  |  | 2026-06-26 | 2026-06-26 | 1d | 2026-06-26 | 2026-06-26 | 15d |  |  | TUBULAÇÃO / UTILIDADES | Sprint 10 | Sex 26/06/26 | Sex 26/06/26 |
| 244 | 1.2.7.9 | **FG-F0009-0305-MB-T-00001** |  | 7d | 2026-06-10 A | 2026-06-18 |  | 71% | 2d | 2026-05-20 | 2026-05-27 | 6d | 2026-05-20 | 2026-05-27 | 25d |  |  | TUBULAÇÃO / UTILIDADES | Sprint 7 | Qua 20/05/26 | Qua 27/05/26 |
| 245 | 1.2.7.9.1 | Emissão inicial |  | 3d | 2026-06-10 A | 2026-06-12 A | 63FS+13d | 100% |  | 2026-05-20 | 2026-05-21 | 2d | 2026-05-20 | 2026-05-21 |  |  | finish no earlier than 2026-06-12 | TUBULAÇÃO / UTILIDADES | Sprint 7 | Qua 20/05/26 | Qui 21/05/26 |
| 246 | 1.2.7.9.2 | Análise Tecnored |  | 1d | 2026-06-15 A | 2026-06-15 A | 245 | 100% |  | 2026-05-22 | 2026-05-22 | 1d | 2026-05-22 | 2026-05-22 |  |  |  | TUBULAÇÃO / UTILIDADES | Sprint 8 | Sex 22/05/26 | Sex 22/05/26 |
| 247 | 1.2.7.9.3 | Atendimento de comentários |  | 2d | 2026-06-16 A | 2026-06-17 | 246 | 50% | 1d | 2026-05-25 | 2026-05-26 | 2d | 2026-05-25 | 2026-05-26 | 25d | 0d |  | TUBULAÇÃO / UTILIDADES | Sprint 8 | Seg 25/05/26 | Ter 26/05/26 |
| 248 | 1.2.7.9.4 | Aprovação |  | 1d | 2026-06-18 | 2026-06-18 | 247 |  |  | 2026-05-27 | 2026-05-27 | 1d | 2026-05-27 | 2026-05-27 | 25d |  |  | TUBULAÇÃO / UTILIDADES | Sprint 8 | Qua 27/05/26 | Qua 27/05/26 |
| 249 | 1.2.7.10 | **FG-F0009-0305-MB-T-00002** | inactive | 6d | 2026-07-03 | 2026-07-14 |  |  |  | 2026-05-20 | 2026-05-27 | 6d | 2026-05-20 | 2026-05-27 | 9d |  |  | TUBULAÇÃO / UTILIDADES | Sprint 10 |  |  |
| 250 | 1.2.7.10.1 | Emissão inicial | inactive | 2d | 2026-07-03 | 2026-07-06 | 63FS+10d |  |  | 2026-05-20 | 2026-05-21 | 2d | 2026-05-20 | 2026-05-21 | 9d | 0d |  | TUBULAÇÃO / UTILIDADES | Sprint 10 |  |  |
| 251 | 1.2.7.10.2 | Análise Tecnored | inactive | 1d | 2026-07-07 | 2026-07-07 | 250 |  |  | 2026-05-22 | 2026-05-22 | 1d | 2026-05-22 | 2026-05-22 | 9d | 0d |  | TUBULAÇÃO / UTILIDADES | Sprint 11 |  |  |
| 252 | 1.2.7.10.3 | Atendimento de comentários | inactive | 2d | 2026-07-08 | 2026-07-13 | 251 |  |  | 2026-05-25 | 2026-05-26 | 2d | 2026-05-25 | 2026-05-26 | 9d | 0d |  | TUBULAÇÃO / UTILIDADES | Sprint 11 |  |  |
| 253 | 1.2.7.10.4 | Aprovação | inactive | 1d | 2026-07-14 | 2026-07-14 | 252 |  |  | 2026-05-27 | 2026-05-27 | 1d | 2026-05-27 | 2026-05-27 | 9d |  |  | TUBULAÇÃO / UTILIDADES | Sprint 12 |  |  |

| ID | WBS | Task | Type | Duration | Start | Finish | Predecessors | Complete | Remaining | Baseline start | Baseline finish | Baseline duration | Baseline 1 start | Baseline 1 finish | Total slack | Free slack | Constraint | Disciplina | Início_LB_R0 | Término_LB_R0 | Sprints |
| --- | --- | --- | --- | --- | --- | --- | --- | --- | --- | --- | --- | --- | --- | --- | --- | --- | --- | --- | --- | --- | --- |
| 254 | 1.2.7.11 | **AG-F0009-0305-MB-T-00001** |  | 7d | 2026-07-06 A | 2026-07-16 |  | 32% | 4.75d | 2026-06-02 | 2026-06-10 | 7d | 2026-06-02 | 2026-06-10 | 7d | 0d |  | TUBULAÇÃO / UTILIDADES | Ter 02/06/26 | Qua 10/06/26 | Sprint 11 |
| 255 | 1.2.7.11.1 | Emissão inicial |  | 3d | 2026-07-06 A | 2026-07-08 | 216FF | 75% | 0.75d | 2026-06-02 | 2026-06-04 | 3d | 2026-06-02 | 2026-06-04 | 7d | 0d | start no earlier than 2026-07-06 | TUBULAÇÃO / UTILIDADES | Ter 02/06/26 | Qui 04/06/26 | Sprint 11 |
| 256 | 1.2.7.11.2 | Análise Tecnored |  | 1d | 2026-07-13 | 2026-07-13 | 255 |  |  | 2026-06-05 | 2026-06-05 | 1d | 2026-06-05 | 2026-06-05 | 7d | 0d |  | TUBULAÇÃO / UTILIDADES | Sex 05/06/26 | Sex 05/06/26 | Sprint 12 |
| 257 | 1.2.7.11.3 | Atendimento de comentários |  | 2d | 2026-07-14 | 2026-07-15 | 256 |  |  | 2026-06-08 | 2026-06-09 | 2d | 2026-06-08 | 2026-06-09 | 7d | 0d |  | TUBULAÇÃO / UTILIDADES | Seg 08/06/26 | Ter 09/06/26 | Sprint 12 |
| 258 | 1.2.7.11.4 | Aprovação |  | 1d | 2026-07-16 | 2026-07-16 | 257 |  |  | 2026-06-10 | 2026-06-10 | 1d | 2026-06-10 | 2026-06-10 | 7d |  |  | TUBULAÇÃO / UTILIDADES | Qua 10/06/26 | Qua 10/06/26 | Sprint 12 |
| 259 | 1.2.7.12 | **AG-F0009-0305-MB-T-00002** |  | 7d | 2026-07-06 A | 2026-07-16 |  | 32% | 4.75d | 2026-06-02 | 2026-06-10 | 7d | 2026-06-02 | 2026-06-10 | 7d |  |  | TUBULAÇÃO / UTILIDADES | Ter 02/06/26 | Qua 10/06/26 | Sprint 11 |
| 260 | 1.2.7.12.1 | Emissão inicial |  | 3d | 2026-07-06 A | 2026-07-08 | 216FF | 75% | 0.75d | 2026-06-02 | 2026-06-04 | 3d | 2026-06-02 | 2026-06-04 | 7d | 0d | start no earlier than 2026-07-06 | TUBULAÇÃO / UTILIDADES | Ter 02/06/26 | Qui 04/06/26 | Sprint 11 |
| 261 | 1.2.7.12.2 | Análise Tecnored |  | 1d | 2026-07-13 | 2026-07-13 | 260 |  |  | 2026-06-05 | 2026-06-05 | 1d | 2026-06-05 | 2026-06-05 | 7d | 0d |  | TUBULAÇÃO / UTILIDADES | Sex 05/06/26 | Sex 05/06/26 | Sprint 12 |
| 262 | 1.2.7.12.3 | Atendimento de comentários |  | 2d | 2026-07-14 | 2026-07-15 | 261 |  |  | 2026-06-08 | 2026-06-09 | 2d | 2026-06-08 | 2026-06-09 | 7d | 0d |  | TUBULAÇÃO / UTILIDADES | Seg 08/06/26 | Ter 09/06/26 | Sprint 12 |
| 263 | 1.2.7.12.4 | Aprovação |  | 1d | 2026-07-16 | 2026-07-16 | 262 |  |  | 2026-06-10 | 2026-06-10 | 1d | 2026-06-10 | 2026-06-10 | 7d |  |  | TUBULAÇÃO / UTILIDADES | Qua 10/06/26 | Qua 10/06/26 | Sprint 12 |
| 264 | 1.2.7.13 | **AG-F0009-0305-MB-T-00003** |  | 7d | 2026-07-06 A | 2026-07-16 |  | 32% | 4.75d | 2026-06-02 | 2026-06-10 | 7d | 2026-06-02 | 2026-06-10 | 7d |  |  | TUBULAÇÃO / UTILIDADES | Ter 02/06/26 | Qua 10/06/26 | Sprint 11 |
| 265 | 1.2.7.13.1 | Emissão inicial |  | 3d | 2026-07-06 A | 2026-07-08 | 216FF | 75% | 0.75d | 2026-06-02 | 2026-06-04 | 3d | 2026-06-02 | 2026-06-04 | 7d | 0d | start no earlier than 2026-07-06 | TUBULAÇÃO / UTILIDADES | Ter 02/06/26 | Qui 04/06/26 | Sprint 11 |
| 266 | 1.2.7.13.2 | Análise Tecnored |  | 1d | 2026-07-13 | 2026-07-13 | 265 |  |  | 2026-06-05 | 2026-06-05 | 1d | 2026-06-05 | 2026-06-05 | 7d | 0d |  | TUBULAÇÃO / UTILIDADES | Sex 05/06/26 | Sex 05/06/26 | Sprint 12 |
| 267 | 1.2.7.13.3 | Atendimento de comentários |  | 2d | 2026-07-14 | 2026-07-15 | 266 |  |  | 2026-06-08 | 2026-06-09 | 2d | 2026-06-08 | 2026-06-09 | 7d | 0d |  | TUBULAÇÃO / UTILIDADES | Seg 08/06/26 | Ter 09/06/26 | Sprint 12 |
| 268 | 1.2.7.13.4 | Aprovação |  | 1d | 2026-07-16 | 2026-07-16 | 267 |  |  | 2026-06-10 | 2026-06-10 | 1d | 2026-06-10 | 2026-06-10 | 7d |  |  | TUBULAÇÃO / UTILIDADES | Qua 10/06/26 | Qua 10/06/26 | Sprint 12 |
| 269 | 1.2.7.14 | **AG-F0009-0305-MB-T-00004** | inactive | 7d | 2026-06-03 | 2026-06-15 |  |  |  | 2026-06-02 | 2026-06-10 | 7d | 2026-06-02 | 2026-06-10 | 28d |  |  | ESTRUTURA METÁLICA |  |  | Sprint 6 |
| 270 | 1.2.7.14.1 | Emissão inicial | inactive | 3d | 2026-06-03 | 2026-06-09 | 186 |  |  | 2026-06-02 | 2026-06-04 | 3d | 2026-06-02 | 2026-06-04 | 28d | 0d |  | ESTRUTURA METÁLICA |  |  | Sprint 6 |
| 271 | 1.2.7.14.2 | Análise Tecnored | inactive | 1d | 2026-06-10 | 2026-06-10 | 270 |  |  | 2026-06-05 | 2026-06-05 | 1d | 2026-06-05 | 2026-06-05 | 28d | 0d |  | ESTRUTURA METÁLICA |  |  | Sprint 7 |
| 272 | 1.2.7.14.3 | Atendimento de comentários | inactive | 2d | 2026-06-11 | 2026-06-12 | 271 |  |  | 2026-06-08 | 2026-06-09 | 2d | 2026-06-08 | 2026-06-09 | 28d | 0d |  | ESTRUTURA METÁLICA |  |  | Sprint 7 |
| 273 | 1.2.7.14.4 | Aprovação | inactive | 1d | 2026-06-15 | 2026-06-15 | 272 |  |  | 2026-06-10 | 2026-06-10 | 1d | 2026-06-10 | 2026-06-10 | 28d |  |  | ESTRUTURA METÁLICA |  |  | Sprint 8 |
| 274 | 1.2.7.15 | **AG-F0009-0305-MB-T-00005** | inactive | 7d | 2026-06-03 | 2026-06-15 |  |  |  | 2026-06-02 | 2026-06-10 | 7d | 2026-06-02 | 2026-06-10 | 28d |  |  | ESTRUTURA METÁLICA |  |  | Sprint 6 |
| 275 | 1.2.7.15.1 | Emissão inicial | inactive | 3d | 2026-06-03 | 2026-06-09 | 186 |  |  | 2026-06-02 | 2026-06-04 | 3d | 2026-06-02 | 2026-06-04 | 28d | 0d |  | ESTRUTURA METÁLICA |  |  | Sprint 6 |
| 276 | 1.2.7.15.2 | Análise Tecnored | inactive | 1d | 2026-06-10 | 2026-06-10 | 275 |  |  | 2026-06-05 | 2026-06-05 | 1d | 2026-06-05 | 2026-06-05 | 28d | 0d |  | ESTRUTURA METÁLICA |  |  | Sprint 7 |
| 277 | 1.2.7.15.3 | Atendimento de comentários | inactive | 2d | 2026-06-11 | 2026-06-12 | 276 |  |  | 2026-06-08 | 2026-06-09 | 2d | 2026-06-08 | 2026-06-09 | 28d | 0d |  | ESTRUTURA METÁLICA |  |  | Sprint 7 |
| 278 | 1.2.7.15.4 | Aprovação | inactive | 1d | 2026-06-15 | 2026-06-15 | 277 |  |  | 2026-06-10 | 2026-06-10 | 1d | 2026-06-10 | 2026-06-10 | 28d |  |  | ESTRUTURA METÁLICA |  |  | Sprint 8 |

| ID | WBS | Task | Type | Duration | Start | Finish | Predecessors | Complete | Remaining | Baseline start | Baseline finish | Baseline duration | Baseline 1 start | Baseline 1 finish | Total slack | Free slack | Constraint | Disciplina | Sprints | Início_LB_R0 | Término_LB_R0 |
| --- | --- | --- | --- | --- | --- | --- | --- | --- | --- | --- | --- | --- | --- | --- | --- | --- | --- | --- | --- | --- | --- |
| 279 | 1.2.7.16 | **AG-F0009-0305-MB-T-00006** | inactive | 7d | 2026-06-03 | 2026-06-15 |  |  |  | 2026-06-02 | 2026-06-10 | 7d | 2026-06-02 | 2026-06-10 | 28d |  |  | ESTRUTURA METÁLICA | Sprint 6 |  |  |
| 280 | 1.2.7.16.1 | Emissão inicial | inactive | 3d | 2026-06-03 | 2026-06-09 | 186 |  |  | 2026-06-02 | 2026-06-04 | 3d | 2026-06-02 | 2026-06-04 | 28d | 0d |  | ESTRUTURA METÁLICA | Sprint 6 |  |  |
| 281 | 1.2.7.16.2 | Análise Tecnored | inactive | 1d | 2026-06-10 | 2026-06-10 | 280 |  |  | 2026-06-05 | 2026-06-05 | 1d | 2026-06-05 | 2026-06-05 | 28d | 0d |  | ESTRUTURA METÁLICA | Sprint 7 |  |  |
| 282 | 1.2.7.16.3 | Atendimento de comentários | inactive | 2d | 2026-06-11 | 2026-06-12 | 281 |  |  | 2026-06-08 | 2026-06-09 | 2d | 2026-06-08 | 2026-06-09 | 28d | 0d |  | ESTRUTURA METÁLICA | Sprint 7 |  |  |
| 283 | 1.2.7.16.4 | Aprovação | inactive | 1d | 2026-06-15 | 2026-06-15 | 282 |  |  | 2026-06-10 | 2026-06-10 | 1d | 2026-06-10 | 2026-06-10 | 28d |  |  | ESTRUTURA METÁLICA | Sprint 8 |  |  |
| 284 | 1.2.7.17 | **AG-F0009-0305-MB-T-00004** |  | 7d | 2026-07-06 A | 2026-07-16 |  | 32% | 4.75d | 2026-06-02 | 2026-06-10 | 7d | 2026-06-02 | 2026-06-10 | 7d | 0d |  | TUBULAÇÃO / UTILIDADES | Sprint 11 | Ter 02/06/26 | Qua 10/06/26 |
| 285 | 1.2.7.17.1 | Emissão inicial |  | 3d | 2026-07-06 A | 2026-07-08 | 216FF | 75% | 0.75d | 2026-06-02 | 2026-06-04 | 3d | 2026-06-02 | 2026-06-04 | 7d | 0d | start no earlier than 2026-07-06 | TUBULAÇÃO / UTILIDADES | Sprint 11 | Ter 02/06/26 | Qui 04/06/26 |
| 286 | 1.2.7.17.2 | Análise Tecnored |  | 1d | 2026-07-13 | 2026-07-13 | 285 |  |  | 2026-06-05 | 2026-06-05 | 1d | 2026-06-05 | 2026-06-05 | 7d | 0d |  | TUBULAÇÃO / UTILIDADES | Sprint 12 | Sex 05/06/26 | Sex 05/06/26 |
| 287 | 1.2.7.17.3 | Atendimento de comentários |  | 2d | 2026-07-14 | 2026-07-15 | 286 |  |  | 2026-06-08 | 2026-06-09 | 2d | 2026-06-08 | 2026-06-09 | 7d | 0d |  | TUBULAÇÃO / UTILIDADES | Sprint 12 | Seg 08/06/26 | Ter 09/06/26 |
| 288 | 1.2.7.17.4 | Aprovação |  | 1d | 2026-07-16 | 2026-07-16 | 287 |  |  | 2026-06-10 | 2026-06-10 | 1d | 2026-06-10 | 2026-06-10 | 7d |  |  | TUBULAÇÃO / UTILIDADES | Sprint 12 | Qua 10/06/26 | Qua 10/06/26 |
| 289 | 1.2.7.18 | **AG-F0009-0305-MB-T-00005** |  | 7d | 2026-07-06 A | 2026-07-16 |  | 32% | 4.75d | 2026-06-02 | 2026-06-10 | 7d | 2026-06-02 | 2026-06-10 | 7d |  |  | TUBULAÇÃO / UTILIDADES | Sprint 11 | Ter 02/06/26 | Qua 10/06/26 |
| 290 | 1.2.7.18.1 | Emissão inicial |  | 3d | 2026-07-06 A | 2026-07-08 | 216FF | 75% | 0.75d | 2026-06-02 | 2026-06-04 | 3d | 2026-06-02 | 2026-06-04 | 7d | 0d | start no earlier than 2026-07-06 | TUBULAÇÃO / UTILIDADES | Sprint 11 | Ter 02/06/26 | Qui 04/06/26 |
| 291 | 1.2.7.18.2 | Análise Tecnored |  | 1d | 2026-07-13 | 2026-07-13 | 290 |  |  | 2026-06-05 | 2026-06-05 | 1d | 2026-06-05 | 2026-06-05 | 7d | 0d |  | TUBULAÇÃO / UTILIDADES | Sprint 12 | Sex 05/06/26 | Sex 05/06/26 |
| 292 | 1.2.7.18.3 | Atendimento de comentários |  | 2d | 2026-07-14 | 2026-07-15 | 291 |  |  | 2026-06-08 | 2026-06-09 | 2d | 2026-06-08 | 2026-06-09 | 7d | 0d |  | TUBULAÇÃO / UTILIDADES | Sprint 12 | Seg 08/06/26 | Ter 09/06/26 |
| 293 | 1.2.7.18.4 | Aprovação |  | 1d | 2026-07-16 | 2026-07-16 | 292 |  |  | 2026-06-10 | 2026-06-10 | 1d | 2026-06-10 | 2026-06-10 | 7d |  |  | TUBULAÇÃO / UTILIDADES | Sprint 12 | Qua 10/06/26 | Qua 10/06/26 |
| 294 | 1.2.7.19 | **AG-F0009-0305-MB-T-00006** |  | 7d | 2026-07-06 A | 2026-07-16 |  | 32% | 4.75d | 2026-06-02 | 2026-06-10 | 7d | 2026-06-02 | 2026-06-10 | 7d |  |  | TUBULAÇÃO / UTILIDADES | Sprint 11 | Ter 02/06/26 | Qua 10/06/26 |
| 295 | 1.2.7.19.1 | Emissão inicial |  | 3d | 2026-07-06 A | 2026-07-08 | 216FF | 75% | 0.75d | 2026-06-02 | 2026-06-04 | 3d | 2026-06-02 | 2026-06-04 | 7d | 0d | start no earlier than 2026-07-06 | TUBULAÇÃO / UTILIDADES | Sprint 11 | Ter 02/06/26 | Qui 04/06/26 |
| 296 | 1.2.7.19.2 | Análise Tecnored |  | 1d | 2026-07-13 | 2026-07-13 | 295 |  |  | 2026-06-05 | 2026-06-05 | 1d | 2026-06-05 | 2026-06-05 | 7d | 0d |  | TUBULAÇÃO / UTILIDADES | Sprint 12 | Sex 05/06/26 | Sex 05/06/26 |
| 297 | 1.2.7.19.3 | Atendimento de comentários |  | 2d | 2026-07-14 | 2026-07-15 | 296 |  |  | 2026-06-08 | 2026-06-09 | 2d | 2026-06-08 | 2026-06-09 | 7d | 0d |  | TUBULAÇÃO / UTILIDADES | Sprint 12 | Seg 08/06/26 | Ter 09/06/26 |
| 298 | 1.2.7.19.4 | Aprovação |  | 1d | 2026-07-16 | 2026-07-16 | 297 |  |  | 2026-06-10 | 2026-06-10 | 1d | 2026-06-10 | 2026-06-10 | 7d |  |  | TUBULAÇÃO / UTILIDADES | Sprint 12 | Qua 10/06/26 | Qua 10/06/26 |
| 299 | 1.2.7.20 | **AG-F0009-0305-MB-T-00007** |  | 7d | 2026-07-06 A | 2026-07-16 |  | 32% | 4.75d | 2026-06-02 | 2026-06-10 | 7d | 2026-06-02 | 2026-06-10 | 7d |  |  | TUBULAÇÃO / UTILIDADES | Sprint 11 | Ter 02/06/26 | Qua 10/06/26 |
| 300 | 1.2.7.20.1 | Emissão inicial |  | 3d | 2026-07-06 A | 2026-07-08 | 216FF | 75% | 0.75d | 2026-07-06 | 2026-07-08 | 3d | 2026-06-02 | 2026-06-04 | 7d | 0d | start no earlier than 2026-07-06 | TUBULAÇÃO / UTILIDADES | Sprint 11 | Seg 06/07/26 | Qua 08/07/26 |
| 301 | 1.2.7.20.2 | Análise Tecnored |  | 1d | 2026-07-13 | 2026-07-13 | 300 |  |  | 2026-07-13 | 2026-07-13 | 1d | 2026-06-05 | 2026-06-05 | 7d | 0d |  | TUBULAÇÃO / UTILIDADES | Sprint 12 | Seg 13/07/26 | Seg 13/07/26 |
| 302 | 1.2.7.20.3 | Atendimento de comentários |  | 2d | 2026-07-14 | 2026-07-15 | 301 |  |  | 2026-07-14 | 2026-07-15 | 2d | 2026-06-08 | 2026-06-09 | 7d | 0d |  | TUBULAÇÃO / UTILIDADES | Sprint 12 | Ter 14/07/26 | Qua 15/07/26 |
| 303 | 1.2.7.20.4 | Aprovação |  | 1d | 2026-07-16 | 2026-07-16 | 302 |  |  | 2026-07-16 | 2026-07-16 | 1d | 2026-06-10 | 2026-06-10 | 7d |  |  | TUBULAÇÃO / UTILIDADES | Sprint 12 | Qui 16/07/26 | Qui 16/07/26 |

| ID | WBS | Task | Type | Duration | Start | Finish | Predecessors | Complete | Remaining | Baseline start | Baseline finish | Baseline duration | Baseline 1 start | Baseline 1 finish | Total slack | Free slack | Constraint | Baseline cost | Disciplina | Início_LB_R0 | Término_LB_R0 | Sprints |
| --- | --- | --- | --- | --- | --- | --- | --- | --- | --- | --- | --- | --- | --- | --- | --- | --- | --- | --- | --- | --- | --- | --- |
| 304 | 1.2.7.21 | **AG-F0009-0305-MB-T-00008** |  | 7d | 2026-07-06 A | 2026-07-16 |  | 32% | 4.75d | 2026-06-02 | 2026-06-10 | 7d | 2026-06-02 | 2026-06-10 | 7d | 0d |  |  | TUBULAÇÃO / UTILIDADES | Ter 02/06/26 | Qua 10/06/26 | Sprint 11 |
| 305 | 1.2.7.21.1 | Emissão inicial |  | 3d | 2026-07-06 A | 2026-07-08 | 216FF | 75% | 0.75d | 2026-07-06 | 2026-07-08 | 3d | 2026-06-02 | 2026-06-04 | 7d | 0d | start no earlier than 2026-07-06 |  | TUBULAÇÃO / UTILIDADES | Seg 06/07/26 | Qua 08/07/26 | Sprint 11 |
| 306 | 1.2.7.21.2 | Análise Tecnored |  | 1d | 2026-07-13 | 2026-07-13 | 305 |  |  | 2026-07-13 | 2026-07-13 | 1d | 2026-06-05 | 2026-06-05 | 7d | 0d |  |  | TUBULAÇÃO / UTILIDADES | Seg 13/07/26 | Seg 13/07/26 | Sprint 12 |
| 307 | 1.2.7.21.3 | Atendimento de comentários |  | 2d | 2026-07-14 | 2026-07-15 | 306 |  |  | 2026-07-14 | 2026-07-15 | 2d | 2026-06-08 | 2026-06-09 | 7d | 0d |  |  | TUBULAÇÃO / UTILIDADES | Ter 14/07/26 | Qua 15/07/26 | Sprint 12 |
| 308 | 1.2.7.21.4 | Aprovação |  | 1d | 2026-07-16 | 2026-07-16 | 307 |  |  | 2026-07-16 | 2026-07-16 | 1d | 2026-06-10 | 2026-06-10 | 7d |  |  |  | TUBULAÇÃO / UTILIDADES | Qui 16/07/26 | Qui 16/07/26 | Sprint 12 |
| 309 | 1.2.7.22 | **AG-F0009-0305-MB-T-00009** |  | 7d | 2026-07-06 A | 2026-07-16 |  | 32% | 4.75d | 2026-06-02 | 2026-06-10 | 7d | 2026-06-02 | 2026-06-10 | 7d |  |  |  | TUBULAÇÃO / UTILIDADES | Ter 02/06/26 | Qua 10/06/26 | Sprint 11 |
| 310 | 1.2.7.22.1 | Emissão inicial |  | 3d | 2026-07-06 A | 2026-07-08 | 216FF | 75% | 0.75d | 2026-07-06 | 2026-07-08 | 3d | 2026-06-02 | 2026-06-04 | 7d | 0d | start no earlier than 2026-07-06 |  | TUBULAÇÃO / UTILIDADES | Seg 06/07/26 | Qua 08/07/26 | Sprint 11 |
| 311 | 1.2.7.22.2 | Análise Tecnored |  | 1d | 2026-07-13 | 2026-07-13 | 310 |  |  | 2026-07-13 | 2026-07-13 | 1d | 2026-06-05 | 2026-06-05 | 7d | 0d |  |  | TUBULAÇÃO / UTILIDADES | Seg 13/07/26 | Seg 13/07/26 | Sprint 12 |
| 312 | 1.2.7.22.3 | Atendimento de comentários |  | 2d | 2026-07-14 | 2026-07-15 | 311 |  |  | 2026-07-14 | 2026-07-15 | 2d | 2026-06-08 | 2026-06-09 | 7d | 0d |  |  | TUBULAÇÃO / UTILIDADES | Ter 14/07/26 | Qua 15/07/26 | Sprint 12 |
| 313 | 1.2.7.22.4 | Aprovação |  | 1d | 2026-07-16 | 2026-07-16 | 312 |  |  | 2026-07-16 | 2026-07-16 | 1d | 2026-06-10 | 2026-06-10 | 7d |  |  |  | TUBULAÇÃO / UTILIDADES | Qui 16/07/26 | Qui 16/07/26 | Sprint 12 |
| 314 | 1.2.7.23 | **LK-F0009-0305-MB-T-00001** |  | 6d | 2026-07-03 | 2026-07-14 |  |  |  | 2026-06-02 | 2026-06-10 | 7d | 2026-06-02 | 2026-06-10 | 9d |  |  |  | TUBULAÇÃO / UTILIDADES | Ter 02/06/26 | Qua 10/06/26 | Sprint 10 |
| 315 | 1.2.7.23.1 | Emissão inicial |  | 2d | 2026-07-03 | 2026-07-06 | 242 |  |  | 2026-06-02 | 2026-06-04 | 3d | 2026-06-02 | 2026-06-04 | 9d | 0d | start no earlier than 2026-07-03 |  | TUBULAÇÃO / UTILIDADES | Ter 02/06/26 | Qui 04/06/26 | Sprint 10 |
| 316 | 1.2.7.23.2 | Análise Tecnored |  | 1d | 2026-07-07 | 2026-07-07 | 315 |  |  | 2026-06-05 | 2026-06-05 | 1d | 2026-06-05 | 2026-06-05 | 9d | 0d |  |  | TUBULAÇÃO / UTILIDADES | Sex 05/06/26 | Sex 05/06/26 | Sprint 11 |
| 317 | 1.2.7.23.3 | Atendimento de comentários |  | 2d | 2026-07-08 | 2026-07-13 | 316 |  |  | 2026-06-08 | 2026-06-09 | 2d | 2026-06-08 | 2026-06-09 | 9d | 0d |  |  | TUBULAÇÃO / UTILIDADES | Seg 08/06/26 | Ter 09/06/26 | Sprint 11 |
| 318 | 1.2.7.23.4 | Aprovação |  | 1d | 2026-07-14 | 2026-07-14 | 317 |  |  | 2026-06-10 | 2026-06-10 | 1d | 2026-06-10 | 2026-06-10 | 9d |  |  |  | TUBULAÇÃO / UTILIDADES | Qua 10/06/26 | Qua 10/06/26 | Sprint 12 |
| 319 | 1.2.7.24 | **MC-F0009-0305-MB-T-00002** | inactive | 14d | 2026-05-27 | 2026-06-17 |  |  |  | 2026-05-28 | 2026-06-16 | 14d | 2026-05-28 | 2026-06-16 | 26d |  |  |  | ESTRUTURA METÁLICA |  |  | Sprint 5 |
| 320 | 1.2.7.24.1 | Emissão inicial | inactive | 10d | 2026-05-27 | 2026-06-11 | 184 |  |  | 2026-05-28 | 2026-06-10 | 10d | 2026-05-28 | 2026-06-10 | 26d | 0d |  |  | ESTRUTURA METÁLICA |  |  | Sprint 5 |
| 321 | 1.2.7.24.2 | Análise Tecnored | inactive | 1d | 2026-06-12 | 2026-06-12 | 320 |  |  | 2026-06-11 | 2026-06-11 | 1d | 2026-06-11 | 2026-06-11 | 26d | 0d |  |  | ESTRUTURA METÁLICA |  |  | Sprint 7 |
| 322 | 1.2.7.24.3 | Atendimento de comentários | inactive | 2d | 2026-06-15 | 2026-06-16 | 321 |  |  | 2026-06-12 | 2026-06-15 | 2d | 2026-06-12 | 2026-06-15 | 26d | 0d |  |  | ESTRUTURA METÁLICA |  |  | Sprint 8 |
| 323 | 1.2.7.24.4 | Aprovação | inactive | 1d | 2026-06-17 | 2026-06-17 | 322 |  |  | 2026-06-16 | 2026-06-16 | 1d | 2026-06-16 | 2026-06-16 | 26d |  |  |  | ESTRUTURA METÁLICA |  |  | Sprint 8 |
| 324 | 1.2.8 | **Estrutura metálica** |  | 12.75d | 2026-07-06 A | 2026-07-24 |  | 2% | 12.45d | 2026-06-15 | 2026-07-08 | 18d | 2026-06-15 | 2026-07-08 | 1.25d |  |  |  | ESTRUTURA METÁLICA | Seg 15/06/26 | Qua 08/07/26 | Sprint 11 |
| 325 | 1.2.8.1 | **CP-F0009-0305-MB-S-00001** | inactive | 33d | 2026-05-12 | 2026-06-29 |  |  |  |  |  |  |  |  | 18d |  |  | -0 |  |  |  | Sprint 3 |
| 326 | 1.2.8.1.1 | Emissão inicial | inactive | 3d | 2026-05-12 | 2026-05-14 | 21FS+5d |  |  |  |  |  |  |  | 44d | 26d |  | -0 |  |  |  | Sprint 3 |
| 327 | 1.2.8.1.2 | Análise Tecnored | inactive | 1d | 2026-06-24 | 2026-06-24 | 326, 9 |  |  |  |  |  |  |  | 18d | 0d |  | -0 |  |  |  | Sprint 9 |
| 328 | 1.2.8.1.3 | Atendimento de comentários | inactive | 2d | 2026-06-25 | 2026-06-26 | 327 |  |  |  |  |  |  |  | 18d | 0d |  | -0 |  |  |  | Sprint 9 |
| 329 | 1.2.8.1.4 | Aprovação | inactive | 1d | 2026-06-29 | 2026-06-29 | 328 |  |  |  |  |  |  |  | 18d |  |  | -0 |  |  |  | Sprint 10 |

| ID | WBS | Task | Type | Duration | Start | Finish | Predecessors | Complete | Remaining | Baseline start | Baseline finish | Baseline duration | Baseline 1 start | Baseline 1 finish | Total slack | Free slack | Constraint | Disciplina | Início_LB_R0 | Término_LB_R0 | Sprints |
| --- | --- | --- | --- | --- | --- | --- | --- | --- | --- | --- | --- | --- | --- | --- | --- | --- | --- | --- | --- | --- | --- |
| 330 | 1.2.8.2 | **ML-F0009-0305-MB-S-00001** |  | 4.75d | 2026-07-08 A | 2026-07-16 |  | 38% | 2.97d | 2026-06-17 | 2026-06-25 | 7d | 2026-06-17 | 2026-06-25 | 7.25d |  |  | ESTRUTURA METÁLICA | Qua 17/06/26 | Qui 25/06/26 | Sprint 11 |
| 331 | 1.2.8.2.1 | Emissão inicial |  | 3d | 2026-07-08 A | 2026-07-13 | 346FS-8d | 75% | 0.75d | 2026-06-17 | 2026-06-19 | 3d | 2026-06-17 | 2026-06-19 | 1.25d | 0d | start no earlier than 2026-06-23 | ESTRUTURA METÁLICA | Qua 17/06/26 | Sex 19/06/26 | Sprint 11 |
| 332 | 1.2.8.2.2 | Análise Tecnored |  | 1d | 2026-07-13 | 2026-07-14 | 331 |  |  | 2026-06-22 | 2026-06-22 | 1d | 2026-06-22 | 2026-06-22 | 1.25d | 0d |  | ESTRUTURA METÁLICA | Seg 22/06/26 | Seg 22/06/26 | Sprint 12 |
| 333 | 1.2.8.2.3 | Atendimento de comentários |  | 1d | 2026-07-14 | 2026-07-15 | 332 |  |  | 2026-06-23 | 2026-06-24 | 2d | 2026-06-23 | 2026-06-24 | 1.25d | 0d |  | ESTRUTURA METÁLICA | Ter 23/06/26 | Qua 24/06/26 | Sprint 12 |
| 334 | 1.2.8.2.4 | Aprovação |  | 1d | 2026-07-15 | 2026-07-16 | 333 |  |  | 2026-06-25 | 2026-06-25 | 1d | 2026-06-25 | 2026-06-25 | 7.25d | 0d |  | ESTRUTURA METÁLICA | Qui 25/06/26 | Qui 25/06/26 | Sprint 12 |
| 335 | 1.2.8.3 | **PQ-F0009-0305-MB-S-00001** |  | 6d | 2026-07-13 | 2026-07-21 |  |  |  | 2026-06-30 | 2026-07-07 | 6d | 2026-06-30 | 2026-07-07 | 4.25d |  |  | ESTRUTURA METÁLICA | Ter 30/06/26 | Ter 07/07/26 | Sprint 12 |
| 336 | 1.2.8.3.1 | Emissão inicial |  | 3d | 2026-07-13 | 2026-07-16 | 331 |  |  | 2026-06-30 | 2026-07-01 | 2d | 2026-06-30 | 2026-07-01 | 4.25d | 0d | finish no earlier than 2026-07-02 | ESTRUTURA METÁLICA | Ter 30/06/26 | Qua 01/07/26 | Sprint 12 |
| 337 | 1.2.8.3.2 | Análise Tecnored |  | 1d | 2026-07-16 | 2026-07-17 | 336 |  |  | 2026-07-02 | 2026-07-02 | 1d | 2026-07-02 | 2026-07-02 | 4.25d | 0d | start no earlier than 2026-06-30 | ESTRUTURA METÁLICA | Qui 02/07/26 | Qui 02/07/26 | Sprint 12 |
| 338 | 1.2.8.3.3 | Atendimento de comentários |  | 1d | 2026-07-17 | 2026-07-20 | 337 |  |  | 2026-07-03 | 2026-07-06 | 2d | 2026-07-03 | 2026-07-06 | 4.25d | 0d | start no earlier than 2026-07-01 | ESTRUTURA METÁLICA | Sex 03/07/26 | Seg 06/07/26 | Sprint 12 |
| 339 | 1.2.8.3.4 | Aprovação |  | 1d | 2026-07-20 | 2026-07-21 | 338 |  |  | 2026-07-07 | 2026-07-07 | 1d | 2026-07-07 | 2026-07-07 | 4.25d |  | start no earlier than 2026-07-02 | ESTRUTURA METÁLICA | Ter 07/07/26 | Ter 07/07/26 | Sprint 13 |
| 340 | 1.2.8.4 | **LM-F0009-0305-MB-S-00001** | inactive | 5d | 2026-07-16 | 2026-07-23 |  |  |  | 2026-06-26 | 2026-07-03 | 6d | 2026-06-26 | 2026-07-03 | 2.25d |  |  | ESTRUTURA METÁLICA | Sex 26/06/26 | Sex 03/07/26 | Sprint 12 |
| 341 | 1.2.8.4.1 | Emissão inicial | inactive | 2d | 2026-07-16 | 2026-07-20 | 334 |  |  | 2026-06-26 | 2026-06-29 | 2d | 2026-06-26 | 2026-06-29 | 2.25d | 0d |  | ESTRUTURA METÁLICA | Sex 26/06/26 | Seg 29/06/26 | Sprint 12 |
| 342 | 1.2.8.4.2 | Análise Tecnored | inactive | 1d | 2026-07-20 | 2026-07-21 | 341 |  |  | 2026-06-30 | 2026-06-30 | 1d | 2026-06-30 | 2026-06-30 | 2.25d | 0d |  | ESTRUTURA METÁLICA | Ter 30/06/26 | Ter 30/06/26 | Sprint 13 |
| 343 | 1.2.8.4.3 | Atendimento de comentários | inactive | 1d | 2026-07-21 | 2026-07-22 | 342 |  |  | 2026-07-01 | 2026-07-02 | 2d | 2026-07-01 | 2026-07-02 | 2.25d | 0d |  | ESTRUTURA METÁLICA | Qua 01/07/26 | Qui 02/07/26 | Sprint 13 |
| 344 | 1.2.8.4.4 | Aprovação | inactive | 1d | 2026-07-22 | 2026-07-23 | 343 |  |  | 2026-07-03 | 2026-07-03 | 1d | 2026-07-03 | 2026-07-03 | 2.25d |  |  | ESTRUTURA METÁLICA | Sex 03/07/26 | Sex 03/07/26 | Sprint 13 |
| 345 | 1.2.8.5 | **MC-F0009-0305-MB-S-00001** |  | 6d | 2026-07-06 | 2026-07-15 |  |  |  | 2026-06-15 | 2026-06-25 | 9d | 2026-06-15 | 2026-06-25 | 0d |  |  | ESTRUTURA METÁLICA | Seg 15/06/26 | Qui 25/06/26 | Sprint 11 |
| 346 | 1.2.8.5.1 | Emissão inicial |  | 3d | 2026-07-06 | 2026-07-08 | 169, 174, 179, 164 |  |  | 2026-06-15 | 2026-06-19 | 5d | 2026-06-15 | 2026-06-19 | 0d |  | start no earlier than 2026-07-06 | ESTRUTURA METÁLICA | Seg 15/06/26 | Sex 19/06/26 | Sprint 11 |
| 347 | 1.2.8.5.2 | Análise Tecnored |  | 1d | 2026-07-13 | 2026-07-13 | 346 |  |  | 2026-06-22 | 2026-06-22 | 1d | 2026-06-22 | 2026-06-22 | 8d | 0d |  | ESTRUTURA METÁLICA | Seg 22/06/26 | Seg 22/06/26 | Sprint 12 |
| 348 | 1.2.8.5.3 | Atendimento de comentários |  | 1d | 2026-07-14 | 2026-07-14 | 347 |  |  | 2026-06-23 | 2026-06-24 | 2d | 2026-06-23 | 2026-06-24 | 8d | 0d |  | ESTRUTURA METÁLICA | Ter 23/06/26 | Qua 24/06/26 | Sprint 12 |
| 349 | 1.2.8.5.4 | Aprovação |  | 1d | 2026-07-15 | 2026-07-15 | 348 |  |  | 2026-06-25 | 2026-06-25 | 1d | 2026-06-25 | 2026-06-25 | 8d |  |  | ESTRUTURA METÁLICA | Qui 25/06/26 | Qui 25/06/26 | Sprint 12 |
| 350 | 1.2.8.6 | **AG-F0009-0305-MB-S-00001** |  | 7d | 2026-07-15 | 2026-07-24 |  |  |  | 2026-06-25 | 2026-07-08 | 10d | 2026-06-25 | 2026-07-08 | 1.25d |  |  | ESTRUTURA METÁLICA | Qui 25/06/26 | Qua 08/07/26 | Sprint 12 |
| 351 | 1.2.8.6.1 | Emissão inicial |  | 4d | 2026-07-15 | 2026-07-21 | 333 |  |  | 2026-06-25 | 2026-07-02 | 6d | 2026-06-25 | 2026-07-02 | 1.25d | 0d |  | ESTRUTURA METÁLICA | Qui 25/06/26 | Qui 02/07/26 | Sprint 12 |
| 352 | 1.2.8.6.2 | Análise Tecnored |  | 1d | 2026-07-21 | 2026-07-22 | 351 |  |  | 2026-07-03 | 2026-07-03 | 1d | 2026-07-03 | 2026-07-03 | 1.25d | 0d |  | ESTRUTURA METÁLICA | Sex 03/07/26 | Sex 03/07/26 | Sprint 13 |
| 353 | 1.2.8.6.3 | Atendimento de comentários |  | 1d | 2026-07-22 | 2026-07-23 | 352 |  |  | 2026-07-06 | 2026-07-07 | 2d | 2026-07-06 | 2026-07-07 | 1.25d | 0d |  | ESTRUTURA METÁLICA | Seg 06/07/26 | Ter 07/07/26 | Sprint 13 |
| 354 | 1.2.8.6.4 | Aprovação |  | 1d | 2026-07-23 | 2026-07-24 | 353 |  |  | 2026-07-08 | 2026-07-08 | 1d | 2026-07-08 | 2026-07-08 | 1.25d |  |  | ESTRUTURA METÁLICA | Qua 08/07/26 | Qua 08/07/26 | Sprint 13 |

| ID | WBS | Task | Duration | Start | Finish | Predecessors | Baseline start | Baseline finish | Baseline duration | Baseline 1 start | Baseline 1 finish | Total slack | Free slack | Constraint | Disciplina | Início_LB_R0 | Término_LB_R0 | Sprints |
| --- | --- | --- | --- | --- | --- | --- | --- | --- | --- | --- | --- | --- | --- | --- | --- | --- | --- | --- |
| 355 | 1.2.8.7 | **AG-F0009-0305-MB-S-00002** | 7d | 2026-07-15 | 2026-07-24 |  | 2026-06-25 | 2026-07-08 | 10d | 2026-06-25 | 2026-07-08 | 1.25d |  |  | ESTRUTURA METÁLICA | Qui 25/06/26 | Qua 08/07/26 | Sprint 12 |
| 356 | 1.2.8.7.1 | Emissão inicial | 4d | 2026-07-15 | 2026-07-21 | 333 | 2026-06-25 | 2026-07-02 | 6d | 2026-06-25 | 2026-07-02 | 1.25d | 0d |  | ESTRUTURA METÁLICA | Qui 25/06/26 | Qui 02/07/26 | Sprint 12 |
| 357 | 1.2.8.7.2 | Análise Tecnored | 1d | 2026-07-21 | 2026-07-22 | 356 | 2026-07-03 | 2026-07-03 | 1d | 2026-07-03 | 2026-07-03 | 1.25d | 0d |  | ESTRUTURA METÁLICA | Sex 03/07/26 | Sex 03/07/26 | Sprint 13 |
| 358 | 1.2.8.7.3 | Atendimento de comentários | 1d | 2026-07-22 | 2026-07-23 | 357 | 2026-07-06 | 2026-07-07 | 2d | 2026-07-06 | 2026-07-07 | 1.25d | 0d |  | ESTRUTURA METÁLICA | Seg 06/07/26 | Ter 07/07/26 | Sprint 13 |
| 359 | 1.2.8.7.4 | Aprovação | 1d | 2026-07-23 | 2026-07-24 | 358 | 2026-07-08 | 2026-07-08 | 1d | 2026-07-08 | 2026-07-08 | 1.25d |  |  | ESTRUTURA METÁLICA | Qua 08/07/26 | Qua 08/07/26 | Sprint 13 |
| 360 | 1.2.8.8 | **AG-F0009-0305-MB-S-00003** | 7d | 2026-07-15 | 2026-07-24 |  | 2026-06-25 | 2026-07-08 | 10d | 2026-06-25 | 2026-07-08 | 1.25d |  |  | ESTRUTURA METÁLICA | Qui 25/06/26 | Qua 08/07/26 | Sprint 12 |
| 361 | 1.2.8.8.1 | Emissão inicial | 4d | 2026-07-15 | 2026-07-21 | 333 | 2026-06-25 | 2026-07-02 | 6d | 2026-06-25 | 2026-07-02 | 1.25d | 0d |  | ESTRUTURA METÁLICA | Qui 25/06/26 | Qui 02/07/26 | Sprint 12 |
| 362 | 1.2.8.8.2 | Análise Tecnored | 1d | 2026-07-21 | 2026-07-22 | 361 | 2026-07-03 | 2026-07-03 | 1d | 2026-07-03 | 2026-07-03 | 1.25d | 0d |  | ESTRUTURA METÁLICA | Sex 03/07/26 | Sex 03/07/26 | Sprint 13 |
| 363 | 1.2.8.8.3 | Atendimento de comentários | 1d | 2026-07-22 | 2026-07-23 | 362 | 2026-07-06 | 2026-07-07 | 2d | 2026-07-06 | 2026-07-07 | 1.25d | 0d |  | ESTRUTURA METÁLICA | Seg 06/07/26 | Ter 07/07/26 | Sprint 13 |
| 364 | 1.2.8.8.4 | Aprovação | 1d | 2026-07-23 | 2026-07-24 | 363 | 2026-07-08 | 2026-07-08 | 1d | 2026-07-08 | 2026-07-08 | 1.25d |  |  | ESTRUTURA METÁLICA | Qua 08/07/26 | Qua 08/07/26 | Sprint 13 |
| 365 | 1.2.8.9 | **AG-F0009-0305-MB-S-00004** | 7d | 2026-07-15 | 2026-07-24 |  | 2026-06-25 | 2026-07-08 | 10d | 2026-06-25 | 2026-07-08 | 1.25d |  |  | ESTRUTURA METÁLICA | Qui 25/06/26 | Qua 08/07/26 | Sprint 12 |
| 366 | 1.2.8.9.1 | Emissão inicial | 4d | 2026-07-15 | 2026-07-21 | 333 | 2026-06-25 | 2026-07-02 | 6d | 2026-06-25 | 2026-07-02 | 1.25d | 0d | finish no earlier than 2026-07-02 | ESTRUTURA METÁLICA | Qui 25/06/26 | Qui 02/07/26 | Sprint 12 |
| 367 | 1.2.8.9.2 | Análise Tecnored | 1d | 2026-07-21 | 2026-07-22 | 366 | 2026-07-03 | 2026-07-03 | 1d | 2026-07-03 | 2026-07-03 | 1.25d | 0d |  | ESTRUTURA METÁLICA | Sex 03/07/26 | Sex 03/07/26 | Sprint 13 |
| 368 | 1.2.8.9.3 | Atendimento de comentários | 1d | 2026-07-22 | 2026-07-23 | 367 | 2026-07-06 | 2026-07-07 | 2d | 2026-07-06 | 2026-07-07 | 1.25d | 0d |  | ESTRUTURA METÁLICA | Seg 06/07/26 | Ter 07/07/26 | Sprint 13 |
| 369 | 1.2.8.9.4 | Aprovação | 1d | 2026-07-23 | 2026-07-24 | 368 | 2026-07-08 | 2026-07-08 | 1d | 2026-07-08 | 2026-07-08 | 1.25d |  |  | ESTRUTURA METÁLICA | Qua 08/07/26 | Qua 08/07/26 | Sprint 13 |
| 370 | 1.2.8.10 | **AG-F0009-0305-MB-S-00005** | 7d | 2026-07-15 | 2026-07-24 |  | 2026-06-25 | 2026-07-08 | 10d | 2026-06-25 | 2026-07-08 | 1.25d |  |  | ESTRUTURA METÁLICA | Qui 25/06/26 | Qua 08/07/26 | Sprint 12 |
| 371 | 1.2.8.10.1 | Emissão inicial | 4d | 2026-07-15 | 2026-07-21 | 333 | 2026-06-25 | 2026-07-02 | 6d | 2026-06-25 | 2026-07-02 | 1.25d | 0d |  | ESTRUTURA METÁLICA | Qui 25/06/26 | Qui 02/07/26 | Sprint 12 |
| 372 | 1.2.8.10.2 | Análise Tecnored | 1d | 2026-07-21 | 2026-07-22 | 371 | 2026-07-03 | 2026-07-03 | 1d | 2026-07-03 | 2026-07-03 | 1.25d | 0d |  | ESTRUTURA METÁLICA | Sex 03/07/26 | Sex 03/07/26 | Sprint 13 |
| 373 | 1.2.8.10.3 | Atendimento de comentários | 1d | 2026-07-22 | 2026-07-23 | 372 | 2026-07-06 | 2026-07-07 | 2d | 2026-07-06 | 2026-07-07 | 1.25d | 0d | finish no earlier than 2026-07-10 | ESTRUTURA METÁLICA | Seg 06/07/26 | Ter 07/07/26 | Sprint 13 |
| 374 | 1.2.8.10.4 | Aprovação | 1d | 2026-07-23 | 2026-07-24 | 373 | 2026-07-08 | 2026-07-08 | 1d | 2026-07-08 | 2026-07-08 | 1.25d |  | start no earlier than 2026-07-13 | ESTRUTURA METÁLICA | Qua 08/07/26 | Qua 08/07/26 | Sprint 13 |
| 375 | 1.2.8.11 | **AG-F0009-0305-MB-S-00006** | 7d | 2026-07-15 | 2026-07-24 |  | 2026-06-25 | 2026-07-08 | 10d | 2026-06-25 | 2026-07-08 | 1.25d |  |  | ESTRUTURA METÁLICA | Qui 25/06/26 | Qua 08/07/26 | Sprint 12 |
| 376 | 1.2.8.11.1 | Emissão inicial | 4d | 2026-07-15 | 2026-07-21 | 333 | 2026-06-25 | 2026-07-02 | 6d | 2026-06-25 | 2026-07-02 | 1.25d | 0d |  | ESTRUTURA METÁLICA | Qui 25/06/26 | Qui 02/07/26 | Sprint 12 |
| 377 | 1.2.8.11.2 | Análise Tecnored | 1d | 2026-07-21 | 2026-07-22 | 376 | 2026-07-03 | 2026-07-03 | 1d | 2026-07-03 | 2026-07-03 | 1.25d | 0d |  | ESTRUTURA METÁLICA | Sex 03/07/26 | Sex 03/07/26 | Sprint 13 |
| 378 | 1.2.8.11.3 | Atendimento de comentários | 1d | 2026-07-22 | 2026-07-23 | 377 | 2026-07-06 | 2026-07-07 | 2d | 2026-07-06 | 2026-07-07 | 1.25d | 0d |  | ESTRUTURA METÁLICA | Seg 06/07/26 | Ter 07/07/26 | Sprint 13 |
| 379 | 1.2.8.11.4 | Aprovação | 1d | 2026-07-23 | 2026-07-24 | 378 | 2026-07-08 | 2026-07-08 | 1d | 2026-07-08 | 2026-07-08 | 1.25d |  |  | ESTRUTURA METÁLICA | Qua 08/07/26 | Qua 08/07/26 | Sprint 13 |

| ID | WBS | Task | Duration | Start | Finish | Predecessors | Baseline start | Baseline finish | Baseline duration | Baseline 1 start | Baseline 1 finish | Total slack | Free slack | Constraint | Disciplina | Início_LB_R0 | Término_LB_R0 | Sprints |
| --- | --- | --- | --- | --- | --- | --- | --- | --- | --- | --- | --- | --- | --- | --- | --- | --- | --- | --- |
| 380 | 1.2.8.12 | **AG-F0009-0305-MB-S-00007** | 7d | 2026-07-15 | 2026-07-24 |  | 2026-06-25 | 2026-07-08 | 10d | 2026-06-25 | 2026-07-08 | 1.25d |  |  | ESTRUTURA METÁLICA | Qui 25/06/26 | Qua 08/07/26 | Sprint 12 |
| 381 | 1.2.8.12.1 | Emissão inicial | 4d | 2026-07-15 | 2026-07-21 | 333 | 2026-06-25 | 2026-07-02 | 6d | 2026-06-25 | 2026-07-02 | 1.25d | 0d |  | ESTRUTURA METÁLICA | Qui 25/06/26 | Qui 02/07/26 | Sprint 12 |
| 382 | 1.2.8.12.2 | Análise Tecnored | 1d | 2026-07-21 | 2026-07-22 | 381 | 2026-07-03 | 2026-07-03 | 1d | 2026-07-03 | 2026-07-03 | 1.25d | 0d |  | ESTRUTURA METÁLICA | Sex 03/07/26 | Sex 03/07/26 | Sprint 13 |
| 383 | 1.2.8.12.3 | Atendimento de comentários | 1d | 2026-07-22 | 2026-07-23 | 382 | 2026-07-06 | 2026-07-07 | 2d | 2026-07-06 | 2026-07-07 | 1.25d | 0d |  | ESTRUTURA METÁLICA | Seg 06/07/26 | Ter 07/07/26 | Sprint 13 |
| 384 | 1.2.8.12.4 | Aprovação | 1d | 2026-07-23 | 2026-07-24 | 383 | 2026-07-08 | 2026-07-08 | 1d | 2026-07-08 | 2026-07-08 | 1.25d |  |  | ESTRUTURA METÁLICA | Qua 08/07/26 | Qua 08/07/26 | Sprint 13 |
| 385 | 1.2.8.13 | **AG-F0009-0305-MB-S-00008** | 7d | 2026-07-15 | 2026-07-24 |  | 2026-06-25 | 2026-07-08 | 10d | 2026-06-25 | 2026-07-08 | 1.25d |  |  | ESTRUTURA METÁLICA | Qui 25/06/26 | Qua 08/07/26 | Sprint 12 |
| 386 | 1.2.8.13.1 | Emissão inicial | 4d | 2026-07-15 | 2026-07-21 | 333 | 2026-06-25 | 2026-07-02 | 6d | 2026-06-25 | 2026-07-02 | 1.25d | 0d |  | ESTRUTURA METÁLICA | Qui 25/06/26 | Qui 02/07/26 | Sprint 12 |
| 387 | 1.2.8.13.2 | Análise Tecnored | 1d | 2026-07-21 | 2026-07-22 | 386 | 2026-07-03 | 2026-07-03 | 1d | 2026-07-03 | 2026-07-03 | 1.25d | 0d |  | ESTRUTURA METÁLICA | Sex 03/07/26 | Sex 03/07/26 | Sprint 13 |
| 388 | 1.2.8.13.3 | Atendimento de comentários | 1d | 2026-07-22 | 2026-07-23 | 387 | 2026-07-06 | 2026-07-07 | 2d | 2026-07-06 | 2026-07-07 | 1.25d | 0d |  | ESTRUTURA METÁLICA | Seg 06/07/26 | Ter 07/07/26 | Sprint 13 |
| 389 | 1.2.8.13.4 | Aprovação | 1d | 2026-07-23 | 2026-07-24 | 388 | 2026-07-08 | 2026-07-08 | 1d | 2026-07-08 | 2026-07-08 | 1.25d |  |  | ESTRUTURA METÁLICA | Qua 08/07/26 | Qua 08/07/26 | Sprint 13 |
| 390 | 1.2.8.14 | **AG-F0009-0305-MB-S-00009** | 7d | 2026-07-15 | 2026-07-24 |  | 2026-06-25 | 2026-07-08 | 10d | 2026-06-25 | 2026-07-08 | 1.25d |  |  | ESTRUTURA METÁLICA | Qui 25/06/26 | Qua 08/07/26 | Sprint 12 |
| 391 | 1.2.8.14.1 | Emissão inicial | 4d | 2026-07-15 | 2026-07-21 | 333 | 2026-06-25 | 2026-07-02 | 6d | 2026-06-25 | 2026-07-02 | 1.25d | 0d |  | ESTRUTURA METÁLICA | Qui 25/06/26 | Qui 02/07/26 | Sprint 12 |
| 392 | 1.2.8.14.2 | Análise Tecnored | 1d | 2026-07-21 | 2026-07-22 | 391 | 2026-07-03 | 2026-07-03 | 1d | 2026-07-03 | 2026-07-03 | 1.25d | 0d |  | ESTRUTURA METÁLICA | Sex 03/07/26 | Sex 03/07/26 | Sprint 13 |
| 393 | 1.2.8.14.3 | Atendimento de comentários | 1d | 2026-07-22 | 2026-07-23 | 392 | 2026-07-06 | 2026-07-07 | 2d | 2026-07-06 | 2026-07-07 | 1.25d | 0d |  | ESTRUTURA METÁLICA | Seg 06/07/26 | Ter 07/07/26 | Sprint 13 |
| 394 | 1.2.8.14.4 | Aprovação | 1d | 2026-07-23 | 2026-07-24 | 393 | 2026-07-08 | 2026-07-08 | 1d | 2026-07-08 | 2026-07-08 | 1.25d |  |  | ESTRUTURA METÁLICA | Qua 08/07/26 | Qua 08/07/26 | Sprint 13 |
| 395 | 1.2.8.15 | **AG-F0009-0305-MB-S-00010** | 7d | 2026-07-15 | 2026-07-24 |  | 2026-06-25 | 2026-07-08 | 10d | 2026-06-25 | 2026-07-08 | 1.25d |  |  | ESTRUTURA METÁLICA | Qui 25/06/26 | Qua 08/07/26 | Sprint 12 |
| 396 | 1.2.8.15.1 | Emissão inicial | 4d | 2026-07-15 | 2026-07-21 | 333 | 2026-06-25 | 2026-07-02 | 6d | 2026-06-25 | 2026-07-02 | 1.25d | 0d |  | ESTRUTURA METÁLICA | Qui 25/06/26 | Qui 02/07/26 | Sprint 12 |
| 397 | 1.2.8.15.2 | Análise Tecnored | 1d | 2026-07-21 | 2026-07-22 | 396 | 2026-07-03 | 2026-07-03 | 1d | 2026-07-03 | 2026-07-03 | 1.25d | 0d |  | ESTRUTURA METÁLICA | Sex 03/07/26 | Sex 03/07/26 | Sprint 13 |
| 398 | 1.2.8.15.3 | Atendimento de comentários | 1d | 2026-07-22 | 2026-07-23 | 397 | 2026-07-06 | 2026-07-07 | 2d | 2026-07-06 | 2026-07-07 | 1.25d | 0d |  | ESTRUTURA METÁLICA | Seg 06/07/26 | Ter 07/07/26 | Sprint 13 |
| 399 | 1.2.8.15.4 | Aprovação | 1d | 2026-07-23 | 2026-07-24 | 398 | 2026-07-08 | 2026-07-08 | 1d | 2026-07-08 | 2026-07-08 | 1.25d |  |  | ESTRUTURA METÁLICA | Qua 08/07/26 | Qua 08/07/26 | Sprint 13 |
| 400 | 1.2.8.16 | **PL-F0009-0305-MB-S-00001** | 8d | 2026-07-07 | 2026-07-20 |  | 2026-06-25 | 2026-07-07 | 9d | 2026-06-25 | 2026-07-07 | 5d |  |  | ESTRUTURA METÁLICA | Qui 25/06/26 | Ter 07/07/26 | Sprint 11 |
| 401 | 1.2.8.16.1 | Emissão inicial | 5d | 2026-07-07 | 2026-07-15 | 346FF | 2026-06-25 | 2026-07-01 | 5d | 2026-06-25 | 2026-07-01 | 5d | 0d | start no earlier than 2026-07-07 | ESTRUTURA METÁLICA | Qui 25/06/26 | Qua 01/07/26 | Sprint 11 |
| 402 | 1.2.8.16.2 | Análise Tecnored | 1d | 2026-07-16 | 2026-07-16 | 401 | 2026-07-02 | 2026-07-02 | 1d | 2026-07-02 | 2026-07-02 | 5d | 0d |  | ESTRUTURA METÁLICA | Qui 02/07/26 | Qui 02/07/26 | Sprint 12 |
| 403 | 1.2.8.16.3 | Atendimento de comentários | 1d | 2026-07-17 | 2026-07-17 | 402 | 2026-07-03 | 2026-07-06 | 2d | 2026-07-03 | 2026-07-06 | 5d | 0d |  | ESTRUTURA METÁLICA | Sex 03/07/26 | Seg 06/07/26 | Sprint 12 |
| 404 | 1.2.8.16.4 | Aprovação | 1d | 2026-07-20 | 2026-07-20 | 403 | 2026-07-07 | 2026-07-07 | 1d | 2026-07-07 | 2026-07-07 | 5d |  |  | ESTRUTURA METÁLICA | Ter 07/07/26 | Ter 07/07/26 | Sprint 13 |

| ID | WBS | Task | Type | Duration | Start | Finish | Predecessors | Complete | Remaining | Baseline start | Baseline finish | Baseline duration | Baseline 1 start | Baseline 1 finish | Total slack | Free slack | Baseline cost | Disciplina | Início_LB_R0 | Término_LB_R0 | Sprints |
| --- | --- | --- | --- | --- | --- | --- | --- | --- | --- | --- | --- | --- | --- | --- | --- | --- | --- | --- | --- | --- | --- |
| 405 | 1.2.9 | **Elétrica** |  | 27d | 2026-05-28 A | 2026-07-07 |  | 60% | 10.8d | 2026-05-21 | 2026-07-08 | 35d | 2026-05-21 | 2026-07-08 | 12d |  |  | ELÉTRICA | Qui 21/05/26 | Qua 08/07/26 | Sprint 5 |
| 406 | 1.2.9.1 | **CP-F0009-0305-MB-E-00001** | inactive | 23d | 2026-05-08 | 2026-06-11 |  |  |  |  |  |  |  |  | 30d |  | -0 |  |  |  | Sprint 2 |
| 407 | 1.2.9.1.1 | Emissão inicial | inactive | 5d | 2026-05-08 | 2026-05-14 | 21FS+3d |  |  |  |  |  |  |  | 44d | 14d | -0 |  |  |  | Sprint 2 |
| 408 | 1.2.9.1.2 | Análise Tecnored | inactive | 1d | 2026-06-08 | 2026-06-08 | 407, 7 |  |  |  |  |  |  |  | 30d | 0d | -0 |  |  |  | Sprint 7 |
| 409 | 1.2.9.1.3 | Atendimento de comentários | inactive | 2d | 2026-06-09 | 2026-06-10 | 408 |  |  |  |  |  |  |  | 30d | 0d | -0 |  |  |  | Sprint 7 |
| 410 | 1.2.9.1.4 | Aprovação | inactive | 1d | 2026-06-11 | 2026-06-11 | 409 |  |  |  |  |  |  |  | 30d |  | -0 |  |  |  | Sprint 7 |
| 411 | 1.2.9.2 | **ML-F0009-0305-MB-E-00001** | inactive | 6d | 2026-06-29 | 2026-07-06 |  |  |  | 2026-06-15 | 2026-06-29 | 11d | 2026-06-15 | 2026-06-29 | 7d |  |  | ELÉTRICA | Seg 15/06/26 | Seg 29/06/26 | Sprint 10 |
| 412 | 1.2.9.2.1 | Emissão inicial | inactive | 4d | 2026-06-29 | 2026-07-02 | 447FS-5d |  |  | 2026-06-15 | 2026-06-23 | 7d | 2026-06-15 | 2026-06-23 | 7d | 0d |  | ELÉTRICA | Seg 15/06/26 | Ter 23/06/26 | Sprint 10 |
| 413 | 1.2.9.2.2 | Análise Tecnored | inactive | 1d | 2026-07-03 | 2026-07-03 | 412 |  |  | 2026-06-24 | 2026-06-24 | 1d | 2026-06-24 | 2026-06-24 | 13d | 0d |  | ELÉTRICA | Qua 24/06/26 | Qua 24/06/26 | Sprint 10 |
| 414 | 1.2.9.2.3 | Atendimento de comentários | inactive | 1d | 2026-07-06 | 2026-07-06 | 413 |  |  | 2026-06-25 | 2026-06-26 | 2d | 2026-06-25 | 2026-06-26 | 13d | 0d |  | ELÉTRICA | Qui 25/06/26 | Sex 26/06/26 | Sprint 11 |
| 415 | 1.2.9.2.4 | Aprovação | inactive | 1d | 2026-07-06 | 2026-07-06 | 414FF |  |  | 2026-06-29 | 2026-06-29 | 1d | 2026-06-29 | 2026-06-29 | 13d |  |  | ELÉTRICA | Seg 29/06/26 | Seg 29/06/26 | Sprint 11 |
| 416 | 1.2.9.3 | **RL-F0009-0305-MB-E-00001** |  | 5d | 2026-06-02 A | 2026-06-10 |  | 70% | 1.5d | 2026-05-26 | 2026-06-03 | 7d | 2026-05-26 | 2026-06-03 | 31d |  |  | ELÉTRICA | Ter 26/05/26 | Qua 03/06/26 | Sprint 6 |
| 417 | 1.2.9.3.1 | Emissão inicial |  | 2d | 2026-06-02 A | 2026-06-03 A | 427FS-1d | 100% |  | 2026-05-26 | 2026-05-28 | 3d | 2026-05-26 | 2026-05-28 |  |  |  | ELÉTRICA | Ter 26/05/26 | Qui 28/05/26 | Sprint 6 |
| 418 | 1.2.9.3.2 | Análise Tecnored |  | 1d | 2026-06-09 A | 2026-06-09 A | 417 | 100% |  | 2026-05-29 | 2026-05-29 | 1d | 2026-05-29 | 2026-05-29 |  |  |  | ELÉTRICA | Sex 29/05/26 | Sex 29/05/26 | Sprint 7 |
| 419 | 1.2.9.3.3 | Atendimento de comentários |  | 1d | 2026-06-10 A | 2026-06-10 | 418 | 50% | 0.5d | 2026-06-01 | 2026-06-02 | 2d | 2026-06-01 | 2026-06-02 | 31d | 0d |  | ELÉTRICA | Seg 01/06/26 | Ter 02/06/26 | Sprint 7 |
| 420 | 1.2.9.3.4 | Aprovação |  | 1d | 2026-06-10 | 2026-06-10 | 419FF |  |  | 2026-06-03 | 2026-06-03 | 1d | 2026-06-03 | 2026-06-03 | 31d |  |  | ELÉTRICA | Qua 03/06/26 | Qua 03/06/26 | Sprint 7 |
| 421 | 1.2.9.4 | **LE-F0009-0305-MB-E-00001** | inactive | 4d | 2026-07-03 | 2026-07-08 |  |  |  | 2026-06-15 | 2026-06-23 | 7d | 2026-06-15 | 2026-06-23 | 11d |  |  | ELÉTRICA | Seg 15/06/26 | Ter 23/06/26 | Sprint 10 |
| 422 | 1.2.9.4.1 | Emissão inicial | inactive | 2d | 2026-07-03 | 2026-07-06 | 447FS-1d |  |  | 2026-06-15 | 2026-06-17 | 3d | 2026-06-15 | 2026-06-17 | 11d | 0d |  | ELÉTRICA | Seg 15/06/26 | Qua 17/06/26 | Sprint 10 |
| 423 | 1.2.9.4.2 | Análise Tecnored | inactive | 1d | 2026-07-07 | 2026-07-07 | 422 |  |  | 2026-06-18 | 2026-06-18 | 1d | 2026-06-18 | 2026-06-18 | 11d | 0d |  | ELÉTRICA | Qui 18/06/26 | Qui 18/06/26 | Sprint 11 |
| 424 | 1.2.9.4.3 | Atendimento de comentários | inactive | 1d | 2026-07-08 | 2026-07-08 | 423 |  |  | 2026-06-19 | 2026-06-22 | 2d | 2026-06-19 | 2026-06-22 | 11d | 0d |  | ELÉTRICA | Sex 19/06/26 | Seg 22/06/26 | Sprint 11 |
| 425 | 1.2.9.4.4 | Aprovação | inactive | 1d | 2026-07-08 | 2026-07-08 | 424FF |  |  | 2026-06-23 | 2026-06-23 | 1d | 2026-06-23 | 2026-06-23 | 11d |  |  | ELÉTRICA | Ter 23/06/26 | Ter 23/06/26 | Sprint 11 |
| 426 | 1.2.9.5 | **LR-F0009-0305-MB-E-00001** |  | 5d | 2026-05-28 A | 2026-06-03 |  | 70% | 1.5d | 2026-05-21 | 2026-05-29 | 7d | 2026-05-21 | 2026-05-29 | 34d |  |  | ELÉTRICA | Qui 21/05/26 | Sex 29/05/26 | Sprint 5 |
| 427 | 1.2.9.5.1 | Emissão inicial |  | 2d | 2026-05-28 A | 2026-05-29 A | 79FS-1d | 100% |  | 2026-05-21 | 2026-05-25 | 3d | 2026-05-21 | 2026-05-25 |  |  |  | ELÉTRICA | Qui 21/05/26 | Seg 25/05/26 | Sprint 5 |
| 428 | 1.2.9.5.2 | Análise Tecnored |  | 1d | 2026-06-02 A | 2026-06-02 A | 427 | 100% |  | 2026-05-26 | 2026-05-26 | 1d | 2026-05-26 | 2026-05-26 |  |  |  | ELÉTRICA | Ter 26/05/26 | Ter 26/05/26 | Sprint 6 |
| 429 | 1.2.9.5.3 | Atendimento de comentários |  | 1d | 2026-06-03 A | 2026-06-03 | 428 | 50% | 0.5d | 2026-05-27 | 2026-05-28 | 2d | 2026-05-27 | 2026-05-28 | 34d | 0d |  | ELÉTRICA | Qua 27/05/26 | Qui 28/05/26 | Sprint 6 |
| 430 | 1.2.9.5.4 | Aprovação |  | 1d | 2026-06-03 | 2026-06-03 | 429FF |  |  | 2026-05-29 | 2026-05-29 | 1d | 2026-05-29 | 2026-05-29 | 34d |  |  | ELÉTRICA | Sex 29/05/26 | Sex 29/05/26 | Sprint 6 |

| ID | WBS | Task | Type | Duration | Start | Finish | Predecessors | Complete | Remaining | Baseline start | Baseline finish | Baseline duration | Baseline 1 start | Baseline 1 finish | Total slack | Free slack | Constraint | Disciplina | Início_LB_R0 | Término_LB_R0 | Sprints |
| --- | --- | --- | --- | --- | --- | --- | --- | --- | --- | --- | --- | --- | --- | --- | --- | --- | --- | --- | --- | --- | --- |
| 431 | 1.2.9.6 | **LM-F0009-0305-MB-E-00001** | inactive | 4d | 2026-07-06 | 2026-07-13 |  |  |  | 2026-06-30 | 2026-07-07 | 6d | 2026-06-30 | 2026-07-07 | 7d |  |  | ELÉTRICA | Ter 30/06/26 | Ter 07/07/26 | Sprint 11 |
| 432 | 1.2.9.6.1 | Emissão inicial | inactive | 2d | 2026-07-06 | 2026-07-07 | 453FS-1d |  |  | 2026-06-30 | 2026-07-01 | 2d | 2026-06-30 | 2026-07-01 | 7d | 0d |  | ELÉTRICA | Ter 30/06/26 | Qua 01/07/26 | Sprint 11 |
| 433 | 1.2.9.6.2 | Análise Tecnored | inactive | 1d | 2026-07-08 | 2026-07-08 | 432 |  |  | 2026-07-02 | 2026-07-02 | 1d | 2026-07-02 | 2026-07-02 | 10d | 0d |  | ELÉTRICA | Qui 02/07/26 | Qui 02/07/26 | Sprint 11 |
| 434 | 1.2.9.6.3 | Atendimento de comentários | inactive | 1d | 2026-07-13 | 2026-07-13 | 433 |  |  | 2026-07-03 | 2026-07-06 | 2d | 2026-07-03 | 2026-07-06 | 10d | 0d |  | ELÉTRICA | Sex 03/07/26 | Seg 06/07/26 | Sprint 12 |
| 435 | 1.2.9.6.4 | Aprovação | inactive | 1d | 2026-07-13 | 2026-07-13 | 434FF |  |  | 2026-07-07 | 2026-07-07 | 1d | 2026-07-07 | 2026-07-07 | 10d |  |  | ELÉTRICA | Ter 07/07/26 | Ter 07/07/26 | Sprint 12 |
| 436 | 1.2.9.7 | **PQ-F0009-0305-MB-E-00001** | inactive | 3d | 2026-07-06 | 2026-07-08 |  |  |  | 2026-07-02 | 2026-07-08 | 5d | 2026-07-02 | 2026-07-08 | 11d |  |  | ELÉTRICA | Qui 02/07/26 | Qua 08/07/26 | Sprint 11 |
| 437 | 1.2.9.7.1 | Emissão inicial | inactive | 1d | 2026-07-06 | 2026-07-06 | 432SS |  |  | 2026-07-02 | 2026-07-02 | 1d | 2026-07-02 | 2026-07-02 | 11d | 0d |  | AUTOMAÇÃO E INSTRUMENTAÇÃO | Qui 02/07/26 | Qui 02/07/26 | Sprint 11 |
| 438 | 1.2.9.7.2 | Análise Tecnored | inactive | 1d | 2026-07-07 | 2026-07-07 | 437 |  |  | 2026-07-03 | 2026-07-03 | 1d | 2026-07-03 | 2026-07-03 | 11d | 0d |  | AUTOMAÇÃO E INSTRUMENTAÇÃO | Sex 03/07/26 | Sex 03/07/26 | Sprint 11 |
| 439 | 1.2.9.7.3 | Atendimento de comentários | inactive | 1d | 2026-07-08 | 2026-07-08 | 438 |  |  | 2026-07-06 | 2026-07-07 | 2d | 2026-07-06 | 2026-07-07 | 11d | 0d |  | AUTOMAÇÃO E INSTRUMENTAÇÃO | Seg 06/07/26 | Ter 07/07/26 | Sprint 11 |
| 440 | 1.2.9.7.4 | Aprovação | inactive | 1d | 2026-07-08 | 2026-07-08 | 439FF |  |  | 2026-07-08 | 2026-07-08 | 1d | 2026-07-08 | 2026-07-08 | 11d |  |  | AUTOMAÇÃO E INSTRUMENTAÇÃO | Qua 08/07/26 | Qua 08/07/26 | Sprint 11 |
| 441 | 1.2.9.8 | **MD-F0009-0305-MB-E-00001** | inactive | 7d | 2026-07-06 | 2026-07-16 |  |  |  | 2026-06-30 | 2026-07-08 | 7d | 2026-06-30 | 2026-07-08 | 7d |  |  | ELÉTRICA |  |  | Sprint 11 |
| 442 | 1.2.9.8.1 | Emissão inicial | inactive | 3d | 2026-07-06 | 2026-07-08 | 432FS-2d |  |  | 2026-06-30 | 2026-07-02 | 3d | 2026-06-30 | 2026-07-02 | 7d | 0d |  | ELÉTRICA |  |  | Sprint 11 |
| 443 | 1.2.9.8.2 | Análise Tecnored | inactive | 1d | 2026-07-13 | 2026-07-13 | 442 |  |  | 2026-07-03 | 2026-07-03 | 1d | 2026-07-03 | 2026-07-03 | 7d | 0d |  | ELÉTRICA |  |  | Sprint 12 |
| 444 | 1.2.9.8.3 | Atendimento de comentários | inactive | 2d | 2026-07-14 | 2026-07-15 | 443 |  |  | 2026-07-06 | 2026-07-07 | 2d | 2026-07-06 | 2026-07-07 | 7d | 0d |  | ELÉTRICA |  |  | Sprint 12 |
| 445 | 1.2.9.8.4 | Aprovação | inactive | 1d | 2026-07-16 | 2026-07-16 | 444 |  |  | 2026-07-08 | 2026-07-08 | 1d | 2026-07-08 | 2026-07-08 | 7d |  |  | ELÉTRICA |  |  | Sprint 12 |
| 446 | 1.2.9.9 | **MC-F0009-0305-MB-E-00001** |  | 4d | 2026-07-02 A | 2026-07-07 |  | 40% | 2.4d | 2026-06-08 | 2026-06-18 | 9d | 2026-06-08 | 2026-06-18 | 12d |  |  | ELÉTRICA | Seg 08/06/26 | Qui 18/06/26 | Sprint 10 |
| 447 | 1.2.9.9.1 | Emissão inicial |  | 2d | 2026-07-02 A | 2026-07-03 A | 467FS-1d | 100% |  | 2026-06-08 | 2026-06-12 | 5d | 2026-06-08 | 2026-06-12 |  |  | start no earlier than 2026-06-26 | ELÉTRICA | Seg 08/06/26 | Sex 12/06/26 | Sprint 10 |
| 448 | 1.2.9.9.2 | Análise Tecnored |  | 1d | 2026-07-06 | 2026-07-06 | 447 |  |  | 2026-06-15 | 2026-06-15 | 1d | 2026-06-15 | 2026-06-15 | 12d | 0d |  | ELÉTRICA | Seg 15/06/26 | Seg 15/06/26 | Sprint 11 |
| 449 | 1.2.9.9.3 | Atendimento de comentários |  | 1d | 2026-07-07 | 2026-07-07 | 448 |  |  | 2026-06-16 | 2026-06-17 | 2d | 2026-06-16 | 2026-06-17 | 12d | 0d |  | ELÉTRICA | Ter 16/06/26 | Qua 17/06/26 | Sprint 11 |
| 450 | 1.2.9.9.4 | Aprovação |  | 1d | 2026-07-07 | 2026-07-07 | 449FF |  |  | 2026-06-18 | 2026-06-18 | 1d | 2026-06-18 | 2026-06-18 | 12d |  |  | ELÉTRICA | Qui 18/06/26 | Qui 18/06/26 | Sprint 11 |
| 451 | 1.2.9.10 | **AG-F0009-0305-MB-E-00001** | inactive | 4d | 2026-07-02 | 2026-07-07 |  |  |  | 2026-06-24 | 2026-07-02 | 7d | 2026-06-24 | 2026-07-02 | 7d |  |  | ELÉTRICA | Qua 24/06/26 | Qui 02/07/26 | Sprint 10 |
| 452 | 1.2.9.10.1 | Emissão inicial | inactive | 2d | 2026-07-02 | 2026-07-03 | 412FS-1d |  |  | 2026-06-24 | 2026-06-26 | 3d | 2026-06-24 | 2026-06-26 | 7d | 0d | start no earlier than 2026-07-01 | ELÉTRICA | Qua 24/06/26 | Sex 26/06/26 | Sprint 10 |
| 453 | 1.2.9.10.2 | Análise Tecnored | inactive | 1d | 2026-07-06 | 2026-07-06 | 452 |  |  | 2026-06-29 | 2026-06-29 | 1d | 2026-06-29 | 2026-06-29 | 7d | 0d |  | ELÉTRICA | Seg 29/06/26 | Seg 29/06/26 | Sprint 11 |
| 454 | 1.2.9.10.3 | Atendimento de comentários | inactive | 1d | 2026-07-07 | 2026-07-07 | 453 |  |  | 2026-06-30 | 2026-07-01 | 2d | 2026-06-30 | 2026-07-01 | 12d | 0d |  | ELÉTRICA | Ter 30/06/26 | Qua 01/07/26 | Sprint 11 |
| 455 | 1.2.9.10.4 | Aprovação | inactive | 1d | 2026-07-07 | 2026-07-07 | 454FF |  |  | 2026-07-02 | 2026-07-02 | 1d | 2026-07-02 | 2026-07-02 | 12d |  |  | ELÉTRICA | Qui 02/07/26 | Qui 02/07/26 | Sprint 11 |

| ID | WBS | Task | Type | Duration | Start | Finish | Predecessors | Complete | Remaining | Baseline start | Baseline finish | Baseline duration | Baseline 1 start | Baseline 1 finish | Total slack | Free slack | Constraint | Baseline cost | Disciplina | Início_LB_R0 | Término_LB_R0 | Sprints |
| --- | --- | --- | --- | --- | --- | --- | --- | --- | --- | --- | --- | --- | --- | --- | --- | --- | --- | --- | --- | --- | --- | --- |
| 456 | 1.2.9.11 | **DU-F0009-0305-MB-E-00001** | inactive | 4d | 2026-06-18 | 2026-06-23 |  |  |  | 2026-05-29 | 2026-06-08 | 7d | 2026-05-29 | 2026-06-08 | 21d |  |  |  | AUTOMAÇÃO E INSTRUMENTAÇÃO | Sex 29/05/26 | Seg 08/06/26 | Sprint 8 |
| 457 | 1.2.9.11.1 | Emissão inicial | inactive | 2d | 2026-06-18 | 2026-06-19 | 417FS-1d |  |  | 2026-05-29 | 2026-06-02 | 3d | 2026-05-29 | 2026-06-02 | 21d | 0d | finish no earlier than 2026-06-19 |  | AUTOMAÇÃO E INSTRUMENTAÇÃO | Sex 29/05/26 | Ter 02/06/26 | Sprint 8 |
| 458 | 1.2.9.11.2 | Análise Tecnored | inactive | 1d | 2026-06-22 | 2026-06-22 | 457 |  |  | 2026-06-03 | 2026-06-03 | 1d | 2026-06-03 | 2026-06-03 | 22d | 0d |  |  | AUTOMAÇÃO E INSTRUMENTAÇÃO | Qua 03/06/26 | Qua 03/06/26 | Sprint 9 |
| 459 | 1.2.9.11.3 | Atendimento de comentários | inactive | 1d | 2026-06-23 | 2026-06-23 | 458 |  |  | 2026-06-04 | 2026-06-05 | 2d | 2026-06-04 | 2026-06-05 | 22d | 0d |  |  | AUTOMAÇÃO E INSTRUMENTAÇÃO | Qui 04/06/26 | Sex 05/06/26 | Sprint 9 |
| 460 | 1.2.9.11.4 | Aprovação | inactive | 1d | 2026-06-23 | 2026-06-23 | 459FF |  |  | 2026-06-08 | 2026-06-08 | 1d | 2026-06-08 | 2026-06-08 | 22d |  |  |  | AUTOMAÇÃO E INSTRUMENTAÇÃO | Seg 08/06/26 | Seg 08/06/26 | Sprint 9 |
| 461 | 1.2.9.12 | **AG-F0009-0305-MB-E-00002** | inactive | 4d | 2026-07-06 | 2026-07-13 |  |  |  | 2026-06-24 | 2026-07-03 | 8d | 2026-06-24 | 2026-07-03 | 10d |  |  |  | ELÉTRICA | Qua 24/06/26 | Sex 03/07/26 | Sprint 11 |
| 462 | 1.2.9.12.1 | Emissão inicial | inactive | 2d | 2026-07-06 | 2026-07-07 | 412FS+1d |  |  | 2026-06-24 | 2026-06-29 | 4d | 2026-06-24 | 2026-06-29 | 10d | 0d | start no earlier than 2026-07-02 |  | ELÉTRICA | Qua 24/06/26 | Seg 29/06/26 | Sprint 11 |
| 463 | 1.2.9.12.2 | Análise Tecnored | inactive | 1d | 2026-07-08 | 2026-07-08 | 462 |  |  | 2026-06-30 | 2026-06-30 | 1d | 2026-06-30 | 2026-06-30 | 10d | 0d |  |  | ELÉTRICA | Ter 30/06/26 | Ter 30/06/26 | Sprint 11 |
| 464 | 1.2.9.12.3 | Atendimento de comentários | inactive | 1d | 2026-07-13 | 2026-07-13 | 463 |  |  | 2026-07-01 | 2026-07-02 | 2d | 2026-07-01 | 2026-07-02 | 10d | 0d |  |  | ELÉTRICA | Qua 01/07/26 | Qui 02/07/26 | Sprint 12 |
| 465 | 1.2.9.12.4 | Aprovação | inactive | 1d | 2026-07-13 | 2026-07-13 | 464FF |  |  | 2026-07-03 | 2026-07-03 | 1d | 2026-07-03 | 2026-07-03 | 10d |  |  |  | ELÉTRICA | Sex 03/07/26 | Sex 03/07/26 | Sprint 12 |
| 466 | 1.2.9.13 | **FD-F0009-0305-MB-E-0001** | inactive | 4d | 2026-06-19 | 2026-06-24 |  |  |  | 2026-06-03 | 2026-06-11 | 7d | 2026-06-03 | 2026-06-11 | 21d |  |  |  | AUTOMAÇÃO E INSTRUMENTAÇÃO | Qua 03/06/26 | Qui 11/06/26 | Sprint 8 |
| 467 | 1.2.9.13.1 | Emissão inicial | inactive | 2d | 2026-06-19 | 2026-06-22 | 457FS-1d |  |  | 2026-06-03 | 2026-06-05 | 3d | 2026-06-03 | 2026-06-05 | 21d | 0d |  |  | AUTOMAÇÃO E INSTRUMENTAÇÃO | Qua 03/06/26 | Sex 05/06/26 | Sprint 8 |
| 468 | 1.2.9.13.2 | Análise Tecnored | inactive | 1d | 2026-06-23 | 2026-06-23 | 467 |  |  | 2026-06-08 | 2026-06-08 | 1d | 2026-06-08 | 2026-06-08 | 21d | 0d |  |  | AUTOMAÇÃO E INSTRUMENTAÇÃO | Seg 08/06/26 | Seg 08/06/26 | Sprint 9 |
| 469 | 1.2.9.13.3 | Atendimento de comentários | inactive | 1d | 2026-06-24 | 2026-06-24 | 468 |  |  | 2026-06-09 | 2026-06-10 | 2d | 2026-06-09 | 2026-06-10 | 21d | 0d |  |  | AUTOMAÇÃO E INSTRUMENTAÇÃO | Ter 09/06/26 | Qua 10/06/26 | Sprint 9 |
| 470 | 1.2.9.13.4 | Aprovação | inactive | 1d | 2026-06-24 | 2026-06-24 | 469FF |  |  | 2026-06-11 | 2026-06-11 | 1d | 2026-06-11 | 2026-06-11 | 21d |  |  |  | AUTOMAÇÃO E INSTRUMENTAÇÃO | Qui 11/06/26 | Qui 11/06/26 | Sprint 9 |
| 471 | 1.2.10 | **Automação e instrumentação** |  | 34d | 2026-06-01 A | 2026-07-22 |  | 65% | 11.81d | 2026-05-20 | 2026-07-08 | 36d | 2026-05-20 | 2026-07-08 | 3d |  |  |  | AUTOMAÇÃO E INSTRUMENTAÇÃO | Qua 20/05/26 | Qua 08/07/26 | Sprint 6 |
| 472 | 1.2.10.1 | **CP-F0009-0305-MB-J-00001** | inactive | 9d | 2026-06-08 | 2026-06-18 |  |  |  |  |  |  |  |  | 25d |  |  | -0 |  |  |  | Sprint 7 |
| 473 | 1.2.10.1.1 | Emissão inicial | inactive | 5d | 2026-06-08 | 2026-06-12 | 21FS+5d, 8 |  |  |  |  |  |  |  | 25d | 0d |  | -0 |  |  |  | Sprint 7 |
| 474 | 1.2.10.1.2 | Análise Tecnored | inactive | 1d | 2026-06-15 | 2026-06-15 | 473 |  |  |  |  |  |  |  | 25d | 0d |  | -0 |  |  |  | Sprint 8 |
| 475 | 1.2.10.1.3 | Atendimento de comentários | inactive | 2d | 2026-06-16 | 2026-06-17 | 474 |  |  |  |  |  |  |  | 25d | 0d |  | -0 |  |  |  | Sprint 8 |
| 476 | 1.2.10.1.4 | Aprovação | inactive | 1d | 2026-06-18 | 2026-06-18 | 475 |  |  |  |  |  |  |  | 25d |  |  | -0 |  |  |  | Sprint 8 |
| 477 | 1.2.10.2 | **LI-F0009-0305-MB-J-00001** |  | 9d | 2026-06-29 A | 2026-07-13 |  | 55% | 4.05d | 2026-05-22 | 2026-06-01 | 7d | 2026-05-22 | 2026-06-01 | 2.5d | 0d |  |  | AUTOMAÇÃO E INSTRUMENTAÇÃO | Sex 22/05/26 | Seg 01/06/26 | Sprint 10 |
| 478 | 1.2.10.2.1 | Emissão inicial |  | 5d | 2026-06-29 A | 2026-07-03 | 513 | 99% | 0.05d | 2026-05-22 | 2026-05-26 | 3d | 2026-05-22 | 2026-05-26 | 2.5d | 0d | finish no earlier than 2026-06-20 |  | AUTOMAÇÃO E INSTRUMENTAÇÃO | Sex 22/05/26 | Ter 26/05/26 | Sprint 10 |
| 479 | 1.2.10.2.2 | Análise Tecnored |  | 1d | 2026-07-06 | 2026-07-06 | 478 |  |  | 2026-05-27 | 2026-05-27 | 1d | 2026-05-27 | 2026-05-27 | 2.5d | 0d |  |  | AUTOMAÇÃO E INSTRUMENTAÇÃO | Qua 27/05/26 | Qua 27/05/26 | Sprint 11 |
| 480 | 1.2.10.2.3 | Atendimento de comentários |  | 2d | 2026-07-07 | 2026-07-08 | 479 |  |  | 2026-05-28 | 2026-05-29 | 2d | 2026-05-28 | 2026-05-29 | 2.5d | 0d |  |  | AUTOMAÇÃO E INSTRUMENTAÇÃO | Qui 28/05/26 | Sex 29/05/26 | Sprint 11 |
| 481 | 1.2.10.2.4 | Aprovação |  | 1d | 2026-07-13 | 2026-07-13 | 480 |  |  | 2026-06-01 | 2026-06-01 | 1d | 2026-06-01 | 2026-06-01 | 2.5d |  | finish no earlier than 2026-06-29 |  | AUTOMAÇÃO E INSTRUMENTAÇÃO | Seg 01/06/26 | Seg 01/06/26 | Sprint 12 |

| ID | WBS | Task | Type | Duration | Start | Finish | Predecessors | Complete | Remaining | Baseline start | Baseline finish | Baseline duration | Baseline 1 start | Baseline 1 finish | Total slack | Free slack | Constraint | Disciplina | Início_LB_R0 | Término_LB_R0 | Sprints |
| --- | --- | --- | --- | --- | --- | --- | --- | --- | --- | --- | --- | --- | --- | --- | --- | --- | --- | --- | --- | --- | --- |
| 482 | 1.2.10.3 | **LE-F0009-0305-MB-J-00001** |  | 8d | 2026-06-30 A | 2026-07-13 |  | 50% | 4d | 2026-06-23 | 2026-07-01 | 7d | 2026-06-23 | 2026-07-01 | 10d |  |  | AUTOMAÇÃO E INSTRUMENTAÇÃO | Ter 23/06/26 | Qua 01/07/26 | Sprint 10 |
| 483 | 1.2.10.3.1 | Emissão inicial |  | 4d | 2026-06-30 A | 2026-07-03 A |  | 100% |  | 2026-06-23 | 2026-06-25 | 3d | 2026-06-23 | 2026-06-25 |  |  | start no earlier than 2026-06-30 | AUTOMAÇÃO E INSTRUMENTAÇÃO | Ter 23/06/26 | Qui 25/06/26 | Sprint 10 |
| 484 | 1.2.10.3.2 | Análise Tecnored |  | 1d | 2026-07-06 | 2026-07-06 | 483 |  |  | 2026-06-26 | 2026-06-26 | 1d | 2026-06-26 | 2026-06-26 | 10d | 0d | start no earlier than 2026-07-02 | AUTOMAÇÃO E INSTRUMENTAÇÃO | Sex 26/06/26 | Sex 26/06/26 | Sprint 11 |
| 485 | 1.2.10.3.3 | Atendimento de comentários |  | 2d | 2026-07-07 | 2026-07-08 | 484 |  |  | 2026-06-29 | 2026-06-30 | 2d | 2026-06-29 | 2026-06-30 | 10d | 0d | start no earlier than 2026-07-03 | AUTOMAÇÃO E INSTRUMENTAÇÃO | Seg 29/06/26 | Ter 30/06/26 | Sprint 11 |
| 486 | 1.2.10.3.4 | Aprovação |  | 1d | 2026-07-13 | 2026-07-13 | 485 |  |  | 2026-07-01 | 2026-07-01 | 1d | 2026-07-01 | 2026-07-01 | 10d |  | start no earlier than 2026-07-07 | AUTOMAÇÃO E INSTRUMENTAÇÃO | Qua 01/07/26 | Qua 01/07/26 | Sprint 12 |
| 487 | 1.2.10.4 | **LL-F0009-0305-MB-J-00001** |  | 8d | 2026-06-30 A | 2026-07-13 |  | 50% | 4d | 2026-06-15 | 2026-06-23 | 7d | 2026-06-15 | 2026-06-23 | 10d |  |  | AUTOMAÇÃO E INSTRUMENTAÇÃO | Seg 15/06/26 | Ter 23/06/26 | Sprint 10 |
| 488 | 1.2.10.4.1 | Emissão inicial |  | 4d | 2026-06-30 A | 2026-07-03 A | 543 | 100% |  | 2026-06-30 | 2026-07-03 | 3d | 2026-06-15 | 2026-06-17 |  |  | finish no earlier than 2026-07-03 | AUTOMAÇÃO E INSTRUMENTAÇÃO | Ter 30/06/26 | Sex 03/07/26 | Sprint 10 |
| 489 | 1.2.10.4.2 | Análise Tecnored |  | 1d | 2026-07-06 | 2026-07-06 | 488 |  |  | 2026-07-06 | 2026-07-06 | 1d | 2026-06-18 | 2026-06-18 | 10d | 0d | start no earlier than 2026-07-02 | AUTOMAÇÃO E INSTRUMENTAÇÃO | Seg 06/07/26 | Seg 06/07/26 | Sprint 11 |
| 490 | 1.2.10.4.3 | Atendimento de comentários |  | 2d | 2026-07-07 | 2026-07-08 | 489 |  |  | 2026-07-07 | 2026-07-08 | 2d | 2026-06-19 | 2026-06-22 | 10d | 0d | start no earlier than 2026-07-03 | AUTOMAÇÃO E INSTRUMENTAÇÃO | Ter 07/07/26 | Qua 08/07/26 | Sprint 11 |
| 491 | 1.2.10.4.4 | Aprovação |  | 1d | 2026-07-13 | 2026-07-13 | 490 |  |  | 2026-07-13 | 2026-07-13 | 1d | 2026-06-23 | 2026-06-23 | 10d |  | start no earlier than 2026-07-07 | AUTOMAÇÃO E INSTRUMENTAÇÃO | Seg 13/07/26 | Seg 13/07/26 | Sprint 12 |
| 492 | 1.2.10.5 | **LZ-F0009-0305-MB-J-00001** | inactive | 8d | 2026-07-07 | 2026-07-20 |  |  |  | 2026-06-15 | 2026-06-23 | 7d | 2026-06-15 | 2026-06-23 | 5d |  |  | AUTOMAÇÃO E INSTRUMENTAÇÃO | Seg 15/06/26 | Ter 23/06/26 | Sprint 11 |
| 493 | 1.2.10.5.1 | Emissão inicial | inactive | 4d | 2026-07-07 | 2026-07-14 | 543 |  |  | 2026-06-15 | 2026-06-17 | 3d | 2026-06-15 | 2026-06-17 | 5d | 0d | finish no earlier than 2026-07-01 | AUTOMAÇÃO E INSTRUMENTAÇÃO | Seg 15/06/26 | Qua 17/06/26 | Sprint 11 |
| 494 | 1.2.10.5.2 | Análise Tecnored | inactive | 1d | 2026-07-15 | 2026-07-15 | 493 |  |  | 2026-06-18 | 2026-06-18 | 1d | 2026-06-18 | 2026-06-18 | 5d | 0d | start no earlier than 2026-07-02 | AUTOMAÇÃO E INSTRUMENTAÇÃO | Qui 18/06/26 | Qui 18/06/26 | Sprint 12 |
| 495 | 1.2.10.5.3 | Atendimento de comentários | inactive | 2d | 2026-07-16 | 2026-07-17 | 494 |  |  | 2026-06-19 | 2026-06-22 | 2d | 2026-06-19 | 2026-06-22 | 5d | 0d | start no earlier than 2026-07-03 | AUTOMAÇÃO E INSTRUMENTAÇÃO | Sex 19/06/26 | Seg 22/06/26 | Sprint 12 |
| 496 | 1.2.10.5.4 | Aprovação | inactive | 1d | 2026-07-20 | 2026-07-20 | 495 |  |  | 2026-06-23 | 2026-06-23 | 1d | 2026-06-23 | 2026-06-23 | 5d |  | start no earlier than 2026-07-07 | AUTOMAÇÃO E INSTRUMENTAÇÃO | Ter 23/06/26 | Ter 23/06/26 | Sprint 13 |
| 497 | 1.2.10.6 | **LE-F0009-0305-MB-J-00002** | inactive | 8d | 2026-06-26 | 2026-07-07 |  |  |  | 2026-06-23 | 2026-07-01 | 7d | 2026-06-23 | 2026-07-01 | 12d |  |  | AUTOMAÇÃO E INSTRUMENTAÇÃO | Ter 23/06/26 | Qua 01/07/26 | Sprint 9 |
| 498 | 1.2.10.6.1 | Emissão inicial | inactive | 4d | 2026-06-26 | 2026-07-01 |  |  |  | 2026-06-23 | 2026-06-25 | 3d | 2026-06-23 | 2026-06-25 | 12d | 0d | finish no earlier than 2026-07-01 | AUTOMAÇÃO E INSTRUMENTAÇÃO | Ter 23/06/26 | Qui 25/06/26 | Sprint 9 |
| 499 | 1.2.10.6.2 | Análise Tecnored | inactive | 1d | 2026-07-02 | 2026-07-02 | 498 |  |  | 2026-06-26 | 2026-06-26 | 1d | 2026-06-26 | 2026-06-26 | 12d | 0d | start no earlier than 2026-07-02 | AUTOMAÇÃO E INSTRUMENTAÇÃO | Sex 26/06/26 | Sex 26/06/26 | Sprint 10 |
| 500 | 1.2.10.6.3 | Atendimento de comentários | inactive | 2d | 2026-07-03 | 2026-07-06 | 499 |  |  | 2026-06-29 | 2026-06-30 | 2d | 2026-06-29 | 2026-06-30 | 12d | 0d | start no earlier than 2026-07-03 | AUTOMAÇÃO E INSTRUMENTAÇÃO | Seg 29/06/26 | Ter 30/06/26 | Sprint 10 |
| 501 | 1.2.10.6.4 | Aprovação | inactive | 1d | 2026-07-07 | 2026-07-07 | 500 |  |  | 2026-07-01 | 2026-07-01 | 1d | 2026-07-01 | 2026-07-01 | 12d |  | start no earlier than 2026-07-07 | AUTOMAÇÃO E INSTRUMENTAÇÃO | Qua 01/07/26 | Qua 01/07/26 | Sprint 11 |
| 502 | 1.2.10.7 | **PQ-F0009-0305-MB-J-00001** |  | 8d | 2026-07-03 A | 2026-07-16 |  | 31% | 5.5d | 2026-07-02 | 2026-07-08 | 5d | 2026-07-02 | 2026-07-08 | 7d |  |  | AUTOMAÇÃO E INSTRUMENTAÇÃO | Qui 02/07/26 | Qua 08/07/26 | Sprint 10 |
| 503 | 1.2.10.7.1 | Emissão inicial |  | 5d | 2026-07-03 A | 2026-07-13 | 558FS-9d | 50% | 2.5d | 2026-07-02 | 2026-07-02 | 1d | 2026-07-02 | 2026-07-02 | 7d | 0d | start no earlier than 2026-07-02 | AUTOMAÇÃO E INSTRUMENTAÇÃO | Qui 02/07/26 | Qui 02/07/26 | Sprint 10 |
| 504 | 1.2.10.7.2 | Análise Tecnored |  | 1d | 2026-07-14 | 2026-07-14 | 503 |  |  | 2026-07-03 | 2026-07-03 | 1d | 2026-07-03 | 2026-07-03 | 7d | 0d |  | AUTOMAÇÃO E INSTRUMENTAÇÃO | Sex 03/07/26 | Sex 03/07/26 | Sprint 12 |
| 505 | 1.2.10.7.3 | Atendimento de comentários |  | 1d | 2026-07-15 | 2026-07-15 | 504 |  |  | 2026-07-06 | 2026-07-07 | 2d | 2026-07-06 | 2026-07-07 | 7d | 0d |  | AUTOMAÇÃO E INSTRUMENTAÇÃO | Seg 06/07/26 | Ter 07/07/26 | Sprint 12 |
| 506 | 1.2.10.7.4 | Aprovação |  | 1d | 2026-07-16 | 2026-07-16 | 505 |  |  | 2026-07-08 | 2026-07-08 | 1d | 2026-07-08 | 2026-07-08 | 7d |  |  | AUTOMAÇÃO E INSTRUMENTAÇÃO | Qua 08/07/26 | Qua 08/07/26 | Sprint 12 |

| ID | WBS | Task | Duration | Start | Finish | Predecessors | Complete | Remaining | Baseline start | Baseline finish | Baseline duration | Baseline 1 start | Baseline 1 finish | Total slack | Free slack | Constraint | Disciplina | Início_LB_R0 | Término_LB_R0 | Sprints |
| --- | --- | --- | --- | --- | --- | --- | --- | --- | --- | --- | --- | --- | --- | --- | --- | --- | --- | --- | --- | --- |
| 507 | 1.2.10.8 | **FG-F0009-0305-MB-J-00001** | 12d | 2026-06-01 A | 2026-06-18 |  | 80% | 2.4d | 2026-05-20 | 2026-05-27 | 6d | 2026-05-20 | 2026-05-27 | 25d |  |  | AUTOMAÇÃO E INSTRUMENTAÇÃO | Qua 20/05/26 | Qua 27/05/26 | Sprint 6 |
| 508 | 1.2.10.8.1 | Emissão inicial | 6d | 2026-06-01 A | 2026-06-12 A | 63FS+10d | 100% |  | 2026-05-20 | 2026-05-21 | 2d | 2026-05-20 | 2026-05-21 |  |  | finish no earlier than 2026-06-12 | AUTOMAÇÃO E INSTRUMENTAÇÃO | Qua 20/05/26 | Qui 21/05/26 | Sprint 6 |
| 509 | 1.2.10.8.2 | Análise Tecnored | 1d | 2026-06-15 A | 2026-06-15 A | 508 | 100% |  | 2026-05-22 | 2026-05-22 | 1d | 2026-05-22 | 2026-05-22 |  |  |  | AUTOMAÇÃO E INSTRUMENTAÇÃO | Sex 22/05/26 | Sex 22/05/26 | Sprint 8 |
| 510 | 1.2.10.8.3 | Atendimento de comentários | 2d | 2026-06-16 A | 2026-06-17 | 509 | 50% | 1d | 2026-05-25 | 2026-05-26 | 2d | 2026-05-25 | 2026-05-26 | 25d | 0d |  | AUTOMAÇÃO E INSTRUMENTAÇÃO | Seg 25/05/26 | Ter 26/05/26 | Sprint 8 |
| 511 | 1.2.10.8.4 | Aprovação | 1d | 2026-06-18 | 2026-06-18 | 510 |  |  | 2026-05-27 | 2026-05-27 | 1d | 2026-05-27 | 2026-05-27 | 25d |  |  | AUTOMAÇÃO E INSTRUMENTAÇÃO | Qua 27/05/26 | Qua 27/05/26 | Sprint 8 |
| 512 | 1.2.10.9 | **FG-F0009-0305-MB-J-00002** | 10d | 2026-06-03 A | 2026-06-18 |  | 80% | 2d | 2026-05-20 | 2026-05-27 | 6d | 2026-05-20 | 2026-05-27 | 25d |  |  | AUTOMAÇÃO E INSTRUMENTAÇÃO | Qua 20/05/26 | Qua 27/05/26 | Sprint 6 |
| 513 | 1.2.10.9.1 | Emissão inicial | 6d | 2026-06-03 A | 2026-06-12 A | 63FS+10d | 100% |  | 2026-05-20 | 2026-05-21 | 2d | 2026-05-20 | 2026-05-21 |  |  | start no earlier than 2026-06-01 | AUTOMAÇÃO E INSTRUMENTAÇÃO | Qua 20/05/26 | Qui 21/05/26 | Sprint 6 |
| 514 | 1.2.10.9.2 | Análise Tecnored | 1d | 2026-06-15 A | 2026-06-15 A | 513 | 100% |  | 2026-05-22 | 2026-05-22 | 1d | 2026-05-22 | 2026-05-22 |  |  |  | AUTOMAÇÃO E INSTRUMENTAÇÃO | Sex 22/05/26 | Sex 22/05/26 | Sprint 8 |
| 515 | 1.2.10.9.3 | Atendimento de comentários | 2d | 2026-06-16 A | 2026-06-17 | 514 | 50% | 1d | 2026-05-25 | 2026-05-26 | 2d | 2026-05-25 | 2026-05-26 | 25d | 0d |  | AUTOMAÇÃO E INSTRUMENTAÇÃO | Seg 25/05/26 | Ter 26/05/26 | Sprint 8 |
| 516 | 1.2.10.9.4 | Aprovação | 1d | 2026-06-18 | 2026-06-18 | 515 |  |  | 2026-05-27 | 2026-05-27 | 1d | 2026-05-27 | 2026-05-27 | 25d |  |  | AUTOMAÇÃO E INSTRUMENTAÇÃO | Qua 27/05/26 | Qua 27/05/26 | Sprint 8 |
| 517 | 1.2.10.10 | **FG-F0009-0305-MB-J-00003** | 10d | 2026-06-03 A | 2026-06-18 |  | 80% | 2d | 2026-05-20 | 2026-05-27 | 6d | 2026-05-20 | 2026-05-27 | 25d |  |  | AUTOMAÇÃO E INSTRUMENTAÇÃO | Qua 20/05/26 | Qua 27/05/26 | Sprint 6 |
| 518 | 1.2.10.10.1 | Emissão inicial | 6d | 2026-06-03 A | 2026-06-12 A | 63FS+10d | 100% |  | 2026-05-20 | 2026-05-21 | 2d | 2026-05-20 | 2026-05-21 |  |  | finish no earlier than 2026-06-12 | AUTOMAÇÃO E INSTRUMENTAÇÃO | Qua 20/05/26 | Qui 21/05/26 | Sprint 6 |
| 519 | 1.2.10.10.2 | Análise Tecnored | 1d | 2026-06-15 A | 2026-06-15 A | 518 | 100% |  | 2026-05-22 | 2026-05-22 | 1d | 2026-05-22 | 2026-05-22 |  |  |  | AUTOMAÇÃO E INSTRUMENTAÇÃO | Sex 22/05/26 | Sex 22/05/26 | Sprint 8 |
| 520 | 1.2.10.10.3 | Atendimento de comentários | 2d | 2026-06-16 A | 2026-06-17 | 519 | 50% | 1d | 2026-05-25 | 2026-05-26 | 2d | 2026-05-25 | 2026-05-26 | 25d | 0d |  | AUTOMAÇÃO E INSTRUMENTAÇÃO | Seg 25/05/26 | Ter 26/05/26 | Sprint 8 |
| 521 | 1.2.10.10.4 | Aprovação | 1d | 2026-06-18 | 2026-06-18 | 520 |  |  | 2026-05-27 | 2026-05-27 | 1d | 2026-05-27 | 2026-05-27 | 25d |  |  | AUTOMAÇÃO E INSTRUMENTAÇÃO | Qua 27/05/26 | Qua 27/05/26 | Sprint 8 |
| 522 | 1.2.10.11 | **AG-F0009-0305-MB-J-00001** | 10d | 2026-06-22 A | 2026-07-03 |  | 56% | 4.38d | 2026-05-27 | 2026-06-15 | 14d | 2026-05-27 | 2026-06-15 | 14d |  |  | AUTOMAÇÃO E INSTRUMENTAÇÃO | Qua 27/05/26 | Seg 15/06/26 | Sprint 9 |
| 523 | 1.2.10.11.1 | Emissão inicial | 4d | 2026-06-22 A | 2026-06-25 A | 478 | 100% |  | 2026-05-27 | 2026-06-09 | 10d | 2026-05-27 | 2026-06-09 |  |  | start no earlier than 2026-06-24 | AUTOMAÇÃO E INSTRUMENTAÇÃO | Qua 27/05/26 | Ter 09/06/26 | Sprint 9 |
| 524 | 1.2.10.11.2 | Análise Tecnored | 1d | 2026-06-26 A | 2026-06-26 | 523 | 50% | 0.5d | 2026-06-10 | 2026-06-10 | 1d | 2026-06-10 | 2026-06-10 | 16d | 0d |  | AUTOMAÇÃO E INSTRUMENTAÇÃO | Qua 10/06/26 | Qua 10/06/26 | Sprint 9 |
| 525 | 1.2.10.11.3 | Atendimento de comentários | 2d | 2026-06-29 | 2026-06-30 | 524 |  |  | 2026-06-11 | 2026-06-12 | 2d | 2026-06-11 | 2026-06-12 | 16d | 2d |  | AUTOMAÇÃO E INSTRUMENTAÇÃO | Qui 11/06/26 | Sex 12/06/26 | Sprint 10 |
| 526 | 1.2.10.11.4 | Aprovação | 1d | 2026-07-03 | 2026-07-03 | 525 |  |  | 2026-06-15 | 2026-06-15 | 1d | 2026-06-15 | 2026-06-15 | 14d |  | finish no earlier than 2026-07-03 | AUTOMAÇÃO E INSTRUMENTAÇÃO | Seg 15/06/26 | Seg 15/06/26 | Sprint 10 |
| 527 | 1.2.10.12 | **AG-F0009-0305-MB-J-00002** | 10d | 2026-06-19 A | 2026-07-02 |  | 56% | 4.38d | 2026-05-27 | 2026-06-15 | 14d | 2026-05-27 | 2026-06-15 | 15d |  |  | AUTOMAÇÃO E INSTRUMENTAÇÃO | Qua 27/05/26 | Seg 15/06/26 | Sprint 8 |
| 528 | 1.2.10.12.1 | Emissão inicial | 4d | 2026-06-19 A | 2026-06-24 A | 478 | 100% |  | 2026-05-27 | 2026-06-09 | 10d | 2026-05-27 | 2026-06-09 |  |  | finish no earlier than 2026-06-24 | AUTOMAÇÃO E INSTRUMENTAÇÃO | Qua 27/05/26 | Ter 09/06/26 | Sprint 8 |
| 529 | 1.2.10.12.2 | Análise Tecnored | 1d | 2026-06-25 A | 2026-06-25 | 528 | 50% | 0.5d | 2026-06-10 | 2026-06-10 | 1d | 2026-06-10 | 2026-06-10 | 17d | 0d |  | AUTOMAÇÃO E INSTRUMENTAÇÃO | Qua 10/06/26 | Qua 10/06/26 | Sprint 9 |
| 530 | 1.2.10.12.3 | Atendimento de comentários | 2d | 2026-06-26 | 2026-06-29 | 529 |  |  | 2026-06-11 | 2026-06-12 | 2d | 2026-06-11 | 2026-06-12 | 17d | 2d |  | AUTOMAÇÃO E INSTRUMENTAÇÃO | Qui 11/06/26 | Sex 12/06/26 | Sprint 9 |
| 531 | 1.2.10.12.4 | Aprovação | 1d | 2026-07-02 | 2026-07-02 | 530 |  |  | 2026-06-15 | 2026-06-15 | 1d | 2026-06-15 | 2026-06-15 | 15d |  | finish no earlier than 2026-07-02 | AUTOMAÇÃO E INSTRUMENTAÇÃO | Seg 15/06/26 | Seg 15/06/26 | Sprint 10 |

| ID | WBS | Task | Type | Duration | Start | Finish | Predecessors | Complete | Remaining | Baseline start | Baseline finish | Baseline duration | Baseline 1 start | Baseline 1 finish | Total slack | Free slack | Constraint | Disciplina | Início_LB_R0 | Término_LB_R0 | Sprints |
| --- | --- | --- | --- | --- | --- | --- | --- | --- | --- | --- | --- | --- | --- | --- | --- | --- | --- | --- | --- | --- | --- |
| 532 | 1.2.10.13 | **AG-F0009-0305-MB-J-00003** |  | 7d | 2026-06-24 A | 2026-07-02 |  | 50% | 3.5d | 2026-05-27 | 2026-06-15 | 14d | 2026-05-27 | 2026-06-15 | 15d |  |  | AUTOMAÇÃO E INSTRUMENTAÇÃO | Qua 27/05/26 | Seg 15/06/26 | Sprint 9 |
| 533 | 1.2.10.13.1 | Emissão inicial |  | 3d | 2026-06-24 A | 2026-06-26 A | 478 | 100% |  | 2026-05-27 | 2026-06-09 | 10d | 2026-05-27 | 2026-06-09 |  |  | start no earlier than 2026-06-24 | AUTOMAÇÃO E INSTRUMENTAÇÃO | Qua 27/05/26 | Ter 09/06/26 | Sprint 9 |
| 534 | 1.2.10.13.2 | Análise Tecnored |  | 1d | 2026-06-29 A | 2026-06-29 | 533 | 50% | 0.5d | 2026-06-10 | 2026-06-10 | 1d | 2026-06-10 | 2026-06-10 | 15d | 0d |  | AUTOMAÇÃO E INSTRUMENTAÇÃO | Qua 10/06/26 | Qua 10/06/26 | Sprint 10 |
| 535 | 1.2.10.13.3 | Atendimento de comentários |  | 2d | 2026-06-30 | 2026-07-01 | 534 |  |  | 2026-06-11 | 2026-06-12 | 2d | 2026-06-11 | 2026-06-12 | 15d | 0d |  | AUTOMAÇÃO E INSTRUMENTAÇÃO | Qui 11/06/26 | Sex 12/06/26 | Sprint 10 |
| 536 | 1.2.10.13.4 | Aprovação |  | 1d | 2026-07-02 | 2026-07-02 | 535 |  |  | 2026-06-15 | 2026-06-15 | 1d | 2026-06-15 | 2026-06-15 | 15d |  |  | AUTOMAÇÃO E INSTRUMENTAÇÃO | Seg 15/06/26 | Seg 15/06/26 | Sprint 10 |
| 537 | 1.2.10.14 | **AG-F0009-0305-MB-J-00004** |  | 8d | 2026-06-19 A | 2026-06-30 |  | 56% | 3.5d | 2026-05-27 | 2026-06-15 | 14d | 2026-05-27 | 2026-06-15 | 17d |  |  | AUTOMAÇÃO E INSTRUMENTAÇÃO | Qua 27/05/26 | Seg 15/06/26 | Sprint 8 |
| 538 | 1.2.10.14.1 | Emissão inicial |  | 4d | 2026-06-19 A | 2026-06-24 A | 478 | 100% |  | 2026-05-27 | 2026-06-09 | 10d | 2026-05-27 | 2026-06-09 |  |  | finish no earlier than 2026-06-24 | AUTOMAÇÃO E INSTRUMENTAÇÃO | Qua 27/05/26 | Ter 09/06/26 | Sprint 8 |
| 539 | 1.2.10.14.2 | Análise Tecnored |  | 1d | 2026-06-25 A | 2026-06-25 | 538 | 50% | 0.5d | 2026-06-10 | 2026-06-10 | 1d | 2026-06-10 | 2026-06-10 | 17d | 0d |  | AUTOMAÇÃO E INSTRUMENTAÇÃO | Qua 10/06/26 | Qua 10/06/26 | Sprint 9 |
| 540 | 1.2.10.14.3 | Atendimento de comentários |  | 2d | 2026-06-26 | 2026-06-29 | 539 |  |  | 2026-06-11 | 2026-06-12 | 2d | 2026-06-11 | 2026-06-12 | 17d | 0d |  | AUTOMAÇÃO E INSTRUMENTAÇÃO | Qui 11/06/26 | Sex 12/06/26 | Sprint 9 |
| 541 | 1.2.10.14.4 | Aprovação |  | 1d | 2026-06-30 | 2026-06-30 | 540 |  |  | 2026-06-15 | 2026-06-15 | 1d | 2026-06-15 | 2026-06-15 | 17d |  |  | AUTOMAÇÃO E INSTRUMENTAÇÃO | Seg 15/06/26 | Seg 15/06/26 | Sprint 10 |
| 542 | 1.2.10.15 | **DI-F0009-0305-MB-J-00001** |  | 8d | 2026-07-01 A | 2026-07-14 |  | 25% | 6d | 2026-06-10 | 2026-06-18 | 7d | 2026-06-10 | 2026-06-18 | 9d |  |  | AUTOMAÇÃO E INSTRUMENTAÇÃO | Qua 10/06/26 | Qui 18/06/26 | Sprint 10 |
| 543 | 1.2.10.15.1 | Emissão inicial |  | 4d | 2026-07-01 A | 2026-07-06 |  | 50% | 2d | 2026-06-10 | 2026-06-12 | 3d | 2026-06-10 | 2026-06-12 | 9d | 0d | start no earlier than 2026-06-17 | AUTOMAÇÃO E INSTRUMENTAÇÃO | Qua 10/06/26 | Sex 12/06/26 | Sprint 10 |
| 544 | 1.2.10.15.2 | Análise Tecnored |  | 1d | 2026-07-07 | 2026-07-07 | 543 |  |  | 2026-06-15 | 2026-06-15 | 1d | 2026-06-15 | 2026-06-15 | 9d | 0d |  | AUTOMAÇÃO E INSTRUMENTAÇÃO | Seg 15/06/26 | Seg 15/06/26 | Sprint 11 |
| 545 | 1.2.10.15.3 | Atendimento de comentários |  | 2d | 2026-07-08 | 2026-07-13 | 544 |  |  | 2026-06-16 | 2026-06-17 | 2d | 2026-06-16 | 2026-06-17 | 9d | 0d |  | AUTOMAÇÃO E INSTRUMENTAÇÃO | Ter 16/06/26 | Qua 17/06/26 | Sprint 11 |
| 546 | 1.2.10.15.4 | Aprovação |  | 1d | 2026-07-14 | 2026-07-14 | 545 |  |  | 2026-06-18 | 2026-06-18 | 1d | 2026-06-18 | 2026-06-18 | 9d |  |  | AUTOMAÇÃO E INSTRUMENTAÇÃO | Qui 18/06/26 | Qui 18/06/26 | Sprint 12 |
| 547 | 1.2.10.16 | **LI-F0009-0305-MB-J-00002** | inactive | 9d | 2026-06-17 | 2026-06-29 |  |  |  | 2026-06-23 | 2026-07-01 | 7d | 2026-06-23 | 2026-07-01 | 18d |  |  | AUTOMAÇÃO E INSTRUMENTAÇÃO | Ter 23/06/26 | Qua 01/07/26 | Sprint 8 |
| 548 | 1.2.10.16.1 | Emissão inicial | inactive | 5d | 2026-06-17 | 2026-06-23 |  |  |  | 2026-06-23 | 2026-06-25 | 3d | 2026-06-23 | 2026-06-25 | 18d | 0d | start no earlier than 2026-06-17 | AUTOMAÇÃO E INSTRUMENTAÇÃO | Ter 23/06/26 | Qui 25/06/26 | Sprint 8 |
| 549 | 1.2.10.16.2 | Análise Tecnored | inactive | 1d | 2026-06-24 | 2026-06-24 | 548 |  |  | 2026-06-26 | 2026-06-26 | 1d | 2026-06-26 | 2026-06-26 | 18d | 0d |  | AUTOMAÇÃO E INSTRUMENTAÇÃO | Sex 26/06/26 | Sex 26/06/26 | Sprint 9 |
| 550 | 1.2.10.16.3 | Atendimento de comentários | inactive | 2d | 2026-06-25 | 2026-06-26 | 549 |  |  | 2026-06-29 | 2026-06-30 | 2d | 2026-06-29 | 2026-06-30 | 18d | 0d |  | AUTOMAÇÃO E INSTRUMENTAÇÃO | Seg 29/06/26 | Ter 30/06/26 | Sprint 9 |
| 551 | 1.2.10.16.4 | Aprovação | inactive | 1d | 2026-06-29 | 2026-06-29 | 550 |  |  | 2026-07-01 | 2026-07-01 | 1d | 2026-07-01 | 2026-07-01 | 18d |  |  | AUTOMAÇÃO E INSTRUMENTAÇÃO | Qua 01/07/26 | Qua 01/07/26 | Sprint 10 |
| 552 | 1.2.10.17 | **LI-F0009-0305-MB-J-00003** | inactive | 9d | 2026-06-17 | 2026-06-29 |  |  |  | 2026-06-23 | 2026-07-01 | 7d | 2026-06-23 | 2026-07-01 | 14.96d |  |  | AUTOMAÇÃO E INSTRUMENTAÇÃO | Ter 23/06/26 | Qua 01/07/26 | Sprint 8 |
| 553 | 1.2.10.17.1 | Emissão inicial | inactive | 5d | 2026-06-17 | 2026-06-23 |  |  |  | 2026-06-23 | 2026-06-25 | 3d | 2026-06-23 | 2026-06-25 | 14.96d | 0d | start no earlier than 2026-06-17 | AUTOMAÇÃO E INSTRUMENTAÇÃO | Ter 23/06/26 | Qui 25/06/26 | Sprint 8 |
| 554 | 1.2.10.17.2 | Análise Tecnored | inactive | 1d | 2026-06-24 | 2026-06-24 | 553 |  |  | 2026-06-26 | 2026-06-26 | 1d | 2026-06-26 | 2026-06-26 | 18d | 0d |  | AUTOMAÇÃO E INSTRUMENTAÇÃO | Sex 26/06/26 | Sex 26/06/26 | Sprint 9 |
| 555 | 1.2.10.17.3 | Atendimento de comentários | inactive | 2d | 2026-06-25 | 2026-06-26 | 554 |  |  | 2026-06-29 | 2026-06-30 | 2d | 2026-06-29 | 2026-06-30 | 18d | 0d |  | AUTOMAÇÃO E INSTRUMENTAÇÃO | Seg 29/06/26 | Ter 30/06/26 | Sprint 9 |
| 556 | 1.2.10.17.4 | Aprovação | inactive | 1d | 2026-06-29 | 2026-06-29 | 555 |  |  | 2026-07-01 | 2026-07-01 | 1d | 2026-07-01 | 2026-07-01 | 18d |  |  | AUTOMAÇÃO E INSTRUMENTAÇÃO | Qua 01/07/26 | Qua 01/07/26 | Sprint 10 |

| ID | WBS | Task | Duration | Start | Finish | Predecessors | Complete | Remaining | Baseline start | Baseline finish | Baseline duration | Baseline 1 start | Baseline 1 finish | Total slack | Free slack | Constraint | Disciplina | Início_LB_R0 | Término_LB_R0 | Sprints |
| --- | --- | --- | --- | --- | --- | --- | --- | --- | --- | --- | --- | --- | --- | --- | --- | --- | --- | --- | --- | --- |
| 557 | 1.2.10.18 | **LM-F0009-0305-MB-J-00001** | 7d | 2026-07-14 | 2026-07-22 |  |  |  | 2026-07-01 | 2026-07-07 | 5d | 2026-07-01 | 2026-07-07 | 2.5d |  |  | AUTOMAÇÃO E INSTRUMENTAÇÃO | Qua 01/07/26 | Ter 07/07/26 | Sprint 12 |
| 558 | 1.2.10.18.1 | Emissão inicial | 4d | 2026-07-14 | 2026-07-17 | 698FS-7d, 693FS-7d, 477, 688FS-7d |  |  | 2026-07-01 | 2026-07-01 | 1d | 2026-07-01 | 2026-07-01 | 2.5d | 0d | start no earlier than 2026-07-01 | AUTOMAÇÃO E INSTRUMENTAÇÃO | Qua 01/07/26 | Qua 01/07/26 | Sprint 12 |
| 559 | 1.2.10.18.2 | Análise Tecnored | 1d | 2026-07-20 | 2026-07-20 | 558 |  |  | 2026-07-02 | 2026-07-02 | 1d | 2026-07-02 | 2026-07-02 | 3d | 0d |  | AUTOMAÇÃO E INSTRUMENTAÇÃO | Qui 02/07/26 | Qui 02/07/26 | Sprint 13 |
| 560 | 1.2.10.18.3 | Atendimento de comentários | 1d | 2026-07-21 | 2026-07-21 | 559 |  |  | 2026-07-03 | 2026-07-06 | 2d | 2026-07-03 | 2026-07-06 | 3d | 0d |  | AUTOMAÇÃO E INSTRUMENTAÇÃO | Sex 03/07/26 | Seg 06/07/26 | Sprint 13 |
| 561 | 1.2.10.18.4 | Aprovação | 1d | 2026-07-22 | 2026-07-22 | 560 |  |  | 2026-07-07 | 2026-07-07 | 1d | 2026-07-07 | 2026-07-07 | 3d |  |  | AUTOMAÇÃO E INSTRUMENTAÇÃO | Ter 07/07/26 | Ter 07/07/26 | Sprint 13 |
| 562 | 1.2.10.19 | **FD-F0009-0305-MB-J-00001** | 10d | 2026-06-15 A | 2026-06-26 |  | 75% | 2.5d | 2026-06-18 | 2026-07-07 | 14d | 2026-06-18 | 2026-07-07 | 19d |  |  | AUTOMAÇÃO E INSTRUMENTAÇÃO | Qui 18/06/26 | Ter 07/07/26 | Sprint 8 |
| 563 | 1.2.10.19.1 | Emissão inicial | 7d | 2026-06-15 A | 2026-06-23 A |  | 100% |  | 2026-06-18 | 2026-07-01 | 10d | 2026-06-18 | 2026-07-01 |  |  | finish no earlier than 2026-06-23 | AUTOMAÇÃO E INSTRUMENTAÇÃO | Qui 18/06/26 | Qua 01/07/26 | Sprint 8 |
| 564 | 1.2.10.19.2 | Análise Tecnored | 1d | 2026-06-24 A | 2026-06-24 | 563 | 50% | 0.5d | 2026-07-02 | 2026-07-02 | 1d | 2026-07-02 | 2026-07-02 | 19d | 0d |  | AUTOMAÇÃO E INSTRUMENTAÇÃO | Qui 02/07/26 | Qui 02/07/26 | Sprint 9 |
| 565 | 1.2.10.19.3 | Atendimento de comentários | 1d | 2026-06-25 | 2026-06-25 | 564 |  |  | 2026-07-03 | 2026-07-06 | 2d | 2026-07-03 | 2026-07-06 | 19d | 0d |  | AUTOMAÇÃO E INSTRUMENTAÇÃO | Sex 03/07/26 | Seg 06/07/26 | Sprint 9 |
| 566 | 1.2.10.19.4 | Aprovação | 1d | 2026-06-26 | 2026-06-26 | 565 |  |  | 2026-07-07 | 2026-07-07 | 1d | 2026-07-07 | 2026-07-07 | 19d |  |  | AUTOMAÇÃO E INSTRUMENTAÇÃO | Ter 07/07/26 | Ter 07/07/26 | Sprint 9 |
| 567 | 1.2.10.20 | **FD-F0009-0305-MB-J-00002** | 10d | 2026-06-16 A | 2026-06-29 |  | 75% | 2.5d | 2026-06-18 | 2026-07-07 | 14d | 2026-06-18 | 2026-07-07 | 18d |  |  | AUTOMAÇÃO E INSTRUMENTAÇÃO | Qui 18/06/26 | Ter 07/07/26 | Sprint 8 |
| 568 | 1.2.10.20.1 | Emissão inicial | 7d | 2026-06-16 A | 2026-06-24 A | 563SS | 100% |  | 2026-06-18 | 2026-07-01 | 10d | 2026-06-18 | 2026-07-01 |  |  |  | AUTOMAÇÃO E INSTRUMENTAÇÃO | Qui 18/06/26 | Qua 01/07/26 | Sprint 8 |
| 569 | 1.2.10.20.2 | Análise Tecnored | 1d | 2026-06-25 A | 2026-06-25 | 568 | 50% | 0.5d | 2026-07-02 | 2026-07-02 | 1d | 2026-07-02 | 2026-07-02 | 18d | 0d |  | AUTOMAÇÃO E INSTRUMENTAÇÃO | Qui 02/07/26 | Qui 02/07/26 | Sprint 9 |
| 570 | 1.2.10.20.3 | Atendimento de comentários | 1d | 2026-06-26 | 2026-06-26 | 569 |  |  | 2026-07-03 | 2026-07-06 | 2d | 2026-07-03 | 2026-07-06 | 18d | 0d |  | AUTOMAÇÃO E INSTRUMENTAÇÃO | Sex 03/07/26 | Seg 06/07/26 | Sprint 9 |
| 571 | 1.2.10.20.4 | Aprovação | 1d | 2026-06-29 | 2026-06-29 | 570 |  |  | 2026-07-07 | 2026-07-07 | 1d | 2026-07-07 | 2026-07-07 | 18d |  |  | AUTOMAÇÃO E INSTRUMENTAÇÃO | Ter 07/07/26 | Ter 07/07/26 | Sprint 10 |
| 572 | 1.2.10.21 | **FD-F0009-0305-MB-J-00003** | 10d | 2026-06-16 A | 2026-06-29 |  | 75% | 2.5d | 2026-06-18 | 2026-07-07 | 14d | 2026-06-18 | 2026-07-07 | 18d |  |  | AUTOMAÇÃO E INSTRUMENTAÇÃO | Qui 18/06/26 | Ter 07/07/26 | Sprint 8 |
| 573 | 1.2.10.21.1 | Emissão inicial | 7d | 2026-06-16 A | 2026-06-24 A | 563SS | 100% |  | 2026-06-18 | 2026-07-01 | 10d | 2026-06-18 | 2026-07-01 |  |  |  | AUTOMAÇÃO E INSTRUMENTAÇÃO | Qui 18/06/26 | Qua 01/07/26 | Sprint 8 |
| 574 | 1.2.10.21.2 | Análise Tecnored | 1d | 2026-06-25 A | 2026-06-25 | 573 | 50% | 0.5d | 2026-07-02 | 2026-07-02 | 1d | 2026-07-02 | 2026-07-02 | 18d | 0d |  | AUTOMAÇÃO E INSTRUMENTAÇÃO | Qui 02/07/26 | Qui 02/07/26 | Sprint 9 |
| 575 | 1.2.10.21.3 | Atendimento de comentários | 1d | 2026-06-26 | 2026-06-26 | 574 |  |  | 2026-07-03 | 2026-07-06 | 2d | 2026-07-03 | 2026-07-06 | 18d | 0d |  | AUTOMAÇÃO E INSTRUMENTAÇÃO | Sex 03/07/26 | Seg 06/07/26 | Sprint 9 |
| 576 | 1.2.10.21.4 | Aprovação | 1d | 2026-06-29 | 2026-06-29 | 575 |  |  | 2026-07-07 | 2026-07-07 | 1d | 2026-07-07 | 2026-07-07 | 18d |  |  | AUTOMAÇÃO E INSTRUMENTAÇÃO | Ter 07/07/26 | Ter 07/07/26 | Sprint 10 |
| 577 | 1.2.10.22 | **FD-F0009-0305-MB-J-00004** | 10d | 2026-06-16 A | 2026-06-29 |  | 75% | 2.5d | 2026-06-18 | 2026-07-07 | 14d | 2026-06-18 | 2026-07-07 | 18d |  |  | AUTOMAÇÃO E INSTRUMENTAÇÃO | Qui 18/06/26 | Ter 07/07/26 | Sprint 8 |
| 578 | 1.2.10.22.1 | Emissão inicial | 7d | 2026-06-16 A | 2026-06-24 A | 563SS | 100% |  | 2026-06-18 | 2026-07-01 | 10d | 2026-06-18 | 2026-07-01 |  |  | start no earlier than 2026-06-16 | AUTOMAÇÃO E INSTRUMENTAÇÃO | Qui 18/06/26 | Qua 01/07/26 | Sprint 8 |
| 579 | 1.2.10.22.2 | Análise Tecnored | 1d | 2026-06-25 A | 2026-06-25 | 578 | 50% | 0.5d | 2026-07-02 | 2026-07-02 | 1d | 2026-07-02 | 2026-07-02 | 18d | 0d |  | AUTOMAÇÃO E INSTRUMENTAÇÃO | Qui 02/07/26 | Qui 02/07/26 | Sprint 9 |
| 580 | 1.2.10.22.3 | Atendimento de comentários | 1d | 2026-06-26 | 2026-06-26 | 579 |  |  | 2026-07-03 | 2026-07-06 | 2d | 2026-07-03 | 2026-07-06 | 18d | 0d |  | AUTOMAÇÃO E INSTRUMENTAÇÃO | Sex 03/07/26 | Seg 06/07/26 | Sprint 9 |
| 581 | 1.2.10.22.4 | Aprovação | 1d | 2026-06-29 | 2026-06-29 | 580 |  |  | 2026-07-07 | 2026-07-07 | 1d | 2026-07-07 | 2026-07-07 | 18d |  |  | AUTOMAÇÃO E INSTRUMENTAÇÃO | Ter 07/07/26 | Ter 07/07/26 | Sprint 10 |

| ID | WBS | Task | Duration | Start | Finish | Predecessors | Complete | Remaining | Baseline start | Baseline finish | Baseline duration | Baseline 1 start | Baseline 1 finish | Total slack | Free slack | Constraint | Disciplina | Início_LB_R0 | Término_LB_R0 | Sprints |
| --- | --- | --- | --- | --- | --- | --- | --- | --- | --- | --- | --- | --- | --- | --- | --- | --- | --- | --- | --- | --- |
| 582 | 1.2.10.23 | **FD-F0009-0305-MB-J-00005** | 10d | 2026-06-16 A | 2026-06-29 |  | 75% | 2.5d | 2026-06-18 | 2026-07-07 | 14d | 2026-06-18 | 2026-07-07 | 18d |  |  | AUTOMAÇÃO E INSTRUMENTAÇÃO | Qui 18/06/26 | Ter 07/07/26 | Sprint 8 |
| 583 | 1.2.10.23.1 | Emissão inicial | 7d | 2026-06-16 A | 2026-06-24 A | 563SS | 100% |  | 2026-06-18 | 2026-07-01 | 10d | 2026-06-18 | 2026-07-01 |  |  |  | AUTOMAÇÃO E INSTRUMENTAÇÃO | Qui 18/06/26 | Qua 01/07/26 | Sprint 8 |
| 584 | 1.2.10.23.2 | Análise Tecnored | 1d | 2026-06-25 A | 2026-06-25 | 583 | 50% | 0.5d | 2026-07-02 | 2026-07-02 | 1d | 2026-07-02 | 2026-07-02 | 18d | 0d |  | AUTOMAÇÃO E INSTRUMENTAÇÃO | Qui 02/07/26 | Qui 02/07/26 | Sprint 9 |
| 585 | 1.2.10.23.3 | Atendimento de comentários | 1d | 2026-06-26 | 2026-06-26 | 584 |  |  | 2026-07-03 | 2026-07-06 | 2d | 2026-07-03 | 2026-07-06 | 18d | 0d |  | AUTOMAÇÃO E INSTRUMENTAÇÃO | Sex 03/07/26 | Seg 06/07/26 | Sprint 9 |
| 586 | 1.2.10.23.4 | Aprovação | 1d | 2026-06-29 | 2026-06-29 | 585 |  |  | 2026-07-07 | 2026-07-07 | 1d | 2026-07-07 | 2026-07-07 | 18d |  |  | AUTOMAÇÃO E INSTRUMENTAÇÃO | Ter 07/07/26 | Ter 07/07/26 | Sprint 10 |
| 587 | 1.2.10.24 | **FD-F0009-0305-MB-J-00006** | 10d | 2026-06-16 A | 2026-06-29 |  | 75% | 2.5d | 2026-06-18 | 2026-07-07 | 14d | 2026-06-18 | 2026-07-07 | 18d |  |  | AUTOMAÇÃO E INSTRUMENTAÇÃO | Qui 18/06/26 | Ter 07/07/26 | Sprint 8 |
| 588 | 1.2.10.24.1 | Emissão inicial | 7d | 2026-06-16 A | 2026-06-24 A | 563SS | 100% |  | 2026-06-18 | 2026-07-01 | 10d | 2026-06-18 | 2026-07-01 |  |  |  | AUTOMAÇÃO E INSTRUMENTAÇÃO | Qui 18/06/26 | Qua 01/07/26 | Sprint 8 |
| 589 | 1.2.10.24.2 | Análise Tecnored | 1d | 2026-06-25 A | 2026-06-25 | 588 | 50% | 0.5d | 2026-07-02 | 2026-07-02 | 1d | 2026-07-02 | 2026-07-02 | 18d | 0d |  | AUTOMAÇÃO E INSTRUMENTAÇÃO | Qui 02/07/26 | Qui 02/07/26 | Sprint 9 |
| 590 | 1.2.10.24.3 | Atendimento de comentários | 1d | 2026-06-26 | 2026-06-26 | 589 |  |  | 2026-07-03 | 2026-07-06 | 2d | 2026-07-03 | 2026-07-06 | 18d | 0d |  | AUTOMAÇÃO E INSTRUMENTAÇÃO | Sex 03/07/26 | Seg 06/07/26 | Sprint 9 |
| 591 | 1.2.10.24.4 | Aprovação | 1d | 2026-06-29 | 2026-06-29 | 590 |  |  | 2026-07-07 | 2026-07-07 | 1d | 2026-07-07 | 2026-07-07 | 18d |  |  | AUTOMAÇÃO E INSTRUMENTAÇÃO | Ter 07/07/26 | Ter 07/07/26 | Sprint 10 |
| 592 | 1.2.10.25 | **FD-F0009-0305-MB-J-00007** | 10d | 2026-06-16 A | 2026-06-29 |  | 75% | 2.5d | 2026-06-18 | 2026-07-07 | 14d | 2026-06-18 | 2026-07-07 | 18d |  |  | AUTOMAÇÃO E INSTRUMENTAÇÃO | Qui 18/06/26 | Ter 07/07/26 | Sprint 8 |
| 593 | 1.2.10.25.1 | Emissão inicial | 7d | 2026-06-16 A | 2026-06-24 A | 563SS | 100% |  | 2026-06-18 | 2026-07-01 | 10d | 2026-06-18 | 2026-07-01 |  |  |  | AUTOMAÇÃO E INSTRUMENTAÇÃO | Qui 18/06/26 | Qua 01/07/26 | Sprint 8 |
| 594 | 1.2.10.25.2 | Análise Tecnored | 1d | 2026-06-25 A | 2026-06-25 | 593 | 50% | 0.5d | 2026-07-02 | 2026-07-02 | 1d | 2026-07-02 | 2026-07-02 | 18d | 0d |  | AUTOMAÇÃO E INSTRUMENTAÇÃO | Qui 02/07/26 | Qui 02/07/26 | Sprint 9 |
| 595 | 1.2.10.25.3 | Atendimento de comentários | 1d | 2026-06-26 | 2026-06-26 | 594 |  |  | 2026-07-03 | 2026-07-06 | 2d | 2026-07-03 | 2026-07-06 | 18d | 0d |  | AUTOMAÇÃO E INSTRUMENTAÇÃO | Sex 03/07/26 | Seg 06/07/26 | Sprint 9 |
| 596 | 1.2.10.25.4 | Aprovação | 1d | 2026-06-29 | 2026-06-29 | 595 |  |  | 2026-07-07 | 2026-07-07 | 1d | 2026-07-07 | 2026-07-07 | 18d |  |  | AUTOMAÇÃO E INSTRUMENTAÇÃO | Ter 07/07/26 | Ter 07/07/26 | Sprint 10 |
| 597 | 1.2.10.26 | **FD-F0009-0305-MB-J-00008** | 10d | 2026-06-16 A | 2026-06-29 |  | 75% | 2.5d | 2026-06-18 | 2026-07-07 | 14d | 2026-06-18 | 2026-07-07 | 18d |  |  | AUTOMAÇÃO E INSTRUMENTAÇÃO | Qui 18/06/26 | Ter 07/07/26 | Sprint 8 |
| 598 | 1.2.10.26.1 | Emissão inicial | 7d | 2026-06-16 A | 2026-06-24 A | 563SS | 100% |  | 2026-06-18 | 2026-07-01 | 10d | 2026-06-18 | 2026-07-01 |  |  | start no earlier than 2026-06-16 | AUTOMAÇÃO E INSTRUMENTAÇÃO | Qui 18/06/26 | Qua 01/07/26 | Sprint 8 |
| 599 | 1.2.10.26.2 | Análise Tecnored | 1d | 2026-06-25 A | 2026-06-25 | 598 | 50% | 0.5d | 2026-07-02 | 2026-07-02 | 1d | 2026-07-02 | 2026-07-02 | 18d | 0d |  | AUTOMAÇÃO E INSTRUMENTAÇÃO | Qui 02/07/26 | Qui 02/07/26 | Sprint 9 |
| 600 | 1.2.10.26.3 | Atendimento de comentários | 1d | 2026-06-26 | 2026-06-26 | 599 |  |  | 2026-07-03 | 2026-07-06 | 2d | 2026-07-03 | 2026-07-06 | 18d | 0d |  | AUTOMAÇÃO E INSTRUMENTAÇÃO | Sex 03/07/26 | Seg 06/07/26 | Sprint 9 |
| 601 | 1.2.10.26.4 | Aprovação | 1d | 2026-06-29 | 2026-06-29 | 600 |  |  | 2026-07-07 | 2026-07-07 | 1d | 2026-07-07 | 2026-07-07 | 18d |  |  | AUTOMAÇÃO E INSTRUMENTAÇÃO | Ter 07/07/26 | Ter 07/07/26 | Sprint 10 |
| 602 | 1.2.10.27 | **FD-F0009-0305-MB-J-00009** | 10d | 2026-06-15 A | 2026-06-26 |  | 72% | 2.85d | 2026-06-18 | 2026-07-07 | 14d | 2026-06-18 | 2026-07-07 | 19d |  |  | AUTOMAÇÃO E INSTRUMENTAÇÃO | Qui 18/06/26 | Ter 07/07/26 | Sprint 8 |
| 603 | 1.2.10.27.1 | Emissão inicial | 7d | 2026-06-15 A | 2026-06-23 A | 563SS | 100% |  | 2026-06-18 | 2026-07-01 | 10d | 2026-06-18 | 2026-07-01 |  |  |  | AUTOMAÇÃO E INSTRUMENTAÇÃO | Qui 18/06/26 | Qua 01/07/26 | Sprint 8 |
| 604 | 1.2.10.27.2 | Análise Tecnored | 1d | 2026-06-24 A | 2026-06-24 | 603 | 15% | 0.85d | 2026-07-02 | 2026-07-02 | 1d | 2026-07-02 | 2026-07-02 | 19d | 0d |  | AUTOMAÇÃO E INSTRUMENTAÇÃO | Qui 02/07/26 | Qui 02/07/26 | Sprint 9 |
| 605 | 1.2.10.27.3 | Atendimento de comentários | 1d | 2026-06-25 | 2026-06-25 | 604 |  |  | 2026-07-03 | 2026-07-06 | 2d | 2026-07-03 | 2026-07-06 | 19d | 0d |  | AUTOMAÇÃO E INSTRUMENTAÇÃO | Sex 03/07/26 | Seg 06/07/26 | Sprint 9 |
| 606 | 1.2.10.27.4 | Aprovação | 1d | 2026-06-26 | 2026-06-26 | 605 |  |  | 2026-07-07 | 2026-07-07 | 1d | 2026-07-07 | 2026-07-07 | 19d |  |  | AUTOMAÇÃO E INSTRUMENTAÇÃO | Ter 07/07/26 | Ter 07/07/26 | Sprint 9 |

| ID | WBS | Task | Duration | Start | Finish | Predecessors | Complete | Remaining | Baseline start | Baseline finish | Baseline duration | Baseline 1 start | Baseline 1 finish | Total slack | Free slack | Disciplina | Início_LB_R0 | Término_LB_R0 | Sprints |
| --- | --- | --- | --- | --- | --- | --- | --- | --- | --- | --- | --- | --- | --- | --- | --- | --- | --- | --- | --- |
| 607 | 1.2.10.28 | **FD-F0009-0305-MB-J-00010** | 10d | 2026-06-15 A | 2026-06-26 |  | 72% | 2.85d | 2026-06-18 | 2026-07-07 | 14d | 2026-06-18 | 2026-07-07 | 19d |  | AUTOMAÇÃO E INSTRUMENTAÇÃO | Qui 18/06/26 | Ter 07/07/26 | Sprint 8 |
| 608 | 1.2.10.28.1 | Emissão inicial | 7d | 2026-06-15 A | 2026-06-23 A | 563SS | 100% |  | 2026-06-18 | 2026-07-01 | 10d | 2026-06-18 | 2026-07-01 |  |  | AUTOMAÇÃO E INSTRUMENTAÇÃO | Qui 18/06/26 | Qua 01/07/26 | Sprint 8 |
| 609 | 1.2.10.28.2 | Análise Tecnored | 1d | 2026-06-24 A | 2026-06-24 | 608 | 15% | 0.85d | 2026-07-02 | 2026-07-02 | 1d | 2026-07-02 | 2026-07-02 | 19d | 0d | AUTOMAÇÃO E INSTRUMENTAÇÃO | Qui 02/07/26 | Qui 02/07/26 | Sprint 9 |
| 610 | 1.2.10.28.3 | Atendimento de comentários | 1d | 2026-06-25 | 2026-06-25 | 609 |  |  | 2026-07-03 | 2026-07-06 | 2d | 2026-07-03 | 2026-07-06 | 19d | 0d | AUTOMAÇÃO E INSTRUMENTAÇÃO | Sex 03/07/26 | Seg 06/07/26 | Sprint 9 |
| 611 | 1.2.10.28.4 | Aprovação | 1d | 2026-06-26 | 2026-06-26 | 610 |  |  | 2026-07-07 | 2026-07-07 | 1d | 2026-07-07 | 2026-07-07 | 19d |  | AUTOMAÇÃO E INSTRUMENTAÇÃO | Ter 07/07/26 | Ter 07/07/26 | Sprint 9 |
| 612 | 1.2.10.29 | **FD-F0009-0305-MB-J-00011** | 10d | 2026-06-15 A | 2026-06-26 |  | 72% | 2.85d | 2026-06-18 | 2026-07-07 | 14d | 2026-06-18 | 2026-07-07 | 19d |  | AUTOMAÇÃO E INSTRUMENTAÇÃO | Qui 18/06/26 | Ter 07/07/26 | Sprint 8 |
| 613 | 1.2.10.29.1 | Emissão inicial | 7d | 2026-06-15 A | 2026-06-23 A | 563SS | 100% |  | 2026-06-18 | 2026-07-01 | 10d | 2026-06-18 | 2026-07-01 |  |  | AUTOMAÇÃO E INSTRUMENTAÇÃO | Qui 18/06/26 | Qua 01/07/26 | Sprint 8 |
| 614 | 1.2.10.29.2 | Análise Tecnored | 1d | 2026-06-24 A | 2026-06-24 | 613 | 15% | 0.85d | 2026-07-02 | 2026-07-02 | 1d | 2026-07-02 | 2026-07-02 | 19d | 0d | AUTOMAÇÃO E INSTRUMENTAÇÃO | Qui 02/07/26 | Qui 02/07/26 | Sprint 9 |
| 615 | 1.2.10.29.3 | Atendimento de comentários | 1d | 2026-06-25 | 2026-06-25 | 614 |  |  | 2026-07-03 | 2026-07-06 | 2d | 2026-07-03 | 2026-07-06 | 19d | 0d | AUTOMAÇÃO E INSTRUMENTAÇÃO | Sex 03/07/26 | Seg 06/07/26 | Sprint 9 |
| 616 | 1.2.10.29.4 | Aprovação | 1d | 2026-06-26 | 2026-06-26 | 615 |  |  | 2026-07-07 | 2026-07-07 | 1d | 2026-07-07 | 2026-07-07 | 19d |  | AUTOMAÇÃO E INSTRUMENTAÇÃO | Ter 07/07/26 | Ter 07/07/26 | Sprint 9 |
| 617 | 1.2.10.30 | **FD-F0009-0305-MB-J-00012** | 10d | 2026-06-18 A | 2026-07-01 |  | 72% | 2.85d | 2026-06-18 | 2026-07-07 | 14d | 2026-06-18 | 2026-07-07 | 16d |  | AUTOMAÇÃO E INSTRUMENTAÇÃO | Qui 18/06/26 | Ter 07/07/26 | Sprint 8 |
| 618 | 1.2.10.30.1 | Emissão inicial | 7d | 2026-06-18 A | 2026-06-26 A | 563SS | 100% |  | 2026-06-18 | 2026-07-01 | 10d | 2026-06-18 | 2026-07-01 |  |  | AUTOMAÇÃO E INSTRUMENTAÇÃO | Qui 18/06/26 | Qua 01/07/26 | Sprint 8 |
| 619 | 1.2.10.30.2 | Análise Tecnored | 1d | 2026-06-29 A | 2026-06-29 | 618 | 15% | 0.85d | 2026-07-02 | 2026-07-02 | 1d | 2026-07-02 | 2026-07-02 | 16d | 0d | AUTOMAÇÃO E INSTRUMENTAÇÃO | Qui 02/07/26 | Qui 02/07/26 | Sprint 10 |
| 620 | 1.2.10.30.3 | Atendimento de comentários | 1d | 2026-06-30 | 2026-06-30 | 619 |  |  | 2026-07-03 | 2026-07-06 | 2d | 2026-07-03 | 2026-07-06 | 16d | 0d | AUTOMAÇÃO E INSTRUMENTAÇÃO | Sex 03/07/26 | Seg 06/07/26 | Sprint 10 |
| 621 | 1.2.10.30.4 | Aprovação | 1d | 2026-07-01 | 2026-07-01 | 620 |  |  | 2026-07-07 | 2026-07-07 | 1d | 2026-07-07 | 2026-07-07 | 16d |  | AUTOMAÇÃO E INSTRUMENTAÇÃO | Ter 07/07/26 | Ter 07/07/26 | Sprint 10 |
| 622 | 1.2.10.31 | **FD-F0009-0305-MB-J-00013** | 10d | 2026-06-18 A | 2026-07-01 |  | 72% | 2.85d | 2026-06-18 | 2026-07-07 | 14d | 2026-06-18 | 2026-07-07 | 16d |  | AUTOMAÇÃO E INSTRUMENTAÇÃO | Qui 18/06/26 | Ter 07/07/26 | Sprint 8 |
| 623 | 1.2.10.31.1 | Emissão inicial | 7d | 2026-06-18 A | 2026-06-26 A | 563SS | 100% |  | 2026-06-18 | 2026-07-01 | 10d | 2026-06-18 | 2026-07-01 |  |  | AUTOMAÇÃO E INSTRUMENTAÇÃO | Qui 18/06/26 | Qua 01/07/26 | Sprint 8 |
| 624 | 1.2.10.31.2 | Análise Tecnored | 1d | 2026-06-29 A | 2026-06-29 | 623 | 15% | 0.85d | 2026-07-02 | 2026-07-02 | 1d | 2026-07-02 | 2026-07-02 | 16d | 0d | AUTOMAÇÃO E INSTRUMENTAÇÃO | Qui 02/07/26 | Qui 02/07/26 | Sprint 10 |
| 625 | 1.2.10.31.3 | Atendimento de comentários | 1d | 2026-06-30 | 2026-06-30 | 624 |  |  | 2026-07-03 | 2026-07-06 | 2d | 2026-07-03 | 2026-07-06 | 16d | 0d | AUTOMAÇÃO E INSTRUMENTAÇÃO | Sex 03/07/26 | Seg 06/07/26 | Sprint 10 |
| 626 | 1.2.10.31.4 | Aprovação | 1d | 2026-07-01 | 2026-07-01 | 625 |  |  | 2026-07-07 | 2026-07-07 | 1d | 2026-07-07 | 2026-07-07 | 16d |  | AUTOMAÇÃO E INSTRUMENTAÇÃO | Ter 07/07/26 | Ter 07/07/26 | Sprint 10 |
| 627 | 1.2.10.32 | **FD-F0009-0305-MB-J-00014** | 10d | 2026-06-18 A | 2026-07-01 |  | 72% | 2.85d | 2026-06-18 | 2026-07-07 | 14d | 2026-06-18 | 2026-07-07 | 16d |  | AUTOMAÇÃO E INSTRUMENTAÇÃO | Qui 18/06/26 | Ter 07/07/26 | Sprint 8 |
| 628 | 1.2.10.32.1 | Emissão inicial | 7d | 2026-06-18 A | 2026-06-26 A | 563SS | 100% |  | 2026-06-18 | 2026-07-01 | 10d | 2026-06-18 | 2026-07-01 |  |  | AUTOMAÇÃO E INSTRUMENTAÇÃO | Qui 18/06/26 | Qua 01/07/26 | Sprint 8 |
| 629 | 1.2.10.32.2 | Análise Tecnored | 1d | 2026-06-29 A | 2026-06-29 | 628 | 15% | 0.85d | 2026-07-02 | 2026-07-02 | 1d | 2026-07-02 | 2026-07-02 | 16d | 0d | AUTOMAÇÃO E INSTRUMENTAÇÃO | Qui 02/07/26 | Qui 02/07/26 | Sprint 10 |
| 630 | 1.2.10.32.3 | Atendimento de comentários | 1d | 2026-06-30 | 2026-06-30 | 629 |  |  | 2026-07-03 | 2026-07-06 | 2d | 2026-07-03 | 2026-07-06 | 16d | 0d | AUTOMAÇÃO E INSTRUMENTAÇÃO | Sex 03/07/26 | Seg 06/07/26 | Sprint 10 |
| 631 | 1.2.10.32.4 | Aprovação | 1d | 2026-07-01 | 2026-07-01 | 630 |  |  | 2026-07-07 | 2026-07-07 | 1d | 2026-07-07 | 2026-07-07 | 16d |  | AUTOMAÇÃO E INSTRUMENTAÇÃO | Ter 07/07/26 | Ter 07/07/26 | Sprint 10 |

| ID | WBS | Task | Duration | Start | Finish | Predecessors | Complete | Remaining | Baseline start | Baseline finish | Baseline duration | Baseline 1 start | Baseline 1 finish | Total slack | Free slack | Disciplina | Início_LB_R0 | Término_LB_R0 | Sprints |
| --- | --- | --- | --- | --- | --- | --- | --- | --- | --- | --- | --- | --- | --- | --- | --- | --- | --- | --- | --- |
| 632 | 1.2.10.33 | **FD-F0009-0305-MB-J-00015** | 10d | 2026-06-15 A | 2026-06-26 |  | 72% | 2.85d | 2026-06-18 | 2026-07-07 | 14d | 2026-06-18 | 2026-07-07 | 19d |  | AUTOMAÇÃO E INSTRUMENTAÇÃO | Qui 18/06/26 | Ter 07/07/26 | Sprint 8 |
| 633 | 1.2.10.33.1 | Emissão inicial | 7d | 2026-06-15 A | 2026-06-23 A | 563SS | 100% |  | 2026-06-18 | 2026-07-01 | 10d | 2026-06-18 | 2026-07-01 |  |  | AUTOMAÇÃO E INSTRUMENTAÇÃO | Qui 18/06/26 | Qua 01/07/26 | Sprint 8 |
| 634 | 1.2.10.33.2 | Análise Tecnored | 1d | 2026-06-24 A | 2026-06-24 | 633 | 15% | 0.85d | 2026-07-02 | 2026-07-02 | 1d | 2026-07-02 | 2026-07-02 | 19d | 0d | AUTOMAÇÃO E INSTRUMENTAÇÃO | Qui 02/07/26 | Qui 02/07/26 | Sprint 9 |
| 635 | 1.2.10.33.3 | Atendimento de comentários | 1d | 2026-06-25 | 2026-06-25 | 634 |  |  | 2026-07-03 | 2026-07-06 | 2d | 2026-07-03 | 2026-07-06 | 19d | 0d | AUTOMAÇÃO E INSTRUMENTAÇÃO | Sex 03/07/26 | Seg 06/07/26 | Sprint 9 |
| 636 | 1.2.10.33.4 | Aprovação | 1d | 2026-06-26 | 2026-06-26 | 635 |  |  | 2026-07-07 | 2026-07-07 | 1d | 2026-07-07 | 2026-07-07 | 19d |  | AUTOMAÇÃO E INSTRUMENTAÇÃO | Ter 07/07/26 | Ter 07/07/26 | Sprint 9 |
| 637 | 1.2.10.34 | **FD-F0009-0305-MB-J-00016** | 10d | 2026-06-15 A | 2026-06-26 |  | 72% | 2.85d | 2026-06-18 | 2026-07-07 | 14d | 2026-06-18 | 2026-07-07 | 19d |  | AUTOMAÇÃO E INSTRUMENTAÇÃO | Qui 18/06/26 | Ter 07/07/26 | Sprint 8 |
| 638 | 1.2.10.34.1 | Emissão inicial | 7d | 2026-06-15 A | 2026-06-23 A | 563SS | 100% |  | 2026-06-18 | 2026-07-01 | 10d | 2026-06-18 | 2026-07-01 |  |  | AUTOMAÇÃO E INSTRUMENTAÇÃO | Qui 18/06/26 | Qua 01/07/26 | Sprint 8 |
| 639 | 1.2.10.34.2 | Análise Tecnored | 1d | 2026-06-24 A | 2026-06-24 | 638 | 15% | 0.85d | 2026-07-02 | 2026-07-02 | 1d | 2026-07-02 | 2026-07-02 | 19d | 0d | AUTOMAÇÃO E INSTRUMENTAÇÃO | Qui 02/07/26 | Qui 02/07/26 | Sprint 9 |
| 640 | 1.2.10.34.3 | Atendimento de comentários | 1d | 2026-06-25 | 2026-06-25 | 639 |  |  | 2026-07-03 | 2026-07-06 | 2d | 2026-07-03 | 2026-07-06 | 19d | 0d | AUTOMAÇÃO E INSTRUMENTAÇÃO | Sex 03/07/26 | Seg 06/07/26 | Sprint 9 |
| 641 | 1.2.10.34.4 | Aprovação | 1d | 2026-06-26 | 2026-06-26 | 640 |  |  | 2026-07-07 | 2026-07-07 | 1d | 2026-07-07 | 2026-07-07 | 19d |  | AUTOMAÇÃO E INSTRUMENTAÇÃO | Ter 07/07/26 | Ter 07/07/26 | Sprint 9 |
| 642 | 1.2.10.35 | **FD-F0009-0305-MB-J-00017** | 10d | 2026-06-15 A | 2026-06-26 |  | 72% | 2.85d | 2026-06-18 | 2026-07-07 | 14d | 2026-06-18 | 2026-07-07 | 19d |  | AUTOMAÇÃO E INSTRUMENTAÇÃO | Qui 18/06/26 | Ter 07/07/26 | Sprint 8 |
| 643 | 1.2.10.35.1 | Emissão inicial | 7d | 2026-06-15 A | 2026-06-23 A | 563SS | 100% |  | 2026-06-15 | 2026-06-23 | 10d | 2026-06-18 | 2026-07-01 |  |  | AUTOMAÇÃO E INSTRUMENTAÇÃO | Seg 15/06/26 | Ter 23/06/26 | Sprint 8 |
| 644 | 1.2.10.35.2 | Análise Tecnored | 1d | 2026-06-24 A | 2026-06-24 | 643 | 15% | 0.85d | 2026-06-24 | 2026-06-24 | 1d | 2026-07-02 | 2026-07-02 | 19d | 0d | AUTOMAÇÃO E INSTRUMENTAÇÃO | Qua 24/06/26 | Qua 24/06/26 | Sprint 9 |
| 645 | 1.2.10.35.3 | Atendimento de comentários | 1d | 2026-06-25 | 2026-06-25 | 644 |  |  | 2026-06-25 | 2026-06-25 | 2d | 2026-07-03 | 2026-07-06 | 19d | 0d | AUTOMAÇÃO E INSTRUMENTAÇÃO | Qui 25/06/26 | Qui 25/06/26 | Sprint 9 |
| 646 | 1.2.10.35.4 | Aprovação | 1d | 2026-06-26 | 2026-06-26 | 645 |  |  | 2026-06-26 | 2026-06-26 | 1d | 2026-07-07 | 2026-07-07 | 19d |  | AUTOMAÇÃO E INSTRUMENTAÇÃO | Sex 26/06/26 | Sex 26/06/26 | Sprint 9 |
| 647 | 1.2.10.36 | **FD-F0009-0305-MB-J-00018** | 10d | 2026-06-15 A | 2026-06-26 |  | 72% | 2.85d | 2026-06-18 | 2026-07-07 | 14d | 2026-06-18 | 2026-07-07 | 19d |  | AUTOMAÇÃO E INSTRUMENTAÇÃO | Qui 18/06/26 | Ter 07/07/26 | Sprint 8 |
| 648 | 1.2.10.36.1 | Emissão inicial | 7d | 2026-06-15 A | 2026-06-23 A | 563SS | 100% |  | 2026-06-15 | 2026-06-23 | 10d | 2026-06-18 | 2026-07-01 |  |  | AUTOMAÇÃO E INSTRUMENTAÇÃO | Seg 15/06/26 | Ter 23/06/26 | Sprint 8 |
| 649 | 1.2.10.36.2 | Análise Tecnored | 1d | 2026-06-24 A | 2026-06-24 | 648 | 15% | 0.85d | 2026-06-24 | 2026-06-24 | 1d | 2026-07-02 | 2026-07-02 | 19d | 0d | AUTOMAÇÃO E INSTRUMENTAÇÃO | Qua 24/06/26 | Qua 24/06/26 | Sprint 9 |
| 650 | 1.2.10.36.3 | Atendimento de comentários | 1d | 2026-06-25 | 2026-06-25 | 649 |  |  | 2026-06-25 | 2026-06-25 | 2d | 2026-07-03 | 2026-07-06 | 19d | 0d | AUTOMAÇÃO E INSTRUMENTAÇÃO | Qui 25/06/26 | Qui 25/06/26 | Sprint 9 |
| 651 | 1.2.10.36.4 | Aprovação | 1d | 2026-06-26 | 2026-06-26 | 650 |  |  | 2026-06-26 | 2026-06-26 | 1d | 2026-07-07 | 2026-07-07 | 19d |  | AUTOMAÇÃO E INSTRUMENTAÇÃO | Sex 26/06/26 | Sex 26/06/26 | Sprint 9 |
| 652 | 1.2.10.37 | **FD-F0009-0305-MB-J-00019** | 10d | 2026-06-15 A | 2026-06-26 |  | 72% | 2.85d | 2026-06-18 | 2026-07-07 | 14d | 2026-06-18 | 2026-07-07 | 19d |  | AUTOMAÇÃO E INSTRUMENTAÇÃO | Qui 18/06/26 | Ter 07/07/26 | Sprint 8 |
| 653 | 1.2.10.37.1 | Emissão inicial | 7d | 2026-06-15 A | 2026-06-23 A | 563SS | 100% |  | 2026-06-15 | 2026-06-23 | 10d | 2026-06-18 | 2026-07-01 |  |  | AUTOMAÇÃO E INSTRUMENTAÇÃO | Seg 15/06/26 | Ter 23/06/26 | Sprint 8 |
| 654 | 1.2.10.37.2 | Análise Tecnored | 1d | 2026-06-24 A | 2026-06-24 | 653 | 15% | 0.85d | 2026-06-24 | 2026-06-24 | 1d | 2026-07-02 | 2026-07-02 | 19d | 0d | AUTOMAÇÃO E INSTRUMENTAÇÃO | Qua 24/06/26 | Qua 24/06/26 | Sprint 9 |
| 655 | 1.2.10.37.3 | Atendimento de comentários | 1d | 2026-06-25 | 2026-06-25 | 654 |  |  | 2026-06-25 | 2026-06-25 | 2d | 2026-07-03 | 2026-07-06 | 19d | 0d | AUTOMAÇÃO E INSTRUMENTAÇÃO | Qui 25/06/26 | Qui 25/06/26 | Sprint 9 |
| 656 | 1.2.10.37.4 | Aprovação | 1d | 2026-06-26 | 2026-06-26 | 655 |  |  | 2026-06-26 | 2026-06-26 | 1d | 2026-07-07 | 2026-07-07 | 19d |  | AUTOMAÇÃO E INSTRUMENTAÇÃO | Sex 26/06/26 | Sex 26/06/26 | Sprint 9 |

| ID | WBS | Task | Duration | Start | Finish | Predecessors | Complete | Remaining | Baseline start | Baseline finish | Baseline duration | Baseline 1 start | Baseline 1 finish | Total slack | Free slack | Disciplina | Início_LB_R0 | Término_LB_R0 | Sprints |
| --- | --- | --- | --- | --- | --- | --- | --- | --- | --- | --- | --- | --- | --- | --- | --- | --- | --- | --- | --- |
| 657 | 1.2.10.38 | **FD-F0009-0305-MB-J-00020** | 10d | 2026-06-15 A | 2026-06-26 |  | 72% | 2.85d | 2026-06-18 | 2026-07-07 | 14d | 2026-06-18 | 2026-07-07 | 19d |  | AUTOMAÇÃO E INSTRUMENTAÇÃO | Qui 18/06/26 | Ter 07/07/26 | Sprint 8 |
| 658 | 1.2.10.38.1 | Emissão inicial | 7d | 2026-06-15 A | 2026-06-23 A | 563SS | 100% |  | 2026-06-15 | 2026-06-23 | 10d | 2026-06-18 | 2026-07-01 |  |  | AUTOMAÇÃO E INSTRUMENTAÇÃO | Seg 15/06/26 | Ter 23/06/26 | Sprint 8 |
| 659 | 1.2.10.38.2 | Análise Tecnored | 1d | 2026-06-24 A | 2026-06-24 | 658 | 15% | 0.85d | 2026-06-24 | 2026-06-24 | 1d | 2026-07-02 | 2026-07-02 | 19d | 0d | AUTOMAÇÃO E INSTRUMENTAÇÃO | Qua 24/06/26 | Qua 24/06/26 | Sprint 9 |
| 660 | 1.2.10.38.3 | Atendimento de comentários | 1d | 2026-06-25 | 2026-06-25 | 659 |  |  | 2026-06-25 | 2026-06-25 | 2d | 2026-07-03 | 2026-07-06 | 19d | 0d | AUTOMAÇÃO E INSTRUMENTAÇÃO | Qui 25/06/26 | Qui 25/06/26 | Sprint 9 |
| 661 | 1.2.10.38.4 | Aprovação | 1d | 2026-06-26 | 2026-06-26 | 660 |  |  | 2026-06-26 | 2026-06-26 | 1d | 2026-07-07 | 2026-07-07 | 19d |  | AUTOMAÇÃO E INSTRUMENTAÇÃO | Sex 26/06/26 | Sex 26/06/26 | Sprint 9 |
| 662 | 1.2.10.39 | **FD-F0009-0305-MB-J-00021** | 10d | 2026-06-15 A | 2026-06-26 |  | 72% | 2.85d | 2026-06-18 | 2026-07-07 | 14d | 2026-06-18 | 2026-07-07 | 19d |  | AUTOMAÇÃO E INSTRUMENTAÇÃO | Qui 18/06/26 | Ter 07/07/26 | Sprint 8 |
| 663 | 1.2.10.39.1 | Emissão inicial | 7d | 2026-06-15 A | 2026-06-23 A | 563SS | 100% |  | 2026-06-15 | 2026-06-23 | 10d | 2026-06-18 | 2026-07-01 |  |  | AUTOMAÇÃO E INSTRUMENTAÇÃO | Seg 15/06/26 | Ter 23/06/26 | Sprint 8 |
| 664 | 1.2.10.39.2 | Análise Tecnored | 1d | 2026-06-24 A | 2026-06-24 | 663 | 15% | 0.85d | 2026-06-24 | 2026-06-24 | 1d | 2026-07-02 | 2026-07-02 | 19d | 0d | AUTOMAÇÃO E INSTRUMENTAÇÃO | Qua 24/06/26 | Qua 24/06/26 | Sprint 9 |
| 665 | 1.2.10.39.3 | Atendimento de comentários | 1d | 2026-06-25 | 2026-06-25 | 664 |  |  | 2026-06-25 | 2026-06-25 | 2d | 2026-07-03 | 2026-07-06 | 19d | 0d | AUTOMAÇÃO E INSTRUMENTAÇÃO | Qui 25/06/26 | Qui 25/06/26 | Sprint 9 |
| 666 | 1.2.10.39.4 | Aprovação | 1d | 2026-06-26 | 2026-06-26 | 665 |  |  | 2026-06-26 | 2026-06-26 | 1d | 2026-07-07 | 2026-07-07 | 19d |  | AUTOMAÇÃO E INSTRUMENTAÇÃO | Sex 26/06/26 | Sex 26/06/26 | Sprint 9 |
| 667 | 1.2.10.40 | **FD-F0009-0305-MB-J-00022** | 9.85d | 2026-06-19 A | 2026-07-02 |  | 72% | 2.81d | 2026-06-18 | 2026-07-07 | 14d | 2026-06-18 | 2026-07-07 | 15.15d |  | AUTOMAÇÃO E INSTRUMENTAÇÃO | Qui 18/06/26 | Ter 07/07/26 | Sprint 8 |
| 668 | 1.2.10.40.1 | Emissão inicial | 7d | 2026-06-19 A | 2026-06-29 A | 563SS | 100% |  | 2026-06-15 | 2026-06-23 | 10d | 2026-06-18 | 2026-07-01 |  |  | AUTOMAÇÃO E INSTRUMENTAÇÃO | Seg 15/06/26 | Ter 23/06/26 | Sprint 8 |
| 669 | 1.2.10.40.2 | Análise Tecnored | 1d | 2026-06-24 A | 2026-06-30 | 668 | 15% | 0.85d | 2026-06-24 | 2026-06-24 | 1d | 2026-07-02 | 2026-07-02 | 15.15d | 0d | AUTOMAÇÃO E INSTRUMENTAÇÃO | Qua 24/06/26 | Qua 24/06/26 | Sprint 9 |
| 670 | 1.2.10.40.3 | Atendimento de comentários | 1d | 2026-06-30 | 2026-07-01 | 669 |  |  | 2026-06-25 | 2026-06-25 | 2d | 2026-07-03 | 2026-07-06 | 15.15d | 0d | AUTOMAÇÃO E INSTRUMENTAÇÃO | Qui 25/06/26 | Qui 25/06/26 | Sprint 10 |
| 671 | 1.2.10.40.4 | Aprovação | 1d | 2026-07-01 | 2026-07-02 | 670 |  |  | 2026-06-26 | 2026-06-26 | 1d | 2026-07-07 | 2026-07-07 | 15.15d |  | AUTOMAÇÃO E INSTRUMENTAÇÃO | Sex 26/06/26 | Sex 26/06/26 | Sprint 10 |
| 672 | 1.2.10.41 | **FD-F0009-0305-MB-J-00023** | 9.85d | 2026-06-19 A | 2026-07-02 |  | 72% | 2.81d | 2026-06-18 | 2026-07-07 | 14d | 2026-06-18 | 2026-07-07 | 15.15d |  | AUTOMAÇÃO E INSTRUMENTAÇÃO | Qui 18/06/26 | Ter 07/07/26 | Sprint 8 |
| 673 | 1.2.10.41.1 | Emissão inicial | 7d | 2026-06-19 A | 2026-06-29 A | 563SS | 100% |  | 2026-06-19 | 2026-06-29 | 10d | 2026-06-18 | 2026-07-01 |  |  | AUTOMAÇÃO E INSTRUMENTAÇÃO | Sex 19/06/26 | Seg 29/06/26 | Sprint 8 |
| 674 | 1.2.10.41.2 | Análise Tecnored | 1d | 2026-06-24 A | 2026-06-30 | 673 | 15% | 0.85d | 2026-06-24 | 2026-06-30 | 1d | 2026-07-02 | 2026-07-02 | 15.15d | 0d | AUTOMAÇÃO E INSTRUMENTAÇÃO | Qua 24/06/26 | Ter 30/06/26 | Sprint 9 |
| 675 | 1.2.10.41.3 | Atendimento de comentários | 1d | 2026-06-30 | 2026-07-01 | 674 |  |  | 2026-06-30 | 2026-07-01 | 2d | 2026-07-03 | 2026-07-06 | 15.15d | 0d | AUTOMAÇÃO E INSTRUMENTAÇÃO | Ter 30/06/26 | Qua 01/07/26 | Sprint 10 |
| 676 | 1.2.10.41.4 | Aprovação | 1d | 2026-07-01 | 2026-07-02 | 675 |  |  | 2026-07-01 | 2026-07-02 | 1d | 2026-07-07 | 2026-07-07 | 15.15d |  | AUTOMAÇÃO E INSTRUMENTAÇÃO | Qua 01/07/26 | Qui 02/07/26 | Sprint 10 |
| 677 | 1.2.10.42 | **FD-F0009-0305-MB-J-00024** | 9.85d | 2026-06-19 A | 2026-07-02 |  | 72% | 2.81d | 2026-06-18 | 2026-07-07 | 14d | 2026-06-18 | 2026-07-07 | 15.15d |  | AUTOMAÇÃO E INSTRUMENTAÇÃO | Qui 18/06/26 | Ter 07/07/26 | Sprint 8 |
| 678 | 1.2.10.42.1 | Emissão inicial | 7d | 2026-06-19 A | 2026-06-29 A | 563SS | 100% |  | 2026-06-19 | 2026-06-29 | 10d | 2026-06-18 | 2026-07-01 |  |  | AUTOMAÇÃO E INSTRUMENTAÇÃO | Sex 19/06/26 | Seg 29/06/26 | Sprint 8 |
| 679 | 1.2.10.42.2 | Análise Tecnored | 1d | 2026-06-24 A | 2026-06-30 | 678 | 15% | 0.85d | 2026-06-24 | 2026-06-30 | 1d | 2026-07-02 | 2026-07-02 | 15.15d | 0d | AUTOMAÇÃO E INSTRUMENTAÇÃO | Qua 24/06/26 | Ter 30/06/26 | Sprint 9 |
| 680 | 1.2.10.42.3 | Atendimento de comentários | 1d | 2026-06-30 | 2026-07-01 | 679 |  |  | 2026-06-30 | 2026-07-01 | 2d | 2026-07-03 | 2026-07-06 | 15.15d | 0d | AUTOMAÇÃO E INSTRUMENTAÇÃO | Ter 30/06/26 | Qua 01/07/26 | Sprint 10 |
| 681 | 1.2.10.42.4 | Aprovação | 1d | 2026-07-01 | 2026-07-02 | 680 |  |  | 2026-07-01 | 2026-07-02 | 1d | 2026-07-07 | 2026-07-07 | 15.15d |  | AUTOMAÇÃO E INSTRUMENTAÇÃO | Qua 01/07/26 | Qui 02/07/26 | Sprint 10 |

| ID | WBS | Task | Duration | Start | Finish | Predecessors | Complete | Remaining | Baseline start | Baseline finish | Baseline duration | Baseline 1 start | Baseline 1 finish | Total slack | Free slack | Constraint | Disciplina | Início_LB_R0 | Término_LB_R0 | Sprints |
| --- | --- | --- | --- | --- | --- | --- | --- | --- | --- | --- | --- | --- | --- | --- | --- | --- | --- | --- | --- | --- |
| 682 | 1.2.10.43 | **FD-F0009-0305-MB-J-00025** | 9.85d | 2026-06-19 A | 2026-07-02 |  | 72% | 2.81d | 2026-06-18 | 2026-07-07 | 14d | 2026-06-18 | 2026-07-07 | 15.15d |  |  | AUTOMAÇÃO E INSTRUMENTAÇÃO | Qui 18/06/26 | Ter 07/07/26 | Sprint 8 |
| 683 | 1.2.10.43.1 | Emissão inicial | 7d | 2026-06-19 A | 2026-06-29 A | 563SS | 100% |  | 2026-06-19 | 2026-06-29 | 10d | 2026-06-18 | 2026-07-01 |  |  |  | AUTOMAÇÃO E INSTRUMENTAÇÃO | Sex 19/06/26 | Seg 29/06/26 | Sprint 8 |
| 684 | 1.2.10.43.2 | Análise Tecnored | 1d | 2026-06-24 A | 2026-06-30 | 683 | 15% | 0.85d | 2026-06-24 | 2026-06-30 | 1d | 2026-07-02 | 2026-07-02 | 15.15d | 0d |  | AUTOMAÇÃO E INSTRUMENTAÇÃO | Qua 24/06/26 | Ter 30/06/26 | Sprint 9 |
| 685 | 1.2.10.43.3 | Atendimento de comentários | 1d | 2026-06-30 | 2026-07-01 | 684 |  |  | 2026-06-30 | 2026-07-01 | 2d | 2026-07-03 | 2026-07-06 | 15.15d | 0d |  | AUTOMAÇÃO E INSTRUMENTAÇÃO | Ter 30/06/26 | Qua 01/07/26 | Sprint 10 |
| 686 | 1.2.10.43.4 | Aprovação | 1d | 2026-07-01 | 2026-07-02 | 685 |  |  | 2026-07-01 | 2026-07-02 | 1d | 2026-07-07 | 2026-07-07 | 15.15d |  |  | AUTOMAÇÃO E INSTRUMENTAÇÃO | Qua 01/07/26 | Qui 02/07/26 | Sprint 10 |
| 687 | 1.2.10.44 | **LB-F0009-0305-MB-J-00001** | 8d | 2026-07-03 A | 2026-07-16 |  | 25% | 6d | 2026-06-26 | 2026-07-06 | 7d | 2026-06-26 | 2026-07-06 | 7d |  |  | AUTOMAÇÃO E INSTRUMENTAÇÃO | Sex 26/06/26 | Seg 06/07/26 | Sprint 10 |
| 688 | 1.2.10.44.1 | Emissão inicial | 4d | 2026-07-03 A | 2026-07-08 | 553FS-7d | 50% | 2d | 2026-06-26 | 2026-06-30 | 3d | 2026-06-26 | 2026-06-30 | 7d | 0d | start no earlier than 2026-07-03 | AUTOMAÇÃO E INSTRUMENTAÇÃO | Sex 26/06/26 | Ter 30/06/26 | Sprint 10 |
| 689 | 1.2.10.44.2 | Análise Tecnored | 1d | 2026-07-13 | 2026-07-13 | 688 |  |  | 2026-07-01 | 2026-07-01 | 1d | 2026-07-01 | 2026-07-01 | 7d | 0d |  | AUTOMAÇÃO E INSTRUMENTAÇÃO | Qua 01/07/26 | Qua 01/07/26 | Sprint 12 |
| 690 | 1.2.10.44.3 | Atendimento de comentários | 2d | 2026-07-14 | 2026-07-15 | 689 |  |  | 2026-07-02 | 2026-07-03 | 2d | 2026-07-02 | 2026-07-03 | 7d | 0d |  | AUTOMAÇÃO E INSTRUMENTAÇÃO | Qui 02/07/26 | Sex 03/07/26 | Sprint 12 |
| 691 | 1.2.10.44.4 | Aprovação | 1d | 2026-07-16 | 2026-07-16 | 690 |  |  | 2026-07-06 | 2026-07-06 | 1d | 2026-07-06 | 2026-07-06 | 7d |  |  | AUTOMAÇÃO E INSTRUMENTAÇÃO | Seg 06/07/26 | Seg 06/07/26 | Sprint 12 |
| 692 | 1.2.10.45 | **RE-F0009-0305-MB-J-00001** | 8d | 2026-06-30 A | 2026-07-13 |  | 50% | 4.04d | 2026-06-26 | 2026-07-06 | 7d | 2026-06-26 | 2026-07-06 | 10d |  |  | AUTOMAÇÃO E INSTRUMENTAÇÃO | Sex 26/06/26 | Seg 06/07/26 | Sprint 10 |
| 693 | 1.2.10.45.1 | Emissão inicial | 4d | 2026-06-30 A | 2026-07-03 | 553FS-7d | 99% | 0.04d | 2026-06-26 | 2026-06-30 | 3d | 2026-06-26 | 2026-06-30 | 10d | 0d | finish no earlier than 2026-07-03 | AUTOMAÇÃO E INSTRUMENTAÇÃO | Sex 26/06/26 | Ter 30/06/26 | Sprint 10 |
| 694 | 1.2.10.45.2 | Análise Tecnored | 1d | 2026-07-06 | 2026-07-06 | 693 |  |  | 2026-07-01 | 2026-07-01 | 1d | 2026-07-01 | 2026-07-01 | 10d | 0d |  | AUTOMAÇÃO E INSTRUMENTAÇÃO | Qua 01/07/26 | Qua 01/07/26 | Sprint 11 |
| 695 | 1.2.10.45.3 | Atendimento de comentários | 2d | 2026-07-07 | 2026-07-08 | 694 |  |  | 2026-07-02 | 2026-07-03 | 2d | 2026-07-02 | 2026-07-03 | 10d | 0d |  | AUTOMAÇÃO E INSTRUMENTAÇÃO | Qui 02/07/26 | Sex 03/07/26 | Sprint 11 |
| 696 | 1.2.10.45.4 | Aprovação | 1d | 2026-07-13 | 2026-07-13 | 695 |  |  | 2026-07-06 | 2026-07-06 | 1d | 2026-07-06 | 2026-07-06 | 10d |  |  | AUTOMAÇÃO E INSTRUMENTAÇÃO | Seg 06/07/26 | Seg 06/07/26 | Sprint 12 |
| 697 | 1.2.10.46 | **DT-F0009-0305-MB-J-00001** | 8d | 2026-06-29 A | 2026-07-08 |  | 50% | 4d | 2026-06-26 | 2026-07-06 | 7d | 2026-06-26 | 2026-07-06 | 11d |  |  | AUTOMAÇÃO E INSTRUMENTAÇÃO | Sex 26/06/26 | Seg 06/07/26 | Sprint 10 |
| 698 | 1.2.10.46.1 | Emissão inicial | 4d | 2026-06-29 A | 2026-07-02 A | 553FS-7d | 100% |  | 2026-06-26 | 2026-06-30 | 3d | 2026-06-26 | 2026-06-30 |  |  | start no earlier than 2026-06-17 | AUTOMAÇÃO E INSTRUMENTAÇÃO | Sex 26/06/26 | Ter 30/06/26 | Sprint 10 |
| 699 | 1.2.10.46.2 | Análise Tecnored | 1d | 2026-07-03 | 2026-07-03 | 698 |  |  | 2026-07-01 | 2026-07-01 | 1d | 2026-07-01 | 2026-07-01 | 11d | 0d |  | AUTOMAÇÃO E INSTRUMENTAÇÃO | Qua 01/07/26 | Qua 01/07/26 | Sprint 10 |
| 700 | 1.2.10.46.3 | Atendimento de comentários | 2d | 2026-07-06 | 2026-07-07 | 699 |  |  | 2026-07-02 | 2026-07-03 | 2d | 2026-07-02 | 2026-07-03 | 11d | 0d |  | AUTOMAÇÃO E INSTRUMENTAÇÃO | Qui 02/07/26 | Sex 03/07/26 | Sprint 11 |
| 701 | 1.2.10.46.4 | Aprovação | 1d | 2026-07-08 | 2026-07-08 | 700 |  |  | 2026-07-06 | 2026-07-06 | 1d | 2026-07-06 | 2026-07-06 | 11d |  |  | AUTOMAÇÃO E INSTRUMENTAÇÃO | Seg 06/07/26 | Seg 06/07/26 | Sprint 11 |
| 702 | 1.2.11 | **Civil** | 17.5d | 2026-06-29 A | 2026-07-24 |  | 4% | 16.83d | 2026-06-22 | 2026-07-08 | 13d | 2026-06-22 | 2026-07-08 | 1.5d |  |  | CIVIL | Seg 22/06/26 | Qua 08/07/26 | Sprint 10 |
| 703 | 1.2.11.1 | **MC-F0009-0305-MB-C-00001** | 15.5d | 2026-06-29 A | 2026-07-22 |  | 6% | 14.53d | 2026-06-22 | 2026-07-07 | 12d | 2026-06-22 | 2026-07-07 | 3.5d |  |  | CIVIL | Seg 22/06/26 | Ter 07/07/26 | Sprint 10 |
| 704 | 1.2.11.1.1 | Emissão inicial | 5d | 2026-06-29 A | 2026-07-17 | 346 | 10% | 4.5d | 2026-06-22 | 2026-07-01 | 8d | 2026-06-22 | 2026-07-01 | 1.5d | 0d | start no earlier than 2026-06-29 | CIVIL | Seg 22/06/26 | Qua 01/07/26 | Sprint 10 |
| 705 | 1.2.11.1.2 | Análise Tecnored | 1d | 2026-07-17 | 2026-07-20 | 704 |  |  | 2026-07-02 | 2026-07-02 | 1d | 2026-07-02 | 2026-07-02 | 3.5d | 0d |  | CIVIL | Qui 02/07/26 | Qui 02/07/26 | Sprint 12 |
| 706 | 1.2.11.1.3 | Atendimento de comentários | 1d | 2026-07-20 | 2026-07-21 | 705 |  |  | 2026-07-03 | 2026-07-06 | 2d | 2026-07-03 | 2026-07-06 | 3.5d | 0d |  | CIVIL | Sex 03/07/26 | Seg 06/07/26 | Sprint 13 |
| 707 | 1.2.11.1.4 | Aprovação | 1d | 2026-07-21 | 2026-07-22 | 706 |  |  | 2026-07-07 | 2026-07-07 | 1d | 2026-07-07 | 2026-07-07 | 3.5d |  |  | CIVIL | Ter 07/07/26 | Ter 07/07/26 | Sprint 13 |

| ID | WBS | Task | Duration | Start | Finish | Predecessors | Baseline start | Baseline finish | Baseline duration | Baseline 1 start | Baseline 1 finish | Total slack | Free slack | Disciplina | Início_LB_R0 | Término_LB_R0 | Sprints |
| --- | --- | --- | --- | --- | --- | --- | --- | --- | --- | --- | --- | --- | --- | --- | --- | --- | --- |
| 708 | 1.2.11.2 | **PQ-F0009-0305-MB-C-00001** | 5d | 2026-07-17 | 2026-07-24 |  | 2026-07-02 | 2026-07-08 | 5d | 2026-07-02 | 2026-07-08 | 1.5d |  | CIVIL | Qui 02/07/26 | Qua 08/07/26 | Sprint 12 |
| 709 | 1.2.11.2.1 | Emissão inicial | 1d | 2026-07-17 | 2026-07-20 | 704 | 2026-07-02 | 2026-07-02 | 1d | 2026-07-02 | 2026-07-02 | 1.5d | 0d | CIVIL | Qui 02/07/26 | Qui 02/07/26 | Sprint 12 |
| 710 | 1.2.11.2.2 | Análise Tecnored | 1d | 2026-07-20 | 2026-07-21 | 709 | 2026-07-03 | 2026-07-03 | 1d | 2026-07-03 | 2026-07-03 | 1.5d | 0d | CIVIL | Sex 03/07/26 | Sex 03/07/26 | Sprint 13 |
| 711 | 1.2.11.2.3 | Atendimento de comentários | 2d | 2026-07-21 | 2026-07-23 | 710 | 2026-07-06 | 2026-07-07 | 2d | 2026-07-06 | 2026-07-07 | 1.5d | 0d | CIVIL | Seg 06/07/26 | Ter 07/07/26 | Sprint 13 |
| 712 | 1.2.11.2.4 | Aprovação | 1d | 2026-07-23 | 2026-07-24 | 711 | 2026-07-08 | 2026-07-08 | 1d | 2026-07-08 | 2026-07-08 | 1.5d |  | CIVIL | Qua 08/07/26 | Qua 08/07/26 | Sprint 13 |
