# CR-F0009-0305-MB-F-00001

Schedule from MS Project, 2026-04-27 to 2026-09-22, status date 2026-07-24, A marks actual dates.

## Calendars

- Padrão: Mon-Fri 09:00-12:00, 13:00-18:00; Sat-Sun off. Exceptions (off unless hours are given): 2026-06-04 to 2026-06-05 (FERIADO), 2026-07-09 to 2026-07-10.

## Schedule

| ID | WBS | Task | Type | Duration | Start | Finish | Predecessors | Complete | Remaining | Baseline start | Baseline finish | Baseline duration | Baseline 1 start | Baseline 1 finish | Total slack | Constraint | Disciplina | Início_LB_R0 | Término_LB_R0 | Sprints |
| --- | --- | --- | --- | --- | --- | --- | --- | --- | --- | --- | --- | --- | --- | --- | --- | --- | --- | --- | --- | --- |
| 1 | 1 | **F0009 - Programa Marabá** |  | 63d | 2026-04-27 A | 2026-07-28 |  | 66% | 21.61d | 2026-04-27 | 2026-07-08 | 53d | 2026-04-27 | 2026-07-08 | 0d |  | GERAL | Seg 27/04/26 | Qua 08/07/26 | Sprint 2 |
| 2 | 1.1 | **Área 0000 -Documento geral** |  | 24d | 2026-05-19 A | 2026-06-23 |  | 50% | 12d | 2026-05-19 | 2026-05-22 | 3d | 2026-05-19 | 2026-05-22 | 0d |  | GERAL | Ter 19/05/26 | Sex 22/05/26 | Sprint 4 |
| 3 | 1.1.1 | **Marcos** |  | 24d | 2026-05-19 A | 2026-06-23 |  | 50% | 12d | 2026-05-19 | 2026-05-22 | 3d | 2026-05-19 | 2026-05-22 | 0d |  | MARCOS | Ter 19/05/26 | Sex 22/05/26 | Sprint 4 |
| 4 | 1.1.1.1 | Critério de projeto Processo | manual | 1d | 2026-06-05 | 2026-06-05 |  |  |  | 2026-05-19 | 2026-05-19 | 0d | 2026-05-19 | 2026-05-19 |  |  | MARCOS | Ter 19/05/26 | Ter 19/05/26 | Sprint 2 |
| 5 | 1.1.1.2 | Critério de projeto Mecânica | manual | 1d | 2026-05-19 A | 2026-05-19 A |  | 100% |  | 2026-05-19 | 2026-05-19 | 0d | 2026-05-19 | 2026-05-19 |  |  | MARCOS | Ter 19/05/26 | Ter 19/05/26 | Sprint 4 |
| 6 | 1.1.1.3 | Critério de projeto Tubulação | manual | 1d | 2026-05-22 A | 2026-05-22 A |  | 100% |  | 2026-05-22 | 2026-05-22 | 0d | 2026-05-22 | 2026-05-22 |  |  | MARCOS | Sex 22/05/26 | Sex 22/05/26 | Sprint 4 |
| 7 | 1.1.1.4 | Critério de projeto Elétrica | manual | 1d | 2026-06-05 A | 2026-06-05 A |  | 100% |  | 2026-05-22 | 2026-05-22 | 0d | 2026-05-22 | 2026-05-22 |  |  | MARCOS | Sex 22/05/26 | Sex 22/05/26 | Sprint 7 |
| 8 | 1.1.1.5 | Critério de projeto Automação | manual | 1d | 2026-06-05 A | 2026-06-05 |  |  | 1d | 2026-05-22 | 2026-05-22 | 0d | 2026-05-22 | 2026-05-22 |  |  | MARCOS | Sex 22/05/26 | Sex 22/05/26 | Sprint 7 |
| 9 | 1.1.1.6 | Critério de projeto Estrutura Metálica | manual | 1d | 2026-06-23 | 2026-06-23 |  |  |  | 2026-05-22 | 2026-05-22 | 0d | 2026-05-22 | 2026-05-22 |  |  | MARCOS | Sex 22/05/26 | Sex 22/05/26 | Sprint 2 |
| 10 | 1.2 | **Área 0305 - Hot Blast Stoves** |  | 63d | 2026-04-27 A | 2026-07-28 |  | 66% | 21.55d | 2026-04-27 | 2026-07-08 | 53d | 2026-04-27 | 2026-07-08 | 0d |  | GERAL | Seg 27/04/26 | Qua 08/07/26 | Sprint 2 |
| 11 | 1.2.1 | KOM - Início de projeto | milestone | 0d | 2026-04-27 A | 2026-04-27 A |  | 100% |  | 2026-04-27 | 2026-04-27 | 0d | 2026-04-27 | 2026-04-27 |  | start no earlier than 2026-04-27 | GERAL | Seg 27/04/26 | Seg 27/04/26 | Sprint 2 |
| 12 | 1.2.2 | **Pendências** |  | 0d | 2026-04-29 A | 2026-04-29 A |  | 100% |  | 2026-04-29 | 2026-04-29 | 0d | 2026-04-29 | 2026-04-29 |  |  | PENDÊNCIAS | Qua 29/04/26 | Qua 29/04/26 | Sprint 2 |
| 13 | 1.2.2.1 | Recebimento de dados de entrada | milestone | 0d | 2026-04-29 A | 2026-04-29 A |  | 100% |  | 2026-04-29 | 2026-04-29 | 0d | 2026-04-29 | 2026-04-29 |  |  | PENDÊNCIAS | Qua 29/04/26 | Qua 29/04/26 | Sprint 2 |
| 14 | 1.2.3 | **Planejamento** |  | 25.4d | 2026-04-27 A | 2026-06-01 A |  | 100% |  | 2026-04-27 | 2026-05-19 | 17d | 2026-04-27 | 2026-05-19 |  |  | PLANEJAMENTO | Seg 27/04/26 | Ter 19/05/26 | Sprint 2 |
| 15 | 1.2.3.1 | **LD-F0009-0305-MB-F-00001** |  | 24d | 2026-04-27 A | 2026-05-28 A |  | 100% |  | 2026-04-27 | 2026-05-19 | 17d | 2026-04-27 | 2026-05-19 |  |  | PLANEJAMENTO | Seg 27/04/26 | Ter 19/05/26 | Sprint 2 |
| 16 | 1.2.3.1.1 | Emissão inicial |  | 3d | 2026-04-27 A | 2026-04-29 A | 11 | 100% |  | 2026-04-27 | 2026-04-29 | 3d | 2026-04-27 | 2026-04-29 |  |  | PLANEJAMENTO | Seg 27/04/26 | Qua 29/04/26 | Sprint 2 |
| 17 | 1.2.3.1.2 | Análise Tecnored |  | 1d | 2026-04-30 A | 2026-04-30 A | 16 | 100% |  | 2026-04-30 | 2026-04-30 | 1d | 2026-04-30 | 2026-04-30 |  |  | PLANEJAMENTO | Qui 30/04/26 | Qui 30/04/26 | Sprint 2 |
| 18 | 1.2.3.1.3 | Atendimento de comentários |  | 6d | 2026-05-06 A | 2026-05-13 A | 17FS+3d | 100% |  | 2026-05-06 | 2026-05-13 | 6d | 2026-05-06 | 2026-05-13 |  |  | PLANEJAMENTO | Qua 06/05/26 | Qua 13/05/26 | Sprint 2 |
| 19 | 1.2.3.1.4 | Aprovação |  | 1d | 2026-05-28 A | 2026-05-28 A | 18FS+10d | 100% |  | 2026-05-19 | 2026-05-19 | 1d | 2026-05-19 | 2026-05-19 |  |  | PLANEJAMENTO | Ter 19/05/26 | Ter 19/05/26 | Sprint 5 |
| 20 | 1.2.3.2 | **CR-F0009-0305-MB-F-00001** |  | 22.4d | 2026-04-30 A | 2026-06-01 A |  | 100% |  | 2026-04-30 | 2026-05-19 | 13.4d | 2026-04-30 | 2026-05-19 |  |  | PLANEJAMENTO | Qui 30/04/26 | Ter 19/05/26 | Sprint 2 |
| 21 | 1.2.3.2.1 | Emissão inicial |  | 3d | 2026-04-30 A | 2026-05-04 A | 16 | 100% |  | 2026-04-30 | 2026-05-04 | 3d | 2026-04-30 | 2026-05-04 |  |  | PLANEJAMENTO | Qui 30/04/26 | Seg 04/05/26 | Sprint 2 |
| 22 | 1.2.3.2.2 | Análise Tecnored |  | 1d | 2026-05-05 A | 2026-05-05 A | 21 | 100% |  | 2026-05-05 | 2026-05-05 | 1d | 2026-05-05 | 2026-05-05 |  |  | PLANEJAMENTO | Ter 05/05/26 | Ter 05/05/26 | Sprint 2 |
| 23 | 1.2.3.2.3 | Atendimento de comentários |  | 2d | 2026-05-13 A | 2026-05-18 A | 22FS+8d | 100% |  | 2026-05-13 | 2026-05-18 | 2d | 2026-05-13 | 2026-05-18 |  |  | PLANEJAMENTO | Qua 13/05/26 | Seg 18/05/26 | Sprint 3 |
| 24 | 1.2.3.2.4 | Aprovação |  | 1d | 2026-05-29 A | 2026-06-01 A | 23FS+9d | 100% |  | 2026-05-18 | 2026-05-19 | 1d | 2026-05-18 | 2026-05-19 |  |  | PLANEJAMENTO | Seg 18/05/26 | Ter 19/05/26 | Sprint 5 |

| ID | WBS | Task | Type | Duration | Start | Finish | Predecessors | Baseline start | Baseline finish | Baseline duration | Baseline 1 start | Baseline 1 finish | Total slack | Free slack | Constraint | Baseline cost | Sprints | Disciplina | Início_LB_R0 | Término_LB_R0 |
| --- | --- | --- | --- | --- | --- | --- | --- | --- | --- | --- | --- | --- | --- | --- | --- | --- | --- | --- | --- | --- |
| 25 | 1.2.3.3 | **LF-F0009-0305-MB-F-00001** | inactive | 7d | 2026-07-01 | 2026-07-13 |  |  |  |  |  |  | 11d |  |  | -0 | Sprint 10 |  |  |  |
| 26 | 1.2.3.3.1 | Emissão inicial | inactive | 3d | 2026-07-01 | 2026-07-03 | 11FS+45d |  |  |  |  |  | 11d | 0d |  | -0 | Sprint 10 |  |  |  |
| 27 | 1.2.3.3.2 | Análise Tecnored | inactive | 1d | 2026-07-06 | 2026-07-06 | 26 |  |  |  |  |  | 11d | 0d |  | -0 | Sprint 11 |  |  |  |
| 28 | 1.2.3.3.3 | Atendimento de comentários | inactive | 2d | 2026-07-07 | 2026-07-08 | 27 |  |  |  |  |  | 11d | 0d |  | -0 | Sprint 11 |  |  |  |
| 29 | 1.2.3.3.4 | Aprovação | inactive | 1d | 2026-07-13 | 2026-07-13 | 28 |  |  |  |  |  | 11d |  |  | -0 | Sprint 12 |  |  |  |
| 30 | 1.2.4 | **Coordenação** | inactive | 63d | 2026-06-24 | 2026-09-22 |  | 2026-04-27 | 2026-07-08 | 53d | 2026-04-27 | 2026-07-08 | -40d | 0d |  |  | Sprint 9 | COORDENAÇÃO | Seg 27/04/26 | Qua 08/07/26 |
| 31 | 1.2.4.1 | **RM-F0009-0305-MB-G-00001** | inactive | 7d | 2026-06-24 | 2026-07-02 |  | 2026-05-25 | 2026-06-02 | 7d | 2026-05-25 | 2026-06-02 | 3d |  |  |  | Sprint 9 | COORDENAÇÃO | Seg 25/05/26 | Ter 02/06/26 |
| 32 | 1.2.4.1.1 | Emissão inicial | inactive | 3d | 2026-06-24 | 2026-06-28 | 11FS+23d | 2026-05-25 | 2026-05-27 | 3d | 2026-05-25 | 2026-05-27 | 3d | 0d | finish no earlier than 2026-06-28 |  | Sprint 9 | COORDENAÇÃO | Seg 25/05/26 | Qua 27/05/26 |
| 33 | 1.2.4.1.2 | Análise Tecnored | inactive | 1d | 2026-06-29 | 2026-06-29 | 32 | 2026-05-28 | 2026-05-28 | 1d | 2026-05-28 | 2026-05-28 | 16d | 0d |  |  | Sprint 10 | COORDENAÇÃO | Qui 28/05/26 | Qui 28/05/26 |
| 34 | 1.2.4.1.3 | Atendimento de comentários | inactive | 2d | 2026-06-30 | 2026-07-01 | 33 | 2026-05-29 | 2026-06-01 | 2d | 2026-05-29 | 2026-06-01 | 16d | 0d |  |  | Sprint 10 | COORDENAÇÃO | Sex 29/05/26 | Seg 01/06/26 |
| 35 | 1.2.4.1.4 | Aprovação | inactive | 1d | 2026-07-02 | 2026-07-02 | 34 | 2026-06-02 | 2026-06-02 | 1d | 2026-06-02 | 2026-06-02 | 16d |  |  |  | Sprint 10 | COORDENAÇÃO | Ter 02/06/26 | Ter 02/06/26 |
| 36 | 1.2.4.2 | **RM-F0009-0305MB-G-00002** | inactive | 7d | 2026-07-15 | 2026-07-23 |  | 2026-06-11 | 2026-06-19 | 7d | 2026-06-11 | 2026-06-19 | 3d |  |  |  | Sprint 12 | COORDENAÇÃO | Qui 11/06/26 | Sex 19/06/26 |
| 37 | 1.2.4.2.1 | Emissão inicial | inactive | 3d | 2026-07-15 | 2026-07-17 | 32FS+10d | 2026-06-11 | 2026-06-15 | 3d | 2026-06-11 | 2026-06-15 | 3d | 0d | start no earlier than 2026-06-22 |  | Sprint 12 | COORDENAÇÃO | Qui 11/06/26 | Seg 15/06/26 |
| 38 | 1.2.4.2.2 | Análise Tecnored | inactive | 1d | 2026-07-20 | 2026-07-20 | 37 | 2026-06-16 | 2026-06-16 | 1d | 2026-06-16 | 2026-06-16 | 3d | 0d |  |  | Sprint 13 | COORDENAÇÃO | Ter 16/06/26 | Ter 16/06/26 |
| 39 | 1.2.4.2.3 | Atendimento de comentários | inactive | 2d | 2026-07-21 | 2026-07-22 | 38 | 2026-06-17 | 2026-06-18 | 2d | 2026-06-17 | 2026-06-18 | 3d | 0d |  |  | Sprint 13 | COORDENAÇÃO | Qua 17/06/26 | Qui 18/06/26 |
| 40 | 1.2.4.2.4 | Aprovação | inactive | 1d | 2026-07-23 | 2026-07-23 | 39 | 2026-06-19 | 2026-06-19 | 1d | 2026-06-19 | 2026-06-19 | 3d |  |  |  | Sprint 13 | COORDENAÇÃO | Sex 19/06/26 | Sex 19/06/26 |
| 41 | 1.2.4.3 | **RL-F0009-0305-MB-G-00001** | inactive | 4d | 2026-06-26 | 2026-07-01 |  | 2026-06-30 | 2026-07-08 | 7d | 2026-06-30 | 2026-07-08 | 17d |  |  |  | Sprint 9 | COORDENAÇÃO | Ter 30/06/26 | Qua 08/07/26 |
| 42 | 1.2.4.3.1 | Emissão inicial | inactive | 1d | 2026-06-26 | 2026-06-28 |  | 2026-06-30 | 2026-07-02 | 3d | 2026-06-30 | 2026-07-02 | 17d | 0d | finish no earlier than 2026-06-28 |  | Sprint 9 | COORDENAÇÃO | Ter 30/06/26 | Qui 02/07/26 |
| 43 | 1.2.4.3.2 | Análise Tecnored | inactive | 1d | 2026-06-29 | 2026-06-29 | 42 | 2026-07-03 | 2026-07-03 | 1d | 2026-07-03 | 2026-07-03 | 17d | 0d | start no earlier than 2026-06-26 |  | Sprint 10 | COORDENAÇÃO | Sex 03/07/26 | Sex 03/07/26 |
| 44 | 1.2.4.3.3 | Atendimento de comentários | inactive | 1d | 2026-06-30 | 2026-06-30 | 43 | 2026-07-06 | 2026-07-07 | 2d | 2026-07-06 | 2026-07-07 | 17d | 0d | start no earlier than 2026-06-29 |  | Sprint 10 | COORDENAÇÃO | Seg 06/07/26 | Ter 07/07/26 |
| 45 | 1.2.4.3.4 | Aprovação | inactive | 1d | 2026-07-01 | 2026-07-01 | 44 | 2026-07-08 | 2026-07-08 | 1d | 2026-07-08 | 2026-07-08 | 17d |  | start no earlier than 2026-06-30 |  | Sprint 10 | COORDENAÇÃO | Qua 08/07/26 | Qua 08/07/26 |
| 46 | 1.2.4.4 | **LP-F0009-0305-MB-G-00001** | inactive | 62d | 2026-06-25 | 2026-09-22 |  | 2026-04-27 | 2026-06-16 | 37d | 2026-04-27 | 2026-06-16 | -40d | 0d |  |  | Sprint 9 | COORDENAÇÃO | Seg 27/04/26 | Ter 16/06/26 |
| 47 | 1.2.4.4.1 | Emissão inicial | inactive | 3d | 2026-06-25 | 2026-06-29 | 11 | 2026-04-27 | 2026-04-29 | 3d | 2026-04-27 | 2026-04-29 | -40d | 0d | finish no earlier than 2026-06-29 |  | Sprint 9 | COORDENAÇÃO | Seg 27/04/26 | Qua 29/04/26 |
| 48 | 1.2.4.4.2 | Análise Tecnored | inactive | 1d | 2026-06-30 | 2026-06-30 | 47 | 2026-04-30 | 2026-04-30 | 1d | 2026-04-30 | 2026-04-30 | -40d | 0d |  |  | Sprint 10 | COORDENAÇÃO | Qui 30/04/26 | Qui 30/04/26 |
| 49 | 1.2.4.4.3 | Atendimento de comentários | inactive | 2d | 2026-09-18 | 2026-09-21 | 48FS+55d | 2026-06-12 | 2026-06-15 | 2d | 2026-06-12 | 2026-06-15 | -40d | 0d | start no earlier than 2026-06-12 |  | Fora do Período | COORDENAÇÃO | Sex 12/06/26 | Seg 15/06/26 |
| 50 | 1.2.4.4.4 | Aprovação | inactive | 1d | 2026-09-22 | 2026-09-22 | 49 | 2026-06-16 | 2026-06-16 | 1d | 2026-06-16 | 2026-06-16 | -40d | 0d | start no earlier than 2026-06-16 |  | Fora do Período | COORDENAÇÃO | Ter 16/06/26 | Ter 16/06/26 |

| ID | WBS | Task | Type | Duration | Start | Finish | Predecessors | Complete | Remaining | Baseline start | Baseline finish | Baseline duration | Baseline 1 start | Baseline 1 finish | Total slack | Free slack | Constraint | Baseline cost | Disciplina | Início_LB_R0 | Término_LB_R0 | Sprints |
| --- | --- | --- | --- | --- | --- | --- | --- | --- | --- | --- | --- | --- | --- | --- | --- | --- | --- | --- | --- | --- | --- | --- |
| 51 | 1.2.5 | **Processo** |  | 16d | 2026-06-18 A | 2026-07-13 |  | 80% | 3.2d | 2026-05-19 | 2026-06-25 | 28d | 2026-05-19 | 2026-06-25 | 11d |  |  |  | PROCESSOS | Ter 19/05/26 | Qui 25/06/26 | Sprint 8 |
| 52 | 1.2.5.1 | **CP-F0009-0305-MB-P-00001** | inactive | 22d | 2026-05-11 | 2026-06-11 |  |  |  |  |  |  |  |  | 31d |  |  | -0 |  |  |  | Sprint 3 |
| 53 | 1.2.5.1.1 | Emissão inicial | inactive | 5d | 2026-05-11 | 2026-05-15 | 21FS+4d |  |  |  |  |  |  |  | 44d | 13d |  | -0 |  |  |  | Sprint 3 |
| 54 | 1.2.5.1.2 | Análise Tecnored | inactive | 1d | 2026-06-08 | 2026-06-08 | 53, 4 |  |  |  |  |  |  |  | 31d | 0d |  | -0 |  |  |  | Sprint 7 |
| 55 | 1.2.5.1.3 | Atendimento de comentários | inactive | 2d | 2026-06-09 | 2026-06-10 | 54 |  |  |  |  |  |  |  | 31d | 0d |  | -0 |  |  |  | Sprint 7 |
| 56 | 1.2.5.1.4 | Aprovação | inactive | 1d | 2026-06-11 | 2026-06-11 | 55 |  |  |  |  |  |  |  | 31d |  |  | -0 |  |  |  | Sprint 7 |
| 57 | 1.2.5.2 | **MD-F0009-0305-MB-P-00001** | inactive | 7d | 2026-07-21 | 2026-07-29 |  |  |  | 2026-06-17 | 2026-06-25 | 7d | 2026-06-17 | 2026-06-25 | -1d | 0d |  |  |  |  |  | Sprint 13 |
| 58 | 1.2.5.2.1 | Emissão inicial | inactive | 3d | 2026-07-21 | 2026-07-23 | 63FS+20d |  |  | 2026-06-17 | 2026-06-19 | 3d | 2026-06-17 | 2026-06-19 | -1d | 0d |  |  |  |  |  | Sprint 13 |
| 59 | 1.2.5.2.2 | Análise Tecnored | inactive | 1d | 2026-07-24 | 2026-07-24 | 58 |  |  | 2026-06-22 | 2026-06-22 | 1d | 2026-06-22 | 2026-06-22 | -1d | 0d |  |  |  |  |  | Sprint 13 |
| 60 | 1.2.5.2.3 | Atendimento de comentários | inactive | 2d | 2026-07-27 | 2026-07-28 | 59 |  |  | 2026-06-23 | 2026-06-24 | 2d | 2026-06-23 | 2026-06-24 | -1d | 0d |  |  |  |  |  | Fora do Período |
| 61 | 1.2.5.2.4 | Aprovação | inactive | 1d | 2026-07-29 | 2026-07-29 | 60 |  |  | 2026-06-25 | 2026-06-25 | 1d | 2026-06-25 | 2026-06-25 | -1d | 0d |  |  |  |  |  | Fora do Período |
| 62 | 1.2.5.3 | **FG-F0009-0305-MB-P-00001** |  | 16d | 2026-06-18 A | 2026-07-13 |  | 80% | 3.2d | 2026-05-19 | 2026-05-25 | 5d | 2026-05-19 | 2026-05-25 | 11d |  |  |  | PROCESSOS | Ter 19/05/26 | Seg 25/05/26 | Sprint 8 |
| 63 | 1.2.5.3.1 | Emissão inicial |  | 1d | 2026-06-18 A | 2026-06-18 A | 53FS+8d, 4 | 100% |  | 2026-05-19 | 2026-05-19 | 1d | 2026-05-19 | 2026-05-19 |  |  | finish no earlier than 2026-06-18 |  | PROCESSOS | Ter 19/05/26 | Ter 19/05/26 | Sprint 8 |
| 64 | 1.2.5.3.2 | Análise Tecnored |  | 1d | 2026-06-19 A | 2026-06-19 A | 63 | 100% |  | 2026-05-20 | 2026-05-20 | 1d | 2026-05-20 | 2026-05-20 |  |  |  |  | PROCESSOS | Qua 20/05/26 | Qua 20/05/26 | Sprint 8 |
| 65 | 1.2.5.3.3 | Atendimento de comentários |  | 2d | 2026-06-30 A | 2026-07-01 A | 64 | 100% |  | 2026-05-21 | 2026-05-22 | 2d | 2026-05-21 | 2026-05-22 |  |  |  |  | PROCESSOS | Qui 21/05/26 | Sex 22/05/26 | Sprint 10 |
| 66 | 1.2.5.3.4 | Aprovação |  | 1d | 2026-07-13 | 2026-07-13 | 65FS+5d |  |  | 2026-05-25 | 2026-05-25 | 1d | 2026-05-25 | 2026-05-25 | 11d |  |  |  | PROCESSOS | Seg 25/05/26 | Seg 25/05/26 | Sprint 12 |
| 67 | 1.2.6 | **Mecânica** |  | 49d | 2026-05-15 A | 2026-07-28 |  | 51% | 23.86d | 2026-05-19 | 2026-07-08 | 37d | 2026-05-19 | 2026-07-08 | 0d |  |  |  | MECÂNICA | Ter 19/05/26 | Qua 08/07/26 | Sprint 3 |
| 68 | 1.2.6.1 | **CP-F0009-0305-MB-M-00001** | inactive | 12d | 2026-05-08 | 2026-05-25 |  |  |  |  |  |  |  |  | 42d |  |  | -0 |  |  |  | Sprint 2 |
| 69 | 1.2.6.1.1 | Emissão inicial | inactive | 5d | 2026-05-08 | 2026-05-14 | 21FS+3d |  |  |  |  |  |  |  | 43d | 3d |  | -0 |  |  |  | Sprint 2 |
| 70 | 1.2.6.1.2 | Análise Tecnored | inactive | 1d | 2026-05-20 | 2026-05-20 | 69, 5 |  |  |  |  |  |  |  | 42d | 0d |  | -0 |  |  |  | Sprint 4 |
| 71 | 1.2.6.1.3 | Atendimento de comentários | inactive | 2d | 2026-05-21 | 2026-05-22 | 70 |  |  |  |  |  |  |  | 42d | 0d |  | -0 |  |  |  | Sprint 4 |
| 72 | 1.2.6.1.4 | Aprovação | inactive | 1d | 2026-05-25 | 2026-05-25 | 71 |  |  |  |  |  |  |  | 42d |  |  | -0 |  |  |  | Sprint 5 |
| 73 | 1.2.6.2 | **MD-F0009-0305-MB-M-00001** | inactive | 6d | 2026-06-09 | 2026-06-16 |  |  |  | 2026-05-26 | 2026-06-02 | 6d | 2026-05-26 | 2026-06-02 | 28d |  |  |  |  |  |  | Sprint 7 |
| 74 | 1.2.6.2.1 | Emissão inicial | inactive | 2d | 2026-06-09 | 2026-06-10 | 69, 81, 5 |  |  | 2026-05-26 | 2026-05-27 | 2d | 2026-05-26 | 2026-05-27 | 28d | 0d |  |  |  |  |  | Sprint 7 |
| 75 | 1.2.6.2.2 | Análise Tecnored | inactive | 1d | 2026-06-11 | 2026-06-11 | 74 |  |  | 2026-05-28 | 2026-05-28 | 1d | 2026-05-28 | 2026-05-28 | 28d | 0d |  |  |  |  |  | Sprint 7 |
| 76 | 1.2.6.2.3 | Atendimento de comentários | inactive | 2d | 2026-06-12 | 2026-06-15 | 75 |  |  | 2026-05-29 | 2026-06-01 | 2d | 2026-05-29 | 2026-06-01 | 28d | 0d |  |  |  |  |  | Sprint 7 |
| 77 | 1.2.6.2.4 | Aprovação | inactive | 1d | 2026-06-16 | 2026-06-16 | 76 |  |  | 2026-06-02 | 2026-06-02 | 1d | 2026-06-02 | 2026-06-02 | 28d |  |  |  |  |  |  | Sprint 8 |

| ID | WBS | Task | Duration | Start | Finish | Predecessors | Complete | Remaining | Baseline start | Baseline finish | Baseline duration | Baseline 1 start | Baseline 1 finish | Total slack | Free slack | Constraint | Disciplina | Início_LB_R0 | Término_LB_R0 | Sprints |
| --- | --- | --- | --- | --- | --- | --- | --- | --- | --- | --- | --- | --- | --- | --- | --- | --- | --- | --- | --- | --- |
| 78 | 1.2.6.3 | **LE-F0009-0305-MB-M-00001** | 14d | 2026-05-29 A | 2026-06-19 A |  | 100% |  | 2026-05-19 | 2026-05-26 | 6d | 2026-05-19 | 2026-05-26 |  |  |  | MECÂNICA | Ter 19/05/26 | Ter 26/05/26 | Sprint 5 |
| 79 | 1.2.6.3.1 | Emissão inicial | 2d | 2026-05-29 A | 2026-06-01 A | 69, 5FS+5d | 100% |  | 2026-05-19 | 2026-05-20 | 2d | 2026-05-19 | 2026-05-20 |  |  |  | MECÂNICA | Ter 19/05/26 | Qua 20/05/26 | Sprint 5 |
| 80 | 1.2.6.3.2 | Análise Tecnored | 1d | 2026-06-02 A | 2026-06-02 A | 79 | 100% |  | 2026-05-21 | 2026-05-21 | 1d | 2026-05-21 | 2026-05-21 |  |  |  | MECÂNICA | Qui 21/05/26 | Qui 21/05/26 | Sprint 6 |
| 81 | 1.2.6.3.3 | Atendimento de comentários | 2d | 2026-06-03 A | 2026-06-08 A | 80 | 100% |  | 2026-05-22 | 2026-05-25 | 2d | 2026-05-22 | 2026-05-25 |  |  |  | MECÂNICA | Sex 22/05/26 | Seg 25/05/26 | Sprint 6 |
| 82 | 1.2.6.3.4 | Aprovação | 1d | 2026-06-19 A | 2026-06-19 A | 81 | 100% |  | 2026-05-26 | 2026-05-26 | 1d | 2026-05-26 | 2026-05-26 |  |  |  | MECÂNICA | Ter 26/05/26 | Ter 26/05/26 | Sprint 8 |
| 83 | 1.2.6.4 | **PQ-F0009-0305-MB-M-00001** | 8d | 2026-07-03 A | 2026-07-16 |  | 50% | 4d | 2026-05-28 | 2026-06-05 | 7d | 2026-05-28 | 2026-06-05 | 8d |  |  | MECÂNICA | Qui 28/05/26 | Sex 05/06/26 | Sprint 10 |
| 84 | 1.2.6.4.1 | Emissão inicial | 4d | 2026-07-03 A | 2026-07-08 A | 74 | 100% |  | 2026-05-28 | 2026-06-01 | 3d | 2026-05-28 | 2026-06-01 |  |  | finish no earlier than 2026-07-08 | MECÂNICA | Qui 28/05/26 | Seg 01/06/26 | Sprint 10 |
| 85 | 1.2.6.4.2 | Análise Tecnored | 1d | 2026-07-13 | 2026-07-13 | 84 |  |  | 2026-06-02 | 2026-06-02 | 1d | 2026-06-02 | 2026-06-02 | 8d | 0d |  | MECÂNICA | Ter 02/06/26 | Ter 02/06/26 | Sprint 12 |
| 86 | 1.2.6.4.3 | Atendimento de comentários | 2d | 2026-07-14 | 2026-07-15 | 85 |  |  | 2026-06-03 | 2026-06-04 | 2d | 2026-06-03 | 2026-06-04 | 8d | 0d |  | MECÂNICA | Qua 03/06/26 | Qui 04/06/26 | Sprint 12 |
| 87 | 1.2.6.4.4 | Aprovação | 1d | 2026-07-16 | 2026-07-16 | 86 |  |  | 2026-06-05 | 2026-06-05 | 1d | 2026-06-05 | 2026-06-05 | 8d |  |  | MECÂNICA | Sex 05/06/26 | Sex 05/06/26 | Sprint 12 |
| 88 | 1.2.6.5 | **AG-F0009-0305-MB-L-00001** | 6d | 2026-07-20 | 2026-07-27 |  |  |  | 2026-06-22 | 2026-07-08 | 13d | 2026-06-22 | 2026-07-08 | 1d |  |  | MECÂNICA | Seg 22/06/26 | Qua 08/07/26 | Sprint 13 |
| 89 | 1.2.6.5.1 | Emissão inicial | 3d | 2026-07-20 | 2026-07-22 | 331 |  |  | 2026-06-22 | 2026-07-02 | 9d | 2026-06-22 | 2026-07-02 | 1d | 0d | finish no earlier than 2026-07-22 | MECÂNICA | Seg 22/06/26 | Qui 02/07/26 | Sprint 13 |
| 90 | 1.2.6.5.2 | Análise Tecnored | 1d | 2026-07-23 | 2026-07-23 | 89 |  |  | 2026-07-03 | 2026-07-03 | 1d | 2026-07-03 | 2026-07-03 | 1d | 0d |  | MECÂNICA | Sex 03/07/26 | Sex 03/07/26 | Sprint 13 |
| 91 | 1.2.6.5.3 | Atendimento de comentários | 1d | 2026-07-24 | 2026-07-24 | 90 |  |  | 2026-07-06 | 2026-07-07 | 2d | 2026-07-06 | 2026-07-07 | 1d | 0d |  | MECÂNICA | Seg 06/07/26 | Ter 07/07/26 | Sprint 13 |
| 92 | 1.2.6.5.4 | Aprovação | 1d | 2026-07-27 | 2026-07-27 | 91 |  |  | 2026-07-08 | 2026-07-08 | 1d | 2026-07-08 | 2026-07-08 | 1d |  |  | MECÂNICA | Qua 08/07/26 | Qua 08/07/26 | Fora do Período |
| 93 | 1.2.6.6 | **AG-F0009-0305-MB-L-00002** | 6d | 2026-07-20 | 2026-07-27 |  |  |  | 2026-06-22 | 2026-07-08 | 13d | 2026-06-22 | 2026-07-08 | 1d |  |  | MECÂNICA | Seg 22/06/26 | Qua 08/07/26 | Sprint 13 |
| 94 | 1.2.6.6.1 | Emissão inicial | 3d | 2026-07-20 | 2026-07-22 | 331 |  |  | 2026-06-22 | 2026-07-02 | 9d | 2026-06-22 | 2026-07-02 | 1d | 0d | finish no earlier than 2026-07-22 | MECÂNICA | Seg 22/06/26 | Qui 02/07/26 | Sprint 13 |
| 95 | 1.2.6.6.2 | Análise Tecnored | 1d | 2026-07-23 | 2026-07-23 | 94 |  |  | 2026-07-03 | 2026-07-03 | 1d | 2026-07-03 | 2026-07-03 | 1d | 0d |  | MECÂNICA | Sex 03/07/26 | Sex 03/07/26 | Sprint 13 |
| 96 | 1.2.6.6.3 | Atendimento de comentários | 1d | 2026-07-24 | 2026-07-24 | 95 |  |  | 2026-07-06 | 2026-07-07 | 2d | 2026-07-06 | 2026-07-07 | 1d | 0d |  | MECÂNICA | Seg 06/07/26 | Ter 07/07/26 | Sprint 13 |
| 97 | 1.2.6.6.4 | Aprovação | 1d | 2026-07-27 | 2026-07-27 | 96 |  |  | 2026-07-08 | 2026-07-08 | 1d | 2026-07-08 | 2026-07-08 | 1d |  |  | MECÂNICA | Qua 08/07/26 | Qua 08/07/26 | Fora do Período |
| 98 | 1.2.6.7 | **AG-F0009-0305-MB-L-00003** | 6d | 2026-07-20 | 2026-07-27 |  |  |  | 2026-06-22 | 2026-07-08 | 13d | 2026-06-22 | 2026-07-08 | 1d |  |  | MECÂNICA | Seg 22/06/26 | Qua 08/07/26 | Sprint 13 |
| 99 | 1.2.6.7.1 | Emissão inicial | 3d | 2026-07-20 | 2026-07-22 | 331 |  |  | 2026-06-22 | 2026-07-02 | 9d | 2026-06-22 | 2026-07-02 | 1d | 0d | finish no earlier than 2026-07-22 | MECÂNICA | Seg 22/06/26 | Qui 02/07/26 | Sprint 13 |
| 100 | 1.2.6.7.2 | Análise Tecnored | 1d | 2026-07-23 | 2026-07-23 | 99 |  |  | 2026-07-03 | 2026-07-03 | 1d | 2026-07-03 | 2026-07-03 | 1d | 0d |  | MECÂNICA | Sex 03/07/26 | Sex 03/07/26 | Sprint 13 |
| 101 | 1.2.6.7.3 | Atendimento de comentários | 1d | 2026-07-24 | 2026-07-24 | 100 |  |  | 2026-07-06 | 2026-07-07 | 2d | 2026-07-06 | 2026-07-07 | 1d | 0d |  | MECÂNICA | Seg 06/07/26 | Ter 07/07/26 | Sprint 13 |
| 102 | 1.2.6.7.4 | Aprovação | 1d | 2026-07-27 | 2026-07-27 | 101 |  |  | 2026-07-08 | 2026-07-08 | 1d | 2026-07-08 | 2026-07-08 | 1d |  |  | MECÂNICA | Qua 08/07/26 | Qua 08/07/26 | Fora do Período |

| ID | WBS | Task | Duration | Start | Finish | Predecessors | Baseline start | Baseline finish | Baseline duration | Baseline 1 start | Baseline 1 finish | Total slack | Free slack | Constraint | Disciplina | Início_LB_R0 | Término_LB_R0 | Sprints |
| --- | --- | --- | --- | --- | --- | --- | --- | --- | --- | --- | --- | --- | --- | --- | --- | --- | --- | --- |
| 103 | 1.2.6.8 | **AG-F0009-0305-MB-L-00004** | 6d | 2026-07-20 | 2026-07-27 |  | 2026-06-22 | 2026-07-08 | 13d | 2026-06-22 | 2026-07-08 | 1d |  |  | MECÂNICA | Seg 22/06/26 | Qua 08/07/26 | Sprint 13 |
| 104 | 1.2.6.8.1 | Emissão inicial | 3d | 2026-07-20 | 2026-07-22 | 331 | 2026-06-22 | 2026-07-02 | 9d | 2026-06-22 | 2026-07-02 | 1d | 0d | finish no earlier than 2026-07-22 | MECÂNICA | Seg 22/06/26 | Qui 02/07/26 | Sprint 13 |
| 105 | 1.2.6.8.2 | Análise Tecnored | 1d | 2026-07-23 | 2026-07-23 | 104 | 2026-07-03 | 2026-07-03 | 1d | 2026-07-03 | 2026-07-03 | 1d | 0d |  | MECÂNICA | Sex 03/07/26 | Sex 03/07/26 | Sprint 13 |
| 106 | 1.2.6.8.3 | Atendimento de comentários | 1d | 2026-07-24 | 2026-07-24 | 105 | 2026-07-06 | 2026-07-07 | 2d | 2026-07-06 | 2026-07-07 | 1d | 0d |  | MECÂNICA | Seg 06/07/26 | Ter 07/07/26 | Sprint 13 |
| 107 | 1.2.6.8.4 | Aprovação | 1d | 2026-07-27 | 2026-07-27 | 106 | 2026-07-08 | 2026-07-08 | 1d | 2026-07-08 | 2026-07-08 | 1d |  |  | MECÂNICA | Qua 08/07/26 | Qua 08/07/26 | Fora do Período |
| 108 | 1.2.6.9 | **AG-F0009-0305-MB-L-00005** | 6d | 2026-07-20 | 2026-07-27 |  | 2026-06-22 | 2026-07-08 | 13d | 2026-06-22 | 2026-07-08 | 1d |  |  | MECÂNICA | Seg 22/06/26 | Qua 08/07/26 | Sprint 13 |
| 109 | 1.2.6.9.1 | Emissão inicial | 3d | 2026-07-20 | 2026-07-22 | 331 | 2026-06-22 | 2026-07-02 | 9d | 2026-06-22 | 2026-07-02 | 1d | 0d | finish no earlier than 2026-07-22 | MECÂNICA | Seg 22/06/26 | Qui 02/07/26 | Sprint 13 |
| 110 | 1.2.6.9.2 | Análise Tecnored | 1d | 2026-07-23 | 2026-07-23 | 109 | 2026-07-03 | 2026-07-03 | 1d | 2026-07-03 | 2026-07-03 | 1d | 0d |  | MECÂNICA | Sex 03/07/26 | Sex 03/07/26 | Sprint 13 |
| 111 | 1.2.6.9.3 | Atendimento de comentários | 1d | 2026-07-24 | 2026-07-24 | 110 | 2026-07-06 | 2026-07-07 | 2d | 2026-07-06 | 2026-07-07 | 1d | 0d |  | MECÂNICA | Seg 06/07/26 | Ter 07/07/26 | Sprint 13 |
| 112 | 1.2.6.9.4 | Aprovação | 1d | 2026-07-27 | 2026-07-27 | 111 | 2026-07-08 | 2026-07-08 | 1d | 2026-07-08 | 2026-07-08 | 1d |  |  | MECÂNICA | Qua 08/07/26 | Qua 08/07/26 | Fora do Período |
| 113 | 1.2.6.10 | **AG-F0009-0305-MB-L-00006** | 6d | 2026-07-20 | 2026-07-27 |  | 2026-06-22 | 2026-07-08 | 13d | 2026-06-22 | 2026-07-08 | 1d |  |  | MECÂNICA | Seg 22/06/26 | Qua 08/07/26 | Sprint 13 |
| 114 | 1.2.6.10.1 | Emissão inicial | 3d | 2026-07-20 | 2026-07-22 | 331 | 2026-06-22 | 2026-07-02 | 9d | 2026-06-22 | 2026-07-02 | 1d | 0d | finish no earlier than 2026-07-22 | MECÂNICA | Seg 22/06/26 | Qui 02/07/26 | Sprint 13 |
| 115 | 1.2.6.10.2 | Análise Tecnored | 1d | 2026-07-23 | 2026-07-23 | 114 | 2026-07-03 | 2026-07-03 | 1d | 2026-07-03 | 2026-07-03 | 1d | 0d |  | MECÂNICA | Sex 03/07/26 | Sex 03/07/26 | Sprint 13 |
| 116 | 1.2.6.10.3 | Atendimento de comentários | 1d | 2026-07-24 | 2026-07-24 | 115 | 2026-07-06 | 2026-07-07 | 2d | 2026-07-06 | 2026-07-07 | 1d | 0d |  | MECÂNICA | Seg 06/07/26 | Ter 07/07/26 | Sprint 13 |
| 117 | 1.2.6.10.4 | Aprovação | 1d | 2026-07-27 | 2026-07-27 | 116 | 2026-07-08 | 2026-07-08 | 1d | 2026-07-08 | 2026-07-08 | 1d |  |  | MECÂNICA | Qua 08/07/26 | Qua 08/07/26 | Fora do Período |
| 118 | 1.2.6.11 | **AG-F0009-0305-MB-L-00007** | 6d | 2026-07-20 | 2026-07-27 |  | 2026-06-22 | 2026-07-08 | 13d | 2026-06-22 | 2026-07-08 | 1d |  |  | MECÂNICA | Seg 22/06/26 | Qua 08/07/26 | Sprint 13 |
| 119 | 1.2.6.11.1 | Emissão inicial | 3d | 2026-07-20 | 2026-07-22 | 331 | 2026-06-22 | 2026-07-02 | 9d | 2026-06-22 | 2026-07-02 | 1d | 0d | finish no earlier than 2026-07-22 | MECÂNICA | Seg 22/06/26 | Qui 02/07/26 | Sprint 13 |
| 120 | 1.2.6.11.2 | Análise Tecnored | 1d | 2026-07-23 | 2026-07-23 | 119 | 2026-07-03 | 2026-07-03 | 1d | 2026-07-03 | 2026-07-03 | 1d | 0d |  | MECÂNICA | Sex 03/07/26 | Sex 03/07/26 | Sprint 13 |
| 121 | 1.2.6.11.3 | Atendimento de comentários | 1d | 2026-07-24 | 2026-07-24 | 120 | 2026-07-06 | 2026-07-07 | 2d | 2026-07-06 | 2026-07-07 | 1d | 0d |  | MECÂNICA | Seg 06/07/26 | Ter 07/07/26 | Sprint 13 |
| 122 | 1.2.6.11.4 | Aprovação | 1d | 2026-07-27 | 2026-07-27 | 121 | 2026-07-08 | 2026-07-08 | 1d | 2026-07-08 | 2026-07-08 | 1d |  |  | MECÂNICA | Qua 08/07/26 | Qua 08/07/26 | Fora do Período |
| 123 | 1.2.6.12 | **AG-F0009-0305-MB-L-00008** | 6d | 2026-07-20 | 2026-07-27 |  | 2026-06-22 | 2026-07-08 | 13d | 2026-06-22 | 2026-07-08 | 1d |  |  | MECÂNICA | Seg 22/06/26 | Qua 08/07/26 | Sprint 13 |
| 124 | 1.2.6.12.1 | Emissão inicial | 3d | 2026-07-20 | 2026-07-22 | 331 | 2026-06-22 | 2026-07-02 | 9d | 2026-06-22 | 2026-07-02 | 1d | 0d | finish no earlier than 2026-07-22 | MECÂNICA | Seg 22/06/26 | Qui 02/07/26 | Sprint 13 |
| 125 | 1.2.6.12.2 | Análise Tecnored | 1d | 2026-07-23 | 2026-07-23 | 124 | 2026-07-03 | 2026-07-03 | 1d | 2026-07-03 | 2026-07-03 | 1d | 0d |  | MECÂNICA | Sex 03/07/26 | Sex 03/07/26 | Sprint 13 |
| 126 | 1.2.6.12.3 | Atendimento de comentários | 1d | 2026-07-24 | 2026-07-24 | 125 | 2026-07-06 | 2026-07-07 | 2d | 2026-07-06 | 2026-07-07 | 1d | 0d |  | MECÂNICA | Seg 06/07/26 | Ter 07/07/26 | Sprint 13 |
| 127 | 1.2.6.12.4 | Aprovação | 1d | 2026-07-27 | 2026-07-27 | 126 | 2026-07-08 | 2026-07-08 | 1d | 2026-07-08 | 2026-07-08 | 1d |  |  | MECÂNICA | Qua 08/07/26 | Qua 08/07/26 | Fora do Período |

| ID | WBS | Task | Duration | Start | Finish | Predecessors | Complete | Remaining | Baseline start | Baseline finish | Baseline duration | Baseline 1 start | Baseline 1 finish | Total slack | Free slack | Constraint | Disciplina | Início_LB_R0 | Término_LB_R0 | Sprints |
| --- | --- | --- | --- | --- | --- | --- | --- | --- | --- | --- | --- | --- | --- | --- | --- | --- | --- | --- | --- | --- |
| 128 | 1.2.6.13 | **AG-F0009-0305-MB-L-00009** | 6d | 2026-07-20 | 2026-07-27 |  |  |  | 2026-06-22 | 2026-07-08 | 13d | 2026-06-22 | 2026-07-08 | 1d |  |  | MECÂNICA | Seg 22/06/26 | Qua 08/07/26 | Sprint 13 |
| 129 | 1.2.6.13.1 | Emissão inicial | 3d | 2026-07-20 | 2026-07-22 | 331 |  |  | 2026-06-22 | 2026-07-02 | 9d | 2026-06-22 | 2026-07-02 | 1d | 0d | finish no earlier than 2026-07-22 | MECÂNICA | Seg 22/06/26 | Qui 02/07/26 | Sprint 13 |
| 130 | 1.2.6.13.2 | Análise Tecnored | 1d | 2026-07-23 | 2026-07-23 | 129 |  |  | 2026-07-03 | 2026-07-03 | 1d | 2026-07-03 | 2026-07-03 | 1d | 0d |  | MECÂNICA | Sex 03/07/26 | Sex 03/07/26 | Sprint 13 |
| 131 | 1.2.6.13.3 | Atendimento de comentários | 1d | 2026-07-24 | 2026-07-24 | 130 |  |  | 2026-07-06 | 2026-07-07 | 2d | 2026-07-06 | 2026-07-07 | 1d | 0d |  | MECÂNICA | Seg 06/07/26 | Ter 07/07/26 | Sprint 13 |
| 132 | 1.2.6.13.4 | Aprovação | 1d | 2026-07-27 | 2026-07-27 | 131 |  |  | 2026-07-08 | 2026-07-08 | 1d | 2026-07-08 | 2026-07-08 | 1d |  |  | MECÂNICA | Qua 08/07/26 | Qua 08/07/26 | Fora do Período |
| 133 | 1.2.6.14 | **PL-F0009-0305-MB-M-00001** | 12d | 2026-06-22 A | 2026-07-07 |  | 67% | 4d | 2026-05-29 | 2026-06-15 | 12d | 2026-05-29 | 2026-06-15 | 13d |  |  | MECÂNICA | Sex 29/05/26 | Seg 15/06/26 | Sprint 9 |
| 134 | 1.2.6.14.1 | Emissão inicial | 8d | 2026-06-22 A | 2026-07-01 A | 185 | 100% |  | 2026-05-29 | 2026-06-09 | 8d | 2026-05-29 | 2026-06-09 |  |  | start no earlier than 2026-06-15 | MECÂNICA | Sex 29/05/26 | Ter 09/06/26 | Sprint 9 |
| 135 | 1.2.6.14.2 | Análise Tecnored | 1d | 2026-07-02 | 2026-07-02 | 134 |  |  | 2026-06-10 | 2026-06-10 | 1d | 2026-06-10 | 2026-06-10 | 13d | 0d |  | MECÂNICA | Qua 10/06/26 | Qua 10/06/26 | Sprint 10 |
| 136 | 1.2.6.14.3 | Atendimento de comentários | 2d | 2026-07-03 | 2026-07-06 | 135 |  |  | 2026-06-11 | 2026-06-12 | 2d | 2026-06-11 | 2026-06-12 | 13d | 0d |  | MECÂNICA | Qui 11/06/26 | Sex 12/06/26 | Sprint 10 |
| 137 | 1.2.6.14.4 | Aprovação | 1d | 2026-07-07 | 2026-07-07 | 136 |  |  | 2026-06-15 | 2026-06-15 | 1d | 2026-06-15 | 2026-06-15 | 13d |  |  | MECÂNICA | Seg 15/06/26 | Seg 15/06/26 | Sprint 11 |
| 138 | 1.2.6.15 | **PL-F0009-0305-MB-M-00002** | 12d | 2026-06-22 A | 2026-07-07 |  | 67% | 4d | 2026-05-29 | 2026-06-15 | 12d | 2026-05-29 | 2026-06-15 | 13d |  |  | MECÂNICA | Sex 29/05/26 | Seg 15/06/26 | Sprint 9 |
| 139 | 1.2.6.15.1 | Emissão inicial | 8d | 2026-06-22 A | 2026-07-01 A | 185 | 100% |  | 2026-05-29 | 2026-06-09 | 8d | 2026-05-29 | 2026-06-09 |  |  | start no earlier than 2026-06-15 | MECÂNICA | Sex 29/05/26 | Ter 09/06/26 | Sprint 9 |
| 140 | 1.2.6.15.2 | Análise Tecnored | 1d | 2026-07-02 | 2026-07-02 | 139 |  |  | 2026-06-10 | 2026-06-10 | 1d | 2026-06-10 | 2026-06-10 | 13d | 0d |  | MECÂNICA | Qua 10/06/26 | Qua 10/06/26 | Sprint 10 |
| 141 | 1.2.6.15.3 | Atendimento de comentários | 2d | 2026-07-03 | 2026-07-06 | 140 |  |  | 2026-06-11 | 2026-06-12 | 2d | 2026-06-11 | 2026-06-12 | 13d | 0d |  | MECÂNICA | Qui 11/06/26 | Sex 12/06/26 | Sprint 10 |
| 142 | 1.2.6.15.4 | Aprovação | 1d | 2026-07-07 | 2026-07-07 | 141 |  |  | 2026-06-15 | 2026-06-15 | 1d | 2026-06-15 | 2026-06-15 | 13d |  |  | MECÂNICA | Seg 15/06/26 | Seg 15/06/26 | Sprint 11 |
| 143 | 1.2.6.16 | **PL-F0009-0305-MB-M-00003** | 12d | 2026-06-22 A | 2026-07-07 |  | 67% | 4d | 2026-05-29 | 2026-06-15 | 12d | 2026-05-29 | 2026-06-15 | 13d |  |  | MECÂNICA | Sex 29/05/26 | Seg 15/06/26 | Sprint 9 |
| 144 | 1.2.6.16.1 | Emissão inicial | 8d | 2026-06-22 A | 2026-07-01 A | 185 | 100% |  | 2026-05-29 | 2026-06-09 | 8d | 2026-05-29 | 2026-06-09 |  |  | start no earlier than 2026-06-15 | MECÂNICA | Sex 29/05/26 | Ter 09/06/26 | Sprint 9 |
| 145 | 1.2.6.16.2 | Análise Tecnored | 1d | 2026-07-02 | 2026-07-02 | 144 |  |  | 2026-06-10 | 2026-06-10 | 1d | 2026-06-10 | 2026-06-10 | 13d | 0d |  | MECÂNICA | Qua 10/06/26 | Qua 10/06/26 | Sprint 10 |
| 146 | 1.2.6.16.3 | Atendimento de comentários | 2d | 2026-07-03 | 2026-07-06 | 145 |  |  | 2026-06-11 | 2026-06-12 | 2d | 2026-06-11 | 2026-06-12 | 13d | 0d |  | MECÂNICA | Qui 11/06/26 | Sex 12/06/26 | Sprint 10 |
| 147 | 1.2.6.16.4 | Aprovação | 1d | 2026-07-07 | 2026-07-07 | 146 |  |  | 2026-06-15 | 2026-06-15 | 1d | 2026-06-15 | 2026-06-15 | 13d |  |  | MECÂNICA | Seg 15/06/26 | Seg 15/06/26 | Sprint 11 |
| 148 | 1.2.6.17 | **PL-F0009-0305-MB-M-00004** | 12d | 2026-06-22 A | 2026-07-07 |  | 67% | 4d | 2026-05-29 | 2026-06-15 | 12d | 2026-05-29 | 2026-06-15 | 13d |  |  | MECÂNICA | Sex 29/05/26 | Seg 15/06/26 | Sprint 9 |
| 149 | 1.2.6.17.1 | Emissão inicial | 8d | 2026-06-22 A | 2026-07-01 A | 185 | 100% |  | 2026-05-29 | 2026-06-09 | 8d | 2026-05-29 | 2026-06-09 |  |  | start no earlier than 2026-06-15 | MECÂNICA | Sex 29/05/26 | Ter 09/06/26 | Sprint 9 |
| 150 | 1.2.6.17.2 | Análise Tecnored | 1d | 2026-07-02 | 2026-07-02 | 149 |  |  | 2026-06-10 | 2026-06-10 | 1d | 2026-06-10 | 2026-06-10 | 13d | 0d |  | MECÂNICA | Qua 10/06/26 | Qua 10/06/26 | Sprint 10 |
| 151 | 1.2.6.17.3 | Atendimento de comentários | 2d | 2026-07-03 | 2026-07-06 | 150 |  |  | 2026-06-11 | 2026-06-12 | 2d | 2026-06-11 | 2026-06-12 | 13d | 0d |  | MECÂNICA | Qui 11/06/26 | Sex 12/06/26 | Sprint 10 |
| 152 | 1.2.6.17.4 | Aprovação | 1d | 2026-07-07 | 2026-07-07 | 151 |  |  | 2026-06-15 | 2026-06-15 | 1d | 2026-06-15 | 2026-06-15 | 13d |  |  | MECÂNICA | Seg 15/06/26 | Seg 15/06/26 | Sprint 11 |

| ID | WBS | Task | Duration | Start | Finish | Predecessors | Complete | Remaining | Baseline start | Baseline finish | Baseline duration | Baseline 1 start | Baseline 1 finish | Total slack | Free slack | Constraint | Disciplina | Início_LB_R0 | Término_LB_R0 | Sprints |
| --- | --- | --- | --- | --- | --- | --- | --- | --- | --- | --- | --- | --- | --- | --- | --- | --- | --- | --- | --- | --- |
| 153 | 1.2.6.18 | **PL-F0009-0305-MB-M-00005** | 12d | 2026-06-22 A | 2026-07-07 |  | 67% | 4d | 2026-05-29 | 2026-06-15 | 12d | 2026-05-29 | 2026-06-15 | 13d |  |  | MECÂNICA | Sex 29/05/26 | Seg 15/06/26 | Sprint 9 |
| 154 | 1.2.6.18.1 | Emissão inicial | 8d | 2026-06-22 A | 2026-07-01 A | 185 | 100% |  | 2026-06-22 | 2026-07-01 | 8d | 2026-05-29 | 2026-06-09 |  |  | start no earlier than 2026-06-15 | MECÂNICA | Seg 22/06/26 | Qua 01/07/26 | Sprint 9 |
| 155 | 1.2.6.18.2 | Análise Tecnored | 1d | 2026-07-02 | 2026-07-02 | 154 |  |  | 2026-07-02 | 2026-07-02 | 1d | 2026-06-10 | 2026-06-10 | 13d | 0d |  | MECÂNICA | Qui 02/07/26 | Qui 02/07/26 | Sprint 10 |
| 156 | 1.2.6.18.3 | Atendimento de comentários | 2d | 2026-07-03 | 2026-07-06 | 155 |  |  | 2026-07-03 | 2026-07-06 | 2d | 2026-06-11 | 2026-06-12 | 13d | 0d |  | MECÂNICA | Sex 03/07/26 | Seg 06/07/26 | Sprint 10 |
| 157 | 1.2.6.18.4 | Aprovação | 1d | 2026-07-07 | 2026-07-07 | 156 |  |  | 2026-07-07 | 2026-07-07 | 1d | 2026-06-15 | 2026-06-15 | 13d |  |  | MECÂNICA | Ter 07/07/26 | Ter 07/07/26 | Sprint 11 |
| 158 | 1.2.6.19 | **PL-F0009-0305-MB-M-00006** | 12d | 2026-06-22 A | 2026-07-07 |  | 67% | 4d | 2026-05-29 | 2026-06-15 | 12d | 2026-05-29 | 2026-06-15 | 13d |  |  | MECÂNICA | Sex 29/05/26 | Seg 15/06/26 | Sprint 9 |
| 159 | 1.2.6.19.1 | Emissão inicial | 8d | 2026-06-22 A | 2026-07-01 A | 185 | 100% |  | 2026-06-22 | 2026-07-01 | 8d | 2026-05-29 | 2026-06-09 |  |  | start no earlier than 2026-06-15 | MECÂNICA | Seg 22/06/26 | Qua 01/07/26 | Sprint 9 |
| 160 | 1.2.6.19.2 | Análise Tecnored | 1d | 2026-07-02 | 2026-07-02 | 159 |  |  | 2026-07-02 | 2026-07-02 | 1d | 2026-06-10 | 2026-06-10 | 13d | 0d |  | MECÂNICA | Qui 02/07/26 | Qui 02/07/26 | Sprint 10 |
| 161 | 1.2.6.19.3 | Atendimento de comentários | 2d | 2026-07-03 | 2026-07-06 | 160 |  |  | 2026-07-03 | 2026-07-06 | 2d | 2026-06-11 | 2026-06-12 | 13d | 0d |  | MECÂNICA | Sex 03/07/26 | Seg 06/07/26 | Sprint 10 |
| 162 | 1.2.6.19.4 | Aprovação | 1d | 2026-07-07 | 2026-07-07 | 161 |  |  | 2026-07-07 | 2026-07-07 | 1d | 2026-06-15 | 2026-06-15 | 13d |  |  | MECÂNICA | Ter 07/07/26 | Ter 07/07/26 | Sprint 11 |
| 163 | 1.2.6.20 | **MC-F0009-0305-MB-M-00001** | 26d | 2026-06-01 A | 2026-07-08 |  | 86% | 3.71d | 2026-05-29 | 2026-06-17 | 14d | 2026-05-29 | 2026-06-17 | 12d |  |  | MECÂNICA | Sex 29/05/26 | Qua 17/06/26 | Sprint 6 |
| 164 | 1.2.6.20.1 | Emissão inicial | 10d | 2026-06-01 A | 2026-06-16 A | 185 | 100% |  | 2026-05-29 | 2026-06-11 | 10d | 2026-05-29 | 2026-06-11 |  |  |  | MECÂNICA | Sex 29/05/26 | Qui 11/06/26 | Sprint 6 |
| 165 | 1.2.6.20.2 | Análise Tecnored | 1d | 2026-06-19 A | 2026-06-19 A | 164 | 100% |  | 2026-06-12 | 2026-06-12 | 1d | 2026-06-12 | 2026-06-12 |  |  |  | MECÂNICA | Sex 12/06/26 | Sex 12/06/26 | Sprint 8 |
| 166 | 1.2.6.20.3 | Atendimento de comentários | 2d | 2026-07-06 A | 2026-07-07 | 165 | 50% | 1d | 2026-06-15 | 2026-06-16 | 2d | 2026-06-15 | 2026-06-16 | 12d | 0d |  | MECÂNICA | Seg 15/06/26 | Ter 16/06/26 | Sprint 11 |
| 167 | 1.2.6.20.4 | Aprovação | 1d | 2026-07-08 | 2026-07-08 | 166 |  |  | 2026-06-17 | 2026-06-17 | 1d | 2026-06-17 | 2026-06-17 | 12d |  |  | MECÂNICA | Qua 17/06/26 | Qua 17/06/26 | Sprint 11 |
| 168 | 1.2.6.21 | **MC-F0009-0305-MB-M-00002** | 14d | 2026-06-03 A | 2026-06-24 |  | 75% | 3.5d | 2026-05-29 | 2026-06-17 | 14d | 2026-05-29 | 2026-06-17 | 22d |  |  | MECÂNICA | Sex 29/05/26 | Qua 17/06/26 | Sprint 6 |
| 169 | 1.2.6.21.1 | Emissão inicial | 10d | 2026-06-03 A | 2026-06-18 A | 185 | 100% |  | 2026-06-01 | 2026-06-16 | 10d | 2026-05-29 | 2026-06-11 |  |  |  | MECÂNICA | Seg 01/06/26 | Ter 16/06/26 | Sprint 6 |
| 170 | 1.2.6.21.2 | Análise Tecnored | 1d | 2026-06-17 A | 2026-06-19 | 169 | 50% | 0.5d | 2026-06-17 | 2026-06-17 | 1d | 2026-06-12 | 2026-06-12 | 22.5d | 0.5d |  | MECÂNICA | Qua 17/06/26 | Qua 17/06/26 | Sprint 8 |
| 171 | 1.2.6.21.3 | Atendimento de comentários | 2d | 2026-06-22 | 2026-06-23 | 170 |  |  | 2026-06-18 | 2026-06-19 | 2d | 2026-06-15 | 2026-06-16 | 22d | 0d | start no earlier than 2026-06-22 | MECÂNICA | Qui 18/06/26 | Sex 19/06/26 | Sprint 9 |
| 172 | 1.2.6.21.4 | Aprovação | 1d | 2026-06-24 | 2026-06-24 | 171 |  |  | 2026-06-22 | 2026-06-22 | 1d | 2026-06-17 | 2026-06-17 | 22d |  |  | MECÂNICA | Seg 22/06/26 | Seg 22/06/26 | Sprint 9 |
| 173 | 1.2.6.22 | **MC-F0009-0305-MB-M-00003** | 26d | 2026-06-01 A | 2026-07-08 |  | 86% | 3.71d | 2026-05-29 | 2026-06-17 | 14d | 2026-05-29 | 2026-06-17 | 12d |  |  | MECÂNICA | Sex 29/05/26 | Qua 17/06/26 | Sprint 6 |
| 174 | 1.2.6.22.1 | Emissão inicial | 10d | 2026-06-01 A | 2026-06-16 A | 185 | 100% |  | 2026-06-01 | 2026-06-16 | 10d | 2026-05-29 | 2026-06-11 |  |  |  | MECÂNICA | Seg 01/06/26 | Ter 16/06/26 | Sprint 6 |
| 175 | 1.2.6.22.2 | Análise Tecnored | 1d | 2026-06-19 A | 2026-06-19 A | 174 | 100% |  | 2026-06-17 | 2026-06-17 | 1d | 2026-06-12 | 2026-06-12 |  |  |  | MECÂNICA | Qua 17/06/26 | Qua 17/06/26 | Sprint 8 |
| 176 | 1.2.6.22.3 | Atendimento de comentários | 2d | 2026-07-06 A | 2026-07-07 | 175 | 50% | 1d | 2026-06-18 | 2026-06-19 | 2d | 2026-06-15 | 2026-06-16 | 12d | 0d |  | MECÂNICA | Qui 18/06/26 | Sex 19/06/26 | Sprint 11 |
| 177 | 1.2.6.22.4 | Aprovação | 1d | 2026-07-08 | 2026-07-08 | 176 |  |  | 2026-06-22 | 2026-06-22 | 1d | 2026-06-17 | 2026-06-17 | 12d |  | start no earlier than 2026-07-08 | MECÂNICA | Seg 22/06/26 | Seg 22/06/26 | Sprint 11 |

| ID | WBS | Task | Duration | Start | Finish | Predecessors | Complete | Remaining | Baseline start | Baseline finish | Baseline duration | Baseline 1 start | Baseline 1 finish | Total slack | Free slack | Constraint | Disciplina | Início_LB_R0 | Término_LB_R0 | Sprints |
| --- | --- | --- | --- | --- | --- | --- | --- | --- | --- | --- | --- | --- | --- | --- | --- | --- | --- | --- | --- | --- |
| 178 | 1.2.6.23 | **MC-F0009-0305-MB-M-00004** | 14d | 2026-06-03 A | 2026-06-24 |  | 75% | 3.5d | 2026-05-29 | 2026-06-17 | 14d | 2026-05-29 | 2026-06-17 | 22d |  |  | MECÂNICA | Sex 29/05/26 | Qua 17/06/26 | Sprint 6 |
| 179 | 1.2.6.23.1 | Emissão inicial | 10d | 2026-06-03 A | 2026-06-18 A | 185 | 100% |  | 2026-06-01 | 2026-06-16 | 10d | 2026-05-29 | 2026-06-11 |  |  |  | MECÂNICA | Seg 01/06/26 | Ter 16/06/26 | Sprint 6 |
| 180 | 1.2.6.23.2 | Análise Tecnored | 1d | 2026-06-17 A | 2026-06-19 | 179 | 50% | 0.5d | 2026-06-17 | 2026-06-17 | 1d | 2026-06-12 | 2026-06-12 | 22d | 0d | finish no earlier than 2026-06-19 | MECÂNICA | Qua 17/06/26 | Qua 17/06/26 | Sprint 8 |
| 181 | 1.2.6.23.3 | Atendimento de comentários | 2d | 2026-06-22 | 2026-06-23 | 180 |  |  | 2026-06-18 | 2026-06-19 | 2d | 2026-06-15 | 2026-06-16 | 22d | 0d | finish no earlier than 2026-06-23 | MECÂNICA | Qui 18/06/26 | Sex 19/06/26 | Sprint 9 |
| 182 | 1.2.6.23.4 | Aprovação | 1d | 2026-06-24 | 2026-06-24 | 181 |  |  | 2026-06-22 | 2026-06-22 | 1d | 2026-06-17 | 2026-06-17 | 22d |  | finish no earlier than 2026-06-24 | MECÂNICA | Seg 22/06/26 | Seg 22/06/26 | Sprint 9 |
| 183 | 1.2.6.24 | **ML-F0009-0305-MB-M-00001** | 14d | 2026-05-15 A | 2026-06-03 |  | 92% | 1.17d | 2026-05-19 | 2026-06-02 | 11d | 2026-05-19 | 2026-06-02 | 35d |  |  | MECÂNICA | Ter 19/05/26 | Ter 02/06/26 | Sprint 3 |
| 184 | 1.2.6.24.1 | Emissão inicial | 8d | 2026-05-15 A | 2026-05-26 A | 69, 5 | 100% |  | 2026-05-15 | 2026-05-26 | 7d | 2026-05-19 | 2026-05-27 |  |  |  | MECÂNICA | Sex 15/05/26 | Ter 26/05/26 | Sprint 3 |
| 185 | 1.2.6.24.2 | Análise Tecnored | 1d | 2026-05-29 A | 2026-05-29 A | 184 | 100% |  | 2026-05-29 | 2026-05-29 | 1d | 2026-05-28 | 2026-05-28 |  |  |  | MECÂNICA | Sex 29/05/26 | Sex 29/05/26 | Sprint 5 |
| 186 | 1.2.6.24.3 | Atendimento de comentários | 2d | 2026-06-01 A | 2026-06-02 | 185 | 75% | 0.5d | 2026-06-01 | 2026-06-02 | 2d | 2026-05-29 | 2026-06-01 | 0.5d | 0d |  | MECÂNICA | Seg 01/06/26 | Ter 02/06/26 | Sprint 6 |
| 187 | 1.2.6.24.4 | Aprovação | 1d | 2026-06-03 A | 2026-06-03 | 186 | 50% | 0.5d | 2026-06-03 | 2026-06-03 | 1d | 2026-06-02 | 2026-06-02 | 35d |  |  | MECÂNICA | Qua 03/06/26 | Qua 03/06/26 | Sprint 6 |
| 188 | 1.2.6.25 | **FD-F0009-0305-MB-M-00001** | 7d | 2026-07-20 | 2026-07-28 |  |  |  | 2026-06-12 | 2026-06-22 | 7d | 2026-06-12 | 2026-06-22 | 0d |  |  | MECÂNICA | Sex 12/06/26 | Seg 22/06/26 | Sprint 13 |
| 189 | 1.2.6.25.1 | Emissão inicial | 3d | 2026-07-20 | 2026-07-22 | 164, 169, 174, 179 |  |  | 2026-06-12 | 2026-06-16 | 3d | 2026-06-12 | 2026-06-16 | 0d |  | finish no earlier than 2026-07-22 | MECÂNICA | Sex 12/06/26 | Ter 16/06/26 | Sprint 13 |
| 190 | 1.2.6.25.2 | Análise Tecnored | 1d | 2026-07-23 | 2026-07-23 | 189 |  |  | 2026-06-17 | 2026-06-17 | 1d | 2026-06-17 | 2026-06-17 | 0d |  |  | MECÂNICA | Qua 17/06/26 | Qua 17/06/26 | Sprint 13 |
| 191 | 1.2.6.25.3 | Atendimento de comentários | 2d | 2026-07-24 | 2026-07-27 | 190 |  |  | 2026-06-18 | 2026-06-19 | 2d | 2026-06-18 | 2026-06-19 | 0d |  |  | MECÂNICA | Qui 18/06/26 | Sex 19/06/26 | Sprint 13 |
| 192 | 1.2.6.25.4 | Aprovação | 1d | 2026-07-28 | 2026-07-28 | 191 |  |  | 2026-06-22 | 2026-06-22 | 1d | 2026-06-22 | 2026-06-22 | 0d |  |  | MECÂNICA | Seg 22/06/26 | Seg 22/06/26 | Fora do Período |
| 193 | 1.2.6.26 | **FD-F0009-0305-MB-M-00002** | 7d | 2026-06-17 A | 2026-06-25 |  | 50% | 3.5d | 2026-06-12 | 2026-06-22 | 7d | 2026-06-12 | 2026-06-22 | 21d |  |  | MECÂNICA | Sex 12/06/26 | Seg 22/06/26 | Sprint 8 |
| 194 | 1.2.6.26.1 | Emissão inicial | 3d | 2026-06-17 A | 2026-06-19 A | 164, 169, 174, 179 | 100% |  | 2026-06-12 | 2026-06-16 | 3d | 2026-06-12 | 2026-06-16 |  |  |  | MECÂNICA | Sex 12/06/26 | Ter 16/06/26 | Sprint 8 |
| 195 | 1.2.6.26.2 | Análise Tecnored | 1d | 2026-06-22 A | 2026-06-22 | 194 | 50% | 0.5d | 2026-06-17 | 2026-06-17 | 1d | 2026-06-17 | 2026-06-17 | 21d | 0d |  | MECÂNICA | Qua 17/06/26 | Qua 17/06/26 | Sprint 9 |
| 196 | 1.2.6.26.3 | Atendimento de comentários | 2d | 2026-06-23 | 2026-06-24 | 195 |  |  | 2026-06-18 | 2026-06-19 | 2d | 2026-06-18 | 2026-06-19 | 21d | 0d |  | MECÂNICA | Qui 18/06/26 | Sex 19/06/26 | Sprint 9 |
| 197 | 1.2.6.26.4 | Aprovação | 1d | 2026-06-25 | 2026-06-25 | 196 |  |  | 2026-06-22 | 2026-06-22 | 1d | 2026-06-22 | 2026-06-22 | 21d |  |  | MECÂNICA | Seg 22/06/26 | Seg 22/06/26 | Sprint 9 |
| 198 | 1.2.6.27 | **FD-F0009-0305-MB-M-00003** | 7d | 2026-07-20 | 2026-07-28 |  |  |  | 2026-06-12 | 2026-06-22 | 7d | 2026-06-12 | 2026-06-22 | 0d |  |  | MECÂNICA | Sex 12/06/26 | Seg 22/06/26 | Sprint 13 |
| 199 | 1.2.6.27.1 | Emissão inicial | 3d | 2026-07-20 | 2026-07-22 | 164, 169, 174, 179 |  |  | 2026-06-12 | 2026-06-16 | 3d | 2026-06-12 | 2026-06-16 | 0d |  | finish no earlier than 2026-07-22 | MECÂNICA | Sex 12/06/26 | Ter 16/06/26 | Sprint 13 |
| 200 | 1.2.6.27.2 | Análise Tecnored | 1d | 2026-07-23 | 2026-07-23 | 199 |  |  | 2026-06-17 | 2026-06-17 | 1d | 2026-06-17 | 2026-06-17 | 0d |  |  | MECÂNICA | Qua 17/06/26 | Qua 17/06/26 | Sprint 13 |
| 201 | 1.2.6.27.3 | Atendimento de comentários | 2d | 2026-07-24 | 2026-07-27 | 200 |  |  | 2026-06-18 | 2026-06-19 | 2d | 2026-06-18 | 2026-06-19 | 0d |  |  | MECÂNICA | Qui 18/06/26 | Sex 19/06/26 | Sprint 13 |
| 202 | 1.2.6.27.4 | Aprovação | 1d | 2026-07-28 | 2026-07-28 | 201 |  |  | 2026-06-22 | 2026-06-22 | 1d | 2026-06-22 | 2026-06-22 | 0d |  |  | MECÂNICA | Seg 22/06/26 | Seg 22/06/26 | Fora do Período |

| ID | WBS | Task | Type | Duration | Start | Finish | Predecessors | Complete | Remaining | Baseline start | Baseline finish | Baseline duration | Baseline 1 start | Baseline 1 finish | Total slack | Free slack | Constraint | Baseline cost | Disciplina | Início_LB_R0 | Término_LB_R0 | Sprints |
| --- | --- | --- | --- | --- | --- | --- | --- | --- | --- | --- | --- | --- | --- | --- | --- | --- | --- | --- | --- | --- | --- | --- |
| 203 | 1.2.7 | **Tubulação/Utilidades** |  | 26d | 2026-06-12 A | 2026-07-21 |  | 44% | 14.53d | 2026-05-20 | 2026-07-08 | 36d | 2026-05-20 | 2026-07-08 | 5d |  |  |  | TUBULAÇÃO / UTILIDADES | Qua 20/05/26 | Qua 08/07/26 | Sprint 7 |
| 204 | 1.2.7.1 | **CP-F0009-0305-MB-T-00001** | inactive | 15d | 2026-05-08 | 2026-05-28 |  |  |  |  |  |  |  |  | 39d |  |  | -0 |  |  |  | Sprint 2 |
| 205 | 1.2.7.1.1 | Emissão inicial | inactive | 5d | 2026-05-08 | 2026-05-14 | 21FS+3d |  |  |  |  |  |  |  | 45d | 6d |  | -0 |  |  |  | Sprint 2 |
| 206 | 1.2.7.1.2 | Análise Tecnored | inactive | 1d | 2026-05-25 | 2026-05-25 | 205, 6 |  |  |  |  |  |  |  | 39d | 0d |  | -0 |  |  |  | Sprint 5 |
| 207 | 1.2.7.1.3 | Atendimento de comentários | inactive | 2d | 2026-05-26 | 2026-05-27 | 206 |  |  |  |  |  |  |  | 39d | 0d |  | -0 |  |  |  | Sprint 5 |
| 208 | 1.2.7.1.4 | Aprovação | inactive | 1d | 2026-05-28 | 2026-05-28 | 207 |  |  |  |  |  |  |  | 39d |  |  | -0 |  |  |  | Sprint 5 |
| 209 | 1.2.7.2 | **MD-F0009-0305-MB-U-00001** | inactive | 7d | 2026-07-27 | 2026-08-04 |  |  |  | 2026-06-18 | 2026-06-26 | 7d | 2026-06-18 | 2026-06-26 | -5d | 0d |  |  |  |  |  | Fora do Período |
| 210 | 1.2.7.2.1 | Emissão inicial | inactive | 3d | 2026-07-27 | 2026-07-29 | 254FS+5d, 284FS+5d, 304FS+5d |  |  | 2026-06-18 | 2026-06-22 | 3d | 2026-06-18 | 2026-06-22 | -5d | 0d |  |  |  |  |  | Fora do Período |
| 211 | 1.2.7.2.2 | Análise Tecnored | inactive | 1d | 2026-07-30 | 2026-07-30 | 210 |  |  | 2026-06-23 | 2026-06-23 | 1d | 2026-06-23 | 2026-06-23 | -5d | 0d |  |  |  |  |  | Fora do Período |
| 212 | 1.2.7.2.3 | Atendimento de comentários | inactive | 2d | 2026-07-31 | 2026-08-03 | 211 |  |  | 2026-06-24 | 2026-06-25 | 2d | 2026-06-24 | 2026-06-25 | -5d | 0d |  |  |  |  |  | Fora do Período |
| 213 | 1.2.7.2.4 | Aprovação | inactive | 1d | 2026-08-04 | 2026-08-04 | 212 |  |  | 2026-06-26 | 2026-06-26 | 1d | 2026-06-26 | 2026-06-26 | -5d | 0d |  |  |  |  |  | Fora do Período |
| 214 | 1.2.7.3 | **ML-F0009-0305-MB-T-00001** |  | 8d | 2026-07-03 A | 2026-07-16 |  | 50% | 4d | 2026-05-28 | 2026-06-05 | 7d | 2026-05-28 | 2026-06-05 | 8d |  |  |  | TUBULAÇÃO / UTILIDADES | Qui 28/05/26 | Sex 05/06/26 | Sprint 10 |
| 215 | 1.2.7.3.1 | Emissão inicial |  | 4d | 2026-07-03 A | 2026-07-08 A | 184, 245 | 100% |  | 2026-05-28 | 2026-06-01 | 3d | 2026-05-28 | 2026-06-01 |  |  | finish no earlier than 2026-07-08 |  | TUBULAÇÃO / UTILIDADES | Qui 28/05/26 | Seg 01/06/26 | Sprint 10 |
| 216 | 1.2.7.3.2 | Análise Tecnored |  | 1d | 2026-07-13 | 2026-07-13 | 215 |  |  | 2026-06-02 | 2026-06-02 | 1d | 2026-06-02 | 2026-06-02 | 8d | 0d |  |  | TUBULAÇÃO / UTILIDADES | Ter 02/06/26 | Ter 02/06/26 | Sprint 12 |
| 217 | 1.2.7.3.3 | Atendimento de comentários |  | 2d | 2026-07-14 | 2026-07-15 | 216 |  |  | 2026-06-03 | 2026-06-04 | 2d | 2026-06-03 | 2026-06-04 | 8d | 0d |  |  | TUBULAÇÃO / UTILIDADES | Qua 03/06/26 | Qui 04/06/26 | Sprint 12 |
| 218 | 1.2.7.3.4 | Aprovação |  | 1d | 2026-07-16 | 2026-07-16 | 217 |  |  | 2026-06-05 | 2026-06-05 | 1d | 2026-06-05 | 2026-06-05 | 8d |  |  |  | TUBULAÇÃO / UTILIDADES | Sex 05/06/26 | Sex 05/06/26 | Sprint 12 |
| 219 | 1.2.7.4 | **ET-F0009-0305-MB-T-00001** | inactive | 7d | 2026-06-29 | 2026-07-07 |  |  |  | 2026-06-30 | 2026-07-08 | 7d | 2026-06-30 | 2026-07-08 | 13d |  |  |  | TUBULAÇÃO / UTILIDADES |  |  | Sprint 10 |
| 220 | 1.2.7.4.1 | Emissão inicial | inactive | 3d | 2026-06-29 | 2026-07-01 | 225FS+2d |  |  | 2026-06-30 | 2026-07-02 | 3d | 2026-06-30 | 2026-07-02 | 13d | 0d |  |  | TUBULAÇÃO / UTILIDADES |  |  | Sprint 10 |
| 221 | 1.2.7.4.2 | Análise Tecnored | inactive | 1d | 2026-07-02 | 2026-07-02 | 220 |  |  | 2026-07-03 | 2026-07-03 | 1d | 2026-07-03 | 2026-07-03 | 13d | 0d |  |  | TUBULAÇÃO / UTILIDADES |  |  | Sprint 10 |
| 222 | 1.2.7.4.3 | Atendimento de comentários | inactive | 2d | 2026-07-03 | 2026-07-06 | 221 |  |  | 2026-07-06 | 2026-07-07 | 2d | 2026-07-06 | 2026-07-07 | 13d | 0d |  |  | TUBULAÇÃO / UTILIDADES |  |  | Sprint 10 |
| 223 | 1.2.7.4.4 | Aprovação | inactive | 1d | 2026-07-07 | 2026-07-07 | 222 |  |  | 2026-07-08 | 2026-07-08 | 1d | 2026-07-08 | 2026-07-08 | 13d |  |  |  | TUBULAÇÃO / UTILIDADES |  |  | Sprint 11 |
| 224 | 1.2.7.5 | **FD-F0009-0305-MB-T-00001** | inactive | 7d | 2026-06-22 | 2026-06-30 |  |  |  | 2026-06-23 | 2026-07-01 | 7d | 2026-06-23 | 2026-07-01 | 13d |  |  |  | TUBULAÇÃO / UTILIDADES | Ter 23/06/26 | Qua 01/07/26 | Sprint 9 |
| 225 | 1.2.7.5.1 | Emissão inicial | inactive | 3d | 2026-06-22 | 2026-06-24 | 245 |  |  | 2026-06-23 | 2026-06-25 | 3d | 2026-06-23 | 2026-06-25 | 13d | 0d | start no earlier than 2026-06-22 |  | TUBULAÇÃO / UTILIDADES | Ter 23/06/26 | Qui 25/06/26 | Sprint 9 |
| 226 | 1.2.7.5.2 | Análise Tecnored | inactive | 1d | 2026-06-25 | 2026-06-25 | 225 |  |  | 2026-06-26 | 2026-06-26 | 1d | 2026-06-26 | 2026-06-26 | 18d | 0d |  |  | TUBULAÇÃO / UTILIDADES | Sex 26/06/26 | Sex 26/06/26 | Sprint 9 |
| 227 | 1.2.7.5.3 | Atendimento de comentários | inactive | 2d | 2026-06-26 | 2026-06-29 | 226 |  |  | 2026-06-29 | 2026-06-30 | 2d | 2026-06-29 | 2026-06-30 | 18d | 0d |  |  | TUBULAÇÃO / UTILIDADES | Seg 29/06/26 | Ter 30/06/26 | Sprint 9 |
| 228 | 1.2.7.5.4 | Aprovação | inactive | 1d | 2026-06-30 | 2026-06-30 | 227 |  |  | 2026-07-01 | 2026-07-01 | 1d | 2026-07-01 | 2026-07-01 | 18d |  |  |  | TUBULAÇÃO / UTILIDADES | Qua 01/07/26 | Qua 01/07/26 | Sprint 10 |

| ID | WBS | Task | Type | Duration | Start | Finish | Predecessors | Complete | Remaining | Baseline start | Baseline finish | Baseline duration | Baseline 1 start | Baseline 1 finish | Total slack | Free slack | Constraint | Disciplina | Sprints | Início_LB_R0 | Término_LB_R0 |
| --- | --- | --- | --- | --- | --- | --- | --- | --- | --- | --- | --- | --- | --- | --- | --- | --- | --- | --- | --- | --- | --- |
| 229 | 1.2.7.6 | **FD-F0009-0305-MB-T-00002** | inactive | 7d | 2026-06-29 | 2026-07-07 |  |  |  | 2026-06-23 | 2026-07-01 | 7d | 2026-06-23 | 2026-07-01 | 13d |  |  | TUBULAÇÃO / UTILIDADES | Sprint 10 |  |  |
| 230 | 1.2.7.6.1 | Emissão inicial | inactive | 3d | 2026-06-29 | 2026-07-01 | 240 |  |  | 2026-06-23 | 2026-06-25 | 3d | 2026-06-23 | 2026-06-25 | 13d | 0d |  | TUBULAÇÃO / UTILIDADES | Sprint 10 |  |  |
| 231 | 1.2.7.6.2 | Análise Tecnored | inactive | 1d | 2026-07-02 | 2026-07-02 | 230 |  |  | 2026-06-26 | 2026-06-26 | 1d | 2026-06-26 | 2026-06-26 | 13d | 0d |  | TUBULAÇÃO / UTILIDADES | Sprint 10 |  |  |
| 232 | 1.2.7.6.3 | Atendimento de comentários | inactive | 2d | 2026-07-03 | 2026-07-06 | 231 |  |  | 2026-06-29 | 2026-06-30 | 2d | 2026-06-29 | 2026-06-30 | 13d | 0d |  | TUBULAÇÃO / UTILIDADES | Sprint 10 |  |  |
| 233 | 1.2.7.6.4 | Aprovação | inactive | 1d | 2026-07-07 | 2026-07-07 | 232 |  |  | 2026-07-01 | 2026-07-01 | 1d | 2026-07-01 | 2026-07-01 | 13d |  |  | TUBULAÇÃO / UTILIDADES | Sprint 11 |  |  |
| 234 | 1.2.7.7 | **PQ-F0009-0305-MB-T-00001** |  | 7d | 2026-07-13 A | 2026-07-21 |  | 43% | 4d | 2026-06-23 | 2026-07-01 | 7d | 2026-06-23 | 2026-07-01 | 5d |  |  | TUBULAÇÃO / UTILIDADES | Sprint 12 | Ter 23/06/26 | Qua 01/07/26 |
| 235 | 1.2.7.7.1 | Emissão inicial |  | 3d | 2026-07-13 A | 2026-07-15 A |  | 100% |  | 2026-06-23 | 2026-06-25 | 3d | 2026-06-23 | 2026-06-25 |  |  | start no earlier than 2026-07-13 | TUBULAÇÃO / UTILIDADES | Sprint 12 | Ter 23/06/26 | Qui 25/06/26 |
| 236 | 1.2.7.7.2 | Análise Tecnored |  | 1d | 2026-07-16 | 2026-07-16 | 235 |  |  | 2026-06-26 | 2026-06-26 | 1d | 2026-06-26 | 2026-06-26 | 5d | 0d |  | TUBULAÇÃO / UTILIDADES | Sprint 12 | Sex 26/06/26 | Sex 26/06/26 |
| 237 | 1.2.7.7.3 | Atendimento de comentários |  | 2d | 2026-07-17 | 2026-07-20 | 236 |  |  | 2026-06-29 | 2026-06-30 | 2d | 2026-06-29 | 2026-06-30 | 5d | 0d |  | TUBULAÇÃO / UTILIDADES | Sprint 12 | Seg 29/06/26 | Ter 30/06/26 |
| 238 | 1.2.7.7.4 | Aprovação |  | 1d | 2026-07-21 | 2026-07-21 | 237 |  |  | 2026-07-01 | 2026-07-01 | 1d | 2026-07-01 | 2026-07-01 | 5d |  |  | TUBULAÇÃO / UTILIDADES | Sprint 13 | Qua 01/07/26 | Qua 01/07/26 |
| 239 | 1.2.7.8 | **MC-F0009-0305-MB-T-00001** | inactive | 9d | 2026-06-22 | 2026-07-02 |  |  |  | 2026-06-18 | 2026-06-26 | 7d | 2026-06-18 | 2026-06-26 | 13d |  |  | TUBULAÇÃO / UTILIDADES | Sprint 9 | Qui 18/06/26 | Sex 26/06/26 |
| 240 | 1.2.7.8.1 | Emissão inicial | inactive | 5d | 2026-06-22 | 2026-06-26 | 225SS |  |  | 2026-06-18 | 2026-06-22 | 3d | 2026-06-18 | 2026-06-22 | 13d | 0d |  | TUBULAÇÃO / UTILIDADES | Sprint 9 | Qui 18/06/26 | Seg 22/06/26 |
| 241 | 1.2.7.8.2 | Análise Tecnored | inactive | 1d | 2026-06-29 | 2026-06-29 | 240 |  |  | 2026-06-23 | 2026-06-23 | 1d | 2026-06-23 | 2026-06-23 | 16d | 0d |  | TUBULAÇÃO / UTILIDADES | Sprint 10 | Ter 23/06/26 | Ter 23/06/26 |
| 242 | 1.2.7.8.3 | Atendimento de comentários | inactive | 2d | 2026-06-30 | 2026-07-01 | 241 |  |  | 2026-06-24 | 2026-06-25 | 2d | 2026-06-24 | 2026-06-25 | 16d | 0d |  | TUBULAÇÃO / UTILIDADES | Sprint 10 | Qua 24/06/26 | Qui 25/06/26 |
| 243 | 1.2.7.8.4 | Aprovação | inactive | 1d | 2026-07-02 | 2026-07-02 | 242 |  |  | 2026-06-26 | 2026-06-26 | 1d | 2026-06-26 | 2026-06-26 | 16d |  |  | TUBULAÇÃO / UTILIDADES | Sprint 10 | Sex 26/06/26 | Sex 26/06/26 |
| 244 | 1.2.7.9 | **FG-F0009-0305-MB-T-00001** |  | 6.5d | 2026-06-12 A | 2026-06-22 |  | 50% | 3.25d | 2026-05-20 | 2026-05-27 | 6d | 2026-05-20 | 2026-05-27 | 24.5d |  |  | TUBULAÇÃO / UTILIDADES | Sprint 7 | Qua 20/05/26 | Qua 27/05/26 |
| 245 | 1.2.7.9.1 | Emissão inicial |  | 3d | 2026-06-12 A | 2026-06-16 A | 63FS+13d | 100% |  | 2026-05-20 | 2026-05-21 | 2d | 2026-05-20 | 2026-05-21 |  |  | finish no earlier than 2026-06-12 | TUBULAÇÃO / UTILIDADES | Sprint 7 | Qua 20/05/26 | Qui 21/05/26 |
| 246 | 1.2.7.9.2 | Análise Tecnored |  | 1d | 2026-06-16 A | 2026-06-17 | 245 | 50% | 0.5d | 2026-05-22 | 2026-05-22 | 1d | 2026-05-22 | 2026-05-22 | 24.5d | 0d |  | TUBULAÇÃO / UTILIDADES | Sprint 8 | Sex 22/05/26 | Sex 22/05/26 |
| 247 | 1.2.7.9.3 | Atendimento de comentários |  | 2d | 2026-06-17 | 2026-06-19 | 246 |  |  | 2026-05-25 | 2026-05-26 | 2d | 2026-05-25 | 2026-05-26 | 24.5d | 0d |  | TUBULAÇÃO / UTILIDADES | Sprint 8 | Seg 25/05/26 | Ter 26/05/26 |
| 248 | 1.2.7.9.4 | Aprovação |  | 1d | 2026-06-19 | 2026-06-22 | 247 |  |  | 2026-05-27 | 2026-05-27 | 1d | 2026-05-27 | 2026-05-27 | 24.5d |  |  | TUBULAÇÃO / UTILIDADES | Sprint 8 | Qua 27/05/26 | Qua 27/05/26 |
| 249 | 1.2.7.10 | **FG-F0009-0305-MB-T-00002** | inactive | 6d | 2026-07-03 | 2026-07-14 |  |  |  | 2026-05-20 | 2026-05-27 | 6d | 2026-05-20 | 2026-05-27 | 10d |  |  | TUBULAÇÃO / UTILIDADES | Sprint 10 |  |  |
| 250 | 1.2.7.10.1 | Emissão inicial | inactive | 2d | 2026-07-03 | 2026-07-06 | 63FS+10d |  |  | 2026-05-20 | 2026-05-21 | 2d | 2026-05-20 | 2026-05-21 | 10d | 0d |  | TUBULAÇÃO / UTILIDADES | Sprint 10 |  |  |
| 251 | 1.2.7.10.2 | Análise Tecnored | inactive | 1d | 2026-07-07 | 2026-07-07 | 250 |  |  | 2026-05-22 | 2026-05-22 | 1d | 2026-05-22 | 2026-05-22 | 10d | 0d |  | TUBULAÇÃO / UTILIDADES | Sprint 11 |  |  |
| 252 | 1.2.7.10.3 | Atendimento de comentários | inactive | 2d | 2026-07-08 | 2026-07-13 | 251 |  |  | 2026-05-25 | 2026-05-26 | 2d | 2026-05-25 | 2026-05-26 | 10d | 0d |  | TUBULAÇÃO / UTILIDADES | Sprint 11 |  |  |
| 253 | 1.2.7.10.4 | Aprovação | inactive | 1d | 2026-07-14 | 2026-07-14 | 252 |  |  | 2026-05-27 | 2026-05-27 | 1d | 2026-05-27 | 2026-05-27 | 10d |  |  | TUBULAÇÃO / UTILIDADES | Sprint 12 |  |  |

| ID | WBS | Task | Type | Duration | Start | Finish | Predecessors | Complete | Remaining | Baseline start | Baseline finish | Baseline duration | Baseline 1 start | Baseline 1 finish | Total slack | Free slack | Constraint | Disciplina | Início_LB_R0 | Término_LB_R0 | Sprints |
| --- | --- | --- | --- | --- | --- | --- | --- | --- | --- | --- | --- | --- | --- | --- | --- | --- | --- | --- | --- | --- | --- |
| 254 | 1.2.7.11 | **AG-F0009-0305-MB-T-00001** |  | 8d | 2026-07-06 A | 2026-07-17 |  | 43% | 4.57d | 2026-06-02 | 2026-06-10 | 7d | 2026-06-02 | 2026-06-10 | 7d | 0d |  | TUBULAÇÃO / UTILIDADES | Ter 02/06/26 | Qua 10/06/26 | Sprint 11 |
| 255 | 1.2.7.11.1 | Emissão inicial |  | 3d | 2026-07-06 A | 2026-07-13 A | 216FF | 100% |  | 2026-06-02 | 2026-06-04 | 3d | 2026-06-02 | 2026-06-04 |  |  | start no earlier than 2026-07-06 | TUBULAÇÃO / UTILIDADES | Ter 02/06/26 | Qui 04/06/26 | Sprint 11 |
| 256 | 1.2.7.11.2 | Análise Tecnored |  | 1d | 2026-07-14 | 2026-07-14 | 255 |  |  | 2026-06-05 | 2026-06-05 | 1d | 2026-06-05 | 2026-06-05 | 7d | 0d |  | TUBULAÇÃO / UTILIDADES | Sex 05/06/26 | Sex 05/06/26 | Sprint 12 |
| 257 | 1.2.7.11.3 | Atendimento de comentários |  | 2d | 2026-07-15 | 2026-07-16 | 256 |  |  | 2026-06-08 | 2026-06-09 | 2d | 2026-06-08 | 2026-06-09 | 7d | 0d |  | TUBULAÇÃO / UTILIDADES | Seg 08/06/26 | Ter 09/06/26 | Sprint 12 |
| 258 | 1.2.7.11.4 | Aprovação |  | 1d | 2026-07-17 | 2026-07-17 | 257 |  |  | 2026-06-10 | 2026-06-10 | 1d | 2026-06-10 | 2026-06-10 | 7d |  |  | TUBULAÇÃO / UTILIDADES | Qua 10/06/26 | Qua 10/06/26 | Sprint 12 |
| 259 | 1.2.7.12 | **AG-F0009-0305-MB-T-00002** |  | 8d | 2026-07-06 A | 2026-07-17 |  | 43% | 4.57d | 2026-06-02 | 2026-06-10 | 7d | 2026-06-02 | 2026-06-10 | 7d |  |  | TUBULAÇÃO / UTILIDADES | Ter 02/06/26 | Qua 10/06/26 | Sprint 11 |
| 260 | 1.2.7.12.1 | Emissão inicial |  | 3d | 2026-07-06 A | 2026-07-13 A | 216FF | 100% |  | 2026-06-02 | 2026-06-04 | 3d | 2026-06-02 | 2026-06-04 |  |  | start no earlier than 2026-07-06 | TUBULAÇÃO / UTILIDADES | Ter 02/06/26 | Qui 04/06/26 | Sprint 11 |
| 261 | 1.2.7.12.2 | Análise Tecnored |  | 1d | 2026-07-14 | 2026-07-14 | 260 |  |  | 2026-06-05 | 2026-06-05 | 1d | 2026-06-05 | 2026-06-05 | 7d | 0d |  | TUBULAÇÃO / UTILIDADES | Sex 05/06/26 | Sex 05/06/26 | Sprint 12 |
| 262 | 1.2.7.12.3 | Atendimento de comentários |  | 2d | 2026-07-15 | 2026-07-16 | 261 |  |  | 2026-06-08 | 2026-06-09 | 2d | 2026-06-08 | 2026-06-09 | 7d | 0d |  | TUBULAÇÃO / UTILIDADES | Seg 08/06/26 | Ter 09/06/26 | Sprint 12 |
| 263 | 1.2.7.12.4 | Aprovação |  | 1d | 2026-07-17 | 2026-07-17 | 262 |  |  | 2026-06-10 | 2026-06-10 | 1d | 2026-06-10 | 2026-06-10 | 7d |  |  | TUBULAÇÃO / UTILIDADES | Qua 10/06/26 | Qua 10/06/26 | Sprint 12 |
| 264 | 1.2.7.13 | **AG-F0009-0305-MB-T-00003** |  | 8d | 2026-07-06 A | 2026-07-17 |  | 43% | 4.57d | 2026-06-02 | 2026-06-10 | 7d | 2026-06-02 | 2026-06-10 | 7d |  |  | TUBULAÇÃO / UTILIDADES | Ter 02/06/26 | Qua 10/06/26 | Sprint 11 |
| 265 | 1.2.7.13.1 | Emissão inicial |  | 3d | 2026-07-06 A | 2026-07-13 A | 216FF | 100% |  | 2026-06-02 | 2026-06-04 | 3d | 2026-06-02 | 2026-06-04 |  |  | start no earlier than 2026-07-06 | TUBULAÇÃO / UTILIDADES | Ter 02/06/26 | Qui 04/06/26 | Sprint 11 |
| 266 | 1.2.7.13.2 | Análise Tecnored |  | 1d | 2026-07-14 | 2026-07-14 | 265 |  |  | 2026-06-05 | 2026-06-05 | 1d | 2026-06-05 | 2026-06-05 | 7d | 0d |  | TUBULAÇÃO / UTILIDADES | Sex 05/06/26 | Sex 05/06/26 | Sprint 12 |
| 267 | 1.2.7.13.3 | Atendimento de comentários |  | 2d | 2026-07-15 | 2026-07-16 | 266 |  |  | 2026-06-08 | 2026-06-09 | 2d | 2026-06-08 | 2026-06-09 | 7d | 0d |  | TUBULAÇÃO / UTILIDADES | Seg 08/06/26 | Ter 09/06/26 | Sprint 12 |
| 268 | 1.2.7.13.4 | Aprovação |  | 1d | 2026-07-17 | 2026-07-17 | 267 |  |  | 2026-06-10 | 2026-06-10 | 1d | 2026-06-10 | 2026-06-10 | 7d |  |  | TUBULAÇÃO / UTILIDADES | Qua 10/06/26 | Qua 10/06/26 | Sprint 12 |
| 269 | 1.2.7.14 | **AG-F0009-0305-MB-T-00004** | inactive | 7d | 2026-06-03 | 2026-06-15 |  |  |  | 2026-06-02 | 2026-06-10 | 7d | 2026-06-02 | 2026-06-10 | 29d |  |  | ESTRUTURA METÁLICA |  |  | Sprint 6 |
| 270 | 1.2.7.14.1 | Emissão inicial | inactive | 3d | 2026-06-03 | 2026-06-09 | 186 |  |  | 2026-06-02 | 2026-06-04 | 3d | 2026-06-02 | 2026-06-04 | 29d | 0d |  | ESTRUTURA METÁLICA |  |  | Sprint 6 |
| 271 | 1.2.7.14.2 | Análise Tecnored | inactive | 1d | 2026-06-10 | 2026-06-10 | 270 |  |  | 2026-06-05 | 2026-06-05 | 1d | 2026-06-05 | 2026-06-05 | 29d | 0d |  | ESTRUTURA METÁLICA |  |  | Sprint 7 |
| 272 | 1.2.7.14.3 | Atendimento de comentários | inactive | 2d | 2026-06-11 | 2026-06-12 | 271 |  |  | 2026-06-08 | 2026-06-09 | 2d | 2026-06-08 | 2026-06-09 | 29d | 0d |  | ESTRUTURA METÁLICA |  |  | Sprint 7 |
| 273 | 1.2.7.14.4 | Aprovação | inactive | 1d | 2026-06-15 | 2026-06-15 | 272 |  |  | 2026-06-10 | 2026-06-10 | 1d | 2026-06-10 | 2026-06-10 | 29d |  |  | ESTRUTURA METÁLICA |  |  | Sprint 8 |
| 274 | 1.2.7.15 | **AG-F0009-0305-MB-T-00005** | inactive | 7d | 2026-06-03 | 2026-06-15 |  |  |  | 2026-06-02 | 2026-06-10 | 7d | 2026-06-02 | 2026-06-10 | 29d |  |  | ESTRUTURA METÁLICA |  |  | Sprint 6 |
| 275 | 1.2.7.15.1 | Emissão inicial | inactive | 3d | 2026-06-03 | 2026-06-09 | 186 |  |  | 2026-06-02 | 2026-06-04 | 3d | 2026-06-02 | 2026-06-04 | 29d | 0d |  | ESTRUTURA METÁLICA |  |  | Sprint 6 |
| 276 | 1.2.7.15.2 | Análise Tecnored | inactive | 1d | 2026-06-10 | 2026-06-10 | 275 |  |  | 2026-06-05 | 2026-06-05 | 1d | 2026-06-05 | 2026-06-05 | 29d | 0d |  | ESTRUTURA METÁLICA |  |  | Sprint 7 |
| 277 | 1.2.7.15.3 | Atendimento de comentários | inactive | 2d | 2026-06-11 | 2026-06-12 | 276 |  |  | 2026-06-08 | 2026-06-09 | 2d | 2026-06-08 | 2026-06-09 | 29d | 0d |  | ESTRUTURA METÁLICA |  |  | Sprint 7 |
| 278 | 1.2.7.15.4 | Aprovação | inactive | 1d | 2026-06-15 | 2026-06-15 | 277 |  |  | 2026-06-10 | 2026-06-10 | 1d | 2026-06-10 | 2026-06-10 | 29d |  |  | ESTRUTURA METÁLICA |  |  | Sprint 8 |

| ID | WBS | Task | Type | Duration | Start | Finish | Predecessors | Complete | Remaining | Baseline start | Baseline finish | Baseline duration | Baseline 1 start | Baseline 1 finish | Total slack | Free slack | Constraint | Disciplina | Sprints | Início_LB_R0 | Término_LB_R0 |
| --- | --- | --- | --- | --- | --- | --- | --- | --- | --- | --- | --- | --- | --- | --- | --- | --- | --- | --- | --- | --- | --- |
| 279 | 1.2.7.16 | **AG-F0009-0305-MB-T-00006** | inactive | 7d | 2026-06-03 | 2026-06-15 |  |  |  | 2026-06-02 | 2026-06-10 | 7d | 2026-06-02 | 2026-06-10 | 29d |  |  | ESTRUTURA METÁLICA | Sprint 6 |  |  |
| 280 | 1.2.7.16.1 | Emissão inicial | inactive | 3d | 2026-06-03 | 2026-06-09 | 186 |  |  | 2026-06-02 | 2026-06-04 | 3d | 2026-06-02 | 2026-06-04 | 29d | 0d |  | ESTRUTURA METÁLICA | Sprint 6 |  |  |
| 281 | 1.2.7.16.2 | Análise Tecnored | inactive | 1d | 2026-06-10 | 2026-06-10 | 280 |  |  | 2026-06-05 | 2026-06-05 | 1d | 2026-06-05 | 2026-06-05 | 29d | 0d |  | ESTRUTURA METÁLICA | Sprint 7 |  |  |
| 282 | 1.2.7.16.3 | Atendimento de comentários | inactive | 2d | 2026-06-11 | 2026-06-12 | 281 |  |  | 2026-06-08 | 2026-06-09 | 2d | 2026-06-08 | 2026-06-09 | 29d | 0d |  | ESTRUTURA METÁLICA | Sprint 7 |  |  |
| 283 | 1.2.7.16.4 | Aprovação | inactive | 1d | 2026-06-15 | 2026-06-15 | 282 |  |  | 2026-06-10 | 2026-06-10 | 1d | 2026-06-10 | 2026-06-10 | 29d |  |  | ESTRUTURA METÁLICA | Sprint 8 |  |  |
| 284 | 1.2.7.17 | **AG-F0009-0305-MB-T-00004** |  | 8d | 2026-07-06 A | 2026-07-17 |  | 43% | 4.57d | 2026-06-02 | 2026-06-10 | 7d | 2026-06-02 | 2026-06-10 | 7d | 0d |  | TUBULAÇÃO / UTILIDADES | Sprint 11 | Ter 02/06/26 | Qua 10/06/26 |
| 285 | 1.2.7.17.1 | Emissão inicial |  | 3d | 2026-07-06 A | 2026-07-13 A | 216FF | 100% |  | 2026-06-02 | 2026-06-04 | 3d | 2026-06-02 | 2026-06-04 |  |  | start no earlier than 2026-07-06 | TUBULAÇÃO / UTILIDADES | Sprint 11 | Ter 02/06/26 | Qui 04/06/26 |
| 286 | 1.2.7.17.2 | Análise Tecnored |  | 1d | 2026-07-14 | 2026-07-14 | 285 |  |  | 2026-06-05 | 2026-06-05 | 1d | 2026-06-05 | 2026-06-05 | 7d | 0d |  | TUBULAÇÃO / UTILIDADES | Sprint 12 | Sex 05/06/26 | Sex 05/06/26 |
| 287 | 1.2.7.17.3 | Atendimento de comentários |  | 2d | 2026-07-15 | 2026-07-16 | 286 |  |  | 2026-06-08 | 2026-06-09 | 2d | 2026-06-08 | 2026-06-09 | 7d | 0d |  | TUBULAÇÃO / UTILIDADES | Sprint 12 | Seg 08/06/26 | Ter 09/06/26 |
| 288 | 1.2.7.17.4 | Aprovação |  | 1d | 2026-07-17 | 2026-07-17 | 287 |  |  | 2026-06-10 | 2026-06-10 | 1d | 2026-06-10 | 2026-06-10 | 7d |  |  | TUBULAÇÃO / UTILIDADES | Sprint 12 | Qua 10/06/26 | Qua 10/06/26 |
| 289 | 1.2.7.18 | **AG-F0009-0305-MB-T-00005** |  | 8d | 2026-07-06 A | 2026-07-17 |  | 43% | 4.57d | 2026-06-02 | 2026-06-10 | 7d | 2026-06-02 | 2026-06-10 | 7d |  |  | TUBULAÇÃO / UTILIDADES | Sprint 11 | Ter 02/06/26 | Qua 10/06/26 |
| 290 | 1.2.7.18.1 | Emissão inicial |  | 3d | 2026-07-06 A | 2026-07-13 A | 216FF | 100% |  | 2026-06-02 | 2026-06-04 | 3d | 2026-06-02 | 2026-06-04 |  |  | start no earlier than 2026-07-06 | TUBULAÇÃO / UTILIDADES | Sprint 11 | Ter 02/06/26 | Qui 04/06/26 |
| 291 | 1.2.7.18.2 | Análise Tecnored |  | 1d | 2026-07-14 | 2026-07-14 | 290 |  |  | 2026-06-05 | 2026-06-05 | 1d | 2026-06-05 | 2026-06-05 | 7d | 0d |  | TUBULAÇÃO / UTILIDADES | Sprint 12 | Sex 05/06/26 | Sex 05/06/26 |
| 292 | 1.2.7.18.3 | Atendimento de comentários |  | 2d | 2026-07-15 | 2026-07-16 | 291 |  |  | 2026-06-08 | 2026-06-09 | 2d | 2026-06-08 | 2026-06-09 | 7d | 0d |  | TUBULAÇÃO / UTILIDADES | Sprint 12 | Seg 08/06/26 | Ter 09/06/26 |
| 293 | 1.2.7.18.4 | Aprovação |  | 1d | 2026-07-17 | 2026-07-17 | 292 |  |  | 2026-06-10 | 2026-06-10 | 1d | 2026-06-10 | 2026-06-10 | 7d |  |  | TUBULAÇÃO / UTILIDADES | Sprint 12 | Qua 10/06/26 | Qua 10/06/26 |
| 294 | 1.2.7.19 | **AG-F0009-0305-MB-T-00006** |  | 8d | 2026-07-06 A | 2026-07-17 |  | 43% | 4.57d | 2026-06-02 | 2026-06-10 | 7d | 2026-06-02 | 2026-06-10 | 7d |  |  | TUBULAÇÃO / UTILIDADES | Sprint 11 | Ter 02/06/26 | Qua 10/06/26 |
| 295 | 1.2.7.19.1 | Emissão inicial |  | 3d | 2026-07-06 A | 2026-07-13 A | 216FF | 100% |  | 2026-06-02 | 2026-06-04 | 3d | 2026-06-02 | 2026-06-04 |  |  | start no earlier than 2026-07-06 | TUBULAÇÃO / UTILIDADES | Sprint 11 | Ter 02/06/26 | Qui 04/06/26 |
| 296 | 1.2.7.19.2 | Análise Tecnored |  | 1d | 2026-07-14 | 2026-07-14 | 295 |  |  | 2026-06-05 | 2026-06-05 | 1d | 2026-06-05 | 2026-06-05 | 7d | 0d |  | TUBULAÇÃO / UTILIDADES | Sprint 12 | Sex 05/06/26 | Sex 05/06/26 |
| 297 | 1.2.7.19.3 | Atendimento de comentários |  | 2d | 2026-07-15 | 2026-07-16 | 296 |  |  | 2026-06-08 | 2026-06-09 | 2d | 2026-06-08 | 2026-06-09 | 7d | 0d |  | TUBULAÇÃO / UTILIDADES | Sprint 12 | Seg 08/06/26 | Ter 09/06/26 |
| 298 | 1.2.7.19.4 | Aprovação |  | 1d | 2026-07-17 | 2026-07-17 | 297 |  |  | 2026-06-10 | 2026-06-10 | 1d | 2026-06-10 | 2026-06-10 | 7d |  |  | TUBULAÇÃO / UTILIDADES | Sprint 12 | Qua 10/06/26 | Qua 10/06/26 |
| 299 | 1.2.7.20 | **AG-F0009-0305-MB-T-00007** |  | 8d | 2026-07-06 A | 2026-07-17 |  | 43% | 4.57d | 2026-06-02 | 2026-06-10 | 7d | 2026-06-02 | 2026-06-10 | 7d |  |  | TUBULAÇÃO / UTILIDADES | Sprint 11 | Ter 02/06/26 | Qua 10/06/26 |
| 300 | 1.2.7.20.1 | Emissão inicial |  | 3d | 2026-07-06 A | 2026-07-13 A | 216FF | 100% |  | 2026-07-06 | 2026-07-08 | 3d | 2026-06-02 | 2026-06-04 |  |  | start no earlier than 2026-07-06 | TUBULAÇÃO / UTILIDADES | Sprint 11 | Seg 06/07/26 | Qua 08/07/26 |
| 301 | 1.2.7.20.2 | Análise Tecnored |  | 1d | 2026-07-14 | 2026-07-14 | 300 |  |  | 2026-07-13 | 2026-07-13 | 1d | 2026-06-05 | 2026-06-05 | 7d | 0d |  | TUBULAÇÃO / UTILIDADES | Sprint 12 | Seg 13/07/26 | Seg 13/07/26 |
| 302 | 1.2.7.20.3 | Atendimento de comentários |  | 2d | 2026-07-15 | 2026-07-16 | 301 |  |  | 2026-07-14 | 2026-07-15 | 2d | 2026-06-08 | 2026-06-09 | 7d | 0d |  | TUBULAÇÃO / UTILIDADES | Sprint 12 | Ter 14/07/26 | Qua 15/07/26 |
| 303 | 1.2.7.20.4 | Aprovação |  | 1d | 2026-07-17 | 2026-07-17 | 302 |  |  | 2026-07-16 | 2026-07-16 | 1d | 2026-06-10 | 2026-06-10 | 7d |  |  | TUBULAÇÃO / UTILIDADES | Sprint 12 | Qui 16/07/26 | Qui 16/07/26 |

| ID | WBS | Task | Type | Duration | Start | Finish | Predecessors | Complete | Remaining | Baseline start | Baseline finish | Baseline duration | Baseline 1 start | Baseline 1 finish | Total slack | Free slack | Constraint | Baseline cost | Disciplina | Início_LB_R0 | Término_LB_R0 | Sprints |
| --- | --- | --- | --- | --- | --- | --- | --- | --- | --- | --- | --- | --- | --- | --- | --- | --- | --- | --- | --- | --- | --- | --- |
| 304 | 1.2.7.21 | **AG-F0009-0305-MB-T-00008** |  | 8d | 2026-07-06 A | 2026-07-17 |  | 43% | 4.57d | 2026-06-02 | 2026-06-10 | 7d | 2026-06-02 | 2026-06-10 | 7d | 0d |  |  | TUBULAÇÃO / UTILIDADES | Ter 02/06/26 | Qua 10/06/26 | Sprint 11 |
| 305 | 1.2.7.21.1 | Emissão inicial |  | 3d | 2026-07-06 A | 2026-07-13 A | 216FF | 100% |  | 2026-07-06 | 2026-07-08 | 3d | 2026-06-02 | 2026-06-04 |  |  | start no earlier than 2026-07-06 |  | TUBULAÇÃO / UTILIDADES | Seg 06/07/26 | Qua 08/07/26 | Sprint 11 |
| 306 | 1.2.7.21.2 | Análise Tecnored |  | 1d | 2026-07-14 | 2026-07-14 | 305 |  |  | 2026-07-13 | 2026-07-13 | 1d | 2026-06-05 | 2026-06-05 | 7d | 0d |  |  | TUBULAÇÃO / UTILIDADES | Seg 13/07/26 | Seg 13/07/26 | Sprint 12 |
| 307 | 1.2.7.21.3 | Atendimento de comentários |  | 2d | 2026-07-15 | 2026-07-16 | 306 |  |  | 2026-07-14 | 2026-07-15 | 2d | 2026-06-08 | 2026-06-09 | 7d | 0d |  |  | TUBULAÇÃO / UTILIDADES | Ter 14/07/26 | Qua 15/07/26 | Sprint 12 |
| 308 | 1.2.7.21.4 | Aprovação |  | 1d | 2026-07-17 | 2026-07-17 | 307 |  |  | 2026-07-16 | 2026-07-16 | 1d | 2026-06-10 | 2026-06-10 | 7d |  |  |  | TUBULAÇÃO / UTILIDADES | Qui 16/07/26 | Qui 16/07/26 | Sprint 12 |
| 309 | 1.2.7.22 | **AG-F0009-0305-MB-T-00009** | inactive | 7d | 2026-07-07 | 2026-07-17 |  |  |  | 2026-06-02 | 2026-06-10 | 7d | 2026-06-02 | 2026-06-10 | 7d |  |  |  | TUBULAÇÃO / UTILIDADES | Ter 02/06/26 | Qua 10/06/26 | Sprint 11 |
| 310 | 1.2.7.22.1 | Emissão inicial | inactive | 3d | 2026-07-07 | 2026-07-13 | 216FF |  |  | 2026-07-06 | 2026-07-08 | 3d | 2026-06-02 | 2026-06-04 | 7d | 0d | start no earlier than 2026-07-06 |  | TUBULAÇÃO / UTILIDADES | Seg 06/07/26 | Qua 08/07/26 | Sprint 11 |
| 311 | 1.2.7.22.2 | Análise Tecnored | inactive | 1d | 2026-07-14 | 2026-07-14 | 310 |  |  | 2026-07-13 | 2026-07-13 | 1d | 2026-06-05 | 2026-06-05 | 7d | 0d |  |  | TUBULAÇÃO / UTILIDADES | Seg 13/07/26 | Seg 13/07/26 | Sprint 12 |
| 312 | 1.2.7.22.3 | Atendimento de comentários | inactive | 2d | 2026-07-15 | 2026-07-16 | 311 |  |  | 2026-07-14 | 2026-07-15 | 2d | 2026-06-08 | 2026-06-09 | 7d | 0d |  |  | TUBULAÇÃO / UTILIDADES | Ter 14/07/26 | Qua 15/07/26 | Sprint 12 |
| 313 | 1.2.7.22.4 | Aprovação | inactive | 1d | 2026-07-17 | 2026-07-17 | 312 |  |  | 2026-07-16 | 2026-07-16 | 1d | 2026-06-10 | 2026-06-10 | 7d |  |  |  | TUBULAÇÃO / UTILIDADES | Qui 16/07/26 | Qui 16/07/26 | Sprint 12 |
| 314 | 1.2.7.23 | **LK-F0009-0305-MB-T-00001** |  | 7d | 2026-07-03 A | 2026-07-15 |  | 43% | 4d | 2026-06-02 | 2026-06-10 | 7d | 2026-06-02 | 2026-06-10 | 9d |  |  |  | TUBULAÇÃO / UTILIDADES | Ter 02/06/26 | Qua 10/06/26 | Sprint 10 |
| 315 | 1.2.7.23.1 | Emissão inicial |  | 3d | 2026-07-03 A | 2026-07-07 A | 242 | 100% |  | 2026-06-02 | 2026-06-04 | 3d | 2026-06-02 | 2026-06-04 |  |  | finish no earlier than 2026-07-07 |  | TUBULAÇÃO / UTILIDADES | Ter 02/06/26 | Qui 04/06/26 | Sprint 10 |
| 316 | 1.2.7.23.2 | Análise Tecnored |  | 1d | 2026-07-08 | 2026-07-08 | 315 |  |  | 2026-06-05 | 2026-06-05 | 1d | 2026-06-05 | 2026-06-05 | 9d | 0d |  |  | TUBULAÇÃO / UTILIDADES | Sex 05/06/26 | Sex 05/06/26 | Sprint 11 |
| 317 | 1.2.7.23.3 | Atendimento de comentários |  | 2d | 2026-07-13 | 2026-07-14 | 316 |  |  | 2026-06-08 | 2026-06-09 | 2d | 2026-06-08 | 2026-06-09 | 9d | 0d |  |  | TUBULAÇÃO / UTILIDADES | Seg 08/06/26 | Ter 09/06/26 | Sprint 12 |
| 318 | 1.2.7.23.4 | Aprovação |  | 1d | 2026-07-15 | 2026-07-15 | 317 |  |  | 2026-06-10 | 2026-06-10 | 1d | 2026-06-10 | 2026-06-10 | 9d |  |  |  | TUBULAÇÃO / UTILIDADES | Qua 10/06/26 | Qua 10/06/26 | Sprint 12 |
| 319 | 1.2.7.24 | **MC-F0009-0305-MB-T-00002** | inactive | 14d | 2026-05-27 | 2026-06-17 |  |  |  | 2026-05-28 | 2026-06-16 | 14d | 2026-05-28 | 2026-06-16 | 27d |  |  |  | ESTRUTURA METÁLICA |  |  | Sprint 5 |
| 320 | 1.2.7.24.1 | Emissão inicial | inactive | 10d | 2026-05-27 | 2026-06-11 | 184 |  |  | 2026-05-28 | 2026-06-10 | 10d | 2026-05-28 | 2026-06-10 | 27d | 0d |  |  | ESTRUTURA METÁLICA |  |  | Sprint 5 |
| 321 | 1.2.7.24.2 | Análise Tecnored | inactive | 1d | 2026-06-12 | 2026-06-12 | 320 |  |  | 2026-06-11 | 2026-06-11 | 1d | 2026-06-11 | 2026-06-11 | 27d | 0d |  |  | ESTRUTURA METÁLICA |  |  | Sprint 7 |
| 322 | 1.2.7.24.3 | Atendimento de comentários | inactive | 2d | 2026-06-15 | 2026-06-16 | 321 |  |  | 2026-06-12 | 2026-06-15 | 2d | 2026-06-12 | 2026-06-15 | 27d | 0d |  |  | ESTRUTURA METÁLICA |  |  | Sprint 8 |
| 323 | 1.2.7.24.4 | Aprovação | inactive | 1d | 2026-06-17 | 2026-06-17 | 322 |  |  | 2026-06-16 | 2026-06-16 | 1d | 2026-06-16 | 2026-06-16 | 27d |  |  |  | ESTRUTURA METÁLICA |  |  | Sprint 8 |
| 324 | 1.2.8 | **Estrutura metálica** |  | 15d | 2026-07-06 A | 2026-07-28 |  | 13% | 13.08d | 2026-06-15 | 2026-07-08 | 18d | 2026-06-15 | 2026-07-08 | 0d |  |  |  | ESTRUTURA METÁLICA | Seg 15/06/26 | Qua 08/07/26 | Sprint 11 |
| 325 | 1.2.8.1 | **CP-F0009-0305-MB-S-00001** | inactive | 33d | 2026-05-12 | 2026-06-29 |  |  |  |  |  |  |  |  | 19d |  |  | -0 |  |  |  | Sprint 3 |
| 326 | 1.2.8.1.1 | Emissão inicial | inactive | 3d | 2026-05-12 | 2026-05-14 | 21FS+5d |  |  |  |  |  |  |  | 45d | 26d |  | -0 |  |  |  | Sprint 3 |
| 327 | 1.2.8.1.2 | Análise Tecnored | inactive | 1d | 2026-06-24 | 2026-06-24 | 326, 9 |  |  |  |  |  |  |  | 19d | 0d |  | -0 |  |  |  | Sprint 9 |
| 328 | 1.2.8.1.3 | Atendimento de comentários | inactive | 2d | 2026-06-25 | 2026-06-26 | 327 |  |  |  |  |  |  |  | 19d | 0d |  | -0 |  |  |  | Sprint 9 |
| 329 | 1.2.8.1.4 | Aprovação | inactive | 1d | 2026-06-29 | 2026-06-29 | 328 |  |  |  |  |  |  |  | 19d |  |  | -0 |  |  |  | Sprint 10 |

| ID | WBS | Task | Duration | Start | Finish | Predecessors | Complete | Remaining | Baseline start | Baseline finish | Baseline duration | Baseline 1 start | Baseline 1 finish | Total slack | Free slack | Constraint | Disciplina | Início_LB_R0 | Término_LB_R0 | Sprints |
| --- | --- | --- | --- | --- | --- | --- | --- | --- | --- | --- | --- | --- | --- | --- | --- | --- | --- | --- | --- | --- |
| 330 | 1.2.8.2 | **ML-F0009-0305-MB-S-00001** | 4.75d | 2026-07-08 A | 2026-07-16 |  | 50% | 2.38d | 2026-06-17 | 2026-06-25 | 7d | 2026-06-17 | 2026-06-25 | 8.25d |  |  | ESTRUTURA METÁLICA | Qua 17/06/26 | Qui 25/06/26 | Sprint 11 |
| 331 | 1.2.8.2.1 | Emissão inicial | 3d | 2026-07-08 A | 2026-07-13 A | 346FS-8d | 100% |  | 2026-06-17 | 2026-06-19 | 3d | 2026-06-17 | 2026-06-19 |  |  | start no earlier than 2026-06-23 | ESTRUTURA METÁLICA | Qua 17/06/26 | Sex 19/06/26 | Sprint 11 |
| 332 | 1.2.8.2.2 | Análise Tecnored | 1d | 2026-07-13 | 2026-07-14 | 331 |  |  | 2026-06-22 | 2026-06-22 | 1d | 2026-06-22 | 2026-06-22 | 2.25d | 0d |  | ESTRUTURA METÁLICA | Seg 22/06/26 | Seg 22/06/26 | Sprint 12 |
| 333 | 1.2.8.2.3 | Atendimento de comentários | 1d | 2026-07-14 | 2026-07-15 | 332 |  |  | 2026-06-23 | 2026-06-24 | 2d | 2026-06-23 | 2026-06-24 | 2.25d | 0d |  | ESTRUTURA METÁLICA | Ter 23/06/26 | Qua 24/06/26 | Sprint 12 |
| 334 | 1.2.8.2.4 | Aprovação | 1d | 2026-07-15 | 2026-07-16 | 333 |  |  | 2026-06-25 | 2026-06-25 | 1d | 2026-06-25 | 2026-06-25 | 8.25d |  |  | ESTRUTURA METÁLICA | Qui 25/06/26 | Qui 25/06/26 | Sprint 12 |
| 335 | 1.2.8.3 | **PQ-F0009-0305-MB-S-00001** | 6d | 2026-07-13 A | 2026-07-21 |  | 50% | 3d | 2026-06-30 | 2026-07-07 | 6d | 2026-06-30 | 2026-07-07 | 5.25d |  |  | ESTRUTURA METÁLICA | Ter 30/06/26 | Ter 07/07/26 | Sprint 12 |
| 336 | 1.2.8.3.1 | Emissão inicial | 3d | 2026-07-13 A | 2026-07-16 A | 331 | 100% |  | 2026-06-30 | 2026-07-01 | 2d | 2026-06-30 | 2026-07-01 |  |  | finish no earlier than 2026-07-02 | ESTRUTURA METÁLICA | Ter 30/06/26 | Qua 01/07/26 | Sprint 12 |
| 337 | 1.2.8.3.2 | Análise Tecnored | 1d | 2026-07-16 | 2026-07-17 | 336 |  |  | 2026-07-02 | 2026-07-02 | 1d | 2026-07-02 | 2026-07-02 | 5.25d | 0d | start no earlier than 2026-06-30 | ESTRUTURA METÁLICA | Qui 02/07/26 | Qui 02/07/26 | Sprint 12 |
| 338 | 1.2.8.3.3 | Atendimento de comentários | 1d | 2026-07-17 | 2026-07-20 | 337 |  |  | 2026-07-03 | 2026-07-06 | 2d | 2026-07-03 | 2026-07-06 | 5.25d | 0d | start no earlier than 2026-07-01 | ESTRUTURA METÁLICA | Sex 03/07/26 | Seg 06/07/26 | Sprint 12 |
| 339 | 1.2.8.3.4 | Aprovação | 1d | 2026-07-20 | 2026-07-21 | 338 |  |  | 2026-07-07 | 2026-07-07 | 1d | 2026-07-07 | 2026-07-07 | 5.25d |  | start no earlier than 2026-07-02 | ESTRUTURA METÁLICA | Ter 07/07/26 | Ter 07/07/26 | Sprint 13 |
| 340 | 1.2.8.4 | **LM-F0009-0305-MB-S-00001** | 5d | 2026-07-16 A | 2026-07-23 |  | 40% | 3d | 2026-06-26 | 2026-07-03 | 6d | 2026-06-26 | 2026-07-03 | 3.25d |  |  | ESTRUTURA METÁLICA | Sex 26/06/26 | Sex 03/07/26 | Sprint 12 |
| 341 | 1.2.8.4.1 | Emissão inicial | 2d | 2026-07-16 A | 2026-07-20 A | 334 | 100% |  | 2026-06-26 | 2026-06-29 | 2d | 2026-06-26 | 2026-06-29 |  |  |  | ESTRUTURA METÁLICA | Sex 26/06/26 | Seg 29/06/26 | Sprint 12 |
| 342 | 1.2.8.4.2 | Análise Tecnored | 1d | 2026-07-20 | 2026-07-21 | 341 |  |  | 2026-06-30 | 2026-06-30 | 1d | 2026-06-30 | 2026-06-30 | 3.25d | 0d |  | ESTRUTURA METÁLICA | Ter 30/06/26 | Ter 30/06/26 | Sprint 13 |
| 343 | 1.2.8.4.3 | Atendimento de comentários | 1d | 2026-07-21 | 2026-07-22 | 342 |  |  | 2026-07-01 | 2026-07-02 | 2d | 2026-07-01 | 2026-07-02 | 3.25d | 0d |  | ESTRUTURA METÁLICA | Qua 01/07/26 | Qui 02/07/26 | Sprint 13 |
| 344 | 1.2.8.4.4 | Aprovação | 1d | 2026-07-22 | 2026-07-23 | 343 |  |  | 2026-07-03 | 2026-07-03 | 1d | 2026-07-03 | 2026-07-03 | 3.25d |  |  | ESTRUTURA METÁLICA | Sex 03/07/26 | Sex 03/07/26 | Sprint 13 |
| 345 | 1.2.8.5 | **MC-F0009-0305-MB-S-00001** | 6d | 2026-07-06 A | 2026-07-15 |  | 50% | 3d | 2026-06-15 | 2026-06-25 | 9d | 2026-06-15 | 2026-06-25 | 9d |  |  | ESTRUTURA METÁLICA | Seg 15/06/26 | Qui 25/06/26 | Sprint 11 |
| 346 | 1.2.8.5.1 | Emissão inicial | 3d | 2026-07-06 A | 2026-07-08 A | 169, 174, 179, 164 | 100% |  | 2026-06-15 | 2026-06-19 | 5d | 2026-06-15 | 2026-06-19 |  |  | start no earlier than 2026-07-06 | ESTRUTURA METÁLICA | Seg 15/06/26 | Sex 19/06/26 | Sprint 11 |
| 347 | 1.2.8.5.2 | Análise Tecnored | 1d | 2026-07-13 | 2026-07-13 | 346 |  |  | 2026-06-22 | 2026-06-22 | 1d | 2026-06-22 | 2026-06-22 | 9d | 0d |  | ESTRUTURA METÁLICA | Seg 22/06/26 | Seg 22/06/26 | Sprint 12 |
| 348 | 1.2.8.5.3 | Atendimento de comentários | 1d | 2026-07-14 | 2026-07-14 | 347 |  |  | 2026-06-23 | 2026-06-24 | 2d | 2026-06-23 | 2026-06-24 | 9d | 0d |  | ESTRUTURA METÁLICA | Ter 23/06/26 | Qua 24/06/26 | Sprint 12 |
| 349 | 1.2.8.5.4 | Aprovação | 1d | 2026-07-15 | 2026-07-15 | 348 |  |  | 2026-06-25 | 2026-06-25 | 1d | 2026-06-25 | 2026-06-25 | 9d |  |  | ESTRUTURA METÁLICA | Qui 25/06/26 | Qui 25/06/26 | Sprint 12 |
| 350 | 1.2.8.6 | **AG-F0009-0305-MB-S-00001** | 7d | 2026-07-20 A | 2026-07-28 |  | 57% | 3d | 2026-06-25 | 2026-07-08 | 10d | 2026-06-25 | 2026-07-08 | 0d |  |  | ESTRUTURA METÁLICA | Qui 25/06/26 | Qua 08/07/26 | Sprint 13 |
| 351 | 1.2.8.6.1 | Emissão inicial | 4d | 2026-07-20 A | 2026-07-23 A | 333 | 100% |  | 2026-06-25 | 2026-07-02 | 6d | 2026-06-25 | 2026-07-02 |  |  | finish no earlier than 2026-07-23 | ESTRUTURA METÁLICA | Qui 25/06/26 | Qui 02/07/26 | Sprint 13 |
| 352 | 1.2.8.6.2 | Análise Tecnored | 1d | 2026-07-24 | 2026-07-24 | 351 |  |  | 2026-07-03 | 2026-07-03 | 1d | 2026-07-03 | 2026-07-03 | 0d |  |  | ESTRUTURA METÁLICA | Sex 03/07/26 | Sex 03/07/26 | Sprint 13 |
| 353 | 1.2.8.6.3 | Atendimento de comentários | 1d | 2026-07-27 | 2026-07-27 | 352 |  |  | 2026-07-06 | 2026-07-07 | 2d | 2026-07-06 | 2026-07-07 | 0d |  |  | ESTRUTURA METÁLICA | Seg 06/07/26 | Ter 07/07/26 | Fora do Período |
| 354 | 1.2.8.6.4 | Aprovação | 1d | 2026-07-28 | 2026-07-28 | 353 |  |  | 2026-07-08 | 2026-07-08 | 1d | 2026-07-08 | 2026-07-08 | 0d |  |  | ESTRUTURA METÁLICA | Qua 08/07/26 | Qua 08/07/26 | Fora do Período |

| ID | WBS | Task | Duration | Start | Finish | Predecessors | Baseline start | Baseline finish | Baseline duration | Baseline 1 start | Baseline 1 finish | Total slack | Constraint | Disciplina | Início_LB_R0 | Término_LB_R0 | Sprints |
| --- | --- | --- | --- | --- | --- | --- | --- | --- | --- | --- | --- | --- | --- | --- | --- | --- | --- |
| 355 | 1.2.8.7 | **AG-F0009-0305-MB-S-00002** | 7d | 2026-07-20 | 2026-07-28 |  | 2026-06-25 | 2026-07-08 | 10d | 2026-06-25 | 2026-07-08 | 0d |  | ESTRUTURA METÁLICA | Qui 25/06/26 | Qua 08/07/26 | Sprint 13 |
| 356 | 1.2.8.7.1 | Emissão inicial | 4d | 2026-07-20 | 2026-07-23 | 333 | 2026-06-25 | 2026-07-02 | 6d | 2026-06-25 | 2026-07-02 | 0d | finish no earlier than 2026-07-23 | ESTRUTURA METÁLICA | Qui 25/06/26 | Qui 02/07/26 | Sprint 13 |
| 357 | 1.2.8.7.2 | Análise Tecnored | 1d | 2026-07-24 | 2026-07-24 | 356 | 2026-07-03 | 2026-07-03 | 1d | 2026-07-03 | 2026-07-03 | 0d |  | ESTRUTURA METÁLICA | Sex 03/07/26 | Sex 03/07/26 | Sprint 13 |
| 358 | 1.2.8.7.3 | Atendimento de comentários | 1d | 2026-07-27 | 2026-07-27 | 357 | 2026-07-06 | 2026-07-07 | 2d | 2026-07-06 | 2026-07-07 | 0d |  | ESTRUTURA METÁLICA | Seg 06/07/26 | Ter 07/07/26 | Fora do Período |
| 359 | 1.2.8.7.4 | Aprovação | 1d | 2026-07-28 | 2026-07-28 | 358 | 2026-07-08 | 2026-07-08 | 1d | 2026-07-08 | 2026-07-08 | 0d |  | ESTRUTURA METÁLICA | Qua 08/07/26 | Qua 08/07/26 | Fora do Período |
| 360 | 1.2.8.8 | **AG-F0009-0305-MB-S-00003** | 7d | 2026-07-20 | 2026-07-28 |  | 2026-06-25 | 2026-07-08 | 10d | 2026-06-25 | 2026-07-08 | 0d |  | ESTRUTURA METÁLICA | Qui 25/06/26 | Qua 08/07/26 | Sprint 13 |
| 361 | 1.2.8.8.1 | Emissão inicial | 4d | 2026-07-20 | 2026-07-23 | 333 | 2026-06-25 | 2026-07-02 | 6d | 2026-06-25 | 2026-07-02 | 0d | finish no earlier than 2026-07-23 | ESTRUTURA METÁLICA | Qui 25/06/26 | Qui 02/07/26 | Sprint 13 |
| 362 | 1.2.8.8.2 | Análise Tecnored | 1d | 2026-07-24 | 2026-07-24 | 361 | 2026-07-03 | 2026-07-03 | 1d | 2026-07-03 | 2026-07-03 | 0d |  | ESTRUTURA METÁLICA | Sex 03/07/26 | Sex 03/07/26 | Sprint 13 |
| 363 | 1.2.8.8.3 | Atendimento de comentários | 1d | 2026-07-27 | 2026-07-27 | 362 | 2026-07-06 | 2026-07-07 | 2d | 2026-07-06 | 2026-07-07 | 0d |  | ESTRUTURA METÁLICA | Seg 06/07/26 | Ter 07/07/26 | Fora do Período |
| 364 | 1.2.8.8.4 | Aprovação | 1d | 2026-07-28 | 2026-07-28 | 363 | 2026-07-08 | 2026-07-08 | 1d | 2026-07-08 | 2026-07-08 | 0d |  | ESTRUTURA METÁLICA | Qua 08/07/26 | Qua 08/07/26 | Fora do Período |
| 365 | 1.2.8.9 | **AG-F0009-0305-MB-S-00004** | 7d | 2026-07-20 | 2026-07-28 |  | 2026-06-25 | 2026-07-08 | 10d | 2026-06-25 | 2026-07-08 | 0d |  | ESTRUTURA METÁLICA | Qui 25/06/26 | Qua 08/07/26 | Sprint 13 |
| 366 | 1.2.8.9.1 | Emissão inicial | 4d | 2026-07-20 | 2026-07-23 | 333 | 2026-06-25 | 2026-07-02 | 6d | 2026-06-25 | 2026-07-02 | 0d | finish no earlier than 2026-07-23 | ESTRUTURA METÁLICA | Qui 25/06/26 | Qui 02/07/26 | Sprint 13 |
| 367 | 1.2.8.9.2 | Análise Tecnored | 1d | 2026-07-24 | 2026-07-24 | 366 | 2026-07-03 | 2026-07-03 | 1d | 2026-07-03 | 2026-07-03 | 0d |  | ESTRUTURA METÁLICA | Sex 03/07/26 | Sex 03/07/26 | Sprint 13 |
| 368 | 1.2.8.9.3 | Atendimento de comentários | 1d | 2026-07-27 | 2026-07-27 | 367 | 2026-07-06 | 2026-07-07 | 2d | 2026-07-06 | 2026-07-07 | 0d |  | ESTRUTURA METÁLICA | Seg 06/07/26 | Ter 07/07/26 | Fora do Período |
| 369 | 1.2.8.9.4 | Aprovação | 1d | 2026-07-28 | 2026-07-28 | 368 | 2026-07-08 | 2026-07-08 | 1d | 2026-07-08 | 2026-07-08 | 0d |  | ESTRUTURA METÁLICA | Qua 08/07/26 | Qua 08/07/26 | Fora do Período |
| 370 | 1.2.8.10 | **AG-F0009-0305-MB-S-00005** | 7d | 2026-07-20 | 2026-07-28 |  | 2026-06-25 | 2026-07-08 | 10d | 2026-06-25 | 2026-07-08 | 0d |  | ESTRUTURA METÁLICA | Qui 25/06/26 | Qua 08/07/26 | Sprint 13 |
| 371 | 1.2.8.10.1 | Emissão inicial | 4d | 2026-07-20 | 2026-07-23 | 333 | 2026-06-25 | 2026-07-02 | 6d | 2026-06-25 | 2026-07-02 | 0d | finish no earlier than 2026-07-23 | ESTRUTURA METÁLICA | Qui 25/06/26 | Qui 02/07/26 | Sprint 13 |
| 372 | 1.2.8.10.2 | Análise Tecnored | 1d | 2026-07-24 | 2026-07-24 | 371 | 2026-07-03 | 2026-07-03 | 1d | 2026-07-03 | 2026-07-03 | 0d |  | ESTRUTURA METÁLICA | Sex 03/07/26 | Sex 03/07/26 | Sprint 13 |
| 373 | 1.2.8.10.3 | Atendimento de comentários | 1d | 2026-07-27 | 2026-07-27 | 372 | 2026-07-06 | 2026-07-07 | 2d | 2026-07-06 | 2026-07-07 | 0d | finish no earlier than 2026-07-10 | ESTRUTURA METÁLICA | Seg 06/07/26 | Ter 07/07/26 | Fora do Período |
| 374 | 1.2.8.10.4 | Aprovação | 1d | 2026-07-28 | 2026-07-28 | 373 | 2026-07-08 | 2026-07-08 | 1d | 2026-07-08 | 2026-07-08 | 0d | start no earlier than 2026-07-13 | ESTRUTURA METÁLICA | Qua 08/07/26 | Qua 08/07/26 | Fora do Período |
| 375 | 1.2.8.11 | **AG-F0009-0305-MB-S-00006** | 7d | 2026-07-20 | 2026-07-28 |  | 2026-06-25 | 2026-07-08 | 10d | 2026-06-25 | 2026-07-08 | 0d |  | ESTRUTURA METÁLICA | Qui 25/06/26 | Qua 08/07/26 | Sprint 13 |
| 376 | 1.2.8.11.1 | Emissão inicial | 4d | 2026-07-20 | 2026-07-23 | 333 | 2026-06-25 | 2026-07-02 | 6d | 2026-06-25 | 2026-07-02 | 0d | finish no earlier than 2026-07-23 | ESTRUTURA METÁLICA | Qui 25/06/26 | Qui 02/07/26 | Sprint 13 |
| 377 | 1.2.8.11.2 | Análise Tecnored | 1d | 2026-07-24 | 2026-07-24 | 376 | 2026-07-03 | 2026-07-03 | 1d | 2026-07-03 | 2026-07-03 | 0d |  | ESTRUTURA METÁLICA | Sex 03/07/26 | Sex 03/07/26 | Sprint 13 |
| 378 | 1.2.8.11.3 | Atendimento de comentários | 1d | 2026-07-27 | 2026-07-27 | 377 | 2026-07-06 | 2026-07-07 | 2d | 2026-07-06 | 2026-07-07 | 0d |  | ESTRUTURA METÁLICA | Seg 06/07/26 | Ter 07/07/26 | Fora do Período |
| 379 | 1.2.8.11.4 | Aprovação | 1d | 2026-07-28 | 2026-07-28 | 378 | 2026-07-08 | 2026-07-08 | 1d | 2026-07-08 | 2026-07-08 | 0d |  | ESTRUTURA METÁLICA | Qua 08/07/26 | Qua 08/07/26 | Fora do Período |

| ID | WBS | Task | Duration | Start | Finish | Predecessors | Baseline start | Baseline finish | Baseline duration | Baseline 1 start | Baseline 1 finish | Total slack | Constraint | Disciplina | Início_LB_R0 | Término_LB_R0 | Sprints |
| --- | --- | --- | --- | --- | --- | --- | --- | --- | --- | --- | --- | --- | --- | --- | --- | --- | --- |
| 380 | 1.2.8.12 | **AG-F0009-0305-MB-S-00007** | 7d | 2026-07-20 | 2026-07-28 |  | 2026-06-25 | 2026-07-08 | 10d | 2026-06-25 | 2026-07-08 | 0d |  | ESTRUTURA METÁLICA | Qui 25/06/26 | Qua 08/07/26 | Sprint 13 |
| 381 | 1.2.8.12.1 | Emissão inicial | 4d | 2026-07-20 | 2026-07-23 | 333 | 2026-06-25 | 2026-07-02 | 6d | 2026-06-25 | 2026-07-02 | 0d | finish no earlier than 2026-07-23 | ESTRUTURA METÁLICA | Qui 25/06/26 | Qui 02/07/26 | Sprint 13 |
| 382 | 1.2.8.12.2 | Análise Tecnored | 1d | 2026-07-24 | 2026-07-24 | 381 | 2026-07-03 | 2026-07-03 | 1d | 2026-07-03 | 2026-07-03 | 0d |  | ESTRUTURA METÁLICA | Sex 03/07/26 | Sex 03/07/26 | Sprint 13 |
| 383 | 1.2.8.12.3 | Atendimento de comentários | 1d | 2026-07-27 | 2026-07-27 | 382 | 2026-07-06 | 2026-07-07 | 2d | 2026-07-06 | 2026-07-07 | 0d |  | ESTRUTURA METÁLICA | Seg 06/07/26 | Ter 07/07/26 | Fora do Período |
| 384 | 1.2.8.12.4 | Aprovação | 1d | 2026-07-28 | 2026-07-28 | 383 | 2026-07-08 | 2026-07-08 | 1d | 2026-07-08 | 2026-07-08 | 0d |  | ESTRUTURA METÁLICA | Qua 08/07/26 | Qua 08/07/26 | Fora do Período |
| 385 | 1.2.8.13 | **AG-F0009-0305-MB-S-00008** | 7d | 2026-07-20 | 2026-07-28 |  | 2026-06-25 | 2026-07-08 | 10d | 2026-06-25 | 2026-07-08 | 0d |  | ESTRUTURA METÁLICA | Qui 25/06/26 | Qua 08/07/26 | Sprint 13 |
| 386 | 1.2.8.13.1 | Emissão inicial | 4d | 2026-07-20 | 2026-07-23 | 333 | 2026-06-25 | 2026-07-02 | 6d | 2026-06-25 | 2026-07-02 | 0d | finish no earlier than 2026-07-23 | ESTRUTURA METÁLICA | Qui 25/06/26 | Qui 02/07/26 | Sprint 13 |
| 387 | 1.2.8.13.2 | Análise Tecnored | 1d | 2026-07-24 | 2026-07-24 | 386 | 2026-07-03 | 2026-07-03 | 1d | 2026-07-03 | 2026-07-03 | 0d |  | ESTRUTURA METÁLICA | Sex 03/07/26 | Sex 03/07/26 | Sprint 13 |
| 388 | 1.2.8.13.3 | Atendimento de comentários | 1d | 2026-07-27 | 2026-07-27 | 387 | 2026-07-06 | 2026-07-07 | 2d | 2026-07-06 | 2026-07-07 | 0d |  | ESTRUTURA METÁLICA | Seg 06/07/26 | Ter 07/07/26 | Fora do Período |
| 389 | 1.2.8.13.4 | Aprovação | 1d | 2026-07-28 | 2026-07-28 | 388 | 2026-07-08 | 2026-07-08 | 1d | 2026-07-08 | 2026-07-08 | 0d |  | ESTRUTURA METÁLICA | Qua 08/07/26 | Qua 08/07/26 | Fora do Período |
| 390 | 1.2.8.14 | **AG-F0009-0305-MB-S-00009** | 7d | 2026-07-20 | 2026-07-28 |  | 2026-06-25 | 2026-07-08 | 10d | 2026-06-25 | 2026-07-08 | 0d |  | ESTRUTURA METÁLICA | Qui 25/06/26 | Qua 08/07/26 | Sprint 13 |
| 391 | 1.2.8.14.1 | Emissão inicial | 4d | 2026-07-20 | 2026-07-23 | 333 | 2026-06-25 | 2026-07-02 | 6d | 2026-06-25 | 2026-07-02 | 0d | finish no earlier than 2026-07-23 | ESTRUTURA METÁLICA | Qui 25/06/26 | Qui 02/07/26 | Sprint 13 |
| 392 | 1.2.8.14.2 | Análise Tecnored | 1d | 2026-07-24 | 2026-07-24 | 391 | 2026-07-03 | 2026-07-03 | 1d | 2026-07-03 | 2026-07-03 | 0d |  | ESTRUTURA METÁLICA | Sex 03/07/26 | Sex 03/07/26 | Sprint 13 |
| 393 | 1.2.8.14.3 | Atendimento de comentários | 1d | 2026-07-27 | 2026-07-27 | 392 | 2026-07-06 | 2026-07-07 | 2d | 2026-07-06 | 2026-07-07 | 0d |  | ESTRUTURA METÁLICA | Seg 06/07/26 | Ter 07/07/26 | Fora do Período |
| 394 | 1.2.8.14.4 | Aprovação | 1d | 2026-07-28 | 2026-07-28 | 393 | 2026-07-08 | 2026-07-08 | 1d | 2026-07-08 | 2026-07-08 | 0d |  | ESTRUTURA METÁLICA | Qua 08/07/26 | Qua 08/07/26 | Fora do Período |
| 395 | 1.2.8.15 | **AG-F0009-0305-MB-S-00010** | 7d | 2026-07-20 | 2026-07-28 |  | 2026-06-25 | 2026-07-08 | 10d | 2026-06-25 | 2026-07-08 | 0d |  | ESTRUTURA METÁLICA | Qui 25/06/26 | Qua 08/07/26 | Sprint 13 |
| 396 | 1.2.8.15.1 | Emissão inicial | 4d | 2026-07-20 | 2026-07-23 | 333 | 2026-06-25 | 2026-07-02 | 6d | 2026-06-25 | 2026-07-02 | 0d | finish no earlier than 2026-07-23 | ESTRUTURA METÁLICA | Qui 25/06/26 | Qui 02/07/26 | Sprint 13 |
| 397 | 1.2.8.15.2 | Análise Tecnored | 1d | 2026-07-24 | 2026-07-24 | 396 | 2026-07-03 | 2026-07-03 | 1d | 2026-07-03 | 2026-07-03 | 0d |  | ESTRUTURA METÁLICA | Sex 03/07/26 | Sex 03/07/26 | Sprint 13 |
| 398 | 1.2.8.15.3 | Atendimento de comentários | 1d | 2026-07-27 | 2026-07-27 | 397 | 2026-07-06 | 2026-07-07 | 2d | 2026-07-06 | 2026-07-07 | 0d |  | ESTRUTURA METÁLICA | Seg 06/07/26 | Ter 07/07/26 | Fora do Período |
| 399 | 1.2.8.15.4 | Aprovação | 1d | 2026-07-28 | 2026-07-28 | 398 | 2026-07-08 | 2026-07-08 | 1d | 2026-07-08 | 2026-07-08 | 0d |  | ESTRUTURA METÁLICA | Qua 08/07/26 | Qua 08/07/26 | Fora do Período |
| 400 | 1.2.8.16 | **PL-F0009-0305-MB-S-00001** | 12d | 2026-07-13 | 2026-07-28 |  | 2026-06-25 | 2026-07-07 | 9d | 2026-06-25 | 2026-07-07 | 0d |  | ESTRUTURA METÁLICA | Qui 25/06/26 | Ter 07/07/26 | Sprint 12 |
| 401 | 1.2.8.16.1 | Emissão inicial | 9d | 2026-07-13 | 2026-07-23 | 346FF | 2026-06-25 | 2026-07-01 | 5d | 2026-06-25 | 2026-07-01 | 0d | start no earlier than 2026-07-13 | ESTRUTURA METÁLICA | Qui 25/06/26 | Qua 01/07/26 | Sprint 12 |
| 402 | 1.2.8.16.2 | Análise Tecnored | 1d | 2026-07-24 | 2026-07-24 | 401 | 2026-07-02 | 2026-07-02 | 1d | 2026-07-02 | 2026-07-02 | 0d |  | ESTRUTURA METÁLICA | Qui 02/07/26 | Qui 02/07/26 | Sprint 13 |
| 403 | 1.2.8.16.3 | Atendimento de comentários | 1d | 2026-07-27 | 2026-07-27 | 402 | 2026-07-03 | 2026-07-06 | 2d | 2026-07-03 | 2026-07-06 | 0d |  | ESTRUTURA METÁLICA | Sex 03/07/26 | Seg 06/07/26 | Fora do Período |
| 404 | 1.2.8.16.4 | Aprovação | 1d | 2026-07-28 | 2026-07-28 | 403 | 2026-07-07 | 2026-07-07 | 1d | 2026-07-07 | 2026-07-07 | 0d |  | ESTRUTURA METÁLICA | Ter 07/07/26 | Ter 07/07/26 | Fora do Período |

| ID | WBS | Task | Type | Duration | Start | Finish | Predecessors | Complete | Remaining | Baseline start | Baseline finish | Baseline duration | Baseline 1 start | Baseline 1 finish | Total slack | Free slack | Constraint | Baseline cost | Disciplina | Início_LB_R0 | Término_LB_R0 | Sprints |
| --- | --- | --- | --- | --- | --- | --- | --- | --- | --- | --- | --- | --- | --- | --- | --- | --- | --- | --- | --- | --- | --- | --- |
| 405 | 1.2.8.17 | **PL-F0009-0305-MB-S-00002** |  | 12d | 2026-07-13 | 2026-07-28 |  |  |  | 2026-06-25 | 2026-07-07 | 9d | 2026-06-25 | 2026-07-07 | 0d |  |  |  | ESTRUTURA METÁLICA | Seg 13/07/26 | Ter 28/07/26 | Sprint 12 |
| 406 | 1.2.8.17.1 | Emissão inicial |  | 9d | 2026-07-13 | 2026-07-23 | 346FF |  |  | 2026-06-25 | 2026-07-01 | 5d | 2026-06-25 | 2026-07-01 | 0d |  | start no earlier than 2026-07-13 |  | ESTRUTURA METÁLICA | Seg 13/07/26 | Qui 23/07/26 | Sprint 12 |
| 407 | 1.2.8.17.2 | Análise Tecnored |  | 1d | 2026-07-24 | 2026-07-24 | 406 |  |  | 2026-07-02 | 2026-07-02 | 1d | 2026-07-02 | 2026-07-02 | 0d |  |  |  | ESTRUTURA METÁLICA | Sex 24/07/26 | Sex 24/07/26 | Sprint 13 |
| 408 | 1.2.8.17.3 | Atendimento de comentários |  | 1d | 2026-07-27 | 2026-07-27 | 407 |  |  | 2026-07-03 | 2026-07-06 | 2d | 2026-07-03 | 2026-07-06 | 0d |  |  |  | ESTRUTURA METÁLICA | Seg 27/07/26 | Seg 27/07/26 | Fora do Período |
| 409 | 1.2.8.17.4 | Aprovação |  | 1d | 2026-07-28 | 2026-07-28 | 408 |  |  | 2026-07-07 | 2026-07-07 | 1d | 2026-07-07 | 2026-07-07 | 0d |  |  |  | ESTRUTURA METÁLICA | Ter 28/07/26 | Ter 28/07/26 | Fora do Período |
| 410 | 1.2.9 | **Elétrica** |  | 27d | 2026-05-28 A | 2026-07-07 |  | 75% | 6.75d | 2026-05-21 | 2026-07-08 | 35d | 2026-05-21 | 2026-07-08 | 13d |  |  |  | ELÉTRICA | Qui 21/05/26 | Qua 08/07/26 | Sprint 5 |
| 411 | 1.2.9.1 | **CP-F0009-0305-MB-E-00001** | inactive | 23d | 2026-05-08 | 2026-06-11 |  |  |  |  |  |  |  |  | 31d |  |  | -0 |  |  |  | Sprint 2 |
| 412 | 1.2.9.1.1 | Emissão inicial | inactive | 5d | 2026-05-08 | 2026-05-14 | 21FS+3d |  |  |  |  |  |  |  | 45d | 14d |  | -0 |  |  |  | Sprint 2 |
| 413 | 1.2.9.1.2 | Análise Tecnored | inactive | 1d | 2026-06-08 | 2026-06-08 | 412, 7 |  |  |  |  |  |  |  | 31d | 0d |  | -0 |  |  |  | Sprint 7 |
| 414 | 1.2.9.1.3 | Atendimento de comentários | inactive | 2d | 2026-06-09 | 2026-06-10 | 413 |  |  |  |  |  |  |  | 31d | 0d |  | -0 |  |  |  | Sprint 7 |
| 415 | 1.2.9.1.4 | Aprovação | inactive | 1d | 2026-06-11 | 2026-06-11 | 414 |  |  |  |  |  |  |  | 31d |  |  | -0 |  |  |  | Sprint 7 |
| 416 | 1.2.9.2 | **ML-F0009-0305-MB-E-00001** | inactive | 6d | 2026-06-29 | 2026-07-06 |  |  |  | 2026-06-15 | 2026-06-29 | 11d | 2026-06-15 | 2026-06-29 | 8d |  |  |  | ELÉTRICA | Seg 15/06/26 | Seg 29/06/26 | Sprint 10 |
| 417 | 1.2.9.2.1 | Emissão inicial | inactive | 4d | 2026-06-29 | 2026-07-02 | 452FS-5d |  |  | 2026-06-15 | 2026-06-23 | 7d | 2026-06-15 | 2026-06-23 | 8d | 0d |  |  | ELÉTRICA | Seg 15/06/26 | Ter 23/06/26 | Sprint 10 |
| 418 | 1.2.9.2.2 | Análise Tecnored | inactive | 1d | 2026-07-03 | 2026-07-03 | 417 |  |  | 2026-06-24 | 2026-06-24 | 1d | 2026-06-24 | 2026-06-24 | 14d | 0d |  |  | ELÉTRICA | Qua 24/06/26 | Qua 24/06/26 | Sprint 10 |
| 419 | 1.2.9.2.3 | Atendimento de comentários | inactive | 1d | 2026-07-06 | 2026-07-06 | 418 |  |  | 2026-06-25 | 2026-06-26 | 2d | 2026-06-25 | 2026-06-26 | 14d | 0d |  |  | ELÉTRICA | Qui 25/06/26 | Sex 26/06/26 | Sprint 11 |
| 420 | 1.2.9.2.4 | Aprovação | inactive | 1d | 2026-07-06 | 2026-07-06 | 419FF |  |  | 2026-06-29 | 2026-06-29 | 1d | 2026-06-29 | 2026-06-29 | 14d |  |  |  | ELÉTRICA | Seg 29/06/26 | Seg 29/06/26 | Sprint 11 |
| 421 | 1.2.9.3 | **RL-F0009-0305-MB-E-00001** |  | 23d | 2026-06-03 A | 2026-07-07 |  | 70% | 6.9d | 2026-05-26 | 2026-06-03 | 7d | 2026-05-26 | 2026-06-03 | 13d |  |  |  | ELÉTRICA | Ter 26/05/26 | Qua 03/06/26 | Sprint 6 |
| 422 | 1.2.9.3.1 | Emissão inicial |  | 2d | 2026-06-03 A | 2026-06-08 A | 432FS-1d | 100% |  | 2026-05-26 | 2026-05-28 | 3d | 2026-05-26 | 2026-05-28 |  |  |  |  | ELÉTRICA | Ter 26/05/26 | Qui 28/05/26 | Sprint 6 |
| 423 | 1.2.9.3.2 | Análise Tecnored |  | 1d | 2026-06-09 A | 2026-06-09 A | 422 | 100% |  | 2026-05-29 | 2026-05-29 | 1d | 2026-05-29 | 2026-05-29 |  |  |  |  | ELÉTRICA | Sex 29/05/26 | Sex 29/05/26 | Sprint 7 |
| 424 | 1.2.9.3.3 | Atendimento de comentários |  | 1d | 2026-07-06 A | 2026-07-06 | 423 | 50% | 0.5d | 2026-06-01 | 2026-06-02 | 2d | 2026-06-01 | 2026-06-02 | 13d | 0d |  |  | ELÉTRICA | Seg 01/06/26 | Ter 02/06/26 | Sprint 11 |
| 425 | 1.2.9.3.4 | Aprovação |  | 1d | 2026-07-07 | 2026-07-07 | 424 |  |  | 2026-06-03 | 2026-06-03 | 1d | 2026-06-03 | 2026-06-03 | 13d |  |  |  | ELÉTRICA | Qua 03/06/26 | Qua 03/06/26 | Sprint 11 |
| 426 | 1.2.9.4 | **LE-F0009-0305-MB-E-00001** | inactive | 4d | 2026-07-03 | 2026-07-08 |  |  |  | 2026-06-15 | 2026-06-23 | 7d | 2026-06-15 | 2026-06-23 | 12d |  |  |  | ELÉTRICA | Seg 15/06/26 | Ter 23/06/26 | Sprint 10 |
| 427 | 1.2.9.4.1 | Emissão inicial | inactive | 2d | 2026-07-03 | 2026-07-06 | 452FS-1d |  |  | 2026-06-15 | 2026-06-17 | 3d | 2026-06-15 | 2026-06-17 | 12d | 0d |  |  | ELÉTRICA | Seg 15/06/26 | Qua 17/06/26 | Sprint 10 |
| 428 | 1.2.9.4.2 | Análise Tecnored | inactive | 1d | 2026-07-07 | 2026-07-07 | 427 |  |  | 2026-06-18 | 2026-06-18 | 1d | 2026-06-18 | 2026-06-18 | 12d | 0d |  |  | ELÉTRICA | Qui 18/06/26 | Qui 18/06/26 | Sprint 11 |
| 429 | 1.2.9.4.3 | Atendimento de comentários | inactive | 1d | 2026-07-08 | 2026-07-08 | 428 |  |  | 2026-06-19 | 2026-06-22 | 2d | 2026-06-19 | 2026-06-22 | 12d | 0d |  |  | ELÉTRICA | Sex 19/06/26 | Seg 22/06/26 | Sprint 11 |
| 430 | 1.2.9.4.4 | Aprovação | inactive | 1d | 2026-07-08 | 2026-07-08 | 429FF |  |  | 2026-06-23 | 2026-06-23 | 1d | 2026-06-23 | 2026-06-23 | 12d |  |  |  | ELÉTRICA | Ter 23/06/26 | Ter 23/06/26 | Sprint 11 |

| ID | WBS | Task | Type | Duration | Start | Finish | Predecessors | Complete | Remaining | Baseline start | Baseline finish | Baseline duration | Baseline 1 start | Baseline 1 finish | Total slack | Free slack | Constraint | Disciplina | Início_LB_R0 | Término_LB_R0 | Sprints |
| --- | --- | --- | --- | --- | --- | --- | --- | --- | --- | --- | --- | --- | --- | --- | --- | --- | --- | --- | --- | --- | --- |
| 431 | 1.2.9.5 | **LR-F0009-0305-MB-E-00001** |  | 19d | 2026-05-28 A | 2026-06-25 |  | 90% | 1.9d | 2026-05-21 | 2026-05-29 | 7d | 2026-05-21 | 2026-05-29 | 21d |  |  | ELÉTRICA | Qui 21/05/26 | Sex 29/05/26 | Sprint 5 |
| 432 | 1.2.9.5.1 | Emissão inicial |  | 4d | 2026-05-28 A | 2026-06-02 A | 79FS-1d | 100% |  | 2026-05-21 | 2026-05-25 | 3d | 2026-05-21 | 2026-05-25 |  |  |  | ELÉTRICA | Qui 21/05/26 | Seg 25/05/26 | Sprint 5 |
| 433 | 1.2.9.5.2 | Análise Tecnored |  | 4d | 2026-06-02 A | 2026-06-09 A | 432 | 100% |  | 2026-05-26 | 2026-05-26 | 1d | 2026-05-26 | 2026-05-26 |  |  |  | ELÉTRICA | Ter 26/05/26 | Ter 26/05/26 | Sprint 6 |
| 434 | 1.2.9.5.3 | Atendimento de comentários |  | 1d | 2026-06-24 A | 2026-06-24 A | 433 | 100% |  | 2026-05-27 | 2026-05-28 | 2d | 2026-05-27 | 2026-05-28 |  |  |  | ELÉTRICA | Qua 27/05/26 | Qui 28/05/26 | Sprint 9 |
| 435 | 1.2.9.5.4 | Aprovação |  | 1d | 2026-06-25 | 2026-06-25 | 434FF |  |  | 2026-05-29 | 2026-05-29 | 1d | 2026-05-29 | 2026-05-29 | 21d |  | start no earlier than 2026-06-25 | ELÉTRICA | Sex 29/05/26 | Sex 29/05/26 | Sprint 9 |
| 436 | 1.2.9.6 | **LM-F0009-0305-MB-E-00001** | inactive | 4d | 2026-07-06 | 2026-07-13 |  |  |  | 2026-06-30 | 2026-07-07 | 6d | 2026-06-30 | 2026-07-07 | 8d |  |  | ELÉTRICA | Ter 30/06/26 | Ter 07/07/26 | Sprint 11 |
| 437 | 1.2.9.6.1 | Emissão inicial | inactive | 2d | 2026-07-06 | 2026-07-07 | 458FS-1d |  |  | 2026-06-30 | 2026-07-01 | 2d | 2026-06-30 | 2026-07-01 | 8d | 0d |  | ELÉTRICA | Ter 30/06/26 | Qua 01/07/26 | Sprint 11 |
| 438 | 1.2.9.6.2 | Análise Tecnored | inactive | 1d | 2026-07-08 | 2026-07-08 | 437 |  |  | 2026-07-02 | 2026-07-02 | 1d | 2026-07-02 | 2026-07-02 | 11d | 0d |  | ELÉTRICA | Qui 02/07/26 | Qui 02/07/26 | Sprint 11 |
| 439 | 1.2.9.6.3 | Atendimento de comentários | inactive | 1d | 2026-07-13 | 2026-07-13 | 438 |  |  | 2026-07-03 | 2026-07-06 | 2d | 2026-07-03 | 2026-07-06 | 11d | 0d |  | ELÉTRICA | Sex 03/07/26 | Seg 06/07/26 | Sprint 12 |
| 440 | 1.2.9.6.4 | Aprovação | inactive | 1d | 2026-07-13 | 2026-07-13 | 439FF |  |  | 2026-07-07 | 2026-07-07 | 1d | 2026-07-07 | 2026-07-07 | 11d |  |  | ELÉTRICA | Ter 07/07/26 | Ter 07/07/26 | Sprint 12 |
| 441 | 1.2.9.7 | **PQ-F0009-0305-MB-E-00001** | inactive | 3d | 2026-07-06 | 2026-07-08 |  |  |  | 2026-07-02 | 2026-07-08 | 5d | 2026-07-02 | 2026-07-08 | 12d |  |  | ELÉTRICA | Qui 02/07/26 | Qua 08/07/26 | Sprint 11 |
| 442 | 1.2.9.7.1 | Emissão inicial | inactive | 1d | 2026-07-06 | 2026-07-06 | 437SS |  |  | 2026-07-02 | 2026-07-02 | 1d | 2026-07-02 | 2026-07-02 | 12d | 0d |  | AUTOMAÇÃO E INSTRUMENTAÇÃO | Qui 02/07/26 | Qui 02/07/26 | Sprint 11 |
| 443 | 1.2.9.7.2 | Análise Tecnored | inactive | 1d | 2026-07-07 | 2026-07-07 | 442 |  |  | 2026-07-03 | 2026-07-03 | 1d | 2026-07-03 | 2026-07-03 | 12d | 0d |  | AUTOMAÇÃO E INSTRUMENTAÇÃO | Sex 03/07/26 | Sex 03/07/26 | Sprint 11 |
| 444 | 1.2.9.7.3 | Atendimento de comentários | inactive | 1d | 2026-07-08 | 2026-07-08 | 443 |  |  | 2026-07-06 | 2026-07-07 | 2d | 2026-07-06 | 2026-07-07 | 12d | 0d |  | AUTOMAÇÃO E INSTRUMENTAÇÃO | Seg 06/07/26 | Ter 07/07/26 | Sprint 11 |
| 445 | 1.2.9.7.4 | Aprovação | inactive | 1d | 2026-07-08 | 2026-07-08 | 444FF |  |  | 2026-07-08 | 2026-07-08 | 1d | 2026-07-08 | 2026-07-08 | 12d |  |  | AUTOMAÇÃO E INSTRUMENTAÇÃO | Qua 08/07/26 | Qua 08/07/26 | Sprint 11 |
| 446 | 1.2.9.8 | **MD-F0009-0305-MB-E-00001** | inactive | 7d | 2026-07-06 | 2026-07-16 |  |  |  | 2026-06-30 | 2026-07-08 | 7d | 2026-06-30 | 2026-07-08 | 8d |  |  | ELÉTRICA |  |  | Sprint 11 |
| 447 | 1.2.9.8.1 | Emissão inicial | inactive | 3d | 2026-07-06 | 2026-07-08 | 437FS-2d |  |  | 2026-06-30 | 2026-07-02 | 3d | 2026-06-30 | 2026-07-02 | 8d | 0d |  | ELÉTRICA |  |  | Sprint 11 |
| 448 | 1.2.9.8.2 | Análise Tecnored | inactive | 1d | 2026-07-13 | 2026-07-13 | 447 |  |  | 2026-07-03 | 2026-07-03 | 1d | 2026-07-03 | 2026-07-03 | 8d | 0d |  | ELÉTRICA |  |  | Sprint 12 |
| 449 | 1.2.9.8.3 | Atendimento de comentários | inactive | 2d | 2026-07-14 | 2026-07-15 | 448 |  |  | 2026-07-06 | 2026-07-07 | 2d | 2026-07-06 | 2026-07-07 | 8d | 0d |  | ELÉTRICA |  |  | Sprint 12 |
| 450 | 1.2.9.8.4 | Aprovação | inactive | 1d | 2026-07-16 | 2026-07-16 | 449 |  |  | 2026-07-08 | 2026-07-08 | 1d | 2026-07-08 | 2026-07-08 | 8d |  |  | ELÉTRICA |  |  | Sprint 12 |
| 451 | 1.2.9.9 | **MC-F0009-0305-MB-E-00001** |  | 4d | 2026-07-02 A | 2026-07-07 |  | 50% | 2d | 2026-06-08 | 2026-06-18 | 9d | 2026-06-08 | 2026-06-18 | 13d |  |  | ELÉTRICA | Seg 08/06/26 | Qui 18/06/26 | Sprint 10 |
| 452 | 1.2.9.9.1 | Emissão inicial |  | 2d | 2026-07-02 A | 2026-07-03 A | 472FS-1d | 100% |  | 2026-06-08 | 2026-06-12 | 5d | 2026-06-08 | 2026-06-12 |  |  | start no earlier than 2026-06-26 | ELÉTRICA | Seg 08/06/26 | Sex 12/06/26 | Sprint 10 |
| 453 | 1.2.9.9.2 | Análise Tecnored |  | 1d | 2026-07-06 A | 2026-07-06 | 452 | 50% | 0.5d | 2026-06-15 | 2026-06-15 | 1d | 2026-06-15 | 2026-06-15 | 13d | 0d |  | ELÉTRICA | Seg 15/06/26 | Seg 15/06/26 | Sprint 11 |
| 454 | 1.2.9.9.3 | Atendimento de comentários |  | 1d | 2026-07-07 | 2026-07-07 | 453 |  |  | 2026-06-16 | 2026-06-17 | 2d | 2026-06-16 | 2026-06-17 | 13d | 0d |  | ELÉTRICA | Ter 16/06/26 | Qua 17/06/26 | Sprint 11 |
| 455 | 1.2.9.9.4 | Aprovação |  | 1d | 2026-07-07 | 2026-07-07 | 454FF |  |  | 2026-06-18 | 2026-06-18 | 1d | 2026-06-18 | 2026-06-18 | 13d |  |  | ELÉTRICA | Qui 18/06/26 | Qui 18/06/26 | Sprint 11 |

| ID | WBS | Task | Type | Duration | Start | Finish | Predecessors | Complete | Remaining | Baseline start | Baseline finish | Baseline duration | Baseline 1 start | Baseline 1 finish | Total slack | Free slack | Constraint | Baseline cost | Disciplina | Início_LB_R0 | Término_LB_R0 | Sprints |
| --- | --- | --- | --- | --- | --- | --- | --- | --- | --- | --- | --- | --- | --- | --- | --- | --- | --- | --- | --- | --- | --- | --- |
| 456 | 1.2.9.10 | **AG-F0009-0305-MB-E-00001** | inactive | 4d | 2026-07-02 | 2026-07-07 |  |  |  | 2026-06-24 | 2026-07-02 | 7d | 2026-06-24 | 2026-07-02 | 8d |  |  |  | ELÉTRICA | Qua 24/06/26 | Qui 02/07/26 | Sprint 10 |
| 457 | 1.2.9.10.1 | Emissão inicial | inactive | 2d | 2026-07-02 | 2026-07-03 | 417FS-1d |  |  | 2026-06-24 | 2026-06-26 | 3d | 2026-06-24 | 2026-06-26 | 8d | 0d | start no earlier than 2026-07-01 |  | ELÉTRICA | Qua 24/06/26 | Sex 26/06/26 | Sprint 10 |
| 458 | 1.2.9.10.2 | Análise Tecnored | inactive | 1d | 2026-07-06 | 2026-07-06 | 457 |  |  | 2026-06-29 | 2026-06-29 | 1d | 2026-06-29 | 2026-06-29 | 8d | 0d |  |  | ELÉTRICA | Seg 29/06/26 | Seg 29/06/26 | Sprint 11 |
| 459 | 1.2.9.10.3 | Atendimento de comentários | inactive | 1d | 2026-07-07 | 2026-07-07 | 458 |  |  | 2026-06-30 | 2026-07-01 | 2d | 2026-06-30 | 2026-07-01 | 13d | 0d |  |  | ELÉTRICA | Ter 30/06/26 | Qua 01/07/26 | Sprint 11 |
| 460 | 1.2.9.10.4 | Aprovação | inactive | 1d | 2026-07-07 | 2026-07-07 | 459FF |  |  | 2026-07-02 | 2026-07-02 | 1d | 2026-07-02 | 2026-07-02 | 13d |  |  |  | ELÉTRICA | Qui 02/07/26 | Qui 02/07/26 | Sprint 11 |
| 461 | 1.2.9.11 | **DU-F0009-0305-MB-E-00001** | inactive | 4d | 2026-06-18 | 2026-06-23 |  |  |  | 2026-05-29 | 2026-06-08 | 7d | 2026-05-29 | 2026-06-08 | 22d |  |  |  | AUTOMAÇÃO E INSTRUMENTAÇÃO | Sex 29/05/26 | Seg 08/06/26 | Sprint 8 |
| 462 | 1.2.9.11.1 | Emissão inicial | inactive | 2d | 2026-06-18 | 2026-06-19 | 422FS-1d |  |  | 2026-05-29 | 2026-06-02 | 3d | 2026-05-29 | 2026-06-02 | 22d | 0d | finish no earlier than 2026-06-19 |  | AUTOMAÇÃO E INSTRUMENTAÇÃO | Sex 29/05/26 | Ter 02/06/26 | Sprint 8 |
| 463 | 1.2.9.11.2 | Análise Tecnored | inactive | 1d | 2026-06-22 | 2026-06-22 | 462 |  |  | 2026-06-03 | 2026-06-03 | 1d | 2026-06-03 | 2026-06-03 | 23d | 0d |  |  | AUTOMAÇÃO E INSTRUMENTAÇÃO | Qua 03/06/26 | Qua 03/06/26 | Sprint 9 |
| 464 | 1.2.9.11.3 | Atendimento de comentários | inactive | 1d | 2026-06-23 | 2026-06-23 | 463 |  |  | 2026-06-04 | 2026-06-05 | 2d | 2026-06-04 | 2026-06-05 | 23d | 0d |  |  | AUTOMAÇÃO E INSTRUMENTAÇÃO | Qui 04/06/26 | Sex 05/06/26 | Sprint 9 |
| 465 | 1.2.9.11.4 | Aprovação | inactive | 1d | 2026-06-23 | 2026-06-23 | 464FF |  |  | 2026-06-08 | 2026-06-08 | 1d | 2026-06-08 | 2026-06-08 | 23d |  |  |  | AUTOMAÇÃO E INSTRUMENTAÇÃO | Seg 08/06/26 | Seg 08/06/26 | Sprint 9 |
| 466 | 1.2.9.12 | **AG-F0009-0305-MB-E-00002** | inactive | 4d | 2026-07-06 | 2026-07-13 |  |  |  | 2026-06-24 | 2026-07-03 | 8d | 2026-06-24 | 2026-07-03 | 11d |  |  |  | ELÉTRICA | Qua 24/06/26 | Sex 03/07/26 | Sprint 11 |
| 467 | 1.2.9.12.1 | Emissão inicial | inactive | 2d | 2026-07-06 | 2026-07-07 | 417FS+1d |  |  | 2026-06-24 | 2026-06-29 | 4d | 2026-06-24 | 2026-06-29 | 11d | 0d | start no earlier than 2026-07-02 |  | ELÉTRICA | Qua 24/06/26 | Seg 29/06/26 | Sprint 11 |
| 468 | 1.2.9.12.2 | Análise Tecnored | inactive | 1d | 2026-07-08 | 2026-07-08 | 467 |  |  | 2026-06-30 | 2026-06-30 | 1d | 2026-06-30 | 2026-06-30 | 11d | 0d |  |  | ELÉTRICA | Ter 30/06/26 | Ter 30/06/26 | Sprint 11 |
| 469 | 1.2.9.12.3 | Atendimento de comentários | inactive | 1d | 2026-07-13 | 2026-07-13 | 468 |  |  | 2026-07-01 | 2026-07-02 | 2d | 2026-07-01 | 2026-07-02 | 11d | 0d |  |  | ELÉTRICA | Qua 01/07/26 | Qui 02/07/26 | Sprint 12 |
| 470 | 1.2.9.12.4 | Aprovação | inactive | 1d | 2026-07-13 | 2026-07-13 | 469FF |  |  | 2026-07-03 | 2026-07-03 | 1d | 2026-07-03 | 2026-07-03 | 11d |  |  |  | ELÉTRICA | Sex 03/07/26 | Sex 03/07/26 | Sprint 12 |
| 471 | 1.2.9.13 | **FD-F0009-0305-MB-E-0001** | inactive | 4d | 2026-06-19 | 2026-06-24 |  |  |  | 2026-06-03 | 2026-06-11 | 7d | 2026-06-03 | 2026-06-11 | 22d |  |  |  | AUTOMAÇÃO E INSTRUMENTAÇÃO | Qua 03/06/26 | Qui 11/06/26 | Sprint 8 |
| 472 | 1.2.9.13.1 | Emissão inicial | inactive | 2d | 2026-06-19 | 2026-06-22 | 462FS-1d |  |  | 2026-06-03 | 2026-06-05 | 3d | 2026-06-03 | 2026-06-05 | 22d | 0d |  |  | AUTOMAÇÃO E INSTRUMENTAÇÃO | Qua 03/06/26 | Sex 05/06/26 | Sprint 8 |
| 473 | 1.2.9.13.2 | Análise Tecnored | inactive | 1d | 2026-06-23 | 2026-06-23 | 472 |  |  | 2026-06-08 | 2026-06-08 | 1d | 2026-06-08 | 2026-06-08 | 22d | 0d |  |  | AUTOMAÇÃO E INSTRUMENTAÇÃO | Seg 08/06/26 | Seg 08/06/26 | Sprint 9 |
| 474 | 1.2.9.13.3 | Atendimento de comentários | inactive | 1d | 2026-06-24 | 2026-06-24 | 473 |  |  | 2026-06-09 | 2026-06-10 | 2d | 2026-06-09 | 2026-06-10 | 22d | 0d |  |  | AUTOMAÇÃO E INSTRUMENTAÇÃO | Ter 09/06/26 | Qua 10/06/26 | Sprint 9 |
| 475 | 1.2.9.13.4 | Aprovação | inactive | 1d | 2026-06-24 | 2026-06-24 | 474FF |  |  | 2026-06-11 | 2026-06-11 | 1d | 2026-06-11 | 2026-06-11 | 22d |  |  |  | AUTOMAÇÃO E INSTRUMENTAÇÃO | Qui 11/06/26 | Qui 11/06/26 | Sprint 9 |
| 476 | 1.2.10 | **Automação e instrumentação** |  | 36d | 2026-06-01 A | 2026-07-24 |  | 86% | 4.89d | 2026-05-20 | 2026-07-08 | 36d | 2026-05-20 | 2026-07-08 | 2d |  |  |  | AUTOMAÇÃO E INSTRUMENTAÇÃO | Qua 20/05/26 | Qua 08/07/26 | Sprint 6 |
| 477 | 1.2.10.1 | **CP-F0009-0305-MB-J-00001** | inactive | 9d | 2026-06-08 | 2026-06-18 |  |  |  |  |  |  |  |  | 26d |  |  | -0 |  |  |  | Sprint 7 |
| 478 | 1.2.10.1.1 | Emissão inicial | inactive | 5d | 2026-06-08 | 2026-06-12 | 21FS+5d, 8 |  |  |  |  |  |  |  | 26d | 0d |  | -0 |  |  |  | Sprint 7 |
| 479 | 1.2.10.1.2 | Análise Tecnored | inactive | 1d | 2026-06-15 | 2026-06-15 | 478 |  |  |  |  |  |  |  | 26d | 0d |  | -0 |  |  |  | Sprint 8 |
| 480 | 1.2.10.1.3 | Atendimento de comentários | inactive | 2d | 2026-06-16 | 2026-06-17 | 479 |  |  |  |  |  |  |  | 26d | 0d |  | -0 |  |  |  | Sprint 8 |
| 481 | 1.2.10.1.4 | Aprovação | inactive | 1d | 2026-06-18 | 2026-06-18 | 480 |  |  |  |  |  |  |  | 26d |  |  | -0 |  |  |  | Sprint 8 |

| ID | WBS | Task | Type | Duration | Start | Finish | Predecessors | Complete | Remaining | Baseline start | Baseline finish | Baseline duration | Baseline 1 start | Baseline 1 finish | Total slack | Free slack | Constraint | Disciplina | Início_LB_R0 | Término_LB_R0 | Sprints |
| --- | --- | --- | --- | --- | --- | --- | --- | --- | --- | --- | --- | --- | --- | --- | --- | --- | --- | --- | --- | --- | --- |
| 482 | 1.2.10.2 | **LI-F0009-0305-MB-J-00001** |  | 9d | 2026-07-01 A | 2026-07-15 |  | 78% | 2d | 2026-05-22 | 2026-06-01 | 7d | 2026-05-22 | 2026-06-01 | 9d |  |  | AUTOMAÇÃO E INSTRUMENTAÇÃO | Sex 22/05/26 | Seg 01/06/26 | Sprint 10 |
| 483 | 1.2.10.2.1 | Emissão inicial |  | 5d | 2026-07-01 A | 2026-07-07 A | 518 | 100% |  | 2026-05-22 | 2026-05-26 | 3d | 2026-05-22 | 2026-05-26 |  |  | finish no earlier than 2026-06-20 | AUTOMAÇÃO E INSTRUMENTAÇÃO | Sex 22/05/26 | Ter 26/05/26 | Sprint 10 |
| 484 | 1.2.10.2.2 | Análise Tecnored |  | 1d | 2026-07-08 A | 2026-07-08 A | 483 | 100% |  | 2026-05-27 | 2026-05-27 | 1d | 2026-05-27 | 2026-05-27 |  |  |  | AUTOMAÇÃO E INSTRUMENTAÇÃO | Qua 27/05/26 | Qua 27/05/26 | Sprint 11 |
| 485 | 1.2.10.2.3 | Atendimento de comentários |  | 2d | 2026-07-13 A | 2026-07-14 | 484 | 50% | 1d | 2026-05-28 | 2026-05-29 | 2d | 2026-05-28 | 2026-05-29 | 9d | 0d |  | AUTOMAÇÃO E INSTRUMENTAÇÃO | Qui 28/05/26 | Sex 29/05/26 | Sprint 12 |
| 486 | 1.2.10.2.4 | Aprovação |  | 1d | 2026-07-15 | 2026-07-15 | 485 |  |  | 2026-06-01 | 2026-06-01 | 1d | 2026-06-01 | 2026-06-01 | 9d |  | finish no earlier than 2026-06-29 | AUTOMAÇÃO E INSTRUMENTAÇÃO | Seg 01/06/26 | Seg 01/06/26 | Sprint 12 |
| 487 | 1.2.10.3 | **LE-F0009-0305-MB-J-00001** |  | 8d | 2026-06-30 A | 2026-07-13 |  | 88% | 1d | 2026-06-23 | 2026-07-01 | 7d | 2026-06-23 | 2026-07-01 | 11d |  |  | AUTOMAÇÃO E INSTRUMENTAÇÃO | Ter 23/06/26 | Qua 01/07/26 | Sprint 10 |
| 488 | 1.2.10.3.1 | Emissão inicial |  | 4d | 2026-06-30 A | 2026-07-03 A |  | 100% |  | 2026-06-23 | 2026-06-25 | 3d | 2026-06-23 | 2026-06-25 |  |  | start no earlier than 2026-06-30 | AUTOMAÇÃO E INSTRUMENTAÇÃO | Ter 23/06/26 | Qui 25/06/26 | Sprint 10 |
| 489 | 1.2.10.3.2 | Análise Tecnored |  | 1d | 2026-07-06 A | 2026-07-06 A | 488 | 100% |  | 2026-06-26 | 2026-06-26 | 1d | 2026-06-26 | 2026-06-26 |  |  | start no earlier than 2026-07-02 | AUTOMAÇÃO E INSTRUMENTAÇÃO | Sex 26/06/26 | Sex 26/06/26 | Sprint 11 |
| 490 | 1.2.10.3.3 | Atendimento de comentários |  | 2d | 2026-07-07 A | 2026-07-08 A | 489 | 100% |  | 2026-06-29 | 2026-06-30 | 2d | 2026-06-29 | 2026-06-30 |  |  | start no earlier than 2026-07-03 | AUTOMAÇÃO E INSTRUMENTAÇÃO | Seg 29/06/26 | Ter 30/06/26 | Sprint 11 |
| 491 | 1.2.10.3.4 | Aprovação |  | 1d | 2026-07-13 | 2026-07-13 | 490 |  |  | 2026-07-01 | 2026-07-01 | 1d | 2026-07-01 | 2026-07-01 | 11d |  | start no earlier than 2026-07-07 | AUTOMAÇÃO E INSTRUMENTAÇÃO | Qua 01/07/26 | Qua 01/07/26 | Sprint 12 |
| 492 | 1.2.10.4 | **LL-F0009-0305-MB-J-00001** |  | 8d | 2026-06-30 A | 2026-07-13 |  | 75% | 2d | 2026-06-15 | 2026-06-23 | 7d | 2026-06-15 | 2026-06-23 | 11d |  |  | AUTOMAÇÃO E INSTRUMENTAÇÃO | Seg 15/06/26 | Ter 23/06/26 | Sprint 10 |
| 493 | 1.2.10.4.1 | Emissão inicial |  | 4d | 2026-06-30 A | 2026-07-03 A | 548 | 100% |  | 2026-06-30 | 2026-07-03 | 3d | 2026-06-15 | 2026-06-17 |  |  | finish no earlier than 2026-07-03 | AUTOMAÇÃO E INSTRUMENTAÇÃO | Ter 30/06/26 | Sex 03/07/26 | Sprint 10 |
| 494 | 1.2.10.4.2 | Análise Tecnored |  | 1d | 2026-07-06 A | 2026-07-06 A | 493 | 100% |  | 2026-07-06 | 2026-07-06 | 1d | 2026-06-18 | 2026-06-18 |  |  | start no earlier than 2026-07-02 | AUTOMAÇÃO E INSTRUMENTAÇÃO | Seg 06/07/26 | Seg 06/07/26 | Sprint 11 |
| 495 | 1.2.10.4.3 | Atendimento de comentários |  | 2d | 2026-07-07 A | 2026-07-08 | 494 | 50% | 1d | 2026-07-07 | 2026-07-08 | 2d | 2026-06-19 | 2026-06-22 | 11d | 0d | start no earlier than 2026-07-03 | AUTOMAÇÃO E INSTRUMENTAÇÃO | Ter 07/07/26 | Qua 08/07/26 | Sprint 11 |
| 496 | 1.2.10.4.4 | Aprovação |  | 1d | 2026-07-13 | 2026-07-13 | 495 |  |  | 2026-07-13 | 2026-07-13 | 1d | 2026-06-23 | 2026-06-23 | 11d |  | start no earlier than 2026-07-07 | AUTOMAÇÃO E INSTRUMENTAÇÃO | Seg 13/07/26 | Seg 13/07/26 | Sprint 12 |
| 497 | 1.2.10.5 | **LZ-F0009-0305-MB-J-00001** | inactive | 8d | 2026-07-14 | 2026-07-23 |  |  |  | 2026-06-15 | 2026-06-23 | 7d | 2026-06-15 | 2026-06-23 | 3d |  |  | AUTOMAÇÃO E INSTRUMENTAÇÃO | Seg 15/06/26 | Ter 23/06/26 | Sprint 12 |
| 498 | 1.2.10.5.1 | Emissão inicial | inactive | 4d | 2026-07-14 | 2026-07-17 | 548 |  |  | 2026-06-15 | 2026-06-17 | 3d | 2026-06-15 | 2026-06-17 | 3d | 0d | finish no earlier than 2026-07-01 | AUTOMAÇÃO E INSTRUMENTAÇÃO | Seg 15/06/26 | Qua 17/06/26 | Sprint 12 |
| 499 | 1.2.10.5.2 | Análise Tecnored | inactive | 1d | 2026-07-20 | 2026-07-20 | 498 |  |  | 2026-06-18 | 2026-06-18 | 1d | 2026-06-18 | 2026-06-18 | 3d | 0d | start no earlier than 2026-07-02 | AUTOMAÇÃO E INSTRUMENTAÇÃO | Qui 18/06/26 | Qui 18/06/26 | Sprint 13 |
| 500 | 1.2.10.5.3 | Atendimento de comentários | inactive | 2d | 2026-07-21 | 2026-07-22 | 499 |  |  | 2026-06-19 | 2026-06-22 | 2d | 2026-06-19 | 2026-06-22 | 3d | 0d | start no earlier than 2026-07-03 | AUTOMAÇÃO E INSTRUMENTAÇÃO | Sex 19/06/26 | Seg 22/06/26 | Sprint 13 |
| 501 | 1.2.10.5.4 | Aprovação | inactive | 1d | 2026-07-23 | 2026-07-23 | 500 |  |  | 2026-06-23 | 2026-06-23 | 1d | 2026-06-23 | 2026-06-23 | 3d |  | start no earlier than 2026-07-07 | AUTOMAÇÃO E INSTRUMENTAÇÃO | Ter 23/06/26 | Ter 23/06/26 | Sprint 13 |
| 502 | 1.2.10.6 | **LE-F0009-0305-MB-J-00002** | inactive | 8d | 2026-06-26 | 2026-07-07 |  |  |  | 2026-06-23 | 2026-07-01 | 7d | 2026-06-23 | 2026-07-01 | 13d |  |  | AUTOMAÇÃO E INSTRUMENTAÇÃO | Ter 23/06/26 | Qua 01/07/26 | Sprint 9 |
| 503 | 1.2.10.6.1 | Emissão inicial | inactive | 4d | 2026-06-26 | 2026-07-01 |  |  |  | 2026-06-23 | 2026-06-25 | 3d | 2026-06-23 | 2026-06-25 | 13d | 0d | finish no earlier than 2026-07-01 | AUTOMAÇÃO E INSTRUMENTAÇÃO | Ter 23/06/26 | Qui 25/06/26 | Sprint 9 |
| 504 | 1.2.10.6.2 | Análise Tecnored | inactive | 1d | 2026-07-02 | 2026-07-02 | 503 |  |  | 2026-06-26 | 2026-06-26 | 1d | 2026-06-26 | 2026-06-26 | 13d | 0d | start no earlier than 2026-07-02 | AUTOMAÇÃO E INSTRUMENTAÇÃO | Sex 26/06/26 | Sex 26/06/26 | Sprint 10 |
| 505 | 1.2.10.6.3 | Atendimento de comentários | inactive | 2d | 2026-07-03 | 2026-07-06 | 504 |  |  | 2026-06-29 | 2026-06-30 | 2d | 2026-06-29 | 2026-06-30 | 13d | 0d | start no earlier than 2026-07-03 | AUTOMAÇÃO E INSTRUMENTAÇÃO | Seg 29/06/26 | Ter 30/06/26 | Sprint 10 |
| 506 | 1.2.10.6.4 | Aprovação | inactive | 1d | 2026-07-07 | 2026-07-07 | 505 |  |  | 2026-07-01 | 2026-07-01 | 1d | 2026-07-01 | 2026-07-01 | 13d |  | start no earlier than 2026-07-07 | AUTOMAÇÃO E INSTRUMENTAÇÃO | Qua 01/07/26 | Qua 01/07/26 | Sprint 11 |

| ID | WBS | Task | Duration | Start | Finish | Predecessors | Complete | Remaining | Baseline start | Baseline finish | Baseline duration | Baseline 1 start | Baseline 1 finish | Total slack | Free slack | Constraint | Disciplina | Início_LB_R0 | Término_LB_R0 | Sprints |
| --- | --- | --- | --- | --- | --- | --- | --- | --- | --- | --- | --- | --- | --- | --- | --- | --- | --- | --- | --- | --- |
| 507 | 1.2.10.7 | **PQ-F0009-0305-MB-J-00001** | 8d | 2026-07-03 A | 2026-07-16 |  | 75% | 2d | 2026-07-02 | 2026-07-08 | 5d | 2026-07-02 | 2026-07-08 | 8d |  |  | AUTOMAÇÃO E INSTRUMENTAÇÃO | Qui 02/07/26 | Qua 08/07/26 | Sprint 10 |
| 508 | 1.2.10.7.1 | Emissão inicial | 5d | 2026-07-03 A | 2026-07-13 A | 563FS-9d | 100% |  | 2026-07-02 | 2026-07-02 | 1d | 2026-07-02 | 2026-07-02 |  |  | start no earlier than 2026-07-02 | AUTOMAÇÃO E INSTRUMENTAÇÃO | Qui 02/07/26 | Qui 02/07/26 | Sprint 10 |
| 509 | 1.2.10.7.2 | Análise Tecnored | 1d | 2026-07-14 A | 2026-07-14 A | 508 | 100% |  | 2026-07-03 | 2026-07-03 | 1d | 2026-07-03 | 2026-07-03 |  |  |  | AUTOMAÇÃO E INSTRUMENTAÇÃO | Sex 03/07/26 | Sex 03/07/26 | Sprint 12 |
| 510 | 1.2.10.7.3 | Atendimento de comentários | 1d | 2026-07-15 | 2026-07-15 | 509 |  |  | 2026-07-06 | 2026-07-07 | 2d | 2026-07-06 | 2026-07-07 | 8d | 0d |  | AUTOMAÇÃO E INSTRUMENTAÇÃO | Seg 06/07/26 | Ter 07/07/26 | Sprint 12 |
| 511 | 1.2.10.7.4 | Aprovação | 1d | 2026-07-16 | 2026-07-16 | 510 |  |  | 2026-07-08 | 2026-07-08 | 1d | 2026-07-08 | 2026-07-08 | 8d |  |  | AUTOMAÇÃO E INSTRUMENTAÇÃO | Qua 08/07/26 | Qua 08/07/26 | Sprint 12 |
| 512 | 1.2.10.8 | **FG-F0009-0305-MB-J-00001** | 23d | 2026-06-01 A | 2026-07-03 A |  | 100% |  | 2026-05-20 | 2026-05-27 | 6d | 2026-05-20 | 2026-05-27 |  |  |  | AUTOMAÇÃO E INSTRUMENTAÇÃO | Qua 20/05/26 | Qua 27/05/26 | Sprint 6 |
| 513 | 1.2.10.8.1 | Emissão inicial | 6d | 2026-06-01 A | 2026-06-12 A | 63FS+10d | 100% |  | 2026-05-20 | 2026-05-21 | 2d | 2026-05-20 | 2026-05-21 |  |  | finish no earlier than 2026-06-12 | AUTOMAÇÃO E INSTRUMENTAÇÃO | Qua 20/05/26 | Qui 21/05/26 | Sprint 6 |
| 514 | 1.2.10.8.2 | Análise Tecnored | 5d | 2026-06-15 A | 2026-06-19 A | 513 | 100% |  | 2026-05-22 | 2026-05-22 | 1d | 2026-05-22 | 2026-05-22 |  |  |  | AUTOMAÇÃO E INSTRUMENTAÇÃO | Sex 22/05/26 | Sex 22/05/26 | Sprint 8 |
| 515 | 1.2.10.8.3 | Atendimento de comentários | 9d | 2026-06-22 A | 2026-07-02 A | 514 | 100% |  | 2026-05-25 | 2026-05-26 | 2d | 2026-05-25 | 2026-05-26 |  |  | start no earlier than 2026-06-22 | AUTOMAÇÃO E INSTRUMENTAÇÃO | Seg 25/05/26 | Ter 26/05/26 | Sprint 9 |
| 516 | 1.2.10.8.4 | Aprovação | 1d | 2026-07-03 A | 2026-07-03 A | 515 | 100% |  | 2026-05-27 | 2026-05-27 | 1d | 2026-05-27 | 2026-05-27 |  |  |  | AUTOMAÇÃO E INSTRUMENTAÇÃO | Qua 27/05/26 | Qua 27/05/26 | Sprint 10 |
| 517 | 1.2.10.9 | **FG-F0009-0305-MB-J-00002** | 23d | 2026-06-01 A | 2026-07-03 |  | 74% | 6.02d | 2026-05-20 | 2026-05-27 | 6d | 2026-05-20 | 2026-05-27 | 15d |  |  | AUTOMAÇÃO E INSTRUMENTAÇÃO | Qua 20/05/26 | Qua 27/05/26 | Sprint 6 |
| 518 | 1.2.10.9.1 | Emissão inicial | 6d | 2026-06-01 A | 2026-06-12 A | 63FS+10d | 100% |  | 2026-05-20 | 2026-05-21 | 2d | 2026-05-20 | 2026-05-21 |  |  | finish no earlier than 2026-06-12 | AUTOMAÇÃO E INSTRUMENTAÇÃO | Qua 20/05/26 | Qui 21/05/26 | Sprint 6 |
| 519 | 1.2.10.9.2 | Análise Tecnored | 5d | 2026-06-15 A | 2026-06-19 A | 518 | 100% |  | 2026-05-22 | 2026-05-22 | 1d | 2026-05-22 | 2026-05-22 |  |  | finish no earlier than 2026-06-19 | AUTOMAÇÃO E INSTRUMENTAÇÃO | Sex 22/05/26 | Sex 22/05/26 | Sprint 8 |
| 520 | 1.2.10.9.3 | Atendimento de comentários | 9d | 2026-06-22 A | 2026-07-02 | 519 | 50% | 4.5d | 2026-05-25 | 2026-05-26 | 2d | 2026-05-25 | 2026-05-26 | 15d | 0d | finish no earlier than 2026-07-02 | AUTOMAÇÃO E INSTRUMENTAÇÃO | Seg 25/05/26 | Ter 26/05/26 | Sprint 9 |
| 521 | 1.2.10.9.4 | Aprovação | 1d | 2026-07-03 | 2026-07-03 | 520 |  |  | 2026-05-27 | 2026-05-27 | 1d | 2026-05-27 | 2026-05-27 | 15d |  | start no earlier than 2026-07-03 | AUTOMAÇÃO E INSTRUMENTAÇÃO | Qua 27/05/26 | Qua 27/05/26 | Sprint 10 |
| 522 | 1.2.10.10 | **FG-F0009-0305-MB-J-00003** | 23d | 2026-06-01 A | 2026-07-03 |  | 95% | 1.1d | 2026-05-20 | 2026-05-27 | 6d | 2026-05-20 | 2026-05-27 | 15d |  |  | AUTOMAÇÃO E INSTRUMENTAÇÃO | Qua 20/05/26 | Qua 27/05/26 | Sprint 6 |
| 523 | 1.2.10.10.1 | Emissão inicial | 6d | 2026-06-01 A | 2026-06-12 A | 63FS+10d | 100% |  | 2026-05-20 | 2026-05-21 | 2d | 2026-05-20 | 2026-05-21 |  |  | finish no earlier than 2026-06-12 | AUTOMAÇÃO E INSTRUMENTAÇÃO | Qua 20/05/26 | Qui 21/05/26 | Sprint 6 |
| 524 | 1.2.10.10.2 | Análise Tecnored | 5d | 2026-06-15 A | 2026-06-19 A | 523 | 100% |  | 2026-05-22 | 2026-05-22 | 1d | 2026-05-22 | 2026-05-22 |  |  | finish no earlier than 2026-06-19 | AUTOMAÇÃO E INSTRUMENTAÇÃO | Sex 22/05/26 | Sex 22/05/26 | Sprint 8 |
| 525 | 1.2.10.10.3 | Atendimento de comentários | 9d | 2026-06-22 A | 2026-07-02 A | 524 | 100% |  | 2026-05-25 | 2026-05-26 | 2d | 2026-05-25 | 2026-05-26 |  |  | finish no earlier than 2026-07-02 | AUTOMAÇÃO E INSTRUMENTAÇÃO | Seg 25/05/26 | Ter 26/05/26 | Sprint 9 |
| 526 | 1.2.10.10.4 | Aprovação | 1d | 2026-07-03 | 2026-07-03 | 525 |  |  | 2026-05-27 | 2026-05-27 | 1d | 2026-05-27 | 2026-05-27 | 15d |  | start no earlier than 2026-07-03 | AUTOMAÇÃO E INSTRUMENTAÇÃO | Qua 27/05/26 | Qua 27/05/26 | Sprint 10 |
| 527 | 1.2.10.11 | **AG-F0009-0305-MB-J-00001** | 10d | 2026-06-22 A | 2026-07-03 |  | 88% | 1.25d | 2026-05-27 | 2026-06-15 | 14d | 2026-05-27 | 2026-06-15 | 15d |  |  | AUTOMAÇÃO E INSTRUMENTAÇÃO | Qua 27/05/26 | Seg 15/06/26 | Sprint 9 |
| 528 | 1.2.10.11.1 | Emissão inicial | 4d | 2026-06-22 A | 2026-06-25 A | 483 | 100% |  | 2026-05-27 | 2026-06-09 | 10d | 2026-05-27 | 2026-06-09 |  |  | start no earlier than 2026-06-24 | AUTOMAÇÃO E INSTRUMENTAÇÃO | Qua 27/05/26 | Ter 09/06/26 | Sprint 9 |
| 529 | 1.2.10.11.2 | Análise Tecnored | 1d | 2026-06-26 A | 2026-06-26 A | 528 | 100% |  | 2026-06-10 | 2026-06-10 | 1d | 2026-06-10 | 2026-06-10 |  |  |  | AUTOMAÇÃO E INSTRUMENTAÇÃO | Qua 10/06/26 | Qua 10/06/26 | Sprint 9 |
| 530 | 1.2.10.11.3 | Atendimento de comentários | 2d | 2026-06-29 A | 2026-06-30 A | 529 | 100% |  | 2026-06-11 | 2026-06-12 | 2d | 2026-06-11 | 2026-06-12 |  |  |  | AUTOMAÇÃO E INSTRUMENTAÇÃO | Qui 11/06/26 | Sex 12/06/26 | Sprint 10 |
| 531 | 1.2.10.11.4 | Aprovação | 1d | 2026-07-03 | 2026-07-03 | 530 |  |  | 2026-06-15 | 2026-06-15 | 1d | 2026-06-15 | 2026-06-15 | 15d |  | finish no earlier than 2026-07-03 | AUTOMAÇÃO E INSTRUMENTAÇÃO | Seg 15/06/26 | Seg 15/06/26 | Sprint 10 |

| ID | WBS | Task | Type | Duration | Start | Finish | Predecessors | Complete | Remaining | Baseline start | Baseline finish | Baseline duration | Baseline 1 start | Baseline 1 finish | Total slack | Free slack | Constraint | Disciplina | Início_LB_R0 | Término_LB_R0 | Sprints |
| --- | --- | --- | --- | --- | --- | --- | --- | --- | --- | --- | --- | --- | --- | --- | --- | --- | --- | --- | --- | --- | --- |
| 532 | 1.2.10.12 | **AG-F0009-0305-MB-J-00002** |  | 14d | 2026-06-19 A | 2026-07-08 A |  | 100% |  | 2026-05-27 | 2026-06-15 | 14d | 2026-05-27 | 2026-06-15 |  |  |  | AUTOMAÇÃO E INSTRUMENTAÇÃO | Qua 27/05/26 | Seg 15/06/26 | Sprint 8 |
| 533 | 1.2.10.12.1 | Emissão inicial |  | 4d | 2026-06-19 A | 2026-06-24 A | 483 | 100% |  | 2026-05-27 | 2026-06-09 | 10d | 2026-05-27 | 2026-06-09 |  |  | finish no earlier than 2026-06-24 | AUTOMAÇÃO E INSTRUMENTAÇÃO | Qua 27/05/26 | Ter 09/06/26 | Sprint 8 |
| 534 | 1.2.10.12.2 | Análise Tecnored |  | 1d | 2026-06-25 A | 2026-06-25 A | 533 | 100% |  | 2026-06-10 | 2026-06-10 | 1d | 2026-06-10 | 2026-06-10 |  |  |  | AUTOMAÇÃO E INSTRUMENTAÇÃO | Qua 10/06/26 | Qua 10/06/26 | Sprint 9 |
| 535 | 1.2.10.12.3 | Atendimento de comentários |  | 2d | 2026-07-06 A | 2026-07-07 A | 534 | 100% |  | 2026-06-11 | 2026-06-12 | 2d | 2026-06-11 | 2026-06-12 |  |  | start no earlier than 2026-07-06 | AUTOMAÇÃO E INSTRUMENTAÇÃO | Qui 11/06/26 | Sex 12/06/26 | Sprint 11 |
| 536 | 1.2.10.12.4 | Aprovação |  | 1d | 2026-07-08 A | 2026-07-08 A | 535 | 100% |  | 2026-06-15 | 2026-06-15 | 1d | 2026-06-15 | 2026-06-15 |  |  | finish no earlier than 2026-07-02 | AUTOMAÇÃO E INSTRUMENTAÇÃO | Seg 15/06/26 | Seg 15/06/26 | Sprint 11 |
| 537 | 1.2.10.13 | **AG-F0009-0305-MB-J-00003** |  | 7d | 2026-06-24 A | 2026-07-02 |  | 86% | 1d | 2026-05-27 | 2026-06-15 | 14d | 2026-05-27 | 2026-06-15 | 16d |  |  | AUTOMAÇÃO E INSTRUMENTAÇÃO | Qua 27/05/26 | Seg 15/06/26 | Sprint 9 |
| 538 | 1.2.10.13.1 | Emissão inicial |  | 3d | 2026-06-24 A | 2026-06-26 A | 483 | 100% |  | 2026-05-27 | 2026-06-09 | 10d | 2026-05-27 | 2026-06-09 |  |  | start no earlier than 2026-06-24 | AUTOMAÇÃO E INSTRUMENTAÇÃO | Qua 27/05/26 | Ter 09/06/26 | Sprint 9 |
| 539 | 1.2.10.13.2 | Análise Tecnored |  | 1d | 2026-06-29 A | 2026-06-29 A | 538 | 100% |  | 2026-06-10 | 2026-06-10 | 1d | 2026-06-10 | 2026-06-10 |  |  |  | AUTOMAÇÃO E INSTRUMENTAÇÃO | Qua 10/06/26 | Qua 10/06/26 | Sprint 10 |
| 540 | 1.2.10.13.3 | Atendimento de comentários |  | 2d | 2026-06-30 A | 2026-07-01 A | 539 | 100% |  | 2026-06-11 | 2026-06-12 | 2d | 2026-06-11 | 2026-06-12 |  |  |  | AUTOMAÇÃO E INSTRUMENTAÇÃO | Qui 11/06/26 | Sex 12/06/26 | Sprint 10 |
| 541 | 1.2.10.13.4 | Aprovação |  | 1d | 2026-07-02 | 2026-07-02 | 540 |  |  | 2026-06-15 | 2026-06-15 | 1d | 2026-06-15 | 2026-06-15 | 16d |  |  | AUTOMAÇÃO E INSTRUMENTAÇÃO | Seg 15/06/26 | Seg 15/06/26 | Sprint 10 |
| 542 | 1.2.10.14 | **AG-F0009-0305-MB-J-00004** |  | 8d | 2026-06-19 A | 2026-06-30 |  | 88% | 1d | 2026-05-27 | 2026-06-15 | 14d | 2026-05-27 | 2026-06-15 | 18d |  |  | AUTOMAÇÃO E INSTRUMENTAÇÃO | Qua 27/05/26 | Seg 15/06/26 | Sprint 8 |
| 543 | 1.2.10.14.1 | Emissão inicial |  | 4d | 2026-06-19 A | 2026-06-24 A | 483 | 100% |  | 2026-05-27 | 2026-06-09 | 10d | 2026-05-27 | 2026-06-09 |  |  | finish no earlier than 2026-06-24 | AUTOMAÇÃO E INSTRUMENTAÇÃO | Qua 27/05/26 | Ter 09/06/26 | Sprint 8 |
| 544 | 1.2.10.14.2 | Análise Tecnored |  | 1d | 2026-06-25 A | 2026-06-25 A | 543 | 100% |  | 2026-06-10 | 2026-06-10 | 1d | 2026-06-10 | 2026-06-10 |  |  |  | AUTOMAÇÃO E INSTRUMENTAÇÃO | Qua 10/06/26 | Qua 10/06/26 | Sprint 9 |
| 545 | 1.2.10.14.3 | Atendimento de comentários |  | 2d | 2026-06-26 A | 2026-06-29 A | 544 | 100% |  | 2026-06-11 | 2026-06-12 | 2d | 2026-06-11 | 2026-06-12 |  |  |  | AUTOMAÇÃO E INSTRUMENTAÇÃO | Qui 11/06/26 | Sex 12/06/26 | Sprint 9 |
| 546 | 1.2.10.14.4 | Aprovação |  | 1d | 2026-06-30 | 2026-06-30 | 545 |  |  | 2026-06-15 | 2026-06-15 | 1d | 2026-06-15 | 2026-06-15 | 18d |  |  | AUTOMAÇÃO E INSTRUMENTAÇÃO | Seg 15/06/26 | Seg 15/06/26 | Sprint 10 |
| 547 | 1.2.10.15 | **DI-F0009-0305-MB-J-00001** |  | 11d | 2026-07-01 A | 2026-07-17 |  | 82% | 2d | 2026-06-10 | 2026-06-18 | 7d | 2026-06-10 | 2026-06-18 | 7d |  |  | AUTOMAÇÃO E INSTRUMENTAÇÃO | Qua 10/06/26 | Qui 18/06/26 | Sprint 10 |
| 548 | 1.2.10.15.1 | Emissão inicial |  | 7d | 2026-07-01 A | 2026-07-13 A |  | 100% |  | 2026-06-10 | 2026-06-12 | 3d | 2026-06-10 | 2026-06-12 |  |  | finish no earlier than 2026-07-13 | AUTOMAÇÃO E INSTRUMENTAÇÃO | Qua 10/06/26 | Sex 12/06/26 | Sprint 10 |
| 549 | 1.2.10.15.2 | Análise Tecnored |  | 1d | 2026-07-14 A | 2026-07-14 A | 548 | 100% |  | 2026-06-15 | 2026-06-15 | 1d | 2026-06-15 | 2026-06-15 |  |  |  | AUTOMAÇÃO E INSTRUMENTAÇÃO | Seg 15/06/26 | Seg 15/06/26 | Sprint 12 |
| 550 | 1.2.10.15.3 | Atendimento de comentários |  | 2d | 2026-07-15 A | 2026-07-16 | 549 | 50% | 1d | 2026-06-16 | 2026-06-17 | 2d | 2026-06-16 | 2026-06-17 | 7d | 0d |  | AUTOMAÇÃO E INSTRUMENTAÇÃO | Ter 16/06/26 | Qua 17/06/26 | Sprint 12 |
| 551 | 1.2.10.15.4 | Aprovação |  | 1d | 2026-07-17 | 2026-07-17 | 550 |  |  | 2026-06-18 | 2026-06-18 | 1d | 2026-06-18 | 2026-06-18 | 7d |  |  | AUTOMAÇÃO E INSTRUMENTAÇÃO | Qui 18/06/26 | Qui 18/06/26 | Sprint 12 |
| 552 | 1.2.10.16 | **LI-F0009-0305-MB-J-00002** | inactive | 9d | 2026-06-17 | 2026-06-29 |  |  |  | 2026-06-23 | 2026-07-01 | 7d | 2026-06-23 | 2026-07-01 | 19d |  |  | AUTOMAÇÃO E INSTRUMENTAÇÃO | Ter 23/06/26 | Qua 01/07/26 | Sprint 8 |
| 553 | 1.2.10.16.1 | Emissão inicial | inactive | 5d | 2026-06-17 | 2026-06-23 |  |  |  | 2026-06-23 | 2026-06-25 | 3d | 2026-06-23 | 2026-06-25 | 19d | 0d | start no earlier than 2026-06-17 | AUTOMAÇÃO E INSTRUMENTAÇÃO | Ter 23/06/26 | Qui 25/06/26 | Sprint 8 |
| 554 | 1.2.10.16.2 | Análise Tecnored | inactive | 1d | 2026-06-24 | 2026-06-24 | 553 |  |  | 2026-06-26 | 2026-06-26 | 1d | 2026-06-26 | 2026-06-26 | 19d | 0d |  | AUTOMAÇÃO E INSTRUMENTAÇÃO | Sex 26/06/26 | Sex 26/06/26 | Sprint 9 |
| 555 | 1.2.10.16.3 | Atendimento de comentários | inactive | 2d | 2026-06-25 | 2026-06-26 | 554 |  |  | 2026-06-29 | 2026-06-30 | 2d | 2026-06-29 | 2026-06-30 | 19d | 0d |  | AUTOMAÇÃO E INSTRUMENTAÇÃO | Seg 29/06/26 | Ter 30/06/26 | Sprint 9 |
| 556 | 1.2.10.16.4 | Aprovação | inactive | 1d | 2026-06-29 | 2026-06-29 | 555 |  |  | 2026-07-01 | 2026-07-01 | 1d | 2026-07-01 | 2026-07-01 | 19d |  |  | AUTOMAÇÃO E INSTRUMENTAÇÃO | Qua 01/07/26 | Qua 01/07/26 | Sprint 10 |

| ID | WBS | Task | Type | Duration | Start | Finish | Predecessors | Complete | Remaining | Baseline start | Baseline finish | Baseline duration | Baseline 1 start | Baseline 1 finish | Total slack | Free slack | Constraint | Disciplina | Início_LB_R0 | Término_LB_R0 | Sprints |
| --- | --- | --- | --- | --- | --- | --- | --- | --- | --- | --- | --- | --- | --- | --- | --- | --- | --- | --- | --- | --- | --- |
| 557 | 1.2.10.17 | **LI-F0009-0305-MB-J-00003** | inactive | 9d | 2026-06-17 | 2026-06-29 |  |  |  | 2026-06-23 | 2026-07-01 | 7d | 2026-06-23 | 2026-07-01 | 19d |  |  | AUTOMAÇÃO E INSTRUMENTAÇÃO | Ter 23/06/26 | Qua 01/07/26 | Sprint 8 |
| 558 | 1.2.10.17.1 | Emissão inicial | inactive | 5d | 2026-06-17 | 2026-06-23 |  |  |  | 2026-06-23 | 2026-06-25 | 3d | 2026-06-23 | 2026-06-25 | 19d | 0d | start no earlier than 2026-06-17 | AUTOMAÇÃO E INSTRUMENTAÇÃO | Ter 23/06/26 | Qui 25/06/26 | Sprint 8 |
| 559 | 1.2.10.17.2 | Análise Tecnored | inactive | 1d | 2026-06-24 | 2026-06-24 | 558 |  |  | 2026-06-26 | 2026-06-26 | 1d | 2026-06-26 | 2026-06-26 | 19d | 0d |  | AUTOMAÇÃO E INSTRUMENTAÇÃO | Sex 26/06/26 | Sex 26/06/26 | Sprint 9 |
| 560 | 1.2.10.17.3 | Atendimento de comentários | inactive | 2d | 2026-06-25 | 2026-06-26 | 559 |  |  | 2026-06-29 | 2026-06-30 | 2d | 2026-06-29 | 2026-06-30 | 19d | 0d |  | AUTOMAÇÃO E INSTRUMENTAÇÃO | Seg 29/06/26 | Ter 30/06/26 | Sprint 9 |
| 561 | 1.2.10.17.4 | Aprovação | inactive | 1d | 2026-06-29 | 2026-06-29 | 560 |  |  | 2026-07-01 | 2026-07-01 | 1d | 2026-07-01 | 2026-07-01 | 19d |  |  | AUTOMAÇÃO E INSTRUMENTAÇÃO | Qua 01/07/26 | Qua 01/07/26 | Sprint 10 |
| 562 | 1.2.10.18 | **LM-F0009-0305-MB-J-00001** |  | 7d | 2026-07-16 A | 2026-07-24 |  | 79% | 1.5d | 2026-07-01 | 2026-07-07 | 5d | 2026-07-01 | 2026-07-07 | 2d |  |  | AUTOMAÇÃO E INSTRUMENTAÇÃO | Qua 01/07/26 | Ter 07/07/26 | Sprint 12 |
| 563 | 1.2.10.18.1 | Emissão inicial |  | 4d | 2026-07-16 A | 2026-07-21 A | 708FS-7d, 703FS-7d, 482, 698FS-7d | 100% |  | 2026-07-01 | 2026-07-01 | 1d | 2026-07-01 | 2026-07-01 |  |  | start no earlier than 2026-07-01 | AUTOMAÇÃO E INSTRUMENTAÇÃO | Qua 01/07/26 | Qua 01/07/26 | Sprint 12 |
| 564 | 1.2.10.18.2 | Análise Tecnored |  | 1d | 2026-07-22 A | 2026-07-22 A | 563 | 100% |  | 2026-07-02 | 2026-07-02 | 1d | 2026-07-02 | 2026-07-02 |  |  |  | AUTOMAÇÃO E INSTRUMENTAÇÃO | Qui 02/07/26 | Qui 02/07/26 | Sprint 13 |
| 565 | 1.2.10.18.3 | Atendimento de comentários |  | 1d | 2026-07-23 A | 2026-07-23 | 564 | 50% | 0.5d | 2026-07-03 | 2026-07-06 | 2d | 2026-07-03 | 2026-07-06 | 2d | 0d |  | AUTOMAÇÃO E INSTRUMENTAÇÃO | Sex 03/07/26 | Seg 06/07/26 | Sprint 13 |
| 566 | 1.2.10.18.4 | Aprovação |  | 1d | 2026-07-24 | 2026-07-24 | 565 |  |  | 2026-07-07 | 2026-07-07 | 1d | 2026-07-07 | 2026-07-07 | 2d |  |  | AUTOMAÇÃO E INSTRUMENTAÇÃO | Ter 07/07/26 | Ter 07/07/26 | Sprint 13 |
| 567 | 1.2.10.19 | **ET-F0009-0305-MB-J-00001** |  | 7d | 2026-07-07 | 2026-07-17 |  |  |  | 2026-06-18 | 2026-06-26 | 7d | 2026-06-18 | 2026-06-26 | 7d |  |  | AUTOMAÇÃO E INSTRUMENTAÇÃO | Qui 18/06/26 | Sex 26/06/26 | Sprint 11 |
| 568 | 1.2.10.19.1 | Emissão inicial |  | 3d | 2026-07-07 | 2026-07-13 |  |  |  | 2026-06-18 | 2026-06-22 | 3d | 2026-06-18 | 2026-06-22 | 7d | 0d | start no earlier than 2026-07-07 | AUTOMAÇÃO E INSTRUMENTAÇÃO | Qui 18/06/26 | Seg 22/06/26 | Sprint 11 |
| 569 | 1.2.10.19.2 | Análise Tecnored |  | 1d | 2026-07-14 | 2026-07-14 | 568 |  |  | 2026-06-23 | 2026-06-23 | 1d | 2026-06-23 | 2026-06-23 | 7d | 0d | start no earlier than 2026-07-14 | AUTOMAÇÃO E INSTRUMENTAÇÃO | Ter 23/06/26 | Ter 23/06/26 | Sprint 12 |
| 570 | 1.2.10.19.3 | Atendimento de comentários |  | 2d | 2026-07-15 | 2026-07-16 | 569 |  |  | 2026-06-24 | 2026-06-25 | 2d | 2026-06-24 | 2026-06-25 | 7d | 0d | start no earlier than 2026-07-15 | AUTOMAÇÃO E INSTRUMENTAÇÃO | Qua 24/06/26 | Qui 25/06/26 | Sprint 12 |
| 571 | 1.2.10.19.4 | Aprovação |  | 1d | 2026-07-17 | 2026-07-17 | 570 |  |  | 2026-06-26 | 2026-06-26 | 1d | 2026-06-26 | 2026-06-26 | 7d |  | start no earlier than 2026-07-17 | AUTOMAÇÃO E INSTRUMENTAÇÃO | Sex 26/06/26 | Sex 26/06/26 | Sprint 12 |
| 572 | 1.2.10.20 | **FD-F0009-0305-MB-J-00001** |  | 15d | 2026-06-17 A | 2026-07-07 |  | 90% | 1.5d | 2026-06-18 | 2026-07-07 | 14d | 2026-06-18 | 2026-07-07 | 13d |  |  | AUTOMAÇÃO E INSTRUMENTAÇÃO | Qui 18/06/26 | Ter 07/07/26 | Sprint 8 |
| 573 | 1.2.10.20.1 | Emissão inicial |  | 8d | 2026-06-17 A | 2026-06-28 A |  | 100% |  | 2026-06-18 | 2026-07-01 | 10d | 2026-06-18 | 2026-07-01 |  |  | finish no earlier than 2026-06-28 | AUTOMAÇÃO E INSTRUMENTAÇÃO | Qui 18/06/26 | Qua 01/07/26 | Sprint 8 |
| 574 | 1.2.10.20.2 | Análise Tecnored |  | 5d | 2026-06-29 A | 2026-07-03 A | 573 | 100% |  | 2026-07-02 | 2026-07-02 | 1d | 2026-07-02 | 2026-07-02 |  |  | finish no earlier than 2026-07-03 | AUTOMAÇÃO E INSTRUMENTAÇÃO | Qui 02/07/26 | Qui 02/07/26 | Sprint 10 |
| 575 | 1.2.10.20.3 | Atendimento de comentários |  | 1d | 2026-07-06 A | 2026-07-06 | 574 | 50% | 0.5d | 2026-07-03 | 2026-07-06 | 2d | 2026-07-03 | 2026-07-06 | 13d | 0d | start no earlier than 2026-07-06 | AUTOMAÇÃO E INSTRUMENTAÇÃO | Sex 03/07/26 | Seg 06/07/26 | Sprint 11 |
| 576 | 1.2.10.20.4 | Aprovação |  | 1d | 2026-07-07 | 2026-07-07 | 575 |  |  | 2026-07-07 | 2026-07-07 | 1d | 2026-07-07 | 2026-07-07 | 13d |  |  | AUTOMAÇÃO E INSTRUMENTAÇÃO | Ter 07/07/26 | Ter 07/07/26 | Sprint 11 |
| 577 | 1.2.10.21 | **FD-F0009-0305-MB-J-00002** |  | 15d | 2026-06-17 A | 2026-07-07 |  | 90% | 1.5d | 2026-06-18 | 2026-07-07 | 14d | 2026-06-18 | 2026-07-07 | 13d |  |  | AUTOMAÇÃO E INSTRUMENTAÇÃO | Qui 18/06/26 | Ter 07/07/26 | Sprint 8 |
| 578 | 1.2.10.21.1 | Emissão inicial |  | 7d | 2026-06-17 A | 2026-06-25 A | 573SS | 100% |  | 2026-06-18 | 2026-07-01 | 10d | 2026-06-18 | 2026-07-01 |  |  |  | AUTOMAÇÃO E INSTRUMENTAÇÃO | Qui 18/06/26 | Qua 01/07/26 | Sprint 8 |
| 579 | 1.2.10.21.2 | Análise Tecnored |  | 6d | 2026-06-26 A | 2026-07-03 A | 578 | 100% |  | 2026-07-02 | 2026-07-02 | 1d | 2026-07-02 | 2026-07-02 |  |  | start no earlier than 2026-06-26 | AUTOMAÇÃO E INSTRUMENTAÇÃO | Qui 02/07/26 | Qui 02/07/26 | Sprint 9 |
| 580 | 1.2.10.21.3 | Atendimento de comentários |  | 1d | 2026-07-06 A | 2026-07-06 | 579 | 50% | 0.5d | 2026-07-03 | 2026-07-06 | 2d | 2026-07-03 | 2026-07-06 | 13d | 0d | start no earlier than 2026-07-06 | AUTOMAÇÃO E INSTRUMENTAÇÃO | Sex 03/07/26 | Seg 06/07/26 | Sprint 11 |
| 581 | 1.2.10.21.4 | Aprovação |  | 1d | 2026-07-07 | 2026-07-07 | 580 |  |  | 2026-07-07 | 2026-07-07 | 1d | 2026-07-07 | 2026-07-07 | 13d |  | start no earlier than 2026-07-07 | AUTOMAÇÃO E INSTRUMENTAÇÃO | Ter 07/07/26 | Ter 07/07/26 | Sprint 11 |

| ID | WBS | Task | Duration | Start | Finish | Predecessors | Complete | Remaining | Baseline start | Baseline finish | Baseline duration | Baseline 1 start | Baseline 1 finish | Total slack | Free slack | Constraint | Disciplina | Início_LB_R0 | Término_LB_R0 | Sprints |
| --- | --- | --- | --- | --- | --- | --- | --- | --- | --- | --- | --- | --- | --- | --- | --- | --- | --- | --- | --- | --- |
| 582 | 1.2.10.22 | **FD-F0009-0305-MB-J-00003** | 15d | 2026-06-17 A | 2026-07-07 |  | 90% | 1.5d | 2026-06-18 | 2026-07-07 | 14d | 2026-06-18 | 2026-07-07 | 13d |  |  | AUTOMAÇÃO E INSTRUMENTAÇÃO | Qui 18/06/26 | Ter 07/07/26 | Sprint 8 |
| 583 | 1.2.10.22.1 | Emissão inicial | 7d | 2026-06-17 A | 2026-06-25 A | 573SS | 100% |  | 2026-06-18 | 2026-07-01 | 10d | 2026-06-18 | 2026-07-01 |  |  |  | AUTOMAÇÃO E INSTRUMENTAÇÃO | Qui 18/06/26 | Qua 01/07/26 | Sprint 8 |
| 584 | 1.2.10.22.2 | Análise Tecnored | 6d | 2026-06-26 A | 2026-07-03 A | 583 | 100% |  | 2026-07-02 | 2026-07-02 | 1d | 2026-07-02 | 2026-07-02 |  |  |  | AUTOMAÇÃO E INSTRUMENTAÇÃO | Qui 02/07/26 | Qui 02/07/26 | Sprint 9 |
| 585 | 1.2.10.22.3 | Atendimento de comentários | 1d | 2026-07-06 A | 2026-07-06 | 584 | 50% | 0.5d | 2026-07-03 | 2026-07-06 | 2d | 2026-07-03 | 2026-07-06 | 13d | 0d | start no earlier than 2026-07-06 | AUTOMAÇÃO E INSTRUMENTAÇÃO | Sex 03/07/26 | Seg 06/07/26 | Sprint 11 |
| 586 | 1.2.10.22.4 | Aprovação | 1d | 2026-07-07 | 2026-07-07 | 585 |  |  | 2026-07-07 | 2026-07-07 | 1d | 2026-07-07 | 2026-07-07 | 13d |  | start no earlier than 2026-07-07 | AUTOMAÇÃO E INSTRUMENTAÇÃO | Ter 07/07/26 | Ter 07/07/26 | Sprint 11 |
| 587 | 1.2.10.23 | **FD-F0009-0305-MB-J-00004** | 15d | 2026-06-17 A | 2026-07-07 |  | 90% | 1.5d | 2026-06-18 | 2026-07-07 | 14d | 2026-06-18 | 2026-07-07 | 13d |  |  | AUTOMAÇÃO E INSTRUMENTAÇÃO | Qui 18/06/26 | Ter 07/07/26 | Sprint 8 |
| 588 | 1.2.10.23.1 | Emissão inicial | 7d | 2026-06-17 A | 2026-06-25 A | 573SS | 100% |  | 2026-06-18 | 2026-07-01 | 10d | 2026-06-18 | 2026-07-01 |  |  | start no earlier than 2026-06-16 | AUTOMAÇÃO E INSTRUMENTAÇÃO | Qui 18/06/26 | Qua 01/07/26 | Sprint 8 |
| 589 | 1.2.10.23.2 | Análise Tecnored | 6d | 2026-06-26 A | 2026-07-03 A | 588 | 100% |  | 2026-07-02 | 2026-07-02 | 1d | 2026-07-02 | 2026-07-02 |  |  | finish no earlier than 2026-07-03 | AUTOMAÇÃO E INSTRUMENTAÇÃO | Qui 02/07/26 | Qui 02/07/26 | Sprint 9 |
| 590 | 1.2.10.23.3 | Atendimento de comentários | 1d | 2026-07-06 A | 2026-07-06 | 589 | 50% | 0.5d | 2026-07-03 | 2026-07-06 | 2d | 2026-07-03 | 2026-07-06 | 13d | 0d | start no earlier than 2026-07-06 | AUTOMAÇÃO E INSTRUMENTAÇÃO | Sex 03/07/26 | Seg 06/07/26 | Sprint 11 |
| 591 | 1.2.10.23.4 | Aprovação | 1d | 2026-07-07 | 2026-07-07 | 590 |  |  | 2026-07-07 | 2026-07-07 | 1d | 2026-07-07 | 2026-07-07 | 13d |  | start no earlier than 2026-07-07 | AUTOMAÇÃO E INSTRUMENTAÇÃO | Ter 07/07/26 | Ter 07/07/26 | Sprint 11 |
| 592 | 1.2.10.24 | **FD-F0009-0305-MB-J-00005** | 15d | 2026-06-17 A | 2026-07-07 |  | 90% | 1.5d | 2026-06-18 | 2026-07-07 | 14d | 2026-06-18 | 2026-07-07 | 13d |  |  | AUTOMAÇÃO E INSTRUMENTAÇÃO | Qui 18/06/26 | Ter 07/07/26 | Sprint 8 |
| 593 | 1.2.10.24.1 | Emissão inicial | 7d | 2026-06-17 A | 2026-06-25 A | 573SS | 100% |  | 2026-06-18 | 2026-07-01 | 10d | 2026-06-18 | 2026-07-01 |  |  |  | AUTOMAÇÃO E INSTRUMENTAÇÃO | Qui 18/06/26 | Qua 01/07/26 | Sprint 8 |
| 594 | 1.2.10.24.2 | Análise Tecnored | 6d | 2026-06-26 A | 2026-07-03 A | 593 | 100% |  | 2026-07-02 | 2026-07-02 | 1d | 2026-07-02 | 2026-07-02 |  |  | finish no earlier than 2026-07-03 | AUTOMAÇÃO E INSTRUMENTAÇÃO | Qui 02/07/26 | Qui 02/07/26 | Sprint 9 |
| 595 | 1.2.10.24.3 | Atendimento de comentários | 1d | 2026-07-06 A | 2026-07-06 | 594 | 50% | 0.5d | 2026-07-03 | 2026-07-06 | 2d | 2026-07-03 | 2026-07-06 | 13d | 0d | start no earlier than 2026-07-06 | AUTOMAÇÃO E INSTRUMENTAÇÃO | Sex 03/07/26 | Seg 06/07/26 | Sprint 11 |
| 596 | 1.2.10.24.4 | Aprovação | 1d | 2026-07-07 | 2026-07-07 | 595 |  |  | 2026-07-07 | 2026-07-07 | 1d | 2026-07-07 | 2026-07-07 | 13d |  | start no earlier than 2026-07-07 | AUTOMAÇÃO E INSTRUMENTAÇÃO | Ter 07/07/26 | Ter 07/07/26 | Sprint 11 |
| 597 | 1.2.10.25 | **FD-F0009-0305-MB-J-00006** | 15d | 2026-06-17 A | 2026-07-07 |  | 90% | 1.5d | 2026-06-18 | 2026-07-07 | 14d | 2026-06-18 | 2026-07-07 | 13d |  |  | AUTOMAÇÃO E INSTRUMENTAÇÃO | Qui 18/06/26 | Ter 07/07/26 | Sprint 8 |
| 598 | 1.2.10.25.1 | Emissão inicial | 7d | 2026-06-17 A | 2026-06-25 A | 573SS | 100% |  | 2026-06-18 | 2026-07-01 | 10d | 2026-06-18 | 2026-07-01 |  |  |  | AUTOMAÇÃO E INSTRUMENTAÇÃO | Qui 18/06/26 | Qua 01/07/26 | Sprint 8 |
| 599 | 1.2.10.25.2 | Análise Tecnored | 6d | 2026-06-26 A | 2026-07-03 A | 598 | 100% |  | 2026-07-02 | 2026-07-02 | 1d | 2026-07-02 | 2026-07-02 |  |  | finish no earlier than 2026-07-03 | AUTOMAÇÃO E INSTRUMENTAÇÃO | Qui 02/07/26 | Qui 02/07/26 | Sprint 9 |
| 600 | 1.2.10.25.3 | Atendimento de comentários | 1d | 2026-07-06 A | 2026-07-06 | 599 | 50% | 0.5d | 2026-07-03 | 2026-07-06 | 2d | 2026-07-03 | 2026-07-06 | 13d | 0d | start no earlier than 2026-07-06 | AUTOMAÇÃO E INSTRUMENTAÇÃO | Sex 03/07/26 | Seg 06/07/26 | Sprint 11 |
| 601 | 1.2.10.25.4 | Aprovação | 1d | 2026-07-07 | 2026-07-07 | 600 |  |  | 2026-07-07 | 2026-07-07 | 1d | 2026-07-07 | 2026-07-07 | 13d |  | start no earlier than 2026-07-07 | AUTOMAÇÃO E INSTRUMENTAÇÃO | Ter 07/07/26 | Ter 07/07/26 | Sprint 11 |
| 602 | 1.2.10.26 | **FD-F0009-0305-MB-J-00007** | 15d | 2026-06-17 A | 2026-07-07 |  | 90% | 1.5d | 2026-06-18 | 2026-07-07 | 14d | 2026-06-18 | 2026-07-07 | 13d |  |  | AUTOMAÇÃO E INSTRUMENTAÇÃO | Qui 18/06/26 | Ter 07/07/26 | Sprint 8 |
| 603 | 1.2.10.26.1 | Emissão inicial | 7d | 2026-06-17 A | 2026-06-25 A | 573SS | 100% |  | 2026-06-18 | 2026-07-01 | 10d | 2026-06-18 | 2026-07-01 |  |  |  | AUTOMAÇÃO E INSTRUMENTAÇÃO | Qui 18/06/26 | Qua 01/07/26 | Sprint 8 |
| 604 | 1.2.10.26.2 | Análise Tecnored | 6d | 2026-06-26 A | 2026-07-03 A | 603 | 100% |  | 2026-07-02 | 2026-07-02 | 1d | 2026-07-02 | 2026-07-02 |  |  | finish no earlier than 2026-07-03 | AUTOMAÇÃO E INSTRUMENTAÇÃO | Qui 02/07/26 | Qui 02/07/26 | Sprint 9 |
| 605 | 1.2.10.26.3 | Atendimento de comentários | 1d | 2026-07-06 A | 2026-07-06 | 604 | 50% | 0.5d | 2026-07-03 | 2026-07-06 | 2d | 2026-07-03 | 2026-07-06 | 13d | 0d | start no earlier than 2026-07-06 | AUTOMAÇÃO E INSTRUMENTAÇÃO | Sex 03/07/26 | Seg 06/07/26 | Sprint 11 |
| 606 | 1.2.10.26.4 | Aprovação | 1d | 2026-07-07 | 2026-07-07 | 605 |  |  | 2026-07-07 | 2026-07-07 | 1d | 2026-07-07 | 2026-07-07 | 13d |  | start no earlier than 2026-07-07 | AUTOMAÇÃO E INSTRUMENTAÇÃO | Ter 07/07/26 | Ter 07/07/26 | Sprint 11 |

| ID | WBS | Task | Duration | Start | Finish | Predecessors | Complete | Remaining | Baseline start | Baseline finish | Baseline duration | Baseline 1 start | Baseline 1 finish | Total slack | Free slack | Constraint | Disciplina | Início_LB_R0 | Término_LB_R0 | Sprints |
| --- | --- | --- | --- | --- | --- | --- | --- | --- | --- | --- | --- | --- | --- | --- | --- | --- | --- | --- | --- | --- |
| 607 | 1.2.10.27 | **FD-F0009-0305-MB-J-00008** | 15d | 2026-06-17 A | 2026-07-07 |  | 90% | 1.5d | 2026-06-18 | 2026-07-07 | 14d | 2026-06-18 | 2026-07-07 | 13d |  |  | AUTOMAÇÃO E INSTRUMENTAÇÃO | Qui 18/06/26 | Ter 07/07/26 | Sprint 8 |
| 608 | 1.2.10.27.1 | Emissão inicial | 7d | 2026-06-17 A | 2026-06-25 A | 573SS | 100% |  | 2026-06-18 | 2026-07-01 | 10d | 2026-06-18 | 2026-07-01 |  |  | start no earlier than 2026-06-16 | AUTOMAÇÃO E INSTRUMENTAÇÃO | Qui 18/06/26 | Qua 01/07/26 | Sprint 8 |
| 609 | 1.2.10.27.2 | Análise Tecnored | 6d | 2026-06-26 A | 2026-07-03 A | 608 | 100% |  | 2026-07-02 | 2026-07-02 | 1d | 2026-07-02 | 2026-07-02 |  |  | finish no earlier than 2026-07-03 | AUTOMAÇÃO E INSTRUMENTAÇÃO | Qui 02/07/26 | Qui 02/07/26 | Sprint 9 |
| 610 | 1.2.10.27.3 | Atendimento de comentários | 1d | 2026-07-06 A | 2026-07-06 | 609 | 50% | 0.5d | 2026-07-03 | 2026-07-06 | 2d | 2026-07-03 | 2026-07-06 | 13d | 0d | start no earlier than 2026-07-06 | AUTOMAÇÃO E INSTRUMENTAÇÃO | Sex 03/07/26 | Seg 06/07/26 | Sprint 11 |
| 611 | 1.2.10.27.4 | Aprovação | 1d | 2026-07-07 | 2026-07-07 | 610 |  |  | 2026-07-07 | 2026-07-07 | 1d | 2026-07-07 | 2026-07-07 | 13d |  | start no earlier than 2026-07-07 | AUTOMAÇÃO E INSTRUMENTAÇÃO | Ter 07/07/26 | Ter 07/07/26 | Sprint 11 |
| 612 | 1.2.10.28 | **FD-F0009-0305-MB-J-00009** | 15d | 2026-06-17 A | 2026-07-07 |  | 90% | 1.5d | 2026-06-18 | 2026-07-07 | 14d | 2026-06-18 | 2026-07-07 | 13d |  |  | AUTOMAÇÃO E INSTRUMENTAÇÃO | Qui 18/06/26 | Ter 07/07/26 | Sprint 8 |
| 613 | 1.2.10.28.1 | Emissão inicial | 7d | 2026-06-17 A | 2026-06-25 A | 573SS | 100% |  | 2026-06-18 | 2026-07-01 | 10d | 2026-06-18 | 2026-07-01 |  |  |  | AUTOMAÇÃO E INSTRUMENTAÇÃO | Qui 18/06/26 | Qua 01/07/26 | Sprint 8 |
| 614 | 1.2.10.28.2 | Análise Tecnored | 6d | 2026-06-26 A | 2026-07-03 A | 613 | 100% |  | 2026-07-02 | 2026-07-02 | 1d | 2026-07-02 | 2026-07-02 |  |  | finish no earlier than 2026-07-03 | AUTOMAÇÃO E INSTRUMENTAÇÃO | Qui 02/07/26 | Qui 02/07/26 | Sprint 9 |
| 615 | 1.2.10.28.3 | Atendimento de comentários | 1d | 2026-07-06 A | 2026-07-06 | 614 | 50% | 0.5d | 2026-07-03 | 2026-07-06 | 2d | 2026-07-03 | 2026-07-06 | 13d | 0d | start no earlier than 2026-07-06 | AUTOMAÇÃO E INSTRUMENTAÇÃO | Sex 03/07/26 | Seg 06/07/26 | Sprint 11 |
| 616 | 1.2.10.28.4 | Aprovação | 1d | 2026-07-07 | 2026-07-07 | 615 |  |  | 2026-07-07 | 2026-07-07 | 1d | 2026-07-07 | 2026-07-07 | 13d |  | start no earlier than 2026-07-07 | AUTOMAÇÃO E INSTRUMENTAÇÃO | Ter 07/07/26 | Ter 07/07/26 | Sprint 11 |
| 617 | 1.2.10.29 | **FD-F0009-0305-MB-J-00010** | 15d | 2026-06-17 A | 2026-07-07 |  | 90% | 1.5d | 2026-06-18 | 2026-07-07 | 14d | 2026-06-18 | 2026-07-07 | 13d |  |  | AUTOMAÇÃO E INSTRUMENTAÇÃO | Qui 18/06/26 | Ter 07/07/26 | Sprint 8 |
| 618 | 1.2.10.29.1 | Emissão inicial | 7d | 2026-06-17 A | 2026-06-25 A | 573SS | 100% |  | 2026-06-18 | 2026-07-01 | 10d | 2026-06-18 | 2026-07-01 |  |  |  | AUTOMAÇÃO E INSTRUMENTAÇÃO | Qui 18/06/26 | Qua 01/07/26 | Sprint 8 |
| 619 | 1.2.10.29.2 | Análise Tecnored | 6d | 2026-06-26 A | 2026-07-03 A | 618 | 100% |  | 2026-07-02 | 2026-07-02 | 1d | 2026-07-02 | 2026-07-02 |  |  | finish no earlier than 2026-07-03 | AUTOMAÇÃO E INSTRUMENTAÇÃO | Qui 02/07/26 | Qui 02/07/26 | Sprint 9 |
| 620 | 1.2.10.29.3 | Atendimento de comentários | 1d | 2026-07-06 A | 2026-07-06 | 619 | 50% | 0.5d | 2026-07-03 | 2026-07-06 | 2d | 2026-07-03 | 2026-07-06 | 13d | 0d | start no earlier than 2026-07-06 | AUTOMAÇÃO E INSTRUMENTAÇÃO | Sex 03/07/26 | Seg 06/07/26 | Sprint 11 |
| 621 | 1.2.10.29.4 | Aprovação | 1d | 2026-07-07 | 2026-07-07 | 620 |  |  | 2026-07-07 | 2026-07-07 | 1d | 2026-07-07 | 2026-07-07 | 13d |  | start no earlier than 2026-07-07 | AUTOMAÇÃO E INSTRUMENTAÇÃO | Ter 07/07/26 | Ter 07/07/26 | Sprint 11 |
| 622 | 1.2.10.30 | **FD-F0009-0305-MB-J-00011** | 15d | 2026-06-17 A | 2026-07-07 |  | 90% | 1.5d | 2026-06-18 | 2026-07-07 | 14d | 2026-06-18 | 2026-07-07 | 13d |  |  | AUTOMAÇÃO E INSTRUMENTAÇÃO | Qui 18/06/26 | Ter 07/07/26 | Sprint 8 |
| 623 | 1.2.10.30.1 | Emissão inicial | 7d | 2026-06-17 A | 2026-06-25 A | 573SS | 100% |  | 2026-06-18 | 2026-07-01 | 10d | 2026-06-18 | 2026-07-01 |  |  |  | AUTOMAÇÃO E INSTRUMENTAÇÃO | Qui 18/06/26 | Qua 01/07/26 | Sprint 8 |
| 624 | 1.2.10.30.2 | Análise Tecnored | 6d | 2026-06-26 A | 2026-07-03 A | 623 | 100% |  | 2026-07-02 | 2026-07-02 | 1d | 2026-07-02 | 2026-07-02 |  |  | finish no earlier than 2026-07-03 | AUTOMAÇÃO E INSTRUMENTAÇÃO | Qui 02/07/26 | Qui 02/07/26 | Sprint 9 |
| 625 | 1.2.10.30.3 | Atendimento de comentários | 1d | 2026-07-06 A | 2026-07-06 | 624 | 50% | 0.5d | 2026-07-03 | 2026-07-06 | 2d | 2026-07-03 | 2026-07-06 | 13d | 0d | start no earlier than 2026-07-06 | AUTOMAÇÃO E INSTRUMENTAÇÃO | Sex 03/07/26 | Seg 06/07/26 | Sprint 11 |
| 626 | 1.2.10.30.4 | Aprovação | 1d | 2026-07-07 | 2026-07-07 | 625 |  |  | 2026-07-07 | 2026-07-07 | 1d | 2026-07-07 | 2026-07-07 | 13d |  | start no earlier than 2026-07-07 | AUTOMAÇÃO E INSTRUMENTAÇÃO | Ter 07/07/26 | Ter 07/07/26 | Sprint 11 |
| 627 | 1.2.10.31 | **FD-F0009-0305-MB-J-00012** | 15d | 2026-06-17 A | 2026-07-07 |  | 90% | 1.5d | 2026-06-18 | 2026-07-07 | 14d | 2026-06-18 | 2026-07-07 | 13d |  |  | AUTOMAÇÃO E INSTRUMENTAÇÃO | Qui 18/06/26 | Ter 07/07/26 | Sprint 8 |
| 628 | 1.2.10.31.1 | Emissão inicial | 7d | 2026-06-17 A | 2026-06-25 A | 573SS | 100% |  | 2026-06-18 | 2026-07-01 | 10d | 2026-06-18 | 2026-07-01 |  |  |  | AUTOMAÇÃO E INSTRUMENTAÇÃO | Qui 18/06/26 | Qua 01/07/26 | Sprint 8 |
| 629 | 1.2.10.31.2 | Análise Tecnored | 6d | 2026-06-26 A | 2026-07-03 A | 628 | 100% |  | 2026-07-02 | 2026-07-02 | 1d | 2026-07-02 | 2026-07-02 |  |  | finish no earlier than 2026-07-03 | AUTOMAÇÃO E INSTRUMENTAÇÃO | Qui 02/07/26 | Qui 02/07/26 | Sprint 9 |
| 630 | 1.2.10.31.3 | Atendimento de comentários | 1d | 2026-07-06 A | 2026-07-06 | 629 | 50% | 0.5d | 2026-07-03 | 2026-07-06 | 2d | 2026-07-03 | 2026-07-06 | 13d | 0d | start no earlier than 2026-07-06 | AUTOMAÇÃO E INSTRUMENTAÇÃO | Sex 03/07/26 | Seg 06/07/26 | Sprint 11 |
| 631 | 1.2.10.31.4 | Aprovação | 1d | 2026-07-07 | 2026-07-07 | 630 |  |  | 2026-07-07 | 2026-07-07 | 1d | 2026-07-07 | 2026-07-07 | 13d |  | start no earlier than 2026-07-07 | AUTOMAÇÃO E INSTRUMENTAÇÃO | Ter 07/07/26 | Ter 07/07/26 | Sprint 11 |

| ID | WBS | Task | Duration | Start | Finish | Predecessors | Complete | Remaining | Baseline start | Baseline finish | Baseline duration | Baseline 1 start | Baseline 1 finish | Total slack | Free slack | Constraint | Disciplina | Início_LB_R0 | Término_LB_R0 | Sprints |
| --- | --- | --- | --- | --- | --- | --- | --- | --- | --- | --- | --- | --- | --- | --- | --- | --- | --- | --- | --- | --- |
| 632 | 1.2.10.32 | **FD-F0009-0305-MB-J-00013** | 15d | 2026-06-17 A | 2026-07-07 |  | 90% | 1.5d | 2026-06-18 | 2026-07-07 | 14d | 2026-06-18 | 2026-07-07 | 13d |  |  | AUTOMAÇÃO E INSTRUMENTAÇÃO | Qui 18/06/26 | Ter 07/07/26 | Sprint 8 |
| 633 | 1.2.10.32.1 | Emissão inicial | 7d | 2026-06-17 A | 2026-06-25 A | 573SS | 100% |  | 2026-06-18 | 2026-07-01 | 10d | 2026-06-18 | 2026-07-01 |  |  |  | AUTOMAÇÃO E INSTRUMENTAÇÃO | Qui 18/06/26 | Qua 01/07/26 | Sprint 8 |
| 634 | 1.2.10.32.2 | Análise Tecnored | 6d | 2026-06-26 A | 2026-07-03 A | 633 | 100% |  | 2026-07-02 | 2026-07-02 | 1d | 2026-07-02 | 2026-07-02 |  |  | finish no earlier than 2026-07-03 | AUTOMAÇÃO E INSTRUMENTAÇÃO | Qui 02/07/26 | Qui 02/07/26 | Sprint 9 |
| 635 | 1.2.10.32.3 | Atendimento de comentários | 1d | 2026-07-06 A | 2026-07-06 | 634 | 50% | 0.5d | 2026-07-03 | 2026-07-06 | 2d | 2026-07-03 | 2026-07-06 | 13d | 0d | start no earlier than 2026-07-06 | AUTOMAÇÃO E INSTRUMENTAÇÃO | Sex 03/07/26 | Seg 06/07/26 | Sprint 11 |
| 636 | 1.2.10.32.4 | Aprovação | 1d | 2026-07-07 | 2026-07-07 | 635 |  |  | 2026-07-07 | 2026-07-07 | 1d | 2026-07-07 | 2026-07-07 | 13d |  | start no earlier than 2026-07-07 | AUTOMAÇÃO E INSTRUMENTAÇÃO | Ter 07/07/26 | Ter 07/07/26 | Sprint 11 |
| 637 | 1.2.10.33 | **FD-F0009-0305-MB-J-00014** | 15d | 2026-06-17 A | 2026-07-07 |  | 90% | 1.5d | 2026-06-18 | 2026-07-07 | 14d | 2026-06-18 | 2026-07-07 | 13d |  |  | AUTOMAÇÃO E INSTRUMENTAÇÃO | Qui 18/06/26 | Ter 07/07/26 | Sprint 8 |
| 638 | 1.2.10.33.1 | Emissão inicial | 7d | 2026-06-17 A | 2026-06-25 A | 573SS | 100% |  | 2026-06-18 | 2026-07-01 | 10d | 2026-06-18 | 2026-07-01 |  |  |  | AUTOMAÇÃO E INSTRUMENTAÇÃO | Qui 18/06/26 | Qua 01/07/26 | Sprint 8 |
| 639 | 1.2.10.33.2 | Análise Tecnored | 6d | 2026-06-26 A | 2026-07-03 A | 638 | 100% |  | 2026-07-02 | 2026-07-02 | 1d | 2026-07-02 | 2026-07-02 |  |  | finish no earlier than 2026-07-03 | AUTOMAÇÃO E INSTRUMENTAÇÃO | Qui 02/07/26 | Qui 02/07/26 | Sprint 9 |
| 640 | 1.2.10.33.3 | Atendimento de comentários | 1d | 2026-07-06 A | 2026-07-06 | 639 | 50% | 0.5d | 2026-07-03 | 2026-07-06 | 2d | 2026-07-03 | 2026-07-06 | 13d | 0d | start no earlier than 2026-07-06 | AUTOMAÇÃO E INSTRUMENTAÇÃO | Sex 03/07/26 | Seg 06/07/26 | Sprint 11 |
| 641 | 1.2.10.33.4 | Aprovação | 1d | 2026-07-07 | 2026-07-07 | 640 |  |  | 2026-07-07 | 2026-07-07 | 1d | 2026-07-07 | 2026-07-07 | 13d |  | start no earlier than 2026-07-07 | AUTOMAÇÃO E INSTRUMENTAÇÃO | Ter 07/07/26 | Ter 07/07/26 | Sprint 11 |
| 642 | 1.2.10.34 | **FD-F0009-0305-MB-J-00015** | 15d | 2026-06-17 A | 2026-07-07 |  | 90% | 1.5d | 2026-06-18 | 2026-07-07 | 14d | 2026-06-18 | 2026-07-07 | 13d |  |  | AUTOMAÇÃO E INSTRUMENTAÇÃO | Qui 18/06/26 | Ter 07/07/26 | Sprint 8 |
| 643 | 1.2.10.34.1 | Emissão inicial | 7d | 2026-06-17 A | 2026-06-25 A | 573SS | 100% |  | 2026-06-18 | 2026-07-01 | 10d | 2026-06-18 | 2026-07-01 |  |  |  | AUTOMAÇÃO E INSTRUMENTAÇÃO | Qui 18/06/26 | Qua 01/07/26 | Sprint 8 |
| 644 | 1.2.10.34.2 | Análise Tecnored | 6d | 2026-06-26 A | 2026-07-03 A | 643 | 100% |  | 2026-07-02 | 2026-07-02 | 1d | 2026-07-02 | 2026-07-02 |  |  | finish no earlier than 2026-07-03 | AUTOMAÇÃO E INSTRUMENTAÇÃO | Qui 02/07/26 | Qui 02/07/26 | Sprint 9 |
| 645 | 1.2.10.34.3 | Atendimento de comentários | 1d | 2026-07-06 A | 2026-07-06 | 644 | 50% | 0.5d | 2026-07-03 | 2026-07-06 | 2d | 2026-07-03 | 2026-07-06 | 13d | 0d | start no earlier than 2026-07-06 | AUTOMAÇÃO E INSTRUMENTAÇÃO | Sex 03/07/26 | Seg 06/07/26 | Sprint 11 |
| 646 | 1.2.10.34.4 | Aprovação | 1d | 2026-07-07 | 2026-07-07 | 645 |  |  | 2026-07-07 | 2026-07-07 | 1d | 2026-07-07 | 2026-07-07 | 13d |  | start no earlier than 2026-07-07 | AUTOMAÇÃO E INSTRUMENTAÇÃO | Ter 07/07/26 | Ter 07/07/26 | Sprint 11 |
| 647 | 1.2.10.35 | **FD-F0009-0305-MB-J-00016** | 15d | 2026-06-17 A | 2026-07-07 |  | 90% | 1.5d | 2026-06-18 | 2026-07-07 | 14d | 2026-06-18 | 2026-07-07 | 13d |  |  | AUTOMAÇÃO E INSTRUMENTAÇÃO | Qui 18/06/26 | Ter 07/07/26 | Sprint 8 |
| 648 | 1.2.10.35.1 | Emissão inicial | 7d | 2026-06-17 A | 2026-06-25 A | 573SS | 100% |  | 2026-06-18 | 2026-07-01 | 10d | 2026-06-18 | 2026-07-01 |  |  |  | AUTOMAÇÃO E INSTRUMENTAÇÃO | Qui 18/06/26 | Qua 01/07/26 | Sprint 8 |
| 649 | 1.2.10.35.2 | Análise Tecnored | 6d | 2026-06-26 A | 2026-07-03 A | 648 | 100% |  | 2026-07-02 | 2026-07-02 | 1d | 2026-07-02 | 2026-07-02 |  |  | finish no earlier than 2026-07-03 | AUTOMAÇÃO E INSTRUMENTAÇÃO | Qui 02/07/26 | Qui 02/07/26 | Sprint 9 |
| 650 | 1.2.10.35.3 | Atendimento de comentários | 1d | 2026-07-06 A | 2026-07-06 | 649 | 50% | 0.5d | 2026-07-03 | 2026-07-06 | 2d | 2026-07-03 | 2026-07-06 | 13d | 0d | start no earlier than 2026-07-06 | AUTOMAÇÃO E INSTRUMENTAÇÃO | Sex 03/07/26 | Seg 06/07/26 | Sprint 11 |
| 651 | 1.2.10.35.4 | Aprovação | 1d | 2026-07-07 | 2026-07-07 | 650 |  |  | 2026-07-07 | 2026-07-07 | 1d | 2026-07-07 | 2026-07-07 | 13d |  | start no earlier than 2026-07-07 | AUTOMAÇÃO E INSTRUMENTAÇÃO | Ter 07/07/26 | Ter 07/07/26 | Sprint 11 |
| 652 | 1.2.10.36 | **FD-F0009-0305-MB-J-00017** | 15d | 2026-06-17 A | 2026-07-07 |  | 90% | 1.5d | 2026-06-18 | 2026-07-07 | 14d | 2026-06-18 | 2026-07-07 | 13d |  |  | AUTOMAÇÃO E INSTRUMENTAÇÃO | Qui 18/06/26 | Ter 07/07/26 | Sprint 8 |
| 653 | 1.2.10.36.1 | Emissão inicial | 7d | 2026-06-17 A | 2026-06-25 A | 573SS | 100% |  | 2026-06-15 | 2026-06-23 | 10d | 2026-06-18 | 2026-07-01 |  |  |  | AUTOMAÇÃO E INSTRUMENTAÇÃO | Seg 15/06/26 | Ter 23/06/26 | Sprint 8 |
| 654 | 1.2.10.36.2 | Análise Tecnored | 6d | 2026-06-26 A | 2026-07-03 A | 653 | 100% |  | 2026-06-24 | 2026-06-24 | 1d | 2026-07-02 | 2026-07-02 |  |  | finish no earlier than 2026-07-03 | AUTOMAÇÃO E INSTRUMENTAÇÃO | Qua 24/06/26 | Qua 24/06/26 | Sprint 9 |
| 655 | 1.2.10.36.3 | Atendimento de comentários | 1d | 2026-07-06 A | 2026-07-06 | 654 | 50% | 0.5d | 2026-06-25 | 2026-06-25 | 2d | 2026-07-03 | 2026-07-06 | 13d | 0d | start no earlier than 2026-07-06 | AUTOMAÇÃO E INSTRUMENTAÇÃO | Qui 25/06/26 | Qui 25/06/26 | Sprint 11 |
| 656 | 1.2.10.36.4 | Aprovação | 1d | 2026-07-07 | 2026-07-07 | 655 |  |  | 2026-06-26 | 2026-06-26 | 1d | 2026-07-07 | 2026-07-07 | 13d |  | start no earlier than 2026-07-07 | AUTOMAÇÃO E INSTRUMENTAÇÃO | Sex 26/06/26 | Sex 26/06/26 | Sprint 11 |

| ID | WBS | Task | Duration | Start | Finish | Predecessors | Complete | Remaining | Baseline start | Baseline finish | Baseline duration | Baseline 1 start | Baseline 1 finish | Total slack | Free slack | Constraint | Disciplina | Início_LB_R0 | Término_LB_R0 | Sprints |
| --- | --- | --- | --- | --- | --- | --- | --- | --- | --- | --- | --- | --- | --- | --- | --- | --- | --- | --- | --- | --- |
| 657 | 1.2.10.37 | **FD-F0009-0305-MB-J-00018** | 15d | 2026-06-17 A | 2026-07-07 |  | 90% | 1.5d | 2026-06-18 | 2026-07-07 | 14d | 2026-06-18 | 2026-07-07 | 13d |  |  | AUTOMAÇÃO E INSTRUMENTAÇÃO | Qui 18/06/26 | Ter 07/07/26 | Sprint 8 |
| 658 | 1.2.10.37.1 | Emissão inicial | 7d | 2026-06-17 A | 2026-06-25 A | 573SS | 100% |  | 2026-06-15 | 2026-06-23 | 10d | 2026-06-18 | 2026-07-01 |  |  |  | AUTOMAÇÃO E INSTRUMENTAÇÃO | Seg 15/06/26 | Ter 23/06/26 | Sprint 8 |
| 659 | 1.2.10.37.2 | Análise Tecnored | 6d | 2026-06-26 A | 2026-07-03 A | 658 | 100% |  | 2026-06-24 | 2026-06-24 | 1d | 2026-07-02 | 2026-07-02 |  |  | finish no earlier than 2026-07-03 | AUTOMAÇÃO E INSTRUMENTAÇÃO | Qua 24/06/26 | Qua 24/06/26 | Sprint 9 |
| 660 | 1.2.10.37.3 | Atendimento de comentários | 1d | 2026-07-06 A | 2026-07-06 | 659 | 50% | 0.5d | 2026-06-25 | 2026-06-25 | 2d | 2026-07-03 | 2026-07-06 | 13d | 0d | start no earlier than 2026-07-06 | AUTOMAÇÃO E INSTRUMENTAÇÃO | Qui 25/06/26 | Qui 25/06/26 | Sprint 11 |
| 661 | 1.2.10.37.4 | Aprovação | 1d | 2026-07-07 | 2026-07-07 | 660 |  |  | 2026-06-26 | 2026-06-26 | 1d | 2026-07-07 | 2026-07-07 | 13d |  | start no earlier than 2026-07-07 | AUTOMAÇÃO E INSTRUMENTAÇÃO | Sex 26/06/26 | Sex 26/06/26 | Sprint 11 |
| 662 | 1.2.10.38 | **FD-F0009-0305-MB-J-00019** | 15d | 2026-06-17 A | 2026-07-07 |  | 90% | 1.5d | 2026-06-18 | 2026-07-07 | 14d | 2026-06-18 | 2026-07-07 | 13d |  |  | AUTOMAÇÃO E INSTRUMENTAÇÃO | Qui 18/06/26 | Ter 07/07/26 | Sprint 8 |
| 663 | 1.2.10.38.1 | Emissão inicial | 7d | 2026-06-17 A | 2026-06-25 A | 573SS | 100% |  | 2026-06-15 | 2026-06-23 | 10d | 2026-06-18 | 2026-07-01 |  |  |  | AUTOMAÇÃO E INSTRUMENTAÇÃO | Seg 15/06/26 | Ter 23/06/26 | Sprint 8 |
| 664 | 1.2.10.38.2 | Análise Tecnored | 6d | 2026-06-26 A | 2026-07-03 A | 663 | 100% |  | 2026-06-24 | 2026-06-24 | 1d | 2026-07-02 | 2026-07-02 |  |  | finish no earlier than 2026-07-03 | AUTOMAÇÃO E INSTRUMENTAÇÃO | Qua 24/06/26 | Qua 24/06/26 | Sprint 9 |
| 665 | 1.2.10.38.3 | Atendimento de comentários | 1d | 2026-07-06 A | 2026-07-06 | 664 | 50% | 0.5d | 2026-06-25 | 2026-06-25 | 2d | 2026-07-03 | 2026-07-06 | 13d | 0d | start no earlier than 2026-07-06 | AUTOMAÇÃO E INSTRUMENTAÇÃO | Qui 25/06/26 | Qui 25/06/26 | Sprint 11 |
| 666 | 1.2.10.38.4 | Aprovação | 1d | 2026-07-07 | 2026-07-07 | 665 |  |  | 2026-06-26 | 2026-06-26 | 1d | 2026-07-07 | 2026-07-07 | 13d |  | start no earlier than 2026-07-07 | AUTOMAÇÃO E INSTRUMENTAÇÃO | Sex 26/06/26 | Sex 26/06/26 | Sprint 11 |
| 667 | 1.2.10.39 | **FD-F0009-0305-MB-J-00020** | 15d | 2026-06-17 A | 2026-07-07 |  | 90% | 1.5d | 2026-06-18 | 2026-07-07 | 14d | 2026-06-18 | 2026-07-07 | 13d |  |  | AUTOMAÇÃO E INSTRUMENTAÇÃO | Qui 18/06/26 | Ter 07/07/26 | Sprint 8 |
| 668 | 1.2.10.39.1 | Emissão inicial | 7d | 2026-06-17 A | 2026-06-25 A | 573SS | 100% |  | 2026-06-15 | 2026-06-23 | 10d | 2026-06-18 | 2026-07-01 |  |  |  | AUTOMAÇÃO E INSTRUMENTAÇÃO | Seg 15/06/26 | Ter 23/06/26 | Sprint 8 |
| 669 | 1.2.10.39.2 | Análise Tecnored | 6d | 2026-06-26 A | 2026-07-03 A | 668 | 100% |  | 2026-06-24 | 2026-06-24 | 1d | 2026-07-02 | 2026-07-02 |  |  | finish no earlier than 2026-07-03 | AUTOMAÇÃO E INSTRUMENTAÇÃO | Qua 24/06/26 | Qua 24/06/26 | Sprint 9 |
| 670 | 1.2.10.39.3 | Atendimento de comentários | 1d | 2026-07-06 A | 2026-07-06 | 669 | 50% | 0.5d | 2026-06-25 | 2026-06-25 | 2d | 2026-07-03 | 2026-07-06 | 13d | 0d | start no earlier than 2026-07-06 | AUTOMAÇÃO E INSTRUMENTAÇÃO | Qui 25/06/26 | Qui 25/06/26 | Sprint 11 |
| 671 | 1.2.10.39.4 | Aprovação | 1d | 2026-07-07 | 2026-07-07 | 670 |  |  | 2026-06-26 | 2026-06-26 | 1d | 2026-07-07 | 2026-07-07 | 13d |  | start no earlier than 2026-07-07 | AUTOMAÇÃO E INSTRUMENTAÇÃO | Sex 26/06/26 | Sex 26/06/26 | Sprint 11 |
| 672 | 1.2.10.40 | **FD-F0009-0305-MB-J-00021** | 15d | 2026-06-17 A | 2026-07-07 |  | 90% | 1.5d | 2026-06-18 | 2026-07-07 | 14d | 2026-06-18 | 2026-07-07 | 13d |  |  | AUTOMAÇÃO E INSTRUMENTAÇÃO | Qui 18/06/26 | Ter 07/07/26 | Sprint 8 |
| 673 | 1.2.10.40.1 | Emissão inicial | 7d | 2026-06-17 A | 2026-06-25 A | 573SS | 100% |  | 2026-06-15 | 2026-06-23 | 10d | 2026-06-18 | 2026-07-01 |  |  |  | AUTOMAÇÃO E INSTRUMENTAÇÃO | Seg 15/06/26 | Ter 23/06/26 | Sprint 8 |
| 674 | 1.2.10.40.2 | Análise Tecnored | 6d | 2026-06-26 A | 2026-07-03 A | 673 | 100% |  | 2026-06-24 | 2026-06-24 | 1d | 2026-07-02 | 2026-07-02 |  |  | finish no earlier than 2026-07-03 | AUTOMAÇÃO E INSTRUMENTAÇÃO | Qua 24/06/26 | Qua 24/06/26 | Sprint 9 |
| 675 | 1.2.10.40.3 | Atendimento de comentários | 1d | 2026-07-06 A | 2026-07-06 | 674 | 50% | 0.5d | 2026-06-25 | 2026-06-25 | 2d | 2026-07-03 | 2026-07-06 | 13d | 0d | start no earlier than 2026-07-06 | AUTOMAÇÃO E INSTRUMENTAÇÃO | Qui 25/06/26 | Qui 25/06/26 | Sprint 11 |
| 676 | 1.2.10.40.4 | Aprovação | 1d | 2026-07-07 | 2026-07-07 | 675 |  |  | 2026-06-26 | 2026-06-26 | 1d | 2026-07-07 | 2026-07-07 | 13d |  | start no earlier than 2026-07-07 | AUTOMAÇÃO E INSTRUMENTAÇÃO | Sex 26/06/26 | Sex 26/06/26 | Sprint 11 |
| 677 | 1.2.10.41 | **FD-F0009-0305-MB-J-00022** | 15d | 2026-06-17 A | 2026-07-07 |  | 90% | 1.5d | 2026-06-18 | 2026-07-07 | 14d | 2026-06-18 | 2026-07-07 | 13d |  |  | AUTOMAÇÃO E INSTRUMENTAÇÃO | Qui 18/06/26 | Ter 07/07/26 | Sprint 8 |
| 678 | 1.2.10.41.1 | Emissão inicial | 7d | 2026-06-17 A | 2026-06-25 A | 573SS | 100% |  | 2026-06-15 | 2026-06-23 | 10d | 2026-06-18 | 2026-07-01 |  |  |  | AUTOMAÇÃO E INSTRUMENTAÇÃO | Seg 15/06/26 | Ter 23/06/26 | Sprint 8 |
| 679 | 1.2.10.41.2 | Análise Tecnored | 6d | 2026-06-26 A | 2026-07-03 A | 678 | 100% |  | 2026-06-24 | 2026-06-24 | 1d | 2026-07-02 | 2026-07-02 |  |  | finish no earlier than 2026-07-03 | AUTOMAÇÃO E INSTRUMENTAÇÃO | Qua 24/06/26 | Qua 24/06/26 | Sprint 9 |
| 680 | 1.2.10.41.3 | Atendimento de comentários | 1d | 2026-07-06 A | 2026-07-06 | 679 | 50% | 0.5d | 2026-06-25 | 2026-06-25 | 2d | 2026-07-03 | 2026-07-06 | 13d | 0d | start no earlier than 2026-07-06 | AUTOMAÇÃO E INSTRUMENTAÇÃO | Qui 25/06/26 | Qui 25/06/26 | Sprint 11 |
| 681 | 1.2.10.41.4 | Aprovação | 1d | 2026-07-07 | 2026-07-07 | 680 |  |  | 2026-06-26 | 2026-06-26 | 1d | 2026-07-07 | 2026-07-07 | 13d |  | start no earlier than 2026-07-07 | AUTOMAÇÃO E INSTRUMENTAÇÃO | Sex 26/06/26 | Sex 26/06/26 | Sprint 11 |

| ID | WBS | Task | Duration | Start | Finish | Predecessors | Complete | Remaining | Baseline start | Baseline finish | Baseline duration | Baseline 1 start | Baseline 1 finish | Total slack | Free slack | Constraint | Disciplina | Início_LB_R0 | Término_LB_R0 | Sprints |
| --- | --- | --- | --- | --- | --- | --- | --- | --- | --- | --- | --- | --- | --- | --- | --- | --- | --- | --- | --- | --- |
| 682 | 1.2.10.42 | **FD-F0009-0305-MB-J-00023** | 15d | 2026-06-17 A | 2026-07-07 |  | 90% | 1.5d | 2026-06-18 | 2026-07-07 | 14d | 2026-06-18 | 2026-07-07 | 13d |  |  | AUTOMAÇÃO E INSTRUMENTAÇÃO | Qui 18/06/26 | Ter 07/07/26 | Sprint 8 |
| 683 | 1.2.10.42.1 | Emissão inicial | 7d | 2026-06-17 A | 2026-06-25 A | 573SS | 100% |  | 2026-06-19 | 2026-06-29 | 10d | 2026-06-18 | 2026-07-01 |  |  |  | AUTOMAÇÃO E INSTRUMENTAÇÃO | Sex 19/06/26 | Seg 29/06/26 | Sprint 8 |
| 684 | 1.2.10.42.2 | Análise Tecnored | 6d | 2026-06-26 A | 2026-07-03 A | 683 | 100% |  | 2026-06-24 | 2026-06-30 | 1d | 2026-07-02 | 2026-07-02 |  |  | finish no earlier than 2026-07-03 | AUTOMAÇÃO E INSTRUMENTAÇÃO | Qua 24/06/26 | Ter 30/06/26 | Sprint 9 |
| 685 | 1.2.10.42.3 | Atendimento de comentários | 1d | 2026-07-06 A | 2026-07-06 | 684 | 50% | 0.5d | 2026-06-30 | 2026-07-01 | 2d | 2026-07-03 | 2026-07-06 | 13d | 0d | start no earlier than 2026-07-06 | AUTOMAÇÃO E INSTRUMENTAÇÃO | Ter 30/06/26 | Qua 01/07/26 | Sprint 11 |
| 686 | 1.2.10.42.4 | Aprovação | 1d | 2026-07-07 | 2026-07-07 | 685 |  |  | 2026-07-01 | 2026-07-02 | 1d | 2026-07-07 | 2026-07-07 | 13d |  | start no earlier than 2026-07-07 | AUTOMAÇÃO E INSTRUMENTAÇÃO | Qua 01/07/26 | Qui 02/07/26 | Sprint 11 |
| 687 | 1.2.10.43 | **FD-F0009-0305-MB-J-00024** | 15d | 2026-06-17 A | 2026-07-07 |  | 90% | 1.5d | 2026-06-18 | 2026-07-07 | 14d | 2026-06-18 | 2026-07-07 | 13d |  |  | AUTOMAÇÃO E INSTRUMENTAÇÃO | Qui 18/06/26 | Ter 07/07/26 | Sprint 8 |
| 688 | 1.2.10.43.1 | Emissão inicial | 7d | 2026-06-17 A | 2026-06-25 A | 573SS | 100% |  | 2026-06-19 | 2026-06-29 | 10d | 2026-06-18 | 2026-07-01 |  |  |  | AUTOMAÇÃO E INSTRUMENTAÇÃO | Sex 19/06/26 | Seg 29/06/26 | Sprint 8 |
| 689 | 1.2.10.43.2 | Análise Tecnored | 6d | 2026-06-26 A | 2026-07-03 A | 688 | 100% |  | 2026-06-24 | 2026-06-30 | 1d | 2026-07-02 | 2026-07-02 |  |  | finish no earlier than 2026-07-03 | AUTOMAÇÃO E INSTRUMENTAÇÃO | Qua 24/06/26 | Ter 30/06/26 | Sprint 9 |
| 690 | 1.2.10.43.3 | Atendimento de comentários | 1d | 2026-07-06 A | 2026-07-06 | 689 | 50% | 0.5d | 2026-06-30 | 2026-07-01 | 2d | 2026-07-03 | 2026-07-06 | 13d | 0d | start no earlier than 2026-07-06 | AUTOMAÇÃO E INSTRUMENTAÇÃO | Ter 30/06/26 | Qua 01/07/26 | Sprint 11 |
| 691 | 1.2.10.43.4 | Aprovação | 1d | 2026-07-07 | 2026-07-07 | 690 |  |  | 2026-07-01 | 2026-07-02 | 1d | 2026-07-07 | 2026-07-07 | 13d |  | start no earlier than 2026-07-07 | AUTOMAÇÃO E INSTRUMENTAÇÃO | Qua 01/07/26 | Qui 02/07/26 | Sprint 11 |
| 692 | 1.2.10.44 | **FD-F0009-0305-MB-J-00025** | 15d | 2026-06-17 A | 2026-07-07 |  | 85% | 2.25d | 2026-06-18 | 2026-07-07 | 14d | 2026-06-18 | 2026-07-07 | 13d |  |  | AUTOMAÇÃO E INSTRUMENTAÇÃO | Qui 18/06/26 | Ter 07/07/26 | Sprint 8 |
| 693 | 1.2.10.44.1 | Emissão inicial | 7d | 2026-06-17 A | 2026-06-25 A | 573SS | 100% |  | 2026-06-19 | 2026-06-29 | 10d | 2026-06-18 | 2026-07-01 |  |  |  | AUTOMAÇÃO E INSTRUMENTAÇÃO | Sex 19/06/26 | Seg 29/06/26 | Sprint 8 |
| 694 | 1.2.10.44.2 | Análise Tecnored | 1d | 2026-06-26 A | 2026-06-26 A | 693 | 100% |  | 2026-06-24 | 2026-06-30 | 1d | 2026-07-02 | 2026-07-02 |  |  |  | AUTOMAÇÃO E INSTRUMENTAÇÃO | Qua 24/06/26 | Ter 30/06/26 | Sprint 9 |
| 695 | 1.2.10.44.3 | Atendimento de comentários | 1d | 2026-07-06 A | 2026-07-06 | 694 | 50% | 0.5d | 2026-06-30 | 2026-07-01 | 2d | 2026-07-03 | 2026-07-06 | 13d | 0d | start no earlier than 2026-07-06 | AUTOMAÇÃO E INSTRUMENTAÇÃO | Ter 30/06/26 | Qua 01/07/26 | Sprint 11 |
| 696 | 1.2.10.44.4 | Aprovação | 1d | 2026-07-07 | 2026-07-07 | 695 |  |  | 2026-07-01 | 2026-07-02 | 1d | 2026-07-07 | 2026-07-07 | 13d |  | start no earlier than 2026-07-07 | AUTOMAÇÃO E INSTRUMENTAÇÃO | Qua 01/07/26 | Qui 02/07/26 | Sprint 11 |
| 697 | 1.2.10.45 | **LB-F0009-0305-MB-J-00001** | 9d | 2026-07-03 A | 2026-07-17 |  | 56% | 4d | 2026-06-26 | 2026-07-06 | 7d | 2026-06-26 | 2026-07-06 | 7d |  |  | AUTOMAÇÃO E INSTRUMENTAÇÃO | Sex 26/06/26 | Seg 06/07/26 | Sprint 10 |
| 698 | 1.2.10.45.1 | Emissão inicial | 5d | 2026-07-03 A | 2026-07-13 A | 558FS-7d | 100% |  | 2026-06-26 | 2026-06-30 | 3d | 2026-06-26 | 2026-06-30 |  |  | finish no earlier than 2026-07-13 | AUTOMAÇÃO E INSTRUMENTAÇÃO | Sex 26/06/26 | Ter 30/06/26 | Sprint 10 |
| 699 | 1.2.10.45.2 | Análise Tecnored | 1d | 2026-07-14 | 2026-07-14 | 698 |  |  | 2026-07-01 | 2026-07-01 | 1d | 2026-07-01 | 2026-07-01 | 7d | 0d |  | AUTOMAÇÃO E INSTRUMENTAÇÃO | Qua 01/07/26 | Qua 01/07/26 | Sprint 12 |
| 700 | 1.2.10.45.3 | Atendimento de comentários | 2d | 2026-07-15 | 2026-07-16 | 699 |  |  | 2026-07-02 | 2026-07-03 | 2d | 2026-07-02 | 2026-07-03 | 7d | 0d |  | AUTOMAÇÃO E INSTRUMENTAÇÃO | Qui 02/07/26 | Sex 03/07/26 | Sprint 12 |
| 701 | 1.2.10.45.4 | Aprovação | 1d | 2026-07-17 | 2026-07-17 | 700 |  |  | 2026-07-06 | 2026-07-06 | 1d | 2026-07-06 | 2026-07-06 | 7d |  |  | AUTOMAÇÃO E INSTRUMENTAÇÃO | Seg 06/07/26 | Seg 06/07/26 | Sprint 12 |
| 702 | 1.2.10.46 | **RE-F0009-0305-MB-J-00001** | 8d | 2026-07-02 A | 2026-07-15 |  | 63% | 3d | 2026-06-26 | 2026-07-06 | 7d | 2026-06-26 | 2026-07-06 | 9d |  |  | AUTOMAÇÃO E INSTRUMENTAÇÃO | Sex 26/06/26 | Seg 06/07/26 | Sprint 10 |
| 703 | 1.2.10.46.1 | Emissão inicial | 4d | 2026-07-02 A | 2026-07-07 A | 558FS-7d | 100% |  | 2026-06-26 | 2026-06-30 | 3d | 2026-06-26 | 2026-06-30 |  |  | finish no earlier than 2026-07-03 | AUTOMAÇÃO E INSTRUMENTAÇÃO | Sex 26/06/26 | Ter 30/06/26 | Sprint 10 |
| 704 | 1.2.10.46.2 | Análise Tecnored | 1d | 2026-07-08 A | 2026-07-08 A | 703 | 100% |  | 2026-07-01 | 2026-07-01 | 1d | 2026-07-01 | 2026-07-01 |  |  |  | AUTOMAÇÃO E INSTRUMENTAÇÃO | Qua 01/07/26 | Qua 01/07/26 | Sprint 11 |
| 705 | 1.2.10.46.3 | Atendimento de comentários | 2d | 2026-07-13 | 2026-07-14 | 704 |  |  | 2026-07-02 | 2026-07-03 | 2d | 2026-07-02 | 2026-07-03 | 9d | 0d |  | AUTOMAÇÃO E INSTRUMENTAÇÃO | Qui 02/07/26 | Sex 03/07/26 | Sprint 12 |
| 706 | 1.2.10.46.4 | Aprovação | 1d | 2026-07-15 | 2026-07-15 | 705 |  |  | 2026-07-06 | 2026-07-06 | 1d | 2026-07-06 | 2026-07-06 | 9d |  |  | AUTOMAÇÃO E INSTRUMENTAÇÃO | Seg 06/07/26 | Seg 06/07/26 | Sprint 12 |

| ID | WBS | Task | Duration | Start | Finish | Predecessors | Complete | Remaining | Baseline start | Baseline finish | Baseline duration | Baseline 1 start | Baseline 1 finish | Total slack | Free slack | Constraint | Disciplina | Início_LB_R0 | Término_LB_R0 | Sprints |
| --- | --- | --- | --- | --- | --- | --- | --- | --- | --- | --- | --- | --- | --- | --- | --- | --- | --- | --- | --- | --- |
| 707 | 1.2.10.47 | **DT-F0009-0305-MB-J-00001** | 9d | 2026-07-01 A | 2026-07-15 |  | 67% | 3d | 2026-06-26 | 2026-07-06 | 7d | 2026-06-26 | 2026-07-06 | 9d |  |  | AUTOMAÇÃO E INSTRUMENTAÇÃO | Sex 26/06/26 | Seg 06/07/26 | Sprint 10 |
| 708 | 1.2.10.47.1 | Emissão inicial | 5d | 2026-07-01 A | 2026-07-07 A | 558FS-7d | 100% |  | 2026-06-26 | 2026-06-30 | 3d | 2026-06-26 | 2026-06-30 |  |  | start no earlier than 2026-06-17 | AUTOMAÇÃO E INSTRUMENTAÇÃO | Sex 26/06/26 | Ter 30/06/26 | Sprint 10 |
| 709 | 1.2.10.47.2 | Análise Tecnored | 1d | 2026-07-08 A | 2026-07-08 A | 708 | 100% |  | 2026-07-01 | 2026-07-01 | 1d | 2026-07-01 | 2026-07-01 |  |  |  | AUTOMAÇÃO E INSTRUMENTAÇÃO | Qua 01/07/26 | Qua 01/07/26 | Sprint 11 |
| 710 | 1.2.10.47.3 | Atendimento de comentários | 2d | 2026-07-13 | 2026-07-14 | 709 |  |  | 2026-07-02 | 2026-07-03 | 2d | 2026-07-02 | 2026-07-03 | 9d | 0d |  | AUTOMAÇÃO E INSTRUMENTAÇÃO | Qui 02/07/26 | Sex 03/07/26 | Sprint 12 |
| 711 | 1.2.10.47.4 | Aprovação | 1d | 2026-07-15 | 2026-07-15 | 710 |  |  | 2026-07-06 | 2026-07-06 | 1d | 2026-07-06 | 2026-07-06 | 9d |  |  | AUTOMAÇÃO E INSTRUMENTAÇÃO | Seg 06/07/26 | Seg 06/07/26 | Sprint 12 |
| 712 | 1.2.11 | **Civil** | 17.5d | 2026-06-29 A | 2026-07-24 |  | 4% | 16.83d | 2026-06-22 | 2026-07-08 | 13d | 2026-06-22 | 2026-07-08 | 2.5d |  |  | CIVIL | Seg 22/06/26 | Qua 08/07/26 | Sprint 10 |
| 713 | 1.2.11.1 | **MC-F0009-0305-MB-C-00001** | 15.5d | 2026-06-29 A | 2026-07-22 |  | 6% | 14.53d | 2026-06-22 | 2026-07-07 | 12d | 2026-06-22 | 2026-07-07 | 4.5d |  |  | CIVIL | Seg 22/06/26 | Ter 07/07/26 | Sprint 10 |
| 714 | 1.2.11.1.1 | Emissão inicial | 5d | 2026-06-29 A | 2026-07-17 | 346 | 10% | 4.5d | 2026-06-22 | 2026-07-01 | 8d | 2026-06-22 | 2026-07-01 | 2.5d | 0d | start no earlier than 2026-06-29 | CIVIL | Seg 22/06/26 | Qua 01/07/26 | Sprint 10 |
| 715 | 1.2.11.1.2 | Análise Tecnored | 1d | 2026-07-17 | 2026-07-20 | 714 |  |  | 2026-07-02 | 2026-07-02 | 1d | 2026-07-02 | 2026-07-02 | 4.5d | 0d |  | CIVIL | Qui 02/07/26 | Qui 02/07/26 | Sprint 12 |
| 716 | 1.2.11.1.3 | Atendimento de comentários | 1d | 2026-07-20 | 2026-07-21 | 715 |  |  | 2026-07-03 | 2026-07-06 | 2d | 2026-07-03 | 2026-07-06 | 4.5d | 0d |  | CIVIL | Sex 03/07/26 | Seg 06/07/26 | Sprint 13 |
| 717 | 1.2.11.1.4 | Aprovação | 1d | 2026-07-21 | 2026-07-22 | 716 |  |  | 2026-07-07 | 2026-07-07 | 1d | 2026-07-07 | 2026-07-07 | 4.5d |  |  | CIVIL | Ter 07/07/26 | Ter 07/07/26 | Sprint 13 |
| 718 | 1.2.11.2 | **PQ-F0009-0305-MB-C-00001** | 5d | 2026-07-17 | 2026-07-24 |  |  |  | 2026-07-02 | 2026-07-08 | 5d | 2026-07-02 | 2026-07-08 | 2.5d |  |  | CIVIL | Qui 02/07/26 | Qua 08/07/26 | Sprint 12 |
| 719 | 1.2.11.2.1 | Emissão inicial | 1d | 2026-07-17 | 2026-07-20 | 714 |  |  | 2026-07-02 | 2026-07-02 | 1d | 2026-07-02 | 2026-07-02 | 2.5d | 0d |  | CIVIL | Qui 02/07/26 | Qui 02/07/26 | Sprint 12 |
| 720 | 1.2.11.2.2 | Análise Tecnored | 1d | 2026-07-20 | 2026-07-21 | 719 |  |  | 2026-07-03 | 2026-07-03 | 1d | 2026-07-03 | 2026-07-03 | 2.5d | 0d |  | CIVIL | Sex 03/07/26 | Sex 03/07/26 | Sprint 13 |
| 721 | 1.2.11.2.3 | Atendimento de comentários | 2d | 2026-07-21 | 2026-07-23 | 720 |  |  | 2026-07-06 | 2026-07-07 | 2d | 2026-07-06 | 2026-07-07 | 2.5d | 0d |  | CIVIL | Seg 06/07/26 | Ter 07/07/26 | Sprint 13 |
| 722 | 1.2.11.2.4 | Aprovação | 1d | 2026-07-23 | 2026-07-24 | 721 |  |  | 2026-07-08 | 2026-07-08 | 1d | 2026-07-08 | 2026-07-08 | 2.5d |  |  | CIVIL | Qua 08/07/26 | Qua 08/07/26 | Sprint 13 |
