# CR-F0009-0305-MB-F-00001

Schedule from MS Project, 2026-04-27 to 2026-07-17, status date 2026-06-09, A marks actual dates.

## Calendars

- Padrão: Mon-Fri 09:00-12:00, 13:00-18:00; Sat-Sun off. Exceptions (off unless hours are given): 2026-06-04 to 2026-06-05 (FERIADO).

## Schedule

| ID | WBS | Task | Type | Duration | Start | Finish | Predecessors | Complete | Remaining | Baseline start | Baseline finish | Baseline duration | Baseline 1 start | Baseline 1 finish | Total slack | Free slack | Constraint | Baseline cost | Disciplina |
| --- | --- | --- | --- | --- | --- | --- | --- | --- | --- | --- | --- | --- | --- | --- | --- | --- | --- | --- | --- |
| 1 | 1 | **F0009 - Programa Marabá** |  | 51d | 2026-04-27 A | 2026-07-08 |  | 6% | 47.84d | 2026-04-27 | 2026-07-08 | 53d | 2026-04-27 | 2026-07-08 | 0d |  |  |  | GERAL |
| 2 | 1.1 | **Área 0000 -Documento geral** |  | 12d | 2026-05-19 A | 2026-06-05 |  |  | 12d | 2026-05-19 | 2026-05-22 | 3d | 2026-05-19 | 2026-05-22 | 0d |  |  |  | GERAL |
| 3 | 1.1.1 | **LF-F0009-0305-MB-F-00001** | inactive | 7d | 2026-07-01 | 2026-07-09 |  |  |  |  |  |  |  |  | -1d | 0d |  | -0 |  |
| 4 | 1.1.1.1 | Emissão inicial | inactive | 3d | 2026-07-01 | 2026-07-03 | 16FS+45d |  |  |  |  |  |  |  | -1d | 0d |  | -0 |  |
| 5 | 1.1.1.2 | Análise Tecnored | inactive | 1d | 2026-07-06 | 2026-07-06 | 4 |  |  |  |  |  |  |  | -1d | 0d |  | -0 |  |
| 6 | 1.1.1.3 | Atendimento de comentários | inactive | 2d | 2026-07-07 | 2026-07-08 | 5 |  |  |  |  |  |  |  | -1d | 0d |  | -0 |  |
| 7 | 1.1.1.4 | Aprovação | inactive | 1d | 2026-07-09 | 2026-07-09 | 6 |  |  |  |  |  |  |  | -1d | 0d |  | -0 |  |
| 8 | 1.1.2 | **Marcos** |  | 12d | 2026-05-19 A | 2026-06-05 |  |  | 12d | 2026-05-19 | 2026-05-22 | 3d | 2026-05-19 | 2026-05-22 | 0d |  |  |  | MARCOS |
| 9 | 1.1.2.1 | Critério de projeto Processo | milestone, manual | 0d | 2026-06-05 | 2026-06-05 |  |  |  | 2026-05-19 | 2026-05-19 | 0d | 2026-05-19 | 2026-05-19 |  |  |  |  | MARCOS |
| 10 | 1.1.2.2 | Critério de projeto Mecânica | milestone, manual | 0d | 2026-05-19 A | 2026-05-19 A |  | 100% |  | 2026-05-19 | 2026-05-19 | 0d | 2026-05-19 | 2026-05-19 |  |  |  |  | MARCOS |
| 11 | 1.1.2.3 | Critério de projeto Tubulação | milestone, manual | 0d | 2026-05-22 A | 2026-05-22 A |  | 100% |  | 2026-05-22 | 2026-05-22 | 0d | 2026-05-22 | 2026-05-22 |  |  |  |  | MARCOS |
| 12 | 1.1.2.4 | Critério de projeto Elétrica | milestone, manual | 0d | 2026-06-05 | 2026-06-05 |  |  |  | 2026-05-22 | 2026-05-22 | 0d | 2026-05-22 | 2026-05-22 |  |  |  |  | MARCOS |
| 13 | 1.1.2.5 | Critério de projeto Automação | milestone, manual | 0d | 2026-06-05 A | 2026-06-05 |  | 75% | 0d | 2026-05-22 | 2026-05-22 | 0d | 2026-05-22 | 2026-05-22 |  |  |  |  | MARCOS |
| 14 | 1.1.2.6 | Critério de projeto Estrutura Metálica | milestone, manual | 0d | 2026-06-05 | 2026-06-05 |  |  |  | 2026-05-22 | 2026-05-22 | 0d | 2026-05-22 | 2026-05-22 |  |  |  |  | MARCOS |
| 15 | 1.2 | **Área 0305 - Hot Blast Stoves** |  | 51d | 2026-04-27 A | 2026-07-08 |  | 6% | 47.84d | 2026-04-27 | 2026-07-08 | 53d | 2026-04-27 | 2026-07-08 | 0d |  |  |  | GERAL |
| 16 | 1.2.1 | KOM - Início de projeto | milestone | 0d | 2026-04-27 A | 2026-04-27 A |  | 100% |  | 2026-04-27 | 2026-04-27 | 0d | 2026-04-27 | 2026-04-27 |  |  | start no earlier than 2026-04-27 |  | GERAL |
| 17 | 1.2.2 | **Pendências** |  | 0d | 2026-04-29 A | 2026-04-29 A |  | 100% |  | 2026-04-29 | 2026-04-29 | 0d | 2026-04-29 | 2026-04-29 |  |  |  |  | PENDÊNCIAS |
| 18 | 1.2.2.1 | Recebimento de dados de entrada | milestone | 0d | 2026-04-29 A | 2026-04-29 A |  | 100% |  | 2026-04-29 | 2026-04-29 | 0d | 2026-04-29 | 2026-04-29 |  |  |  |  | PENDÊNCIAS |
| 19 | 1.2.3 | **Planejamento** |  | 25.4d | 2026-04-27 A | 2026-06-01 |  | 89% | 2.82d | 2026-04-27 | 2026-05-19 | 17d | 2026-04-27 | 2026-05-19 | 25.6d |  |  |  | PLANEJAMENTO |
| 20 | 1.2.3.1 | **LD-F0009-0305-MB-F-00001** |  | 24d | 2026-04-27 A | 2026-05-28 |  | 91% | 2.18d | 2026-04-27 | 2026-05-19 | 17d | 2026-04-27 | 2026-05-19 | 27d |  |  |  | PLANEJAMENTO |
| 21 | 1.2.3.1.1 | Emissão inicial |  | 3d | 2026-04-27 A | 2026-04-29 A | 16 | 100% |  | 2026-04-27 | 2026-04-29 | 3d | 2026-04-27 | 2026-04-29 |  |  |  |  | PLANEJAMENTO |
| 22 | 1.2.3.1.2 | Análise Tecnored |  | 1d | 2026-04-30 A | 2026-04-30 A | 21 | 100% |  | 2026-04-30 | 2026-04-30 | 1d | 2026-04-30 | 2026-04-30 |  |  |  |  | PLANEJAMENTO |
| 23 | 1.2.3.1.3 | Atendimento de comentários |  | 6d | 2026-05-06 A | 2026-05-13 A | 22FS+3d | 100% |  | 2026-05-06 | 2026-05-13 | 6d | 2026-05-06 | 2026-05-13 |  |  |  |  | PLANEJAMENTO |
| 24 | 1.2.3.1.4 | Aprovação |  | 1d | 2026-05-28 | 2026-05-28 | 23FS+10d |  |  | 2026-05-19 | 2026-05-19 | 1d | 2026-05-19 | 2026-05-19 | 27d |  |  |  | PLANEJAMENTO |

| ID | WBS | Task | Duration | Start | Finish | Predecessors | Complete | Remaining | Baseline start | Baseline finish | Baseline duration | Baseline 1 start | Baseline 1 finish | Total slack | Free slack | Disciplina |
| --- | --- | --- | --- | --- | --- | --- | --- | --- | --- | --- | --- | --- | --- | --- | --- | --- |
| 25 | 1.2.3.2 | **CR-F0009-0305-MB-F-00001** | 22.4d | 2026-04-30 A | 2026-06-01 |  | 86% | 3.2d | 2026-04-30 | 2026-05-19 | 13.4d | 2026-04-30 | 2026-05-19 | 25.6d |  | PLANEJAMENTO |
| 26 | 1.2.3.2.1 | Emissão inicial | 3d | 2026-04-30 A | 2026-05-04 A | 21 | 100% |  | 2026-04-30 | 2026-05-04 | 3d | 2026-04-30 | 2026-05-04 |  |  | PLANEJAMENTO |
| 27 | 1.2.3.2.2 | Análise Tecnored | 1d | 2026-05-05 A | 2026-05-05 A | 26 | 100% |  | 2026-05-05 | 2026-05-05 | 1d | 2026-05-05 | 2026-05-05 |  |  | PLANEJAMENTO |
| 28 | 1.2.3.2.3 | Atendimento de comentários | 2d | 2026-05-13 A | 2026-05-18 A | 27FS+8d | 100% |  | 2026-05-13 | 2026-05-18 | 2d | 2026-05-13 | 2026-05-18 |  |  | PLANEJAMENTO |
| 29 | 1.2.3.2.4 | Aprovação | 1d | 2026-05-29 | 2026-06-01 | 28FS+9d |  |  | 2026-05-18 | 2026-05-19 | 1d | 2026-05-18 | 2026-05-19 | 25.6d |  | PLANEJAMENTO |
| 30 | 1.2.4 | **Coordenação** | 50d | 2026-04-27 A | 2026-07-07 |  | 16% | 42d | 2026-04-27 | 2026-07-08 | 53d | 2026-04-27 | 2026-07-08 | 1d |  | COORDENAÇÃO |
| 31 | 1.2.4.1 | **RM-F0009-0305-MB-G-00001** | 7d | 2026-05-28 | 2026-06-09 |  |  |  | 2026-05-25 | 2026-06-02 | 7d | 2026-05-25 | 2026-06-02 | 1d |  | COORDENAÇÃO |
| 32 | 1.2.4.1.1 | Emissão inicial | 3d | 2026-05-28 | 2026-06-01 | 16FS+23d |  |  | 2026-05-25 | 2026-05-27 | 3d | 2026-05-25 | 2026-05-27 | 1d | 0d | COORDENAÇÃO |
| 33 | 1.2.4.1.2 | Análise Tecnored | 1d | 2026-06-02 | 2026-06-02 | 32 |  |  | 2026-05-28 | 2026-05-28 | 1d | 2026-05-28 | 2026-05-28 | 21d | 0d | COORDENAÇÃO |
| 34 | 1.2.4.1.3 | Atendimento de comentários | 2d | 2026-06-03 | 2026-06-08 | 33 |  |  | 2026-05-29 | 2026-06-01 | 2d | 2026-05-29 | 2026-06-01 | 21d | 0d | COORDENAÇÃO |
| 35 | 1.2.4.1.4 | Aprovação | 1d | 2026-06-09 | 2026-06-09 | 34 |  |  | 2026-06-02 | 2026-06-02 | 1d | 2026-06-02 | 2026-06-02 | 21d |  | COORDENAÇÃO |
| 36 | 1.2.4.2 | **RM-F0009-0305MB-G-00002** | 7d | 2026-06-18 | 2026-06-26 |  |  |  | 2026-06-11 | 2026-06-19 | 7d | 2026-06-11 | 2026-06-19 | 1d |  | COORDENAÇÃO |
| 37 | 1.2.4.2.1 | Emissão inicial | 3d | 2026-06-18 | 2026-06-22 | 32FS+10d |  |  | 2026-06-11 | 2026-06-15 | 3d | 2026-06-11 | 2026-06-15 | 1d | 0d | COORDENAÇÃO |
| 38 | 1.2.4.2.2 | Análise Tecnored | 1d | 2026-06-23 | 2026-06-23 | 37 |  |  | 2026-06-16 | 2026-06-16 | 1d | 2026-06-16 | 2026-06-16 | 8d | 0d | COORDENAÇÃO |
| 39 | 1.2.4.2.3 | Atendimento de comentários | 2d | 2026-06-24 | 2026-06-25 | 38 |  |  | 2026-06-17 | 2026-06-18 | 2d | 2026-06-17 | 2026-06-18 | 8d | 0d | COORDENAÇÃO |
| 40 | 1.2.4.2.4 | Aprovação | 1d | 2026-06-26 | 2026-06-26 | 39 |  |  | 2026-06-19 | 2026-06-19 | 1d | 2026-06-19 | 2026-06-19 | 8d |  | COORDENAÇÃO |
| 41 | 1.2.4.3 | **RL-F0009-0305-MB-G-00001** | 4d | 2026-07-02 | 2026-07-07 |  |  |  | 2026-06-30 | 2026-07-08 | 7d | 2026-06-30 | 2026-07-08 | 1d |  | COORDENAÇÃO |
| 42 | 1.2.4.3.1 | Emissão inicial | 1d | 2026-07-02 | 2026-07-02 | 37FS+7d |  |  | 2026-06-30 | 2026-07-02 | 3d | 2026-06-30 | 2026-07-02 | 1d | 0d | COORDENAÇÃO |
| 43 | 1.2.4.3.2 | Análise Tecnored | 1d | 2026-07-03 | 2026-07-03 | 42 |  |  | 2026-07-03 | 2026-07-03 | 1d | 2026-07-03 | 2026-07-03 | 1d | 0d | COORDENAÇÃO |
| 44 | 1.2.4.3.3 | Atendimento de comentários | 1d | 2026-07-06 | 2026-07-06 | 43 |  |  | 2026-07-06 | 2026-07-07 | 2d | 2026-07-06 | 2026-07-07 | 1d | 0d | COORDENAÇÃO |
| 45 | 1.2.4.3.4 | Aprovação | 1d | 2026-07-07 | 2026-07-07 | 44 |  |  | 2026-07-08 | 2026-07-08 | 1d | 2026-07-08 | 2026-07-08 | 1d |  | COORDENAÇÃO |
| 46 | 1.2.4.4 | **LP-F0009-0305-MB-G-00001** | 37d | 2026-04-27 A | 2026-06-18 |  | 57% | 15.86d | 2026-04-27 | 2026-06-16 | 37d | 2026-04-27 | 2026-06-16 | 14d |  | COORDENAÇÃO |
| 47 | 1.2.4.4.1 | Emissão inicial | 3d | 2026-04-27 A | 2026-04-29 A | 16 | 100% |  | 2026-04-27 | 2026-04-29 | 3d | 2026-04-27 | 2026-04-29 |  |  | COORDENAÇÃO |
| 48 | 1.2.4.4.2 | Análise Tecnored | 1d | 2026-04-30 A | 2026-04-30 A | 47 | 100% |  | 2026-04-30 | 2026-04-30 | 1d | 2026-04-30 | 2026-04-30 |  |  | COORDENAÇÃO |
| 49 | 1.2.4.4.3 | Atendimento de comentários | 2d | 2026-06-16 | 2026-06-17 | 48FS+30d |  |  | 2026-06-12 | 2026-06-15 | 2d | 2026-06-12 | 2026-06-15 | 14d | 0d | COORDENAÇÃO |
| 50 | 1.2.4.4.4 | Aprovação | 1d | 2026-06-18 | 2026-06-18 | 49 |  |  | 2026-06-16 | 2026-06-16 | 1d | 2026-06-16 | 2026-06-16 | 14d |  | COORDENAÇÃO |

| ID | WBS | Task | Type | Duration | Start | Finish | Predecessors | Complete | Remaining | Baseline start | Baseline finish | Baseline duration | Baseline 1 start | Baseline 1 finish | Total slack | Free slack | Baseline cost | Disciplina |
| --- | --- | --- | --- | --- | --- | --- | --- | --- | --- | --- | --- | --- | --- | --- | --- | --- | --- | --- |
| 51 | 1.2.5 | **Processo** |  | 10d | 2026-05-19 A | 2026-06-01 |  | 80% | 2d | 2026-05-19 | 2026-06-25 | 28d | 2026-05-19 | 2026-06-25 | 25d |  |  | PROCESSOS |
| 52 | 1.2.5.1 | **CP-F0009-0305-MB-P-00001** | inactive | 22d | 2026-05-11 | 2026-06-11 |  |  |  |  |  |  |  |  | 19d |  | -0 |  |
| 53 | 1.2.5.1.1 | Emissão inicial | inactive | 5d | 2026-05-11 | 2026-05-15 | 26FS+4d |  |  |  |  |  |  |  | 32d | 13d | -0 |  |
| 54 | 1.2.5.1.2 | Análise Tecnored | inactive | 1d | 2026-06-08 | 2026-06-08 | 53, 9 |  |  |  |  |  |  |  | 19d | 0d | -0 |  |
| 55 | 1.2.5.1.3 | Atendimento de comentários | inactive | 2d | 2026-06-09 | 2026-06-10 | 54 |  |  |  |  |  |  |  | 19d | 0d | -0 |  |
| 56 | 1.2.5.1.4 | Aprovação | inactive | 1d | 2026-06-11 | 2026-06-11 | 55 |  |  |  |  |  |  |  | 19d |  | -0 |  |
| 57 | 1.2.5.2 | **MD-F0009-0305-MB-P-00001** | inactive | 7d | 2026-06-19 | 2026-06-29 |  |  |  | 2026-06-17 | 2026-06-25 | 7d | 2026-06-17 | 2026-06-25 | 7d |  |  |  |
| 58 | 1.2.5.2.1 | Emissão inicial | inactive | 3d | 2026-06-19 | 2026-06-23 | 63FS+20d |  |  | 2026-06-17 | 2026-06-19 | 3d | 2026-06-17 | 2026-06-19 | 7d | 0d |  |  |
| 59 | 1.2.5.2.2 | Análise Tecnored | inactive | 1d | 2026-06-24 | 2026-06-24 | 58 |  |  | 2026-06-22 | 2026-06-22 | 1d | 2026-06-22 | 2026-06-22 | 7d | 0d |  |  |
| 60 | 1.2.5.2.3 | Atendimento de comentários | inactive | 2d | 2026-06-25 | 2026-06-26 | 59 |  |  | 2026-06-23 | 2026-06-24 | 2d | 2026-06-23 | 2026-06-24 | 7d | 0d |  |  |
| 61 | 1.2.5.2.4 | Aprovação | inactive | 1d | 2026-06-29 | 2026-06-29 | 60 |  |  | 2026-06-25 | 2026-06-25 | 1d | 2026-06-25 | 2026-06-25 | 7d |  |  |  |
| 62 | 1.2.5.3 | **FG-F0009-0305-MB-P-00001** |  | 10d | 2026-05-19 A | 2026-06-01 |  | 80% | 2d | 2026-05-19 | 2026-05-25 | 5d | 2026-05-19 | 2026-05-25 | 25d |  |  | PROCESSOS |
| 63 | 1.2.5.3.1 | Emissão inicial |  | 1d | 2026-05-19 A | 2026-05-19 A | 53FS+8d, 9 | 100% |  | 2026-05-19 | 2026-05-19 | 1d | 2026-05-19 | 2026-05-19 |  |  |  | PROCESSOS |
| 64 | 1.2.5.3.2 | Análise Tecnored |  | 1d | 2026-05-20 A | 2026-05-20 A | 63 | 100% |  | 2026-05-20 | 2026-05-20 | 1d | 2026-05-20 | 2026-05-20 |  |  |  | PROCESSOS |
| 65 | 1.2.5.3.3 | Atendimento de comentários |  | 2d | 2026-05-21 A | 2026-05-22 A | 64 | 100% |  | 2026-05-21 | 2026-05-22 | 2d | 2026-05-21 | 2026-05-22 |  |  |  | PROCESSOS |
| 66 | 1.2.5.3.4 | Aprovação |  | 1d | 2026-06-01 | 2026-06-01 | 65FS+5d |  |  | 2026-05-25 | 2026-05-25 | 1d | 2026-05-25 | 2026-05-25 | 25d |  |  | PROCESSOS |
| 67 | 1.2.6 | **Mecânica** |  | 30d | 2026-05-19 A | 2026-07-01 |  | 7% | 27.95d | 2026-05-19 | 2026-07-08 | 37d | 2026-05-19 | 2026-07-08 | 5d |  |  | MECÂNICA |
| 68 | 1.2.6.1 | **CP-F0009-0305-MB-M-00001** | inactive | 11d | 2026-05-08 | 2026-05-22 |  |  |  |  |  |  |  |  | 28d |  | -0 |  |
| 69 | 1.2.6.1.1 | Emissão inicial | inactive | 5d | 2026-05-08 | 2026-05-14 | 26FS+3d |  |  |  |  |  |  |  | 28d | 2d | -0 |  |
| 70 | 1.2.6.1.2 | Análise Tecnored | inactive | 1d | 2026-05-19 | 2026-05-19 | 69, 10 |  |  |  |  |  |  |  | 31d | 0d | -0 |  |
| 71 | 1.2.6.1.3 | Atendimento de comentários | inactive | 2d | 2026-05-20 | 2026-05-21 | 70 |  |  |  |  |  |  |  | 31d | 0d | -0 |  |
| 72 | 1.2.6.1.4 | Aprovação | inactive | 1d | 2026-05-22 | 2026-05-22 | 71 |  |  |  |  |  |  |  | 31d |  | -0 |  |
| 73 | 1.2.6.2 | **MD-F0009-0305-MB-M-00001** | inactive | 6d | 2026-06-02 | 2026-06-11 |  |  |  | 2026-05-26 | 2026-06-02 | 6d | 2026-05-26 | 2026-06-02 | 16d |  |  |  |
| 74 | 1.2.6.2.1 | Emissão inicial | inactive | 2d | 2026-06-02 | 2026-06-03 | 69, 81, 10 |  |  | 2026-05-26 | 2026-05-27 | 2d | 2026-05-26 | 2026-05-27 | 16d | 0d |  |  |
| 75 | 1.2.6.2.2 | Análise Tecnored | inactive | 1d | 2026-06-08 | 2026-06-08 | 74 |  |  | 2026-05-28 | 2026-05-28 | 1d | 2026-05-28 | 2026-05-28 | 19d | 0d |  |  |
| 76 | 1.2.6.2.3 | Atendimento de comentários | inactive | 2d | 2026-06-09 | 2026-06-10 | 75 |  |  | 2026-05-29 | 2026-06-01 | 2d | 2026-05-29 | 2026-06-01 | 19d | 0d |  |  |
| 77 | 1.2.6.2.4 | Aprovação | inactive | 1d | 2026-06-11 | 2026-06-11 | 76 |  |  | 2026-06-02 | 2026-06-02 | 1d | 2026-06-02 | 2026-06-02 | 19d |  |  |  |

| ID | WBS | Task | Duration | Start | Finish | Predecessors | Complete | Remaining | Baseline start | Baseline finish | Baseline duration | Baseline 1 start | Baseline 1 finish | Total slack | Free slack | Disciplina |
| --- | --- | --- | --- | --- | --- | --- | --- | --- | --- | --- | --- | --- | --- | --- | --- | --- |
| 78 | 1.2.6.3 | **LE-F0009-0305-MB-M-00001** | 6d | 2026-05-26 A | 2026-06-02 |  | 42% | 3.5d | 2026-05-19 | 2026-05-26 | 6d | 2026-05-19 | 2026-05-26 | 24d |  | MECÂNICA |
| 79 | 1.2.6.3.1 | Emissão inicial | 2d | 2026-05-26 A | 2026-05-27 A | 69, 10FS+5d | 100% |  | 2026-05-19 | 2026-05-20 | 2d | 2026-05-19 | 2026-05-20 |  |  | MECÂNICA |
| 80 | 1.2.6.3.2 | Análise Tecnored | 1d | 2026-05-28 A | 2026-05-28 | 79 | 50% | 0.5d | 2026-05-21 | 2026-05-21 | 1d | 2026-05-21 | 2026-05-21 | 18d | 0d | MECÂNICA |
| 81 | 1.2.6.3.3 | Atendimento de comentários | 2d | 2026-05-29 | 2026-06-01 | 80 |  |  | 2026-05-22 | 2026-05-25 | 2d | 2026-05-22 | 2026-05-25 | 18d | 0d | MECÂNICA |
| 82 | 1.2.6.3.4 | Aprovação | 1d | 2026-06-02 | 2026-06-02 | 81 |  |  | 2026-05-26 | 2026-05-26 | 1d | 2026-05-26 | 2026-05-26 | 24d |  | MECÂNICA |
| 83 | 1.2.6.4 | **PQ-F0009-0305-MB-M-00001** | 7d | 2026-06-02 | 2026-06-12 |  |  |  | 2026-05-28 | 2026-06-05 | 7d | 2026-05-28 | 2026-06-05 | 18d |  | MECÂNICA |
| 84 | 1.2.6.4.1 | Emissão inicial | 3d | 2026-06-02 | 2026-06-08 | 74 |  |  | 2026-05-28 | 2026-06-01 | 3d | 2026-05-28 | 2026-06-01 | 18d | 0d | MECÂNICA |
| 85 | 1.2.6.4.2 | Análise Tecnored | 1d | 2026-06-09 | 2026-06-09 | 84 |  |  | 2026-06-02 | 2026-06-02 | 1d | 2026-06-02 | 2026-06-02 | 18d | 0d | MECÂNICA |
| 86 | 1.2.6.4.3 | Atendimento de comentários | 2d | 2026-06-10 | 2026-06-11 | 85 |  |  | 2026-06-03 | 2026-06-04 | 2d | 2026-06-03 | 2026-06-04 | 18d | 0d | MECÂNICA |
| 87 | 1.2.6.4.4 | Aprovação | 1d | 2026-06-12 | 2026-06-12 | 86 |  |  | 2026-06-05 | 2026-06-05 | 1d | 2026-06-05 | 2026-06-05 | 18d |  | MECÂNICA |
| 88 | 1.2.6.5 | **AG-F0009-0305-MB-L-00001** | 10d | 2026-06-18 | 2026-07-01 |  |  |  | 2026-06-22 | 2026-07-08 | 13d | 2026-06-22 | 2026-07-08 | 5d |  | MECÂNICA |
| 89 | 1.2.6.5.1 | Emissão inicial | 7d | 2026-06-18 | 2026-06-26 | 276 |  |  | 2026-06-22 | 2026-07-02 | 9d | 2026-06-22 | 2026-07-02 | 5d | 0d | MECÂNICA |
| 90 | 1.2.6.5.2 | Análise Tecnored | 1d | 2026-06-29 | 2026-06-29 | 89 |  |  | 2026-07-03 | 2026-07-03 | 1d | 2026-07-03 | 2026-07-03 | 5d | 0d | MECÂNICA |
| 91 | 1.2.6.5.3 | Atendimento de comentários | 1d | 2026-06-30 | 2026-06-30 | 90 |  |  | 2026-07-06 | 2026-07-07 | 2d | 2026-07-06 | 2026-07-07 | 5d | 0d | MECÂNICA |
| 92 | 1.2.6.5.4 | Aprovação | 1d | 2026-07-01 | 2026-07-01 | 91 |  |  | 2026-07-08 | 2026-07-08 | 1d | 2026-07-08 | 2026-07-08 | 5d |  | MECÂNICA |
| 93 | 1.2.6.6 | **AG-F0009-0305-MB-L-00002** | 10d | 2026-06-18 | 2026-07-01 |  |  |  | 2026-06-22 | 2026-07-08 | 13d | 2026-06-22 | 2026-07-08 | 5d |  | MECÂNICA |
| 94 | 1.2.6.6.1 | Emissão inicial | 7d | 2026-06-18 | 2026-06-26 | 276 |  |  | 2026-06-22 | 2026-07-02 | 9d | 2026-06-22 | 2026-07-02 | 5d | 0d | MECÂNICA |
| 95 | 1.2.6.6.2 | Análise Tecnored | 1d | 2026-06-29 | 2026-06-29 | 94 |  |  | 2026-07-03 | 2026-07-03 | 1d | 2026-07-03 | 2026-07-03 | 5d | 0d | MECÂNICA |
| 96 | 1.2.6.6.3 | Atendimento de comentários | 1d | 2026-06-30 | 2026-06-30 | 95 |  |  | 2026-07-06 | 2026-07-07 | 2d | 2026-07-06 | 2026-07-07 | 5d | 0d | MECÂNICA |
| 97 | 1.2.6.6.4 | Aprovação | 1d | 2026-07-01 | 2026-07-01 | 96 |  |  | 2026-07-08 | 2026-07-08 | 1d | 2026-07-08 | 2026-07-08 | 5d |  | MECÂNICA |
| 98 | 1.2.6.7 | **AG-F0009-0305-MB-L-00003** | 10d | 2026-06-18 | 2026-07-01 |  |  |  | 2026-06-22 | 2026-07-08 | 13d | 2026-06-22 | 2026-07-08 | 5d |  | MECÂNICA |
| 99 | 1.2.6.7.1 | Emissão inicial | 7d | 2026-06-18 | 2026-06-26 | 276 |  |  | 2026-06-22 | 2026-07-02 | 9d | 2026-06-22 | 2026-07-02 | 5d | 0d | MECÂNICA |
| 100 | 1.2.6.7.2 | Análise Tecnored | 1d | 2026-06-29 | 2026-06-29 | 99 |  |  | 2026-07-03 | 2026-07-03 | 1d | 2026-07-03 | 2026-07-03 | 5d | 0d | MECÂNICA |
| 101 | 1.2.6.7.3 | Atendimento de comentários | 1d | 2026-06-30 | 2026-06-30 | 100 |  |  | 2026-07-06 | 2026-07-07 | 2d | 2026-07-06 | 2026-07-07 | 5d | 0d | MECÂNICA |
| 102 | 1.2.6.7.4 | Aprovação | 1d | 2026-07-01 | 2026-07-01 | 101 |  |  | 2026-07-08 | 2026-07-08 | 1d | 2026-07-08 | 2026-07-08 | 5d |  | MECÂNICA |

| ID | WBS | Task | Duration | Start | Finish | Predecessors | Baseline start | Baseline finish | Baseline duration | Baseline 1 start | Baseline 1 finish | Total slack | Free slack | Disciplina |
| --- | --- | --- | --- | --- | --- | --- | --- | --- | --- | --- | --- | --- | --- | --- |
| 103 | 1.2.6.8 | **AG-F0009-0305-MB-L-00004** | 10d | 2026-06-18 | 2026-07-01 |  | 2026-06-22 | 2026-07-08 | 13d | 2026-06-22 | 2026-07-08 | 5d |  | MECÂNICA |
| 104 | 1.2.6.8.1 | Emissão inicial | 7d | 2026-06-18 | 2026-06-26 | 276 | 2026-06-22 | 2026-07-02 | 9d | 2026-06-22 | 2026-07-02 | 5d | 0d | MECÂNICA |
| 105 | 1.2.6.8.2 | Análise Tecnored | 1d | 2026-06-29 | 2026-06-29 | 104 | 2026-07-03 | 2026-07-03 | 1d | 2026-07-03 | 2026-07-03 | 5d | 0d | MECÂNICA |
| 106 | 1.2.6.8.3 | Atendimento de comentários | 1d | 2026-06-30 | 2026-06-30 | 105 | 2026-07-06 | 2026-07-07 | 2d | 2026-07-06 | 2026-07-07 | 5d | 0d | MECÂNICA |
| 107 | 1.2.6.8.4 | Aprovação | 1d | 2026-07-01 | 2026-07-01 | 106 | 2026-07-08 | 2026-07-08 | 1d | 2026-07-08 | 2026-07-08 | 5d |  | MECÂNICA |
| 108 | 1.2.6.9 | **AG-F0009-0305-MB-L-00005** | 10d | 2026-06-18 | 2026-07-01 |  | 2026-06-22 | 2026-07-08 | 13d | 2026-06-22 | 2026-07-08 | 5d |  | MECÂNICA |
| 109 | 1.2.6.9.1 | Emissão inicial | 7d | 2026-06-18 | 2026-06-26 | 276 | 2026-06-22 | 2026-07-02 | 9d | 2026-06-22 | 2026-07-02 | 5d | 0d | MECÂNICA |
| 110 | 1.2.6.9.2 | Análise Tecnored | 1d | 2026-06-29 | 2026-06-29 | 109 | 2026-07-03 | 2026-07-03 | 1d | 2026-07-03 | 2026-07-03 | 5d | 0d | MECÂNICA |
| 111 | 1.2.6.9.3 | Atendimento de comentários | 1d | 2026-06-30 | 2026-06-30 | 110 | 2026-07-06 | 2026-07-07 | 2d | 2026-07-06 | 2026-07-07 | 5d | 0d | MECÂNICA |
| 112 | 1.2.6.9.4 | Aprovação | 1d | 2026-07-01 | 2026-07-01 | 111 | 2026-07-08 | 2026-07-08 | 1d | 2026-07-08 | 2026-07-08 | 5d |  | MECÂNICA |
| 113 | 1.2.6.10 | **AG-F0009-0305-MB-L-00006** | 10d | 2026-06-18 | 2026-07-01 |  | 2026-06-22 | 2026-07-08 | 13d | 2026-06-22 | 2026-07-08 | 5d |  | MECÂNICA |
| 114 | 1.2.6.10.1 | Emissão inicial | 7d | 2026-06-18 | 2026-06-26 | 276 | 2026-06-22 | 2026-07-02 | 9d | 2026-06-22 | 2026-07-02 | 5d | 0d | MECÂNICA |
| 115 | 1.2.6.10.2 | Análise Tecnored | 1d | 2026-06-29 | 2026-06-29 | 114 | 2026-07-03 | 2026-07-03 | 1d | 2026-07-03 | 2026-07-03 | 5d | 0d | MECÂNICA |
| 116 | 1.2.6.10.3 | Atendimento de comentários | 1d | 2026-06-30 | 2026-06-30 | 115 | 2026-07-06 | 2026-07-07 | 2d | 2026-07-06 | 2026-07-07 | 5d | 0d | MECÂNICA |
| 117 | 1.2.6.10.4 | Aprovação | 1d | 2026-07-01 | 2026-07-01 | 116 | 2026-07-08 | 2026-07-08 | 1d | 2026-07-08 | 2026-07-08 | 5d |  | MECÂNICA |
| 118 | 1.2.6.11 | **AG-F0009-0305-MB-L-00007** | 10d | 2026-06-18 | 2026-07-01 |  | 2026-06-22 | 2026-07-08 | 13d | 2026-06-22 | 2026-07-08 | 5d |  | MECÂNICA |
| 119 | 1.2.6.11.1 | Emissão inicial | 7d | 2026-06-18 | 2026-06-26 | 276 | 2026-06-22 | 2026-07-02 | 9d | 2026-06-22 | 2026-07-02 | 5d | 0d | MECÂNICA |
| 120 | 1.2.6.11.2 | Análise Tecnored | 1d | 2026-06-29 | 2026-06-29 | 119 | 2026-07-03 | 2026-07-03 | 1d | 2026-07-03 | 2026-07-03 | 5d | 0d | MECÂNICA |
| 121 | 1.2.6.11.3 | Atendimento de comentários | 1d | 2026-06-30 | 2026-06-30 | 120 | 2026-07-06 | 2026-07-07 | 2d | 2026-07-06 | 2026-07-07 | 5d | 0d | MECÂNICA |
| 122 | 1.2.6.11.4 | Aprovação | 1d | 2026-07-01 | 2026-07-01 | 121 | 2026-07-08 | 2026-07-08 | 1d | 2026-07-08 | 2026-07-08 | 5d |  | MECÂNICA |
| 123 | 1.2.6.12 | **AG-F0009-0305-MB-L-00008** | 10d | 2026-06-18 | 2026-07-01 |  | 2026-06-22 | 2026-07-08 | 13d | 2026-06-22 | 2026-07-08 | 5d |  | MECÂNICA |
| 124 | 1.2.6.12.1 | Emissão inicial | 7d | 2026-06-18 | 2026-06-26 | 276 | 2026-06-22 | 2026-07-02 | 9d | 2026-06-22 | 2026-07-02 | 5d | 0d | MECÂNICA |
| 125 | 1.2.6.12.2 | Análise Tecnored | 1d | 2026-06-29 | 2026-06-29 | 124 | 2026-07-03 | 2026-07-03 | 1d | 2026-07-03 | 2026-07-03 | 5d | 0d | MECÂNICA |
| 126 | 1.2.6.12.3 | Atendimento de comentários | 1d | 2026-06-30 | 2026-06-30 | 125 | 2026-07-06 | 2026-07-07 | 2d | 2026-07-06 | 2026-07-07 | 5d | 0d | MECÂNICA |
| 127 | 1.2.6.12.4 | Aprovação | 1d | 2026-07-01 | 2026-07-01 | 126 | 2026-07-08 | 2026-07-08 | 1d | 2026-07-08 | 2026-07-08 | 5d |  | MECÂNICA |

| ID | WBS | Task | Duration | Start | Finish | Predecessors | Baseline start | Baseline finish | Baseline duration | Baseline 1 start | Baseline 1 finish | Total slack | Free slack | Disciplina |
| --- | --- | --- | --- | --- | --- | --- | --- | --- | --- | --- | --- | --- | --- | --- |
| 128 | 1.2.6.13 | **AG-F0009-0305-MB-L-00009** | 10d | 2026-06-18 | 2026-07-01 |  | 2026-06-22 | 2026-07-08 | 13d | 2026-06-22 | 2026-07-08 | 5d |  | MECÂNICA |
| 129 | 1.2.6.13.1 | Emissão inicial | 7d | 2026-06-18 | 2026-06-26 | 276 | 2026-06-22 | 2026-07-02 | 9d | 2026-06-22 | 2026-07-02 | 5d | 0d | MECÂNICA |
| 130 | 1.2.6.13.2 | Análise Tecnored | 1d | 2026-06-29 | 2026-06-29 | 129 | 2026-07-03 | 2026-07-03 | 1d | 2026-07-03 | 2026-07-03 | 5d | 0d | MECÂNICA |
| 131 | 1.2.6.13.3 | Atendimento de comentários | 1d | 2026-06-30 | 2026-06-30 | 130 | 2026-07-06 | 2026-07-07 | 2d | 2026-07-06 | 2026-07-07 | 5d | 0d | MECÂNICA |
| 132 | 1.2.6.13.4 | Aprovação | 1d | 2026-07-01 | 2026-07-01 | 131 | 2026-07-08 | 2026-07-08 | 1d | 2026-07-08 | 2026-07-08 | 5d |  | MECÂNICA |
| 133 | 1.2.6.14 | **PL-F0009-0305-MB-M-00001** | 12d | 2026-06-01 | 2026-06-18 |  | 2026-05-29 | 2026-06-15 | 12d | 2026-05-29 | 2026-06-15 | 14d |  | MECÂNICA |
| 134 | 1.2.6.14.1 | Emissão inicial | 8d | 2026-06-01 | 2026-06-12 | 160 | 2026-05-29 | 2026-06-09 | 8d | 2026-05-29 | 2026-06-09 | 14d | 0d | MECÂNICA |
| 135 | 1.2.6.14.2 | Análise Tecnored | 1d | 2026-06-15 | 2026-06-15 | 134 | 2026-06-10 | 2026-06-10 | 1d | 2026-06-10 | 2026-06-10 | 14d | 0d | MECÂNICA |
| 136 | 1.2.6.14.3 | Atendimento de comentários | 2d | 2026-06-16 | 2026-06-17 | 135 | 2026-06-11 | 2026-06-12 | 2d | 2026-06-11 | 2026-06-12 | 14d | 0d | MECÂNICA |
| 137 | 1.2.6.14.4 | Aprovação | 1d | 2026-06-18 | 2026-06-18 | 136 | 2026-06-15 | 2026-06-15 | 1d | 2026-06-15 | 2026-06-15 | 14d |  | MECÂNICA |
| 138 | 1.2.6.15 | **PL-F0009-0305-MB-M-00002** | 12d | 2026-06-01 | 2026-06-18 |  | 2026-05-29 | 2026-06-15 | 12d | 2026-05-29 | 2026-06-15 | 14d |  | MECÂNICA |
| 139 | 1.2.6.15.1 | Emissão inicial | 8d | 2026-06-01 | 2026-06-12 | 160 | 2026-05-29 | 2026-06-09 | 8d | 2026-05-29 | 2026-06-09 | 14d | 0d | MECÂNICA |
| 140 | 1.2.6.15.2 | Análise Tecnored | 1d | 2026-06-15 | 2026-06-15 | 139 | 2026-06-10 | 2026-06-10 | 1d | 2026-06-10 | 2026-06-10 | 14d | 0d | MECÂNICA |
| 141 | 1.2.6.15.3 | Atendimento de comentários | 2d | 2026-06-16 | 2026-06-17 | 140 | 2026-06-11 | 2026-06-12 | 2d | 2026-06-11 | 2026-06-12 | 14d | 0d | MECÂNICA |
| 142 | 1.2.6.15.4 | Aprovação | 1d | 2026-06-18 | 2026-06-18 | 141 | 2026-06-15 | 2026-06-15 | 1d | 2026-06-15 | 2026-06-15 | 14d |  | MECÂNICA |
| 143 | 1.2.6.16 | **PL-F0009-0305-MB-M-00003** | 12d | 2026-06-01 | 2026-06-18 |  | 2026-05-29 | 2026-06-15 | 12d | 2026-05-29 | 2026-06-15 | 14d |  | MECÂNICA |
| 144 | 1.2.6.16.1 | Emissão inicial | 8d | 2026-06-01 | 2026-06-12 | 160 | 2026-05-29 | 2026-06-09 | 8d | 2026-05-29 | 2026-06-09 | 14d | 0d | MECÂNICA |
| 145 | 1.2.6.16.2 | Análise Tecnored | 1d | 2026-06-15 | 2026-06-15 | 144 | 2026-06-10 | 2026-06-10 | 1d | 2026-06-10 | 2026-06-10 | 14d | 0d | MECÂNICA |
| 146 | 1.2.6.16.3 | Atendimento de comentários | 2d | 2026-06-16 | 2026-06-17 | 145 | 2026-06-11 | 2026-06-12 | 2d | 2026-06-11 | 2026-06-12 | 14d | 0d | MECÂNICA |
| 147 | 1.2.6.16.4 | Aprovação | 1d | 2026-06-18 | 2026-06-18 | 146 | 2026-06-15 | 2026-06-15 | 1d | 2026-06-15 | 2026-06-15 | 14d |  | MECÂNICA |
| 148 | 1.2.6.17 | **PL-F0009-0305-MB-M-00004** | 12d | 2026-06-01 | 2026-06-18 |  | 2026-05-29 | 2026-06-15 | 12d | 2026-05-29 | 2026-06-15 | 14d |  | MECÂNICA |
| 149 | 1.2.6.17.1 | Emissão inicial | 8d | 2026-06-01 | 2026-06-12 | 160 | 2026-05-29 | 2026-06-09 | 8d | 2026-05-29 | 2026-06-09 | 14d | 0d | MECÂNICA |
| 150 | 1.2.6.17.2 | Análise Tecnored | 1d | 2026-06-15 | 2026-06-15 | 149 | 2026-06-10 | 2026-06-10 | 1d | 2026-06-10 | 2026-06-10 | 14d | 0d | MECÂNICA |
| 151 | 1.2.6.17.3 | Atendimento de comentários | 2d | 2026-06-16 | 2026-06-17 | 150 | 2026-06-11 | 2026-06-12 | 2d | 2026-06-11 | 2026-06-12 | 14d | 0d | MECÂNICA |
| 152 | 1.2.6.17.4 | Aprovação | 1d | 2026-06-18 | 2026-06-18 | 151 | 2026-06-15 | 2026-06-15 | 1d | 2026-06-15 | 2026-06-15 | 14d |  | MECÂNICA |

| ID | WBS | Task | Duration | Start | Finish | Predecessors | Complete | Remaining | Baseline start | Baseline finish | Baseline duration | Baseline 1 start | Baseline 1 finish | Total slack | Free slack | Disciplina |
| --- | --- | --- | --- | --- | --- | --- | --- | --- | --- | --- | --- | --- | --- | --- | --- | --- |
| 153 | 1.2.6.18 | **MC-F0009-0305-MB-M-00001** | 14d | 2026-06-01 | 2026-06-22 |  |  |  | 2026-05-29 | 2026-06-17 | 14d | 2026-05-29 | 2026-06-17 | 0d |  | MECÂNICA |
| 154 | 1.2.6.18.1 | Emissão inicial | 10d | 2026-06-01 | 2026-06-16 | 160 |  |  | 2026-05-29 | 2026-06-11 | 10d | 2026-05-29 | 2026-06-11 | 0d |  | MECÂNICA |
| 155 | 1.2.6.18.2 | Análise Tecnored | 1d | 2026-06-17 | 2026-06-17 | 154 |  |  | 2026-06-12 | 2026-06-12 | 1d | 2026-06-12 | 2026-06-12 | 0d |  | MECÂNICA |
| 156 | 1.2.6.18.3 | Atendimento de comentários | 2d | 2026-06-18 | 2026-06-19 | 155 |  |  | 2026-06-15 | 2026-06-16 | 2d | 2026-06-15 | 2026-06-16 | 12d | 0d | MECÂNICA |
| 157 | 1.2.6.18.4 | Aprovação | 1d | 2026-06-22 | 2026-06-22 | 156 |  |  | 2026-06-17 | 2026-06-17 | 1d | 2026-06-17 | 2026-06-17 | 12d |  | MECÂNICA |
| 158 | 1.2.6.19 | **ML-F0009-0305-MB-M-00001** | 12d | 2026-05-19 A | 2026-06-03 |  | 92% | 1d | 2026-05-19 | 2026-06-02 | 11d | 2026-05-19 | 2026-06-02 | 23d |  | MECÂNICA |
| 159 | 1.2.6.19.1 | Emissão inicial | 8d | 2026-05-19 A | 2026-05-28 A | 69, 10 | 100% |  | 2026-05-19 | 2026-05-27 | 7d | 2026-05-19 | 2026-05-27 |  |  | MECÂNICA |
| 160 | 1.2.6.19.2 | Análise Tecnored | 1d | 2026-05-29 A | 2026-05-29 A | 159 | 100% |  | 2026-05-28 | 2026-05-28 | 1d | 2026-05-28 | 2026-05-28 |  |  | MECÂNICA |
| 161 | 1.2.6.19.3 | Atendimento de comentários | 2d | 2026-06-01 A | 2026-06-02 | 160 | 75% | 0.5d | 2026-05-29 | 2026-06-01 | 2d | 2026-05-29 | 2026-06-01 | 0.5d | 0d | MECÂNICA |
| 162 | 1.2.6.19.4 | Aprovação | 1d | 2026-06-03 A | 2026-06-03 | 161 | 50% | 0.5d | 2026-06-02 | 2026-06-02 | 1d | 2026-06-02 | 2026-06-02 | 23d |  | MECÂNICA |
| 163 | 1.2.6.20 | **FD-F0009-0305-MB-M-00001** | 7d | 2026-06-17 | 2026-06-25 |  |  |  | 2026-06-12 | 2026-06-22 | 7d | 2026-06-12 | 2026-06-22 | 9d |  | MECÂNICA |
| 164 | 1.2.6.20.1 | Emissão inicial | 3d | 2026-06-17 | 2026-06-19 | 154 |  |  | 2026-06-12 | 2026-06-16 | 3d | 2026-06-12 | 2026-06-16 | 9d | 0d | MECÂNICA |
| 165 | 1.2.6.20.2 | Análise Tecnored | 1d | 2026-06-22 | 2026-06-22 | 164 |  |  | 2026-06-17 | 2026-06-17 | 1d | 2026-06-17 | 2026-06-17 | 9d | 0d | MECÂNICA |
| 166 | 1.2.6.20.3 | Atendimento de comentários | 2d | 2026-06-23 | 2026-06-24 | 165 |  |  | 2026-06-18 | 2026-06-19 | 2d | 2026-06-18 | 2026-06-19 | 9d | 0d | MECÂNICA |
| 167 | 1.2.6.20.4 | Aprovação | 1d | 2026-06-25 | 2026-06-25 | 166 |  |  | 2026-06-22 | 2026-06-22 | 1d | 2026-06-22 | 2026-06-22 | 9d |  | MECÂNICA |
| 168 | 1.2.6.21 | **FD-F0009-0305-MB-M-00002** | 7d | 2026-06-17 | 2026-06-25 |  |  |  | 2026-06-12 | 2026-06-22 | 7d | 2026-06-12 | 2026-06-22 | 9d |  | MECÂNICA |
| 169 | 1.2.6.21.1 | Emissão inicial | 3d | 2026-06-17 | 2026-06-19 | 154 |  |  | 2026-06-12 | 2026-06-16 | 3d | 2026-06-12 | 2026-06-16 | 9d | 0d | MECÂNICA |
| 170 | 1.2.6.21.2 | Análise Tecnored | 1d | 2026-06-22 | 2026-06-22 | 169 |  |  | 2026-06-17 | 2026-06-17 | 1d | 2026-06-17 | 2026-06-17 | 9d | 0d | MECÂNICA |
| 171 | 1.2.6.21.3 | Atendimento de comentários | 2d | 2026-06-23 | 2026-06-24 | 170 |  |  | 2026-06-18 | 2026-06-19 | 2d | 2026-06-18 | 2026-06-19 | 9d | 0d | MECÂNICA |
| 172 | 1.2.6.21.4 | Aprovação | 1d | 2026-06-25 | 2026-06-25 | 171 |  |  | 2026-06-22 | 2026-06-22 | 1d | 2026-06-22 | 2026-06-22 | 9d |  | MECÂNICA |
| 173 | 1.2.6.22 | **FD-F0009-0305-MB-M-00003** | 7d | 2026-06-17 | 2026-06-25 |  |  |  | 2026-06-12 | 2026-06-22 | 7d | 2026-06-12 | 2026-06-22 | 9d |  | MECÂNICA |
| 174 | 1.2.6.22.1 | Emissão inicial | 3d | 2026-06-17 | 2026-06-19 | 154 |  |  | 2026-06-12 | 2026-06-16 | 3d | 2026-06-12 | 2026-06-16 | 9d | 0d | MECÂNICA |
| 175 | 1.2.6.22.2 | Análise Tecnored | 1d | 2026-06-22 | 2026-06-22 | 174 |  |  | 2026-06-17 | 2026-06-17 | 1d | 2026-06-17 | 2026-06-17 | 9d | 0d | MECÂNICA |
| 176 | 1.2.6.22.3 | Atendimento de comentários | 2d | 2026-06-23 | 2026-06-24 | 175 |  |  | 2026-06-18 | 2026-06-19 | 2d | 2026-06-18 | 2026-06-19 | 9d | 0d | MECÂNICA |
| 177 | 1.2.6.22.4 | Aprovação | 1d | 2026-06-25 | 2026-06-25 | 176 |  |  | 2026-06-22 | 2026-06-22 | 1d | 2026-06-22 | 2026-06-22 | 9d |  | MECÂNICA |

| ID | WBS | Task | Type | Duration | Start | Finish | Predecessors | Baseline start | Baseline finish | Baseline duration | Baseline 1 start | Baseline 1 finish | Total slack | Free slack | Baseline cost | Disciplina |
| --- | --- | --- | --- | --- | --- | --- | --- | --- | --- | --- | --- | --- | --- | --- | --- | --- |
| 178 | 1.2.7 | **Tubulação/Utilidades** |  | 18d | 2026-06-10 | 2026-07-03 |  | 2026-05-20 | 2026-07-08 | 36d | 2026-05-20 | 2026-07-08 | 3d |  |  | TUBULAÇÃO / UTILIDADES |
| 179 | 1.2.7.1 | **CP-F0009-0305-MB-T-00001** | inactive | 14d | 2026-05-08 | 2026-05-27 |  |  |  |  |  |  | 28d |  | -0 |  |
| 180 | 1.2.7.1.1 | Emissão inicial | inactive | 5d | 2026-05-08 | 2026-05-14 | 26FS+3d |  |  |  |  |  | 33d | 5d | -0 |  |
| 181 | 1.2.7.1.2 | Análise Tecnored | inactive | 1d | 2026-05-22 | 2026-05-22 | 180, 11 |  |  |  |  |  | 28d | 0d | -0 |  |
| 182 | 1.2.7.1.3 | Atendimento de comentários | inactive | 2d | 2026-05-25 | 2026-05-26 | 181 |  |  |  |  |  | 28d | 0d | -0 |  |
| 183 | 1.2.7.1.4 | Aprovação | inactive | 1d | 2026-05-27 | 2026-05-27 | 182 |  |  |  |  |  | 28d |  | -0 |  |
| 184 | 1.2.7.2 | **MD-F0009-0305-MB-U-00001** | inactive | 7d | 2026-07-09 | 2026-07-17 |  | 2026-06-18 | 2026-06-26 | 7d | 2026-06-18 | 2026-06-26 | -7d | 0d |  |  |
| 185 | 1.2.7.2.1 | Emissão inicial | inactive | 3d | 2026-07-09 | 2026-07-13 | 229FS+5d | 2026-06-18 | 2026-06-22 | 3d | 2026-06-18 | 2026-06-22 | -7d | 0d |  |  |
| 186 | 1.2.7.2.2 | Análise Tecnored | inactive | 1d | 2026-07-14 | 2026-07-14 | 185 | 2026-06-23 | 2026-06-23 | 1d | 2026-06-23 | 2026-06-23 | -7d | 0d |  |  |
| 187 | 1.2.7.2.3 | Atendimento de comentários | inactive | 2d | 2026-07-15 | 2026-07-16 | 186 | 2026-06-24 | 2026-06-25 | 2d | 2026-06-24 | 2026-06-25 | -7d | 0d |  |  |
| 188 | 1.2.7.2.4 | Aprovação | inactive | 1d | 2026-07-17 | 2026-07-17 | 187 | 2026-06-26 | 2026-06-26 | 1d | 2026-06-26 | 2026-06-26 | -7d | 0d |  |  |
| 189 | 1.2.7.3 | **ML-F0009-0305-MB-T-00001** |  | 7d | 2026-06-12 | 2026-06-22 |  | 2026-05-28 | 2026-06-05 | 7d | 2026-05-28 | 2026-06-05 | 5d |  |  | TUBULAÇÃO / UTILIDADES |
| 190 | 1.2.7.3.1 | Emissão inicial |  | 3d | 2026-06-12 | 2026-06-16 | 159, 220 | 2026-05-28 | 2026-06-01 | 3d | 2026-05-28 | 2026-06-01 | 5d | 0d |  | TUBULAÇÃO / UTILIDADES |
| 191 | 1.2.7.3.2 | Análise Tecnored |  | 1d | 2026-06-17 | 2026-06-17 | 190 | 2026-06-02 | 2026-06-02 | 1d | 2026-06-02 | 2026-06-02 | 5d | 0d |  | TUBULAÇÃO / UTILIDADES |
| 192 | 1.2.7.3.3 | Atendimento de comentários |  | 2d | 2026-06-18 | 2026-06-19 | 191 | 2026-06-03 | 2026-06-04 | 2d | 2026-06-03 | 2026-06-04 | 5d | 0d |  | TUBULAÇÃO / UTILIDADES |
| 193 | 1.2.7.3.4 | Aprovação |  | 1d | 2026-06-22 | 2026-06-22 | 192 | 2026-06-05 | 2026-06-05 | 1d | 2026-06-05 | 2026-06-05 | 5d | 0d |  | TUBULAÇÃO / UTILIDADES |
| 194 | 1.2.7.4 | **ET-F0009-0305-MB-T-00001** | inactive | 7d | 2026-06-19 | 2026-06-29 |  | 2026-06-30 | 2026-07-08 | 7d | 2026-06-30 | 2026-07-08 | 7d |  |  | TUBULAÇÃO / UTILIDADES |
| 195 | 1.2.7.4.1 | Emissão inicial | inactive | 3d | 2026-06-19 | 2026-06-23 | 200FS+2d | 2026-06-30 | 2026-07-02 | 3d | 2026-06-30 | 2026-07-02 | 7d | 0d |  | TUBULAÇÃO / UTILIDADES |
| 196 | 1.2.7.4.2 | Análise Tecnored | inactive | 1d | 2026-06-24 | 2026-06-24 | 195 | 2026-07-03 | 2026-07-03 | 1d | 2026-07-03 | 2026-07-03 | 7d | 0d |  | TUBULAÇÃO / UTILIDADES |
| 197 | 1.2.7.4.3 | Atendimento de comentários | inactive | 2d | 2026-06-25 | 2026-06-26 | 196 | 2026-07-06 | 2026-07-07 | 2d | 2026-07-06 | 2026-07-07 | 7d | 0d |  | TUBULAÇÃO / UTILIDADES |
| 198 | 1.2.7.4.4 | Aprovação | inactive | 1d | 2026-06-29 | 2026-06-29 | 197 | 2026-07-08 | 2026-07-08 | 1d | 2026-07-08 | 2026-07-08 | 7d |  |  | TUBULAÇÃO / UTILIDADES |
| 199 | 1.2.7.5 | **FD-F0009-0305-MB-T-00001** |  | 7d | 2026-06-12 | 2026-06-22 |  | 2026-06-23 | 2026-07-01 | 7d | 2026-06-23 | 2026-07-01 | 3d |  |  | TUBULAÇÃO / UTILIDADES |
| 200 | 1.2.7.5.1 | Emissão inicial |  | 3d | 2026-06-12 | 2026-06-16 | 220 | 2026-06-23 | 2026-06-25 | 3d | 2026-06-23 | 2026-06-25 | 3d | 0d |  | TUBULAÇÃO / UTILIDADES |
| 201 | 1.2.7.5.2 | Análise Tecnored |  | 1d | 2026-06-17 | 2026-06-17 | 200 | 2026-06-26 | 2026-06-26 | 1d | 2026-06-26 | 2026-06-26 | 12d | 0d |  | TUBULAÇÃO / UTILIDADES |
| 202 | 1.2.7.5.3 | Atendimento de comentários |  | 2d | 2026-06-18 | 2026-06-19 | 201 | 2026-06-29 | 2026-06-30 | 2d | 2026-06-29 | 2026-06-30 | 12d | 0d |  | TUBULAÇÃO / UTILIDADES |
| 203 | 1.2.7.5.4 | Aprovação |  | 1d | 2026-06-22 | 2026-06-22 | 202 | 2026-07-01 | 2026-07-01 | 1d | 2026-07-01 | 2026-07-01 | 12d |  |  | TUBULAÇÃO / UTILIDADES |

| ID | WBS | Task | Type | Duration | Start | Finish | Predecessors | Baseline start | Baseline finish | Baseline duration | Baseline 1 start | Baseline 1 finish | Total slack | Free slack | Disciplina |
| --- | --- | --- | --- | --- | --- | --- | --- | --- | --- | --- | --- | --- | --- | --- | --- |
| 204 | 1.2.7.6 | **FD-F0009-0305-MB-T-00002** | inactive | 7d | 2026-06-19 | 2026-06-29 |  | 2026-06-23 | 2026-07-01 | 7d | 2026-06-23 | 2026-07-01 | 7d |  | TUBULAÇÃO / UTILIDADES |
| 205 | 1.2.7.6.1 | Emissão inicial | inactive | 3d | 2026-06-19 | 2026-06-23 | 215 | 2026-06-23 | 2026-06-25 | 3d | 2026-06-23 | 2026-06-25 | 7d | 0d | TUBULAÇÃO / UTILIDADES |
| 206 | 1.2.7.6.2 | Análise Tecnored | inactive | 1d | 2026-06-24 | 2026-06-24 | 205 | 2026-06-26 | 2026-06-26 | 1d | 2026-06-26 | 2026-06-26 | 7d | 0d | TUBULAÇÃO / UTILIDADES |
| 207 | 1.2.7.6.3 | Atendimento de comentários | inactive | 2d | 2026-06-25 | 2026-06-26 | 206 | 2026-06-29 | 2026-06-30 | 2d | 2026-06-29 | 2026-06-30 | 7d | 0d | TUBULAÇÃO / UTILIDADES |
| 208 | 1.2.7.6.4 | Aprovação | inactive | 1d | 2026-06-29 | 2026-06-29 | 207 | 2026-07-01 | 2026-07-01 | 1d | 2026-07-01 | 2026-07-01 | 7d |  | TUBULAÇÃO / UTILIDADES |
| 209 | 1.2.7.7 | **PQ-F0009-0305-MB-T-00001** |  | 7d | 2026-06-25 | 2026-07-03 |  | 2026-06-23 | 2026-07-01 | 7d | 2026-06-23 | 2026-07-01 | 3d |  | TUBULAÇÃO / UTILIDADES |
| 210 | 1.2.7.7.1 | Emissão inicial |  | 3d | 2026-06-25 | 2026-06-29 | 218 | 2026-06-23 | 2026-06-25 | 3d | 2026-06-23 | 2026-06-25 | 3d | 0d | TUBULAÇÃO / UTILIDADES |
| 211 | 1.2.7.7.2 | Análise Tecnored |  | 1d | 2026-06-30 | 2026-06-30 | 210 | 2026-06-26 | 2026-06-26 | 1d | 2026-06-26 | 2026-06-26 | 3d | 0d | TUBULAÇÃO / UTILIDADES |
| 212 | 1.2.7.7.3 | Atendimento de comentários |  | 2d | 2026-07-01 | 2026-07-02 | 211 | 2026-06-29 | 2026-06-30 | 2d | 2026-06-29 | 2026-06-30 | 3d | 0d | TUBULAÇÃO / UTILIDADES |
| 213 | 1.2.7.7.4 | Aprovação |  | 1d | 2026-07-03 | 2026-07-03 | 212 | 2026-07-01 | 2026-07-01 | 1d | 2026-07-01 | 2026-07-01 | 3d |  | TUBULAÇÃO / UTILIDADES |
| 214 | 1.2.7.8 | **MC-F0009-0305-MB-T-00001** |  | 9d | 2026-06-12 | 2026-06-24 |  | 2026-06-18 | 2026-06-26 | 7d | 2026-06-18 | 2026-06-26 | 3d |  | TUBULAÇÃO / UTILIDADES |
| 215 | 1.2.7.8.1 | Emissão inicial |  | 5d | 2026-06-12 | 2026-06-18 | 200SS | 2026-06-18 | 2026-06-22 | 3d | 2026-06-18 | 2026-06-22 | 3d | 0d | TUBULAÇÃO / UTILIDADES |
| 216 | 1.2.7.8.2 | Análise Tecnored |  | 1d | 2026-06-19 | 2026-06-19 | 215 | 2026-06-23 | 2026-06-23 | 1d | 2026-06-23 | 2026-06-23 | 3d | 0d | TUBULAÇÃO / UTILIDADES |
| 217 | 1.2.7.8.3 | Atendimento de comentários |  | 2d | 2026-06-22 | 2026-06-23 | 216 | 2026-06-24 | 2026-06-25 | 2d | 2026-06-24 | 2026-06-25 | 3d | 0d | TUBULAÇÃO / UTILIDADES |
| 218 | 1.2.7.8.4 | Aprovação |  | 1d | 2026-06-24 | 2026-06-24 | 217 | 2026-06-26 | 2026-06-26 | 1d | 2026-06-26 | 2026-06-26 | 3d | 0d | TUBULAÇÃO / UTILIDADES |
| 219 | 1.2.7.9 | **FG-F0009-0305-MB-T-00001** |  | 6d | 2026-06-10 | 2026-06-17 |  | 2026-05-20 | 2026-05-27 | 6d | 2026-05-20 | 2026-05-27 | 3d |  | TUBULAÇÃO / UTILIDADES |
| 220 | 1.2.7.9.1 | Emissão inicial |  | 2d | 2026-06-10 | 2026-06-11 | 63FS+13d | 2026-05-20 | 2026-05-21 | 2d | 2026-05-20 | 2026-05-21 | 3d | 0d | TUBULAÇÃO / UTILIDADES |
| 221 | 1.2.7.9.2 | Análise Tecnored |  | 1d | 2026-06-12 | 2026-06-12 | 220 | 2026-05-22 | 2026-05-22 | 1d | 2026-05-22 | 2026-05-22 | 15d | 0d | TUBULAÇÃO / UTILIDADES |
| 222 | 1.2.7.9.3 | Atendimento de comentários |  | 2d | 2026-06-15 | 2026-06-16 | 221 | 2026-05-25 | 2026-05-26 | 2d | 2026-05-25 | 2026-05-26 | 15d | 0d | TUBULAÇÃO / UTILIDADES |
| 223 | 1.2.7.9.4 | Aprovação |  | 1d | 2026-06-17 | 2026-06-17 | 222 | 2026-05-27 | 2026-05-27 | 1d | 2026-05-27 | 2026-05-27 | 15d |  | TUBULAÇÃO / UTILIDADES |
| 224 | 1.2.7.10 | **FG-F0009-0305-MB-T-00002** | inactive | 6d | 2026-06-03 | 2026-06-12 |  | 2026-05-20 | 2026-05-27 | 6d | 2026-05-20 | 2026-05-27 | 18d |  | TUBULAÇÃO / UTILIDADES |
| 225 | 1.2.7.10.1 | Emissão inicial | inactive | 2d | 2026-06-03 | 2026-06-08 | 63FS+10d | 2026-05-20 | 2026-05-21 | 2d | 2026-05-20 | 2026-05-21 | 18d | 0d | TUBULAÇÃO / UTILIDADES |
| 226 | 1.2.7.10.2 | Análise Tecnored | inactive | 1d | 2026-06-09 | 2026-06-09 | 225 | 2026-05-22 | 2026-05-22 | 1d | 2026-05-22 | 2026-05-22 | 18d | 0d | TUBULAÇÃO / UTILIDADES |
| 227 | 1.2.7.10.3 | Atendimento de comentários | inactive | 2d | 2026-06-10 | 2026-06-11 | 226 | 2026-05-25 | 2026-05-26 | 2d | 2026-05-25 | 2026-05-26 | 18d | 0d | TUBULAÇÃO / UTILIDADES |
| 228 | 1.2.7.10.4 | Aprovação | inactive | 1d | 2026-06-12 | 2026-06-12 | 227 | 2026-05-27 | 2026-05-27 | 1d | 2026-05-27 | 2026-05-27 | 18d |  | TUBULAÇÃO / UTILIDADES |

| ID | WBS | Task | Type | Duration | Start | Finish | Predecessors | Baseline start | Baseline finish | Baseline duration | Baseline 1 start | Baseline 1 finish | Total slack | Free slack | Disciplina |
| --- | --- | --- | --- | --- | --- | --- | --- | --- | --- | --- | --- | --- | --- | --- | --- |
| 229 | 1.2.7.11 | **AG-F0009-0305-MB-T-00001** |  | 7d | 2026-06-23 | 2026-07-01 |  | 2026-06-02 | 2026-06-10 | 7d | 2026-06-02 | 2026-06-10 | 5d | 0d | TUBULAÇÃO / UTILIDADES |
| 230 | 1.2.7.11.1 | Emissão inicial |  | 3d | 2026-06-23 | 2026-06-25 | 193 | 2026-06-02 | 2026-06-04 | 3d | 2026-06-02 | 2026-06-04 | 5d | 0d | TUBULAÇÃO / UTILIDADES |
| 231 | 1.2.7.11.2 | Análise Tecnored |  | 1d | 2026-06-26 | 2026-06-26 | 230 | 2026-06-05 | 2026-06-05 | 1d | 2026-06-05 | 2026-06-05 | 5d | 0d | TUBULAÇÃO / UTILIDADES |
| 232 | 1.2.7.11.3 | Atendimento de comentários |  | 2d | 2026-06-29 | 2026-06-30 | 231 | 2026-06-08 | 2026-06-09 | 2d | 2026-06-08 | 2026-06-09 | 5d | 0d | TUBULAÇÃO / UTILIDADES |
| 233 | 1.2.7.11.4 | Aprovação |  | 1d | 2026-07-01 | 2026-07-01 | 232 | 2026-06-10 | 2026-06-10 | 1d | 2026-06-10 | 2026-06-10 | 5d |  | TUBULAÇÃO / UTILIDADES |
| 234 | 1.2.7.12 | **AG-F0009-0305-MB-T-00002** |  | 7d | 2026-06-23 | 2026-07-01 |  | 2026-06-02 | 2026-06-10 | 7d | 2026-06-02 | 2026-06-10 | 5d |  | TUBULAÇÃO / UTILIDADES |
| 235 | 1.2.7.12.1 | Emissão inicial |  | 3d | 2026-06-23 | 2026-06-25 | 193 | 2026-06-02 | 2026-06-04 | 3d | 2026-06-02 | 2026-06-04 | 5d | 0d | TUBULAÇÃO / UTILIDADES |
| 236 | 1.2.7.12.2 | Análise Tecnored |  | 1d | 2026-06-26 | 2026-06-26 | 235 | 2026-06-05 | 2026-06-05 | 1d | 2026-06-05 | 2026-06-05 | 5d | 0d | TUBULAÇÃO / UTILIDADES |
| 237 | 1.2.7.12.3 | Atendimento de comentários |  | 2d | 2026-06-29 | 2026-06-30 | 236 | 2026-06-08 | 2026-06-09 | 2d | 2026-06-08 | 2026-06-09 | 5d | 0d | TUBULAÇÃO / UTILIDADES |
| 238 | 1.2.7.12.4 | Aprovação |  | 1d | 2026-07-01 | 2026-07-01 | 237 | 2026-06-10 | 2026-06-10 | 1d | 2026-06-10 | 2026-06-10 | 5d |  | TUBULAÇÃO / UTILIDADES |
| 239 | 1.2.7.13 | **AG-F0009-0305-MB-T-00003** |  | 7d | 2026-06-23 | 2026-07-01 |  | 2026-06-02 | 2026-06-10 | 7d | 2026-06-02 | 2026-06-10 | 5d |  | ESTRUTURA METÁLICA |
| 240 | 1.2.7.13.1 | Emissão inicial |  | 3d | 2026-06-23 | 2026-06-25 | 193 | 2026-06-02 | 2026-06-04 | 3d | 2026-06-02 | 2026-06-04 | 5d | 0d | ESTRUTURA METÁLICA |
| 241 | 1.2.7.13.2 | Análise Tecnored |  | 1d | 2026-06-26 | 2026-06-26 | 240 | 2026-06-05 | 2026-06-05 | 1d | 2026-06-05 | 2026-06-05 | 5d | 0d | ESTRUTURA METÁLICA |
| 242 | 1.2.7.13.3 | Atendimento de comentários |  | 2d | 2026-06-29 | 2026-06-30 | 241 | 2026-06-08 | 2026-06-09 | 2d | 2026-06-08 | 2026-06-09 | 5d | 0d | ESTRUTURA METÁLICA |
| 243 | 1.2.7.13.4 | Aprovação |  | 1d | 2026-07-01 | 2026-07-01 | 242 | 2026-06-10 | 2026-06-10 | 1d | 2026-06-10 | 2026-06-10 | 5d |  | ESTRUTURA METÁLICA |
| 244 | 1.2.7.14 | **AG-F0009-0305-MB-T-00004** | inactive | 7d | 2026-06-03 | 2026-06-15 |  | 2026-06-02 | 2026-06-10 | 7d | 2026-06-02 | 2026-06-10 | 17d |  | ESTRUTURA METÁLICA |
| 245 | 1.2.7.14.1 | Emissão inicial | inactive | 3d | 2026-06-03 | 2026-06-09 | 161 | 2026-06-02 | 2026-06-04 | 3d | 2026-06-02 | 2026-06-04 | 17d | 0d | ESTRUTURA METÁLICA |
| 246 | 1.2.7.14.2 | Análise Tecnored | inactive | 1d | 2026-06-10 | 2026-06-10 | 245 | 2026-06-05 | 2026-06-05 | 1d | 2026-06-05 | 2026-06-05 | 17d | 0d | ESTRUTURA METÁLICA |
| 247 | 1.2.7.14.3 | Atendimento de comentários | inactive | 2d | 2026-06-11 | 2026-06-12 | 246 | 2026-06-08 | 2026-06-09 | 2d | 2026-06-08 | 2026-06-09 | 17d | 0d | ESTRUTURA METÁLICA |
| 248 | 1.2.7.14.4 | Aprovação | inactive | 1d | 2026-06-15 | 2026-06-15 | 247 | 2026-06-10 | 2026-06-10 | 1d | 2026-06-10 | 2026-06-10 | 17d |  | ESTRUTURA METÁLICA |
| 249 | 1.2.7.15 | **AG-F0009-0305-MB-T-00005** | inactive | 7d | 2026-06-03 | 2026-06-15 |  | 2026-06-02 | 2026-06-10 | 7d | 2026-06-02 | 2026-06-10 | 17d |  | ESTRUTURA METÁLICA |
| 250 | 1.2.7.15.1 | Emissão inicial | inactive | 3d | 2026-06-03 | 2026-06-09 | 161 | 2026-06-02 | 2026-06-04 | 3d | 2026-06-02 | 2026-06-04 | 17d | 0d | ESTRUTURA METÁLICA |
| 251 | 1.2.7.15.2 | Análise Tecnored | inactive | 1d | 2026-06-10 | 2026-06-10 | 250 | 2026-06-05 | 2026-06-05 | 1d | 2026-06-05 | 2026-06-05 | 17d | 0d | ESTRUTURA METÁLICA |
| 252 | 1.2.7.15.3 | Atendimento de comentários | inactive | 2d | 2026-06-11 | 2026-06-12 | 251 | 2026-06-08 | 2026-06-09 | 2d | 2026-06-08 | 2026-06-09 | 17d | 0d | ESTRUTURA METÁLICA |
| 253 | 1.2.7.15.4 | Aprovação | inactive | 1d | 2026-06-15 | 2026-06-15 | 252 | 2026-06-10 | 2026-06-10 | 1d | 2026-06-10 | 2026-06-10 | 17d |  | ESTRUTURA METÁLICA |

| ID | WBS | Task | Type | Duration | Start | Finish | Predecessors | Baseline start | Baseline finish | Baseline duration | Baseline 1 start | Baseline 1 finish | Total slack | Free slack | Baseline cost | Disciplina |
| --- | --- | --- | --- | --- | --- | --- | --- | --- | --- | --- | --- | --- | --- | --- | --- | --- |
| 254 | 1.2.7.16 | **AG-F0009-0305-MB-T-00006** | inactive | 7d | 2026-06-03 | 2026-06-15 |  | 2026-06-02 | 2026-06-10 | 7d | 2026-06-02 | 2026-06-10 | 17d |  |  | ESTRUTURA METÁLICA |
| 255 | 1.2.7.16.1 | Emissão inicial | inactive | 3d | 2026-06-03 | 2026-06-09 | 161 | 2026-06-02 | 2026-06-04 | 3d | 2026-06-02 | 2026-06-04 | 17d | 0d |  | ESTRUTURA METÁLICA |
| 256 | 1.2.7.16.2 | Análise Tecnored | inactive | 1d | 2026-06-10 | 2026-06-10 | 255 | 2026-06-05 | 2026-06-05 | 1d | 2026-06-05 | 2026-06-05 | 17d | 0d |  | ESTRUTURA METÁLICA |
| 257 | 1.2.7.16.3 | Atendimento de comentários | inactive | 2d | 2026-06-11 | 2026-06-12 | 256 | 2026-06-08 | 2026-06-09 | 2d | 2026-06-08 | 2026-06-09 | 17d | 0d |  | ESTRUTURA METÁLICA |
| 258 | 1.2.7.16.4 | Aprovação | inactive | 1d | 2026-06-15 | 2026-06-15 | 257 | 2026-06-10 | 2026-06-10 | 1d | 2026-06-10 | 2026-06-10 | 17d |  |  | ESTRUTURA METÁLICA |
| 259 | 1.2.7.17 | **LK-F0009-0305-MB-T-00001** |  | 6d | 2026-06-24 | 2026-07-01 |  | 2026-06-02 | 2026-06-10 | 7d | 2026-06-02 | 2026-06-10 | 5d |  |  | ESTRUTURA METÁLICA |
| 260 | 1.2.7.17.1 | Emissão inicial |  | 2d | 2026-06-24 | 2026-06-25 | 217 | 2026-06-02 | 2026-06-04 | 3d | 2026-06-02 | 2026-06-04 | 5d | 0d |  | ESTRUTURA METÁLICA |
| 261 | 1.2.7.17.2 | Análise Tecnored |  | 1d | 2026-06-26 | 2026-06-26 | 260 | 2026-06-05 | 2026-06-05 | 1d | 2026-06-05 | 2026-06-05 | 5d | 0d |  | ESTRUTURA METÁLICA |
| 262 | 1.2.7.17.3 | Atendimento de comentários |  | 2d | 2026-06-29 | 2026-06-30 | 261 | 2026-06-08 | 2026-06-09 | 2d | 2026-06-08 | 2026-06-09 | 5d | 0d |  | ESTRUTURA METÁLICA |
| 263 | 1.2.7.17.4 | Aprovação |  | 1d | 2026-07-01 | 2026-07-01 | 262 | 2026-06-10 | 2026-06-10 | 1d | 2026-06-10 | 2026-06-10 | 5d |  |  | ESTRUTURA METÁLICA |
| 264 | 1.2.7.18 | **MC-F0009-0305-MB-T-00002** | inactive | 14d | 2026-05-29 | 2026-06-19 |  | 2026-05-28 | 2026-06-16 | 14d | 2026-05-28 | 2026-06-16 | 13d |  |  | ESTRUTURA METÁLICA |
| 265 | 1.2.7.18.1 | Emissão inicial | inactive | 10d | 2026-05-29 | 2026-06-15 | 159 | 2026-05-28 | 2026-06-10 | 10d | 2026-05-28 | 2026-06-10 | 13d | 0d |  | ESTRUTURA METÁLICA |
| 266 | 1.2.7.18.2 | Análise Tecnored | inactive | 1d | 2026-06-16 | 2026-06-16 | 265 | 2026-06-11 | 2026-06-11 | 1d | 2026-06-11 | 2026-06-11 | 13d | 0d |  | ESTRUTURA METÁLICA |
| 267 | 1.2.7.18.3 | Atendimento de comentários | inactive | 2d | 2026-06-17 | 2026-06-18 | 266 | 2026-06-12 | 2026-06-15 | 2d | 2026-06-12 | 2026-06-15 | 13d | 0d |  | ESTRUTURA METÁLICA |
| 268 | 1.2.7.18.4 | Aprovação | inactive | 1d | 2026-06-19 | 2026-06-19 | 267 | 2026-06-16 | 2026-06-16 | 1d | 2026-06-16 | 2026-06-16 | 13d |  |  | ESTRUTURA METÁLICA |
| 269 | 1.2.8 | **Estrutura metálica** |  | 15d | 2026-06-15 | 2026-07-03 |  | 2026-06-15 | 2026-07-08 | 18d | 2026-06-15 | 2026-07-08 | 3d |  |  | ESTRUTURA METÁLICA |
| 270 | 1.2.8.1 | **CP-F0009-0305-MB-S-00001** | inactive | 21d | 2026-05-12 | 2026-06-11 |  |  |  |  |  |  | 19d |  | -0 |  |
| 271 | 1.2.8.1.1 | Emissão inicial | inactive | 3d | 2026-05-12 | 2026-05-14 | 26FS+5d |  |  |  |  |  | 33d | 14d | -0 |  |
| 272 | 1.2.8.1.2 | Análise Tecnored | inactive | 1d | 2026-06-08 | 2026-06-08 | 271, 14 |  |  |  |  |  | 19d | 0d | -0 |  |
| 273 | 1.2.8.1.3 | Atendimento de comentários | inactive | 2d | 2026-06-09 | 2026-06-10 | 272 |  |  |  |  |  | 19d | 0d | -0 |  |
| 274 | 1.2.8.1.4 | Aprovação | inactive | 1d | 2026-06-11 | 2026-06-11 | 273 |  |  |  |  |  | 19d |  | -0 |  |
| 275 | 1.2.8.2 | **ML-F0009-0305-MB-S-00001** |  | 6d | 2026-06-15 | 2026-06-22 |  | 2026-06-17 | 2026-06-25 | 7d | 2026-06-17 | 2026-06-25 | 3d |  |  | ESTRUTURA METÁLICA |
| 276 | 1.2.8.2.1 | Emissão inicial |  | 3d | 2026-06-15 | 2026-06-17 | 291FS-8d | 2026-06-17 | 2026-06-19 | 3d | 2026-06-17 | 2026-06-19 | 3d | 0d |  | ESTRUTURA METÁLICA |
| 277 | 1.2.8.2.2 | Análise Tecnored |  | 1d | 2026-06-18 | 2026-06-18 | 276 | 2026-06-22 | 2026-06-22 | 1d | 2026-06-22 | 2026-06-22 | 3d | 0d |  | ESTRUTURA METÁLICA |
| 278 | 1.2.8.2.3 | Atendimento de comentários |  | 1d | 2026-06-19 | 2026-06-19 | 277 | 2026-06-23 | 2026-06-24 | 2d | 2026-06-23 | 2026-06-24 | 3d | 0d |  | ESTRUTURA METÁLICA |
| 279 | 1.2.8.2.4 | Aprovação |  | 1d | 2026-06-22 | 2026-06-22 | 278 | 2026-06-25 | 2026-06-25 | 1d | 2026-06-25 | 2026-06-25 | 5d | 0d |  | ESTRUTURA METÁLICA |

| ID | WBS | Task | Duration | Start | Finish | Predecessors | Baseline start | Baseline finish | Baseline duration | Baseline 1 start | Baseline 1 finish | Total slack | Free slack | Disciplina |
| --- | --- | --- | --- | --- | --- | --- | --- | --- | --- | --- | --- | --- | --- | --- |
| 280 | 1.2.8.3 | **PQ-F0009-0305-MB-S-00001** | 5d | 2026-06-25 | 2026-07-01 |  | 2026-06-30 | 2026-07-07 | 6d | 2026-06-30 | 2026-07-07 | 5d |  | ESTRUTURA METÁLICA |
| 281 | 1.2.8.3.1 | Emissão inicial | 2d | 2026-06-25 | 2026-06-26 | 286 | 2026-06-30 | 2026-07-01 | 2d | 2026-06-30 | 2026-07-01 | 5d | 0d | ESTRUTURA METÁLICA |
| 282 | 1.2.8.3.2 | Análise Tecnored | 1d | 2026-06-29 | 2026-06-29 | 281 | 2026-07-02 | 2026-07-02 | 1d | 2026-07-02 | 2026-07-02 | 5d | 0d | ESTRUTURA METÁLICA |
| 283 | 1.2.8.3.3 | Atendimento de comentários | 1d | 2026-06-30 | 2026-06-30 | 282 | 2026-07-03 | 2026-07-06 | 2d | 2026-07-03 | 2026-07-06 | 5d | 0d | ESTRUTURA METÁLICA |
| 284 | 1.2.8.3.4 | Aprovação | 1d | 2026-07-01 | 2026-07-01 | 283 | 2026-07-07 | 2026-07-07 | 1d | 2026-07-07 | 2026-07-07 | 5d |  | ESTRUTURA METÁLICA |
| 285 | 1.2.8.4 | **LM-F0009-0305-MB-S-00001** | 5d | 2026-06-23 | 2026-06-29 |  | 2026-06-26 | 2026-07-03 | 6d | 2026-06-26 | 2026-07-03 | 5d |  | ESTRUTURA METÁLICA |
| 286 | 1.2.8.4.1 | Emissão inicial | 2d | 2026-06-23 | 2026-06-24 | 279 | 2026-06-26 | 2026-06-29 | 2d | 2026-06-26 | 2026-06-29 | 5d | 0d | ESTRUTURA METÁLICA |
| 287 | 1.2.8.4.2 | Análise Tecnored | 1d | 2026-06-25 | 2026-06-25 | 286 | 2026-06-30 | 2026-06-30 | 1d | 2026-06-30 | 2026-06-30 | 7d | 0d | ESTRUTURA METÁLICA |
| 288 | 1.2.8.4.3 | Atendimento de comentários | 1d | 2026-06-26 | 2026-06-26 | 287 | 2026-07-01 | 2026-07-02 | 2d | 2026-07-01 | 2026-07-02 | 7d | 0d | ESTRUTURA METÁLICA |
| 289 | 1.2.8.4.4 | Aprovação | 1d | 2026-06-29 | 2026-06-29 | 288 | 2026-07-03 | 2026-07-03 | 1d | 2026-07-03 | 2026-07-03 | 7d |  | ESTRUTURA METÁLICA |
| 290 | 1.2.8.5 | **MC-F0009-0305-MB-S-00001** | 8d | 2026-06-18 | 2026-06-29 |  | 2026-06-15 | 2026-06-25 | 9d | 2026-06-15 | 2026-06-25 | 0d |  | ESTRUTURA METÁLICA |
| 291 | 1.2.8.5.1 | Emissão inicial | 5d | 2026-06-18 | 2026-06-24 | 155 | 2026-06-15 | 2026-06-19 | 5d | 2026-06-15 | 2026-06-19 | 0d |  | ESTRUTURA METÁLICA |
| 292 | 1.2.8.5.2 | Análise Tecnored | 1d | 2026-06-25 | 2026-06-25 | 291 | 2026-06-22 | 2026-06-22 | 1d | 2026-06-22 | 2026-06-22 | 7d | 0d | ESTRUTURA METÁLICA |
| 293 | 1.2.8.5.3 | Atendimento de comentários | 1d | 2026-06-26 | 2026-06-26 | 292 | 2026-06-23 | 2026-06-24 | 2d | 2026-06-23 | 2026-06-24 | 7d | 0d | ESTRUTURA METÁLICA |
| 294 | 1.2.8.5.4 | Aprovação | 1d | 2026-06-29 | 2026-06-29 | 293 | 2026-06-25 | 2026-06-25 | 1d | 2026-06-25 | 2026-06-25 | 7d |  | ESTRUTURA METÁLICA |
| 295 | 1.2.8.6 | **AG-F0009-0305-MB-S-00001** | 9d | 2026-06-22 | 2026-07-02 |  | 2026-06-25 | 2026-07-08 | 10d | 2026-06-25 | 2026-07-08 | 4d |  | ESTRUTURA METÁLICA |
| 296 | 1.2.8.6.1 | Emissão inicial | 6d | 2026-06-22 | 2026-06-29 | 278 | 2026-06-25 | 2026-07-02 | 6d | 2026-06-25 | 2026-07-02 | 4d | 0d | ESTRUTURA METÁLICA |
| 297 | 1.2.8.6.2 | Análise Tecnored | 1d | 2026-06-30 | 2026-06-30 | 296 | 2026-07-03 | 2026-07-03 | 1d | 2026-07-03 | 2026-07-03 | 4d | 0d | ESTRUTURA METÁLICA |
| 298 | 1.2.8.6.3 | Atendimento de comentários | 1d | 2026-07-01 | 2026-07-01 | 297 | 2026-07-06 | 2026-07-07 | 2d | 2026-07-06 | 2026-07-07 | 4d | 0d | ESTRUTURA METÁLICA |
| 299 | 1.2.8.6.4 | Aprovação | 1d | 2026-07-02 | 2026-07-02 | 298 | 2026-07-08 | 2026-07-08 | 1d | 2026-07-08 | 2026-07-08 | 4d |  | ESTRUTURA METÁLICA |
| 300 | 1.2.8.7 | **AG-F0009-0305-MB-S-00002** | 9d | 2026-06-22 | 2026-07-02 |  | 2026-06-25 | 2026-07-08 | 10d | 2026-06-25 | 2026-07-08 | 4d |  | ESTRUTURA METÁLICA |
| 301 | 1.2.8.7.1 | Emissão inicial | 6d | 2026-06-22 | 2026-06-29 | 278 | 2026-06-25 | 2026-07-02 | 6d | 2026-06-25 | 2026-07-02 | 4d | 0d | ESTRUTURA METÁLICA |
| 302 | 1.2.8.7.2 | Análise Tecnored | 1d | 2026-06-30 | 2026-06-30 | 301 | 2026-07-03 | 2026-07-03 | 1d | 2026-07-03 | 2026-07-03 | 4d | 0d | ESTRUTURA METÁLICA |
| 303 | 1.2.8.7.3 | Atendimento de comentários | 1d | 2026-07-01 | 2026-07-01 | 302 | 2026-07-06 | 2026-07-07 | 2d | 2026-07-06 | 2026-07-07 | 4d | 0d | ESTRUTURA METÁLICA |
| 304 | 1.2.8.7.4 | Aprovação | 1d | 2026-07-02 | 2026-07-02 | 303 | 2026-07-08 | 2026-07-08 | 1d | 2026-07-08 | 2026-07-08 | 4d |  | ESTRUTURA METÁLICA |

| ID | WBS | Task | Duration | Start | Finish | Predecessors | Baseline start | Baseline finish | Baseline duration | Baseline 1 start | Baseline 1 finish | Total slack | Free slack | Disciplina |
| --- | --- | --- | --- | --- | --- | --- | --- | --- | --- | --- | --- | --- | --- | --- |
| 305 | 1.2.8.8 | **AG-F0009-0305-MB-S-00003** | 9d | 2026-06-22 | 2026-07-02 |  | 2026-06-25 | 2026-07-08 | 10d | 2026-06-25 | 2026-07-08 | 4d |  | ESTRUTURA METÁLICA |
| 306 | 1.2.8.8.1 | Emissão inicial | 6d | 2026-06-22 | 2026-06-29 | 278 | 2026-06-25 | 2026-07-02 | 6d | 2026-06-25 | 2026-07-02 | 4d | 0d | ESTRUTURA METÁLICA |
| 307 | 1.2.8.8.2 | Análise Tecnored | 1d | 2026-06-30 | 2026-06-30 | 306 | 2026-07-03 | 2026-07-03 | 1d | 2026-07-03 | 2026-07-03 | 4d | 0d | ESTRUTURA METÁLICA |
| 308 | 1.2.8.8.3 | Atendimento de comentários | 1d | 2026-07-01 | 2026-07-01 | 307 | 2026-07-06 | 2026-07-07 | 2d | 2026-07-06 | 2026-07-07 | 4d | 0d | ESTRUTURA METÁLICA |
| 309 | 1.2.8.8.4 | Aprovação | 1d | 2026-07-02 | 2026-07-02 | 308 | 2026-07-08 | 2026-07-08 | 1d | 2026-07-08 | 2026-07-08 | 4d |  | ESTRUTURA METÁLICA |
| 310 | 1.2.8.9 | **AG-F0009-0305-MB-S-00004** | 9d | 2026-06-22 | 2026-07-02 |  | 2026-06-25 | 2026-07-08 | 10d | 2026-06-25 | 2026-07-08 | 4d |  | ESTRUTURA METÁLICA |
| 311 | 1.2.8.9.1 | Emissão inicial | 6d | 2026-06-22 | 2026-06-29 | 278 | 2026-06-25 | 2026-07-02 | 6d | 2026-06-25 | 2026-07-02 | 4d | 0d | ESTRUTURA METÁLICA |
| 312 | 1.2.8.9.2 | Análise Tecnored | 1d | 2026-06-30 | 2026-06-30 | 311 | 2026-07-03 | 2026-07-03 | 1d | 2026-07-03 | 2026-07-03 | 4d | 0d | ESTRUTURA METÁLICA |
| 313 | 1.2.8.9.3 | Atendimento de comentários | 1d | 2026-07-01 | 2026-07-01 | 312 | 2026-07-06 | 2026-07-07 | 2d | 2026-07-06 | 2026-07-07 | 4d | 0d | ESTRUTURA METÁLICA |
| 314 | 1.2.8.9.4 | Aprovação | 1d | 2026-07-02 | 2026-07-02 | 313 | 2026-07-08 | 2026-07-08 | 1d | 2026-07-08 | 2026-07-08 | 4d |  | ESTRUTURA METÁLICA |
| 315 | 1.2.8.10 | **AG-F0009-0305-MB-S-00005** | 10d | 2026-06-22 | 2026-07-03 |  | 2026-06-25 | 2026-07-08 | 10d | 2026-06-25 | 2026-07-08 | 3d |  | ESTRUTURA METÁLICA |
| 316 | 1.2.8.10.1 | Emissão inicial | 6d | 2026-06-22 | 2026-06-29 | 278 | 2026-06-25 | 2026-07-02 | 6d | 2026-06-25 | 2026-07-02 | 3d | 0d | ESTRUTURA METÁLICA |
| 317 | 1.2.8.10.2 | Análise Tecnored | 1d | 2026-06-30 | 2026-06-30 | 316 | 2026-07-03 | 2026-07-03 | 1d | 2026-07-03 | 2026-07-03 | 3d | 0d | ESTRUTURA METÁLICA |
| 318 | 1.2.8.10.3 | Atendimento de comentários | 2d | 2026-07-01 | 2026-07-02 | 317 | 2026-07-06 | 2026-07-07 | 2d | 2026-07-06 | 2026-07-07 | 3d | 0d | ESTRUTURA METÁLICA |
| 319 | 1.2.8.10.4 | Aprovação | 1d | 2026-07-03 | 2026-07-03 | 318 | 2026-07-08 | 2026-07-08 | 1d | 2026-07-08 | 2026-07-08 | 3d |  | ESTRUTURA METÁLICA |
| 320 | 1.2.8.11 | **AG-F0009-0305-MB-S-00006** | 9d | 2026-06-22 | 2026-07-02 |  | 2026-06-25 | 2026-07-08 | 10d | 2026-06-25 | 2026-07-08 | 4d |  | ELÉTRICA |
| 321 | 1.2.8.11.1 | Emissão inicial | 6d | 2026-06-22 | 2026-06-29 | 278 | 2026-06-25 | 2026-07-02 | 6d | 2026-06-25 | 2026-07-02 | 4d | 0d | ELÉTRICA |
| 322 | 1.2.8.11.2 | Análise Tecnored | 1d | 2026-06-30 | 2026-06-30 | 321 | 2026-07-03 | 2026-07-03 | 1d | 2026-07-03 | 2026-07-03 | 4d | 0d | ELÉTRICA |
| 323 | 1.2.8.11.3 | Atendimento de comentários | 1d | 2026-07-01 | 2026-07-01 | 322 | 2026-07-06 | 2026-07-07 | 2d | 2026-07-06 | 2026-07-07 | 4d | 0d | ELÉTRICA |
| 324 | 1.2.8.11.4 | Aprovação | 1d | 2026-07-02 | 2026-07-02 | 323 | 2026-07-08 | 2026-07-08 | 1d | 2026-07-08 | 2026-07-08 | 4d |  | ELÉTRICA |
| 325 | 1.2.8.12 | **AG-F0009-0305-MB-S-00007** | 9d | 2026-06-22 | 2026-07-02 |  | 2026-06-25 | 2026-07-08 | 10d | 2026-06-25 | 2026-07-08 | 4d |  | ELÉTRICA |
| 326 | 1.2.8.12.1 | Emissão inicial | 6d | 2026-06-22 | 2026-06-29 | 278 | 2026-06-25 | 2026-07-02 | 6d | 2026-06-25 | 2026-07-02 | 4d | 0d | ELÉTRICA |
| 327 | 1.2.8.12.2 | Análise Tecnored | 1d | 2026-06-30 | 2026-06-30 | 326 | 2026-07-03 | 2026-07-03 | 1d | 2026-07-03 | 2026-07-03 | 4d | 0d | ELÉTRICA |
| 328 | 1.2.8.12.3 | Atendimento de comentários | 1d | 2026-07-01 | 2026-07-01 | 327 | 2026-07-06 | 2026-07-07 | 2d | 2026-07-06 | 2026-07-07 | 4d | 0d | ELÉTRICA |
| 329 | 1.2.8.12.4 | Aprovação | 1d | 2026-07-02 | 2026-07-02 | 328 | 2026-07-08 | 2026-07-08 | 1d | 2026-07-08 | 2026-07-08 | 4d |  | ELÉTRICA |

| ID | WBS | Task | Type | Duration | Start | Finish | Predecessors | Complete | Remaining | Baseline start | Baseline finish | Baseline duration | Baseline 1 start | Baseline 1 finish | Total slack | Free slack | Baseline cost | Disciplina |
| --- | --- | --- | --- | --- | --- | --- | --- | --- | --- | --- | --- | --- | --- | --- | --- | --- | --- | --- |
| 330 | 1.2.8.13 | **AG-F0009-0305-MB-S-00008** |  | 9d | 2026-06-22 | 2026-07-02 |  |  |  | 2026-06-25 | 2026-07-08 | 10d | 2026-06-25 | 2026-07-08 | 4d |  |  | ELÉTRICA |
| 331 | 1.2.8.13.1 | Emissão inicial |  | 6d | 2026-06-22 | 2026-06-29 | 278 |  |  | 2026-06-25 | 2026-07-02 | 6d | 2026-06-25 | 2026-07-02 | 4d | 0d |  | ELÉTRICA |
| 332 | 1.2.8.13.2 | Análise Tecnored |  | 1d | 2026-06-30 | 2026-06-30 | 331 |  |  | 2026-07-03 | 2026-07-03 | 1d | 2026-07-03 | 2026-07-03 | 4d | 0d |  | ELÉTRICA |
| 333 | 1.2.8.13.3 | Atendimento de comentários |  | 1d | 2026-07-01 | 2026-07-01 | 332 |  |  | 2026-07-06 | 2026-07-07 | 2d | 2026-07-06 | 2026-07-07 | 4d | 0d |  | ELÉTRICA |
| 334 | 1.2.8.13.4 | Aprovação |  | 1d | 2026-07-02 | 2026-07-02 | 333 |  |  | 2026-07-08 | 2026-07-08 | 1d | 2026-07-08 | 2026-07-08 | 4d |  |  | ELÉTRICA |
| 335 | 1.2.8.14 | **AG-F0009-0305-MB-S-00009** |  | 9d | 2026-06-22 | 2026-07-02 |  |  |  | 2026-06-25 | 2026-07-08 | 10d | 2026-06-25 | 2026-07-08 | 4d |  |  | ELÉTRICA |
| 336 | 1.2.8.14.1 | Emissão inicial |  | 6d | 2026-06-22 | 2026-06-29 | 278 |  |  | 2026-06-25 | 2026-07-02 | 6d | 2026-06-25 | 2026-07-02 | 4d | 0d |  | ELÉTRICA |
| 337 | 1.2.8.14.2 | Análise Tecnored |  | 1d | 2026-06-30 | 2026-06-30 | 336 |  |  | 2026-07-03 | 2026-07-03 | 1d | 2026-07-03 | 2026-07-03 | 4d | 0d |  | ELÉTRICA |
| 338 | 1.2.8.14.3 | Atendimento de comentários |  | 1d | 2026-07-01 | 2026-07-01 | 337 |  |  | 2026-07-06 | 2026-07-07 | 2d | 2026-07-06 | 2026-07-07 | 4d | 0d |  | ELÉTRICA |
| 339 | 1.2.8.14.4 | Aprovação |  | 1d | 2026-07-02 | 2026-07-02 | 338 |  |  | 2026-07-08 | 2026-07-08 | 1d | 2026-07-08 | 2026-07-08 | 4d |  |  | ELÉTRICA |
| 340 | 1.2.8.15 | **AG-F0009-0305-MB-S-00010** |  | 9d | 2026-06-22 | 2026-07-02 |  |  |  | 2026-06-25 | 2026-07-08 | 10d | 2026-06-25 | 2026-07-08 | 4d |  |  | ELÉTRICA |
| 341 | 1.2.8.15.1 | Emissão inicial |  | 6d | 2026-06-22 | 2026-06-29 | 278 |  |  | 2026-06-25 | 2026-07-02 | 6d | 2026-06-25 | 2026-07-02 | 4d | 0d |  | ELÉTRICA |
| 342 | 1.2.8.15.2 | Análise Tecnored |  | 1d | 2026-06-30 | 2026-06-30 | 341 |  |  | 2026-07-03 | 2026-07-03 | 1d | 2026-07-03 | 2026-07-03 | 4d | 0d |  | ELÉTRICA |
| 343 | 1.2.8.15.3 | Atendimento de comentários |  | 1d | 2026-07-01 | 2026-07-01 | 342 |  |  | 2026-07-06 | 2026-07-07 | 2d | 2026-07-06 | 2026-07-07 | 4d | 0d |  | ELÉTRICA |
| 344 | 1.2.8.15.4 | Aprovação |  | 1d | 2026-07-02 | 2026-07-02 | 343 |  |  | 2026-07-08 | 2026-07-08 | 1d | 2026-07-08 | 2026-07-08 | 4d |  |  | ELÉTRICA |
| 345 | 1.2.8.16 | **PL-F0009-0305-MB-S-00001** |  | 8d | 2026-06-22 | 2026-07-01 |  |  |  | 2026-06-25 | 2026-07-07 | 9d | 2026-06-25 | 2026-07-07 | 5d |  |  | ELÉTRICA |
| 346 | 1.2.8.16.1 | Emissão inicial |  | 5d | 2026-06-22 | 2026-06-26 | 278 |  |  | 2026-06-25 | 2026-07-01 | 5d | 2026-06-25 | 2026-07-01 | 5d | 0d |  | ELÉTRICA |
| 347 | 1.2.8.16.2 | Análise Tecnored |  | 1d | 2026-06-29 | 2026-06-29 | 346 |  |  | 2026-07-02 | 2026-07-02 | 1d | 2026-07-02 | 2026-07-02 | 5d | 0d |  | ELÉTRICA |
| 348 | 1.2.8.16.3 | Atendimento de comentários |  | 1d | 2026-06-30 | 2026-06-30 | 347 |  |  | 2026-07-03 | 2026-07-06 | 2d | 2026-07-03 | 2026-07-06 | 5d | 0d |  | ELÉTRICA |
| 349 | 1.2.8.16.4 | Aprovação |  | 1d | 2026-07-01 | 2026-07-01 | 348 |  |  | 2026-07-07 | 2026-07-07 | 1d | 2026-07-07 | 2026-07-07 | 5d |  |  | ELÉTRICA |
| 350 | 1.2.9 | **Elétrica** |  | 28d | 2026-05-28 A | 2026-07-08 |  | 13% | 24.35d | 2026-05-21 | 2026-07-08 | 35d | 2026-05-21 | 2026-07-08 | 0d |  |  | ELÉTRICA |
| 351 | 1.2.9.1 | **CP-F0009-0305-MB-E-00001** | inactive | 23d | 2026-05-08 | 2026-06-11 |  |  |  |  |  |  |  |  | 19d |  | -0 |  |
| 352 | 1.2.9.1.1 | Emissão inicial | inactive | 5d | 2026-05-08 | 2026-05-14 | 26FS+3d |  |  |  |  |  |  |  | 33d | 14d | -0 |  |
| 353 | 1.2.9.1.2 | Análise Tecnored | inactive | 1d | 2026-06-08 | 2026-06-08 | 352, 12 |  |  |  |  |  |  |  | 19d | 0d | -0 |  |
| 354 | 1.2.9.1.3 | Atendimento de comentários | inactive | 2d | 2026-06-09 | 2026-06-10 | 353 |  |  |  |  |  |  |  | 19d | 0d | -0 |  |
| 355 | 1.2.9.1.4 | Aprovação | inactive | 1d | 2026-06-11 | 2026-06-11 | 354 |  |  |  |  |  |  |  | 19d |  | -0 |  |

| ID | WBS | Task | Duration | Start | Finish | Predecessors | Complete | Remaining | Baseline start | Baseline finish | Baseline duration | Baseline 1 start | Baseline 1 finish | Total slack | Free slack | Disciplina |
| --- | --- | --- | --- | --- | --- | --- | --- | --- | --- | --- | --- | --- | --- | --- | --- | --- |
| 356 | 1.2.9.2 | **ML-F0009-0305-MB-E-00001** | 10d | 2026-06-17 | 2026-06-30 |  |  |  | 2026-06-15 | 2026-06-29 | 11d | 2026-06-15 | 2026-06-29 | 0d |  | ELÉTRICA |
| 357 | 1.2.9.2.1 | Emissão inicial | 7d | 2026-06-17 | 2026-06-25 | 392FS-5d |  |  | 2026-06-15 | 2026-06-23 | 7d | 2026-06-15 | 2026-06-23 | 0d |  | ELÉTRICA |
| 358 | 1.2.9.2.2 | Análise Tecnored | 1d | 2026-06-26 | 2026-06-26 | 357 |  |  | 2026-06-24 | 2026-06-24 | 1d | 2026-06-24 | 2026-06-24 | 6d | 0d | ELÉTRICA |
| 359 | 1.2.9.2.3 | Atendimento de comentários | 1d | 2026-06-29 | 2026-06-29 | 358 |  |  | 2026-06-25 | 2026-06-26 | 2d | 2026-06-25 | 2026-06-26 | 6d | 0d | ELÉTRICA |
| 360 | 1.2.9.2.4 | Aprovação | 1d | 2026-06-30 | 2026-06-30 | 359 |  |  | 2026-06-29 | 2026-06-29 | 1d | 2026-06-29 | 2026-06-29 | 6d |  | ELÉTRICA |
| 361 | 1.2.9.3 | **RL-F0009-0305-MB-E-00001** | 6d | 2026-06-02 A | 2026-06-11 |  | 75% | 1.5d | 2026-05-26 | 2026-06-03 | 7d | 2026-05-26 | 2026-06-03 | 19d |  | ELÉTRICA |
| 362 | 1.2.9.3.1 | Emissão inicial | 3d | 2026-06-02 A | 2026-06-08 A | 372 | 100% |  | 2026-05-26 | 2026-05-28 | 3d | 2026-05-26 | 2026-05-28 |  |  | ELÉTRICA |
| 363 | 1.2.9.3.2 | Análise Tecnored | 1d | 2026-06-09 A | 2026-06-09 A | 362 | 100% |  | 2026-05-29 | 2026-05-29 | 1d | 2026-05-29 | 2026-05-29 |  |  | ELÉTRICA |
| 364 | 1.2.9.3.3 | Atendimento de comentários | 1d | 2026-06-10 A | 2026-06-10 | 363 | 50% | 0.5d | 2026-06-01 | 2026-06-02 | 2d | 2026-06-01 | 2026-06-02 | 19d | 0d | ELÉTRICA |
| 365 | 1.2.9.3.4 | Aprovação | 1d | 2026-06-11 | 2026-06-11 | 364 |  |  | 2026-06-03 | 2026-06-03 | 1d | 2026-06-03 | 2026-06-03 | 19d |  | ELÉTRICA |
| 366 | 1.2.9.4 | **LE-F0009-0305-MB-E-00001** | 6d | 2026-06-24 | 2026-07-01 |  |  |  | 2026-06-15 | 2026-06-23 | 7d | 2026-06-15 | 2026-06-23 | 5d |  | ELÉTRICA |
| 367 | 1.2.9.4.1 | Emissão inicial | 3d | 2026-06-24 | 2026-06-26 | 392 |  |  | 2026-06-15 | 2026-06-17 | 3d | 2026-06-15 | 2026-06-17 | 5d | 0d | ELÉTRICA |
| 368 | 1.2.9.4.2 | Análise Tecnored | 1d | 2026-06-29 | 2026-06-29 | 367 |  |  | 2026-06-18 | 2026-06-18 | 1d | 2026-06-18 | 2026-06-18 | 5d | 0d | ELÉTRICA |
| 369 | 1.2.9.4.3 | Atendimento de comentários | 1d | 2026-06-30 | 2026-06-30 | 368 |  |  | 2026-06-19 | 2026-06-22 | 2d | 2026-06-19 | 2026-06-22 | 5d | 0d | ELÉTRICA |
| 370 | 1.2.9.4.4 | Aprovação | 1d | 2026-07-01 | 2026-07-01 | 369 |  |  | 2026-06-23 | 2026-06-23 | 1d | 2026-06-23 | 2026-06-23 | 5d |  | ELÉTRICA |
| 371 | 1.2.9.5 | **LR-F0009-0305-MB-E-00001** | 6d | 2026-05-28 A | 2026-06-08 |  | 75% | 1.5d | 2026-05-21 | 2026-05-29 | 7d | 2026-05-21 | 2026-05-29 | 22d |  | ELÉTRICA |
| 372 | 1.2.9.5.1 | Emissão inicial | 3d | 2026-05-28 A | 2026-06-01 A | 79 | 100% |  | 2026-05-21 | 2026-05-25 | 3d | 2026-05-21 | 2026-05-25 |  |  | ELÉTRICA |
| 373 | 1.2.9.5.2 | Análise Tecnored | 1d | 2026-06-02 A | 2026-06-02 A | 372 | 100% |  | 2026-05-26 | 2026-05-26 | 1d | 2026-05-26 | 2026-05-26 |  |  | ELÉTRICA |
| 374 | 1.2.9.5.3 | Atendimento de comentários | 1d | 2026-06-03 A | 2026-06-03 | 373 | 50% | 0.5d | 2026-05-27 | 2026-05-28 | 2d | 2026-05-27 | 2026-05-28 | 22d | 0d | ELÉTRICA |
| 375 | 1.2.9.5.4 | Aprovação | 1d | 2026-06-08 | 2026-06-08 | 374 |  |  | 2026-05-29 | 2026-05-29 | 1d | 2026-05-29 | 2026-05-29 | 22d |  | ELÉTRICA |
| 376 | 1.2.9.6 | **LM-F0009-0305-MB-E-00001** | 5d | 2026-07-02 | 2026-07-08 |  |  |  | 2026-06-30 | 2026-07-07 | 6d | 2026-06-30 | 2026-07-07 | 0d |  | ELÉTRICA |
| 377 | 1.2.9.6.1 | Emissão inicial | 2d | 2026-07-02 | 2026-07-03 | 398 |  |  | 2026-06-30 | 2026-07-01 | 2d | 2026-06-30 | 2026-07-01 | 0d |  | ELÉTRICA |
| 378 | 1.2.9.6.2 | Análise Tecnored | 1d | 2026-07-06 | 2026-07-06 | 377 |  |  | 2026-07-02 | 2026-07-02 | 1d | 2026-07-02 | 2026-07-02 | 0d |  | ELÉTRICA |
| 379 | 1.2.9.6.3 | Atendimento de comentários | 1d | 2026-07-07 | 2026-07-07 | 378 |  |  | 2026-07-03 | 2026-07-06 | 2d | 2026-07-03 | 2026-07-06 | 0d |  | ELÉTRICA |
| 380 | 1.2.9.6.4 | Aprovação | 1d | 2026-07-08 | 2026-07-08 | 379 |  |  | 2026-07-07 | 2026-07-07 | 1d | 2026-07-07 | 2026-07-07 | 0d |  | ELÉTRICA |

| ID | WBS | Task | Type | Duration | Start | Finish | Predecessors | Baseline start | Baseline finish | Baseline duration | Baseline 1 start | Baseline 1 finish | Total slack | Free slack | Disciplina |
| --- | --- | --- | --- | --- | --- | --- | --- | --- | --- | --- | --- | --- | --- | --- | --- |
| 381 | 1.2.9.7 | **PQ-F0009-0305-MB-E-00001** |  | 4d | 2026-07-02 | 2026-07-07 |  | 2026-07-02 | 2026-07-08 | 5d | 2026-07-02 | 2026-07-08 | 1d |  | AUTOMAÇÃO E INSTRUMENTAÇÃO |
| 382 | 1.2.9.7.1 | Emissão inicial |  | 1d | 2026-07-02 | 2026-07-02 | 377SS | 2026-07-02 | 2026-07-02 | 1d | 2026-07-02 | 2026-07-02 | 1d | 0d | AUTOMAÇÃO E INSTRUMENTAÇÃO |
| 383 | 1.2.9.7.2 | Análise Tecnored |  | 1d | 2026-07-03 | 2026-07-03 | 382 | 2026-07-03 | 2026-07-03 | 1d | 2026-07-03 | 2026-07-03 | 1d | 0d | AUTOMAÇÃO E INSTRUMENTAÇÃO |
| 384 | 1.2.9.7.3 | Atendimento de comentários |  | 1d | 2026-07-06 | 2026-07-06 | 383 | 2026-07-06 | 2026-07-07 | 2d | 2026-07-06 | 2026-07-07 | 1d | 0d | AUTOMAÇÃO E INSTRUMENTAÇÃO |
| 385 | 1.2.9.7.4 | Aprovação |  | 1d | 2026-07-07 | 2026-07-07 | 384 | 2026-07-08 | 2026-07-08 | 1d | 2026-07-08 | 2026-07-08 | 1d |  | AUTOMAÇÃO E INSTRUMENTAÇÃO |
| 386 | 1.2.9.8 | **MD-F0009-0305-MB-E-00001** | inactive | 7d | 2026-07-02 | 2026-07-10 |  | 2026-06-30 | 2026-07-08 | 7d | 2026-06-30 | 2026-07-08 | -2d | 0d |  |
| 387 | 1.2.9.8.1 | Emissão inicial | inactive | 3d | 2026-07-02 | 2026-07-06 | 377FS-2d | 2026-06-30 | 2026-07-02 | 3d | 2026-06-30 | 2026-07-02 | -2d | 0d |  |
| 388 | 1.2.9.8.2 | Análise Tecnored | inactive | 1d | 2026-07-07 | 2026-07-07 | 387 | 2026-07-03 | 2026-07-03 | 1d | 2026-07-03 | 2026-07-03 | -2d | 0d |  |
| 389 | 1.2.9.8.3 | Atendimento de comentários | inactive | 2d | 2026-07-08 | 2026-07-09 | 388 | 2026-07-06 | 2026-07-07 | 2d | 2026-07-06 | 2026-07-07 | -2d | 0d |  |
| 390 | 1.2.9.8.4 | Aprovação | inactive | 1d | 2026-07-10 | 2026-07-10 | 389 | 2026-07-08 | 2026-07-08 | 1d | 2026-07-08 | 2026-07-08 | -2d | 0d |  |
| 391 | 1.2.9.9 | **MC-F0009-0305-MB-E-00001** |  | 8d | 2026-06-17 | 2026-06-26 |  | 2026-06-08 | 2026-06-18 | 9d | 2026-06-08 | 2026-06-18 | 0d |  | AUTOMAÇÃO E INSTRUMENTAÇÃO |
| 392 | 1.2.9.9.1 | Emissão inicial |  | 5d | 2026-06-17 | 2026-06-23 | 412 | 2026-06-08 | 2026-06-12 | 5d | 2026-06-08 | 2026-06-12 | 0d |  | AUTOMAÇÃO E INSTRUMENTAÇÃO |
| 393 | 1.2.9.9.2 | Análise Tecnored |  | 1d | 2026-06-24 | 2026-06-24 | 392 | 2026-06-15 | 2026-06-15 | 1d | 2026-06-15 | 2026-06-15 | 8d | 0d | AUTOMAÇÃO E INSTRUMENTAÇÃO |
| 394 | 1.2.9.9.3 | Atendimento de comentários |  | 1d | 2026-06-25 | 2026-06-25 | 393 | 2026-06-16 | 2026-06-17 | 2d | 2026-06-16 | 2026-06-17 | 8d | 0d | AUTOMAÇÃO E INSTRUMENTAÇÃO |
| 395 | 1.2.9.9.4 | Aprovação |  | 1d | 2026-06-26 | 2026-06-26 | 394 | 2026-06-18 | 2026-06-18 | 1d | 2026-06-18 | 2026-06-18 | 8d |  | AUTOMAÇÃO E INSTRUMENTAÇÃO |
| 396 | 1.2.9.10 | **AG-F0009-0305-MB-E-00001** |  | 6d | 2026-06-26 | 2026-07-03 |  | 2026-06-24 | 2026-07-02 | 7d | 2026-06-24 | 2026-07-02 | 0d |  | AUTOMAÇÃO E INSTRUMENTAÇÃO |
| 397 | 1.2.9.10.1 | Emissão inicial |  | 3d | 2026-06-26 | 2026-06-30 | 357 | 2026-06-24 | 2026-06-26 | 3d | 2026-06-24 | 2026-06-26 | 0d |  | AUTOMAÇÃO E INSTRUMENTAÇÃO |
| 398 | 1.2.9.10.2 | Análise Tecnored |  | 1d | 2026-07-01 | 2026-07-01 | 397 | 2026-06-29 | 2026-06-29 | 1d | 2026-06-29 | 2026-06-29 | 0d |  | AUTOMAÇÃO E INSTRUMENTAÇÃO |
| 399 | 1.2.9.10.3 | Atendimento de comentários |  | 1d | 2026-07-02 | 2026-07-02 | 398 | 2026-06-30 | 2026-07-01 | 2d | 2026-06-30 | 2026-07-01 | 3d | 0d | AUTOMAÇÃO E INSTRUMENTAÇÃO |
| 400 | 1.2.9.10.4 | Aprovação |  | 1d | 2026-07-03 | 2026-07-03 | 399 | 2026-07-02 | 2026-07-02 | 1d | 2026-07-02 | 2026-07-02 | 3d |  | AUTOMAÇÃO E INSTRUMENTAÇÃO |
| 401 | 1.2.9.11 | **DU-F0009-0305-MB-E-00001** |  | 6d | 2026-06-09 | 2026-06-16 |  | 2026-05-29 | 2026-06-08 | 7d | 2026-05-29 | 2026-06-08 | 0d |  | AUTOMAÇÃO E INSTRUMENTAÇÃO |
| 402 | 1.2.9.11.1 | Emissão inicial |  | 3d | 2026-06-09 | 2026-06-11 | 362 | 2026-05-29 | 2026-06-02 | 3d | 2026-05-29 | 2026-06-02 | 0d |  | AUTOMAÇÃO E INSTRUMENTAÇÃO |
| 403 | 1.2.9.11.2 | Análise Tecnored |  | 1d | 2026-06-12 | 2026-06-12 | 402 | 2026-06-03 | 2026-06-03 | 1d | 2026-06-03 | 2026-06-03 | 16d | 0d | AUTOMAÇÃO E INSTRUMENTAÇÃO |
| 404 | 1.2.9.11.3 | Atendimento de comentários |  | 1d | 2026-06-15 | 2026-06-15 | 403 | 2026-06-04 | 2026-06-05 | 2d | 2026-06-04 | 2026-06-05 | 16d | 0d | AUTOMAÇÃO E INSTRUMENTAÇÃO |
| 405 | 1.2.9.11.4 | Aprovação |  | 1d | 2026-06-16 | 2026-06-16 | 404 | 2026-06-08 | 2026-06-08 | 1d | 2026-06-08 | 2026-06-08 | 16d |  | AUTOMAÇÃO E INSTRUMENTAÇÃO |

| ID | WBS | Task | Type | Duration | Start | Finish | Predecessors | Complete | Remaining | Baseline start | Baseline finish | Baseline duration | Baseline 1 start | Baseline 1 finish | Total slack | Free slack | Baseline cost | Disciplina |
| --- | --- | --- | --- | --- | --- | --- | --- | --- | --- | --- | --- | --- | --- | --- | --- | --- | --- | --- |
| 406 | 1.2.9.12 | **AG-F0009-0305-MB-E-00002** |  | 6d | 2026-06-26 | 2026-07-03 |  |  |  | 2026-06-24 | 2026-07-03 | 8d | 2026-06-24 | 2026-07-03 | 3d |  |  | AUTOMAÇÃO E INSTRUMENTAÇÃO |
| 407 | 1.2.9.12.1 | Emissão inicial |  | 3d | 2026-06-26 | 2026-06-30 | 357 |  |  | 2026-06-24 | 2026-06-29 | 4d | 2026-06-24 | 2026-06-29 | 3d | 0d |  | AUTOMAÇÃO E INSTRUMENTAÇÃO |
| 408 | 1.2.9.12.2 | Análise Tecnored |  | 1d | 2026-07-01 | 2026-07-01 | 407 |  |  | 2026-06-30 | 2026-06-30 | 1d | 2026-06-30 | 2026-06-30 | 3d | 0d |  | AUTOMAÇÃO E INSTRUMENTAÇÃO |
| 409 | 1.2.9.12.3 | Atendimento de comentários |  | 1d | 2026-07-02 | 2026-07-02 | 408 |  |  | 2026-07-01 | 2026-07-02 | 2d | 2026-07-01 | 2026-07-02 | 3d | 0d |  | AUTOMAÇÃO E INSTRUMENTAÇÃO |
| 410 | 1.2.9.12.4 | Aprovação |  | 1d | 2026-07-03 | 2026-07-03 | 409 |  |  | 2026-07-03 | 2026-07-03 | 1d | 2026-07-03 | 2026-07-03 | 3d |  |  | AUTOMAÇÃO E INSTRUMENTAÇÃO |
| 411 | 1.2.9.13 | **FD-F0009-0305-MB-E-00013** |  | 6d | 2026-06-12 | 2026-06-19 |  |  |  | 2026-06-03 | 2026-06-11 | 7d | 2026-06-03 | 2026-06-11 | 0d |  |  | AUTOMAÇÃO E INSTRUMENTAÇÃO |
| 412 | 1.2.9.13.1 | Emissão inicial |  | 3d | 2026-06-12 | 2026-06-16 | 402 |  |  | 2026-06-03 | 2026-06-05 | 3d | 2026-06-03 | 2026-06-05 | 0d |  |  | AUTOMAÇÃO E INSTRUMENTAÇÃO |
| 413 | 1.2.9.13.2 | Análise Tecnored |  | 1d | 2026-06-17 | 2026-06-17 | 412 |  |  | 2026-06-08 | 2026-06-08 | 1d | 2026-06-08 | 2026-06-08 | 13d | 0d |  | AUTOMAÇÃO E INSTRUMENTAÇÃO |
| 414 | 1.2.9.13.3 | Atendimento de comentários |  | 1d | 2026-06-18 | 2026-06-18 | 413 |  |  | 2026-06-09 | 2026-06-10 | 2d | 2026-06-09 | 2026-06-10 | 13d | 0d |  | AUTOMAÇÃO E INSTRUMENTAÇÃO |
| 415 | 1.2.9.13.4 | Aprovação |  | 1d | 2026-06-19 | 2026-06-19 | 414 |  |  | 2026-06-11 | 2026-06-11 | 1d | 2026-06-11 | 2026-06-11 | 13d |  |  | AUTOMAÇÃO E INSTRUMENTAÇÃO |
| 416 | 1.2.10 | **Automação e instrumentação** |  | 24d | 2026-06-03 A | 2026-07-08 |  | 1% | 23.82d | 2026-05-20 | 2026-07-08 | 36d | 2026-05-20 | 2026-07-08 | 0d |  |  | AUTOMAÇÃO E INSTRUMENTAÇÃO |
| 417 | 1.2.10.1 | **CP-F0009-0305-MB-J-00001** | inactive | 9d | 2026-06-08 | 2026-06-18 |  |  |  |  |  |  |  |  | 14d |  | -0 |  |
| 418 | 1.2.10.1.1 | Emissão inicial | inactive | 5d | 2026-06-08 | 2026-06-12 | 26FS+5d, 13 |  |  |  |  |  |  |  | 14d | 0d | -0 |  |
| 419 | 1.2.10.1.2 | Análise Tecnored | inactive | 1d | 2026-06-15 | 2026-06-15 | 418 |  |  |  |  |  |  |  | 14d | 0d | -0 |  |
| 420 | 1.2.10.1.3 | Atendimento de comentários | inactive | 2d | 2026-06-16 | 2026-06-17 | 419 |  |  |  |  |  |  |  | 14d | 0d | -0 |  |
| 421 | 1.2.10.1.4 | Aprovação | inactive | 1d | 2026-06-18 | 2026-06-18 | 420 |  |  |  |  |  |  |  | 14d |  | -0 |  |
| 422 | 1.2.10.2 | **LI-F0009-0305-MB-J-00001** |  | 6d | 2026-06-09 | 2026-06-16 |  |  |  | 2026-05-22 | 2026-06-01 | 7d | 2026-05-22 | 2026-06-01 | 0d |  |  | AUTOMAÇÃO E INSTRUMENTAÇÃO |
| 423 | 1.2.10.2.1 | Emissão inicial |  | 2d | 2026-06-09 | 2026-06-10 | 453 |  |  | 2026-05-22 | 2026-05-26 | 3d | 2026-05-22 | 2026-05-26 | 0d |  |  | AUTOMAÇÃO E INSTRUMENTAÇÃO |
| 424 | 1.2.10.2.2 | Análise Tecnored |  | 1d | 2026-06-11 | 2026-06-11 | 423 |  |  | 2026-05-27 | 2026-05-27 | 1d | 2026-05-27 | 2026-05-27 | 16d | 0d |  | AUTOMAÇÃO E INSTRUMENTAÇÃO |
| 425 | 1.2.10.2.3 | Atendimento de comentários |  | 2d | 2026-06-12 | 2026-06-15 | 424 |  |  | 2026-05-28 | 2026-05-29 | 2d | 2026-05-28 | 2026-05-29 | 16d | 0d |  | AUTOMAÇÃO E INSTRUMENTAÇÃO |
| 426 | 1.2.10.2.4 | Aprovação |  | 1d | 2026-06-16 | 2026-06-16 | 425 |  |  | 2026-06-01 | 2026-06-01 | 1d | 2026-06-01 | 2026-06-01 | 16d |  |  | AUTOMAÇÃO E INSTRUMENTAÇÃO |
| 427 | 1.2.10.3 | **LE-F0009-0305-MB-J-00001** |  | 6d | 2026-07-01 | 2026-07-08 |  |  |  | 2026-06-23 | 2026-07-01 | 7d | 2026-06-23 | 2026-07-01 | 0d |  |  | AUTOMAÇÃO E INSTRUMENTAÇÃO |
| 428 | 1.2.10.3.1 | Emissão inicial |  | 2d | 2026-07-01 | 2026-07-02 | 503 |  |  | 2026-06-23 | 2026-06-25 | 3d | 2026-06-23 | 2026-06-25 | 0d |  |  | AUTOMAÇÃO E INSTRUMENTAÇÃO |
| 429 | 1.2.10.3.2 | Análise Tecnored |  | 1d | 2026-07-03 | 2026-07-03 | 428 |  |  | 2026-06-26 | 2026-06-26 | 1d | 2026-06-26 | 2026-06-26 | 0d |  |  | AUTOMAÇÃO E INSTRUMENTAÇÃO |
| 430 | 1.2.10.3.3 | Atendimento de comentários |  | 2d | 2026-07-06 | 2026-07-07 | 429 |  |  | 2026-06-29 | 2026-06-30 | 2d | 2026-06-29 | 2026-06-30 | 0d |  |  | AUTOMAÇÃO E INSTRUMENTAÇÃO |
| 431 | 1.2.10.3.4 | Aprovação |  | 1d | 2026-07-08 | 2026-07-08 | 430 |  |  | 2026-07-01 | 2026-07-01 | 1d | 2026-07-01 | 2026-07-01 | 0d |  |  | AUTOMAÇÃO E INSTRUMENTAÇÃO |

| ID | WBS | Task | Duration | Start | Finish | Predecessors | Complete | Remaining | Baseline start | Baseline finish | Baseline duration | Baseline 1 start | Baseline 1 finish | Total slack | Free slack | Disciplina |
| --- | --- | --- | --- | --- | --- | --- | --- | --- | --- | --- | --- | --- | --- | --- | --- | --- |
| 432 | 1.2.10.4 | **LZ-F0009-0305-MB-J-00001** | 6d | 2026-06-24 | 2026-07-01 |  |  |  | 2026-06-15 | 2026-06-23 | 7d | 2026-06-15 | 2026-06-23 | 0d |  | AUTOMAÇÃO E INSTRUMENTAÇÃO |
| 433 | 1.2.10.4.1 | Emissão inicial | 2d | 2026-06-24 | 2026-06-25 | 483 |  |  | 2026-06-15 | 2026-06-17 | 3d | 2026-06-15 | 2026-06-17 | 0d |  | AUTOMAÇÃO E INSTRUMENTAÇÃO |
| 434 | 1.2.10.4.2 | Análise Tecnored | 1d | 2026-06-26 | 2026-06-26 | 433 |  |  | 2026-06-18 | 2026-06-18 | 1d | 2026-06-18 | 2026-06-18 | 5d | 0d | AUTOMAÇÃO E INSTRUMENTAÇÃO |
| 435 | 1.2.10.4.3 | Atendimento de comentários | 2d | 2026-06-29 | 2026-06-30 | 434 |  |  | 2026-06-19 | 2026-06-22 | 2d | 2026-06-19 | 2026-06-22 | 5d | 0d | AUTOMAÇÃO E INSTRUMENTAÇÃO |
| 436 | 1.2.10.4.4 | Aprovação | 1d | 2026-07-01 | 2026-07-01 | 435 |  |  | 2026-06-23 | 2026-06-23 | 1d | 2026-06-23 | 2026-06-23 | 5d |  | AUTOMAÇÃO E INSTRUMENTAÇÃO |
| 437 | 1.2.10.5 | **LE-F0009-0305-MB-J-00002** | 6d | 2026-07-01 | 2026-07-08 |  |  |  | 2026-06-23 | 2026-07-01 | 7d | 2026-06-23 | 2026-07-01 | 0d |  | AUTOMAÇÃO E INSTRUMENTAÇÃO |
| 438 | 1.2.10.5.1 | Emissão inicial | 2d | 2026-07-01 | 2026-07-02 | 503 |  |  | 2026-06-23 | 2026-06-25 | 3d | 2026-06-23 | 2026-06-25 | 0d |  | AUTOMAÇÃO E INSTRUMENTAÇÃO |
| 439 | 1.2.10.5.2 | Análise Tecnored | 1d | 2026-07-03 | 2026-07-03 | 438 |  |  | 2026-06-26 | 2026-06-26 | 1d | 2026-06-26 | 2026-06-26 | 0d |  | AUTOMAÇÃO E INSTRUMENTAÇÃO |
| 440 | 1.2.10.5.3 | Atendimento de comentários | 2d | 2026-07-06 | 2026-07-07 | 439 |  |  | 2026-06-29 | 2026-06-30 | 2d | 2026-06-29 | 2026-06-30 | 0d |  | AUTOMAÇÃO E INSTRUMENTAÇÃO |
| 441 | 1.2.10.5.4 | Aprovação | 1d | 2026-07-08 | 2026-07-08 | 440 |  |  | 2026-07-01 | 2026-07-01 | 1d | 2026-07-01 | 2026-07-01 | 0d |  | AUTOMAÇÃO E INSTRUMENTAÇÃO |
| 442 | 1.2.10.6 | **PQ-F0009-0305-MB-J-00001** | 5d | 2026-06-09 | 2026-06-15 |  |  |  | 2026-07-02 | 2026-07-08 | 5d | 2026-07-02 | 2026-07-08 | 17d |  | AUTOMAÇÃO E INSTRUMENTAÇÃO |
| 443 | 1.2.10.6.1 | Emissão inicial | 1d | 2026-06-09 | 2026-06-09 | 498FS-9d |  |  | 2026-07-02 | 2026-07-02 | 1d | 2026-07-02 | 2026-07-02 | 17d | 0d | AUTOMAÇÃO E INSTRUMENTAÇÃO |
| 444 | 1.2.10.6.2 | Análise Tecnored | 1d | 2026-06-10 | 2026-06-10 | 443 |  |  | 2026-07-03 | 2026-07-03 | 1d | 2026-07-03 | 2026-07-03 | 17d | 0d | AUTOMAÇÃO E INSTRUMENTAÇÃO |
| 445 | 1.2.10.6.3 | Atendimento de comentários | 2d | 2026-06-11 | 2026-06-12 | 444 |  |  | 2026-07-06 | 2026-07-07 | 2d | 2026-07-06 | 2026-07-07 | 17d | 0d | AUTOMAÇÃO E INSTRUMENTAÇÃO |
| 446 | 1.2.10.6.4 | Aprovação | 1d | 2026-06-15 | 2026-06-15 | 445 |  |  | 2026-07-08 | 2026-07-08 | 1d | 2026-07-08 | 2026-07-08 | 17d |  | AUTOMAÇÃO E INSTRUMENTAÇÃO |
| 447 | 1.2.10.7 | **FG-F0009-0305-MB-J-00001** | 6d | 2026-06-03 A | 2026-06-12 |  | 17% | 5d | 2026-05-20 | 2026-05-27 | 6d | 2026-05-20 | 2026-05-27 | 18d |  | AUTOMAÇÃO E INSTRUMENTAÇÃO |
| 448 | 1.2.10.7.1 | Emissão inicial | 2d | 2026-06-03 A | 2026-06-08 | 63FS+10d | 50% | 1d | 2026-05-20 | 2026-05-21 | 2d | 2026-05-20 | 2026-05-21 | 18d | 0d | AUTOMAÇÃO E INSTRUMENTAÇÃO |
| 449 | 1.2.10.7.2 | Análise Tecnored | 1d | 2026-06-09 | 2026-06-09 | 448 |  |  | 2026-05-22 | 2026-05-22 | 1d | 2026-05-22 | 2026-05-22 | 18d | 0d | AUTOMAÇÃO E INSTRUMENTAÇÃO |
| 450 | 1.2.10.7.3 | Atendimento de comentários | 2d | 2026-06-10 | 2026-06-11 | 449 |  |  | 2026-05-25 | 2026-05-26 | 2d | 2026-05-25 | 2026-05-26 | 18d | 0d | AUTOMAÇÃO E INSTRUMENTAÇÃO |
| 451 | 1.2.10.7.4 | Aprovação | 1d | 2026-06-12 | 2026-06-12 | 450 |  |  | 2026-05-27 | 2026-05-27 | 1d | 2026-05-27 | 2026-05-27 | 18d |  | AUTOMAÇÃO E INSTRUMENTAÇÃO |
| 452 | 1.2.10.8 | **FG-F0009-0305-MB-J-00002** | 6d | 2026-06-03 | 2026-06-12 |  |  |  | 2026-05-20 | 2026-05-27 | 6d | 2026-05-20 | 2026-05-27 | 0d |  | AUTOMAÇÃO E INSTRUMENTAÇÃO |
| 453 | 1.2.10.8.1 | Emissão inicial | 2d | 2026-06-03 | 2026-06-08 | 63FS+10d |  |  | 2026-05-20 | 2026-05-21 | 2d | 2026-05-20 | 2026-05-21 | 0d |  | AUTOMAÇÃO E INSTRUMENTAÇÃO |
| 454 | 1.2.10.8.2 | Análise Tecnored | 1d | 2026-06-09 | 2026-06-09 | 453 |  |  | 2026-05-22 | 2026-05-22 | 1d | 2026-05-22 | 2026-05-22 | 18d | 0d | AUTOMAÇÃO E INSTRUMENTAÇÃO |
| 455 | 1.2.10.8.3 | Atendimento de comentários | 2d | 2026-06-10 | 2026-06-11 | 454 |  |  | 2026-05-25 | 2026-05-26 | 2d | 2026-05-25 | 2026-05-26 | 18d | 0d | AUTOMAÇÃO E INSTRUMENTAÇÃO |
| 456 | 1.2.10.8.4 | Aprovação | 1d | 2026-06-12 | 2026-06-12 | 455 |  |  | 2026-05-27 | 2026-05-27 | 1d | 2026-05-27 | 2026-05-27 | 18d |  | AUTOMAÇÃO E INSTRUMENTAÇÃO |

| ID | WBS | Task | Duration | Start | Finish | Predecessors | Complete | Remaining | Baseline start | Baseline finish | Baseline duration | Baseline 1 start | Baseline 1 finish | Total slack | Free slack | Disciplina |
| --- | --- | --- | --- | --- | --- | --- | --- | --- | --- | --- | --- | --- | --- | --- | --- | --- |
| 457 | 1.2.10.9 | **FG-F0009-0305-MB-J-00003** | 6d | 2026-06-03 A | 2026-06-12 |  | 17% | 5d | 2026-05-20 | 2026-05-27 | 6d | 2026-05-20 | 2026-05-27 | 18d |  | AUTOMAÇÃO E INSTRUMENTAÇÃO |
| 458 | 1.2.10.9.1 | Emissão inicial | 2d | 2026-06-03 A | 2026-06-08 | 63FS+10d | 50% | 1d | 2026-05-20 | 2026-05-21 | 2d | 2026-05-20 | 2026-05-21 | 18d | 0d | AUTOMAÇÃO E INSTRUMENTAÇÃO |
| 459 | 1.2.10.9.2 | Análise Tecnored | 1d | 2026-06-09 | 2026-06-09 | 458 |  |  | 2026-05-22 | 2026-05-22 | 1d | 2026-05-22 | 2026-05-22 | 18d | 0d | AUTOMAÇÃO E INSTRUMENTAÇÃO |
| 460 | 1.2.10.9.3 | Atendimento de comentários | 2d | 2026-06-10 | 2026-06-11 | 459 |  |  | 2026-05-25 | 2026-05-26 | 2d | 2026-05-25 | 2026-05-26 | 18d | 0d | AUTOMAÇÃO E INSTRUMENTAÇÃO |
| 461 | 1.2.10.9.4 | Aprovação | 1d | 2026-06-12 | 2026-06-12 | 460 |  |  | 2026-05-27 | 2026-05-27 | 1d | 2026-05-27 | 2026-05-27 | 18d |  | AUTOMAÇÃO E INSTRUMENTAÇÃO |
| 462 | 1.2.10.10 | **AG-F0009-0305-MB-J-00001** | 11d | 2026-06-11 | 2026-06-25 |  |  |  | 2026-05-27 | 2026-06-15 | 14d | 2026-05-27 | 2026-06-15 | 9d |  | AUTOMAÇÃO E INSTRUMENTAÇÃO |
| 463 | 1.2.10.10.1 | Emissão inicial | 7d | 2026-06-11 | 2026-06-19 | 423 |  |  | 2026-05-27 | 2026-06-09 | 10d | 2026-05-27 | 2026-06-09 | 9d | 0d | AUTOMAÇÃO E INSTRUMENTAÇÃO |
| 464 | 1.2.10.10.2 | Análise Tecnored | 1d | 2026-06-22 | 2026-06-22 | 463 |  |  | 2026-06-10 | 2026-06-10 | 1d | 2026-06-10 | 2026-06-10 | 9d | 0d | AUTOMAÇÃO E INSTRUMENTAÇÃO |
| 465 | 1.2.10.10.3 | Atendimento de comentários | 2d | 2026-06-23 | 2026-06-24 | 464 |  |  | 2026-06-11 | 2026-06-12 | 2d | 2026-06-11 | 2026-06-12 | 9d | 0d | AUTOMAÇÃO E INSTRUMENTAÇÃO |
| 466 | 1.2.10.10.4 | Aprovação | 1d | 2026-06-25 | 2026-06-25 | 465 |  |  | 2026-06-15 | 2026-06-15 | 1d | 2026-06-15 | 2026-06-15 | 9d |  | AUTOMAÇÃO E INSTRUMENTAÇÃO |
| 467 | 1.2.10.11 | **AG-F0009-0305-MB-J-00002** | 11d | 2026-06-11 | 2026-06-25 |  |  |  | 2026-05-27 | 2026-06-15 | 14d | 2026-05-27 | 2026-06-15 | 9d |  | AUTOMAÇÃO E INSTRUMENTAÇÃO |
| 468 | 1.2.10.11.1 | Emissão inicial | 7d | 2026-06-11 | 2026-06-19 | 423 |  |  | 2026-05-27 | 2026-06-09 | 10d | 2026-05-27 | 2026-06-09 | 9d | 0d | AUTOMAÇÃO E INSTRUMENTAÇÃO |
| 469 | 1.2.10.11.2 | Análise Tecnored | 1d | 2026-06-22 | 2026-06-22 | 468 |  |  | 2026-06-10 | 2026-06-10 | 1d | 2026-06-10 | 2026-06-10 | 9d | 0d | AUTOMAÇÃO E INSTRUMENTAÇÃO |
| 470 | 1.2.10.11.3 | Atendimento de comentários | 2d | 2026-06-23 | 2026-06-24 | 469 |  |  | 2026-06-11 | 2026-06-12 | 2d | 2026-06-11 | 2026-06-12 | 9d | 0d | AUTOMAÇÃO E INSTRUMENTAÇÃO |
| 471 | 1.2.10.11.4 | Aprovação | 1d | 2026-06-25 | 2026-06-25 | 470 |  |  | 2026-06-15 | 2026-06-15 | 1d | 2026-06-15 | 2026-06-15 | 9d |  | AUTOMAÇÃO E INSTRUMENTAÇÃO |
| 472 | 1.2.10.12 | **AG-F0009-0305-MB-J-00003** | 11d | 2026-06-11 | 2026-06-25 |  |  |  | 2026-05-27 | 2026-06-15 | 14d | 2026-05-27 | 2026-06-15 | 0d |  | AUTOMAÇÃO E INSTRUMENTAÇÃO |
| 473 | 1.2.10.12.1 | Emissão inicial | 7d | 2026-06-11 | 2026-06-19 | 423 |  |  | 2026-05-27 | 2026-06-09 | 10d | 2026-05-27 | 2026-06-09 | 0d |  | AUTOMAÇÃO E INSTRUMENTAÇÃO |
| 474 | 1.2.10.12.2 | Análise Tecnored | 1d | 2026-06-22 | 2026-06-22 | 473 |  |  | 2026-06-10 | 2026-06-10 | 1d | 2026-06-10 | 2026-06-10 | 9d | 0d | AUTOMAÇÃO E INSTRUMENTAÇÃO |
| 475 | 1.2.10.12.3 | Atendimento de comentários | 2d | 2026-06-23 | 2026-06-24 | 474 |  |  | 2026-06-11 | 2026-06-12 | 2d | 2026-06-11 | 2026-06-12 | 9d | 0d | AUTOMAÇÃO E INSTRUMENTAÇÃO |
| 476 | 1.2.10.12.4 | Aprovação | 1d | 2026-06-25 | 2026-06-25 | 475 |  |  | 2026-06-15 | 2026-06-15 | 1d | 2026-06-15 | 2026-06-15 | 9d |  | AUTOMAÇÃO E INSTRUMENTAÇÃO |
| 477 | 1.2.10.13 | **AG-F0009-0305-MB-J-00004** | 11d | 2026-06-11 | 2026-06-25 |  |  |  | 2026-05-27 | 2026-06-15 | 14d | 2026-05-27 | 2026-06-15 | 9d |  | AUTOMAÇÃO E INSTRUMENTAÇÃO |
| 478 | 1.2.10.13.1 | Emissão inicial | 7d | 2026-06-11 | 2026-06-19 | 423 |  |  | 2026-05-27 | 2026-06-09 | 10d | 2026-05-27 | 2026-06-09 | 9d | 0d | AUTOMAÇÃO E INSTRUMENTAÇÃO |
| 479 | 1.2.10.13.2 | Análise Tecnored | 1d | 2026-06-22 | 2026-06-22 | 478 |  |  | 2026-06-10 | 2026-06-10 | 1d | 2026-06-10 | 2026-06-10 | 9d | 0d | AUTOMAÇÃO E INSTRUMENTAÇÃO |
| 480 | 1.2.10.13.3 | Atendimento de comentários | 2d | 2026-06-23 | 2026-06-24 | 479 |  |  | 2026-06-11 | 2026-06-12 | 2d | 2026-06-11 | 2026-06-12 | 9d | 0d | AUTOMAÇÃO E INSTRUMENTAÇÃO |
| 481 | 1.2.10.13.4 | Aprovação | 1d | 2026-06-25 | 2026-06-25 | 480 |  |  | 2026-06-15 | 2026-06-15 | 1d | 2026-06-15 | 2026-06-15 | 9d |  | AUTOMAÇÃO E INSTRUMENTAÇÃO |

| ID | WBS | Task | Duration | Start | Finish | Predecessors | Baseline start | Baseline finish | Baseline duration | Baseline 1 start | Baseline 1 finish | Total slack | Free slack | Disciplina |
| --- | --- | --- | --- | --- | --- | --- | --- | --- | --- | --- | --- | --- | --- | --- |
| 482 | 1.2.10.14 | **DI-F0009-0305-MB-J-00001** | 6d | 2026-06-22 | 2026-06-29 |  | 2026-06-10 | 2026-06-18 | 7d | 2026-06-10 | 2026-06-18 | 0d |  | AUTOMAÇÃO E INSTRUMENTAÇÃO |
| 483 | 1.2.10.14.1 | Emissão inicial | 2d | 2026-06-22 | 2026-06-23 | 473 | 2026-06-10 | 2026-06-12 | 3d | 2026-06-10 | 2026-06-12 | 0d |  | AUTOMAÇÃO E INSTRUMENTAÇÃO |
| 484 | 1.2.10.14.2 | Análise Tecnored | 1d | 2026-06-24 | 2026-06-24 | 483 | 2026-06-15 | 2026-06-15 | 1d | 2026-06-15 | 2026-06-15 | 7d | 0d | AUTOMAÇÃO E INSTRUMENTAÇÃO |
| 485 | 1.2.10.14.3 | Atendimento de comentários | 2d | 2026-06-25 | 2026-06-26 | 484 | 2026-06-16 | 2026-06-17 | 2d | 2026-06-16 | 2026-06-17 | 7d | 0d | AUTOMAÇÃO E INSTRUMENTAÇÃO |
| 486 | 1.2.10.14.4 | Aprovação | 1d | 2026-06-29 | 2026-06-29 | 485 | 2026-06-18 | 2026-06-18 | 1d | 2026-06-18 | 2026-06-18 | 7d |  | AUTOMAÇÃO E INSTRUMENTAÇÃO |
| 487 | 1.2.10.15 | **LI-F0009-0305-MB-J-00002** | 5d | 2026-07-01 | 2026-07-07 |  | 2026-06-23 | 2026-07-01 | 7d | 2026-06-23 | 2026-07-01 | 1d |  | AUTOMAÇÃO E INSTRUMENTAÇÃO |
| 488 | 1.2.10.15.1 | Emissão inicial | 2d | 2026-07-01 | 2026-07-02 | 503 | 2026-06-23 | 2026-06-25 | 3d | 2026-06-23 | 2026-06-25 | 1d | 0d | AUTOMAÇÃO E INSTRUMENTAÇÃO |
| 489 | 1.2.10.15.2 | Análise Tecnored | 1d | 2026-07-03 | 2026-07-03 | 488 | 2026-06-26 | 2026-06-26 | 1d | 2026-06-26 | 2026-06-26 | 1d | 0d | AUTOMAÇÃO E INSTRUMENTAÇÃO |
| 490 | 1.2.10.15.3 | Atendimento de comentários | 1d | 2026-07-06 | 2026-07-06 | 489 | 2026-06-29 | 2026-06-30 | 2d | 2026-06-29 | 2026-06-30 | 1d | 0d | AUTOMAÇÃO E INSTRUMENTAÇÃO |
| 491 | 1.2.10.15.4 | Aprovação | 1d | 2026-07-07 | 2026-07-07 | 490 | 2026-07-01 | 2026-07-01 | 1d | 2026-07-01 | 2026-07-01 | 1d |  | AUTOMAÇÃO E INSTRUMENTAÇÃO |
| 492 | 1.2.10.16 | **LI-F0009-0305-MB-J-00003** | 5d | 2026-07-01 | 2026-07-07 |  | 2026-06-23 | 2026-07-01 | 7d | 2026-06-23 | 2026-07-01 | 1d |  | AUTOMAÇÃO E INSTRUMENTAÇÃO |
| 493 | 1.2.10.16.1 | Emissão inicial | 2d | 2026-07-01 | 2026-07-02 | 503 | 2026-06-23 | 2026-06-25 | 3d | 2026-06-23 | 2026-06-25 | 1d | 0d | AUTOMAÇÃO E INSTRUMENTAÇÃO |
| 494 | 1.2.10.16.2 | Análise Tecnored | 1d | 2026-07-03 | 2026-07-03 | 493 | 2026-06-26 | 2026-06-26 | 1d | 2026-06-26 | 2026-06-26 | 1d | 0d | AUTOMAÇÃO E INSTRUMENTAÇÃO |
| 495 | 1.2.10.16.3 | Atendimento de comentários | 1d | 2026-07-06 | 2026-07-06 | 494 | 2026-06-29 | 2026-06-30 | 2d | 2026-06-29 | 2026-06-30 | 1d | 0d | AUTOMAÇÃO E INSTRUMENTAÇÃO |
| 496 | 1.2.10.16.4 | Aprovação | 1d | 2026-07-07 | 2026-07-07 | 495 | 2026-07-01 | 2026-07-01 | 1d | 2026-07-01 | 2026-07-01 | 1d |  | AUTOMAÇÃO E INSTRUMENTAÇÃO |
| 497 | 1.2.10.17 | **LM-F0009-0305-MB-J-00001** | 4d | 2026-06-19 | 2026-06-24 |  | 2026-07-01 | 2026-07-07 | 5d | 2026-07-01 | 2026-07-07 | 10d |  | AUTOMAÇÃO E INSTRUMENTAÇÃO |
| 498 | 1.2.10.17.1 | Emissão inicial | 1d | 2026-06-19 | 2026-06-19 | 588FS-7d | 2026-07-01 | 2026-07-01 | 1d | 2026-07-01 | 2026-07-01 | 10d | 0d | AUTOMAÇÃO E INSTRUMENTAÇÃO |
| 499 | 1.2.10.17.2 | Análise Tecnored | 1d | 2026-06-22 | 2026-06-22 | 498 | 2026-07-02 | 2026-07-02 | 1d | 2026-07-02 | 2026-07-02 | 10d | 0d | AUTOMAÇÃO E INSTRUMENTAÇÃO |
| 500 | 1.2.10.17.3 | Atendimento de comentários | 1d | 2026-06-23 | 2026-06-23 | 499 | 2026-07-03 | 2026-07-06 | 2d | 2026-07-03 | 2026-07-06 | 10d | 0d | AUTOMAÇÃO E INSTRUMENTAÇÃO |
| 501 | 1.2.10.17.4 | Aprovação | 1d | 2026-06-24 | 2026-06-24 | 500 | 2026-07-07 | 2026-07-07 | 1d | 2026-07-07 | 2026-07-07 | 10d |  | AUTOMAÇÃO E INSTRUMENTAÇÃO |
| 502 | 1.2.10.18 | **ET-F0009-0305-MB-J-00001** | 7d | 2026-06-26 | 2026-07-06 |  | 2026-06-18 | 2026-06-26 | 7d | 2026-06-18 | 2026-06-26 | 0d |  | AUTOMAÇÃO E INSTRUMENTAÇÃO |
| 503 | 1.2.10.18.1 | Emissão inicial | 3d | 2026-06-26 | 2026-06-30 | 433 | 2026-06-18 | 2026-06-22 | 3d | 2026-06-18 | 2026-06-22 | 0d |  | AUTOMAÇÃO E INSTRUMENTAÇÃO |
| 504 | 1.2.10.18.2 | Análise Tecnored | 1d | 2026-07-01 | 2026-07-01 | 503 | 2026-06-23 | 2026-06-23 | 1d | 2026-06-23 | 2026-06-23 | 2d | 0d | AUTOMAÇÃO E INSTRUMENTAÇÃO |
| 505 | 1.2.10.18.3 | Atendimento de comentários | 2d | 2026-07-02 | 2026-07-03 | 504 | 2026-06-24 | 2026-06-25 | 2d | 2026-06-24 | 2026-06-25 | 2d | 0d | AUTOMAÇÃO E INSTRUMENTAÇÃO |
| 506 | 1.2.10.18.4 | Aprovação | 1d | 2026-07-06 | 2026-07-06 | 505 | 2026-06-26 | 2026-06-26 | 1d | 2026-06-26 | 2026-06-26 | 2d |  | AUTOMAÇÃO E INSTRUMENTAÇÃO |

| ID | WBS | Task | Duration | Start | Finish | Predecessors | Baseline start | Baseline finish | Baseline duration | Baseline 1 start | Baseline 1 finish | Total slack | Disciplina |
| --- | --- | --- | --- | --- | --- | --- | --- | --- | --- | --- | --- | --- | --- |
| 507 | 1.2.10.19 | **FD-F0009-0305-MB-J-00001** | 9d | 2026-06-26 | 2026-07-08 |  | 2026-06-18 | 2026-07-07 | 14d | 2026-06-18 | 2026-07-07 | 0d | AUTOMAÇÃO E INSTRUMENTAÇÃO |
| 508 | 1.2.10.19.1 | Emissão inicial | 6d | 2026-06-26 | 2026-07-03 | 433 | 2026-06-18 | 2026-07-01 | 10d | 2026-06-18 | 2026-07-01 | 0d | AUTOMAÇÃO E INSTRUMENTAÇÃO |
| 509 | 1.2.10.19.2 | Análise Tecnored | 1d | 2026-07-06 | 2026-07-06 | 508 | 2026-07-02 | 2026-07-02 | 1d | 2026-07-02 | 2026-07-02 | 0d | AUTOMAÇÃO E INSTRUMENTAÇÃO |
| 510 | 1.2.10.19.3 | Atendimento de comentários | 1d | 2026-07-07 | 2026-07-07 | 509 | 2026-07-03 | 2026-07-06 | 2d | 2026-07-03 | 2026-07-06 | 0d | AUTOMAÇÃO E INSTRUMENTAÇÃO |
| 511 | 1.2.10.19.4 | Aprovação | 1d | 2026-07-08 | 2026-07-08 | 510 | 2026-07-07 | 2026-07-07 | 1d | 2026-07-07 | 2026-07-07 | 0d | AUTOMAÇÃO E INSTRUMENTAÇÃO |
| 512 | 1.2.10.20 | **FD-F0009-0305-MB-J-00002** | 9d | 2026-06-26 | 2026-07-08 |  | 2026-06-18 | 2026-07-07 | 14d | 2026-06-18 | 2026-07-07 | 0d | AUTOMAÇÃO E INSTRUMENTAÇÃO |
| 513 | 1.2.10.20.1 | Emissão inicial | 6d | 2026-06-26 | 2026-07-03 | 433 | 2026-06-18 | 2026-07-01 | 10d | 2026-06-18 | 2026-07-01 | 0d | AUTOMAÇÃO E INSTRUMENTAÇÃO |
| 514 | 1.2.10.20.2 | Análise Tecnored | 1d | 2026-07-06 | 2026-07-06 | 513 | 2026-07-02 | 2026-07-02 | 1d | 2026-07-02 | 2026-07-02 | 0d | AUTOMAÇÃO E INSTRUMENTAÇÃO |
| 515 | 1.2.10.20.3 | Atendimento de comentários | 1d | 2026-07-07 | 2026-07-07 | 514 | 2026-07-03 | 2026-07-06 | 2d | 2026-07-03 | 2026-07-06 | 0d | AUTOMAÇÃO E INSTRUMENTAÇÃO |
| 516 | 1.2.10.20.4 | Aprovação | 1d | 2026-07-08 | 2026-07-08 | 515 | 2026-07-07 | 2026-07-07 | 1d | 2026-07-07 | 2026-07-07 | 0d | AUTOMAÇÃO E INSTRUMENTAÇÃO |
| 517 | 1.2.10.21 | **FD-F0009-0305-MB-J-00003** | 9d | 2026-06-26 | 2026-07-08 |  | 2026-06-18 | 2026-07-07 | 14d | 2026-06-18 | 2026-07-07 | 0d | AUTOMAÇÃO E INSTRUMENTAÇÃO |
| 518 | 1.2.10.21.1 | Emissão inicial | 6d | 2026-06-26 | 2026-07-03 | 433 | 2026-06-18 | 2026-07-01 | 10d | 2026-06-18 | 2026-07-01 | 0d | AUTOMAÇÃO E INSTRUMENTAÇÃO |
| 519 | 1.2.10.21.2 | Análise Tecnored | 1d | 2026-07-06 | 2026-07-06 | 518 | 2026-07-02 | 2026-07-02 | 1d | 2026-07-02 | 2026-07-02 | 0d | AUTOMAÇÃO E INSTRUMENTAÇÃO |
| 520 | 1.2.10.21.3 | Atendimento de comentários | 1d | 2026-07-07 | 2026-07-07 | 519 | 2026-07-03 | 2026-07-06 | 2d | 2026-07-03 | 2026-07-06 | 0d | AUTOMAÇÃO E INSTRUMENTAÇÃO |
| 521 | 1.2.10.21.4 | Aprovação | 1d | 2026-07-08 | 2026-07-08 | 520 | 2026-07-07 | 2026-07-07 | 1d | 2026-07-07 | 2026-07-07 | 0d | AUTOMAÇÃO E INSTRUMENTAÇÃO |
| 522 | 1.2.10.22 | **FD-F0009-0305-MB-J-00004** | 9d | 2026-06-26 | 2026-07-08 |  | 2026-06-18 | 2026-07-07 | 14d | 2026-06-18 | 2026-07-07 | 0d | AUTOMAÇÃO E INSTRUMENTAÇÃO |
| 523 | 1.2.10.22.1 | Emissão inicial | 6d | 2026-06-26 | 2026-07-03 | 433 | 2026-06-18 | 2026-07-01 | 10d | 2026-06-18 | 2026-07-01 | 0d | AUTOMAÇÃO E INSTRUMENTAÇÃO |
| 524 | 1.2.10.22.2 | Análise Tecnored | 1d | 2026-07-06 | 2026-07-06 | 523 | 2026-07-02 | 2026-07-02 | 1d | 2026-07-02 | 2026-07-02 | 0d | AUTOMAÇÃO E INSTRUMENTAÇÃO |
| 525 | 1.2.10.22.3 | Atendimento de comentários | 1d | 2026-07-07 | 2026-07-07 | 524 | 2026-07-03 | 2026-07-06 | 2d | 2026-07-03 | 2026-07-06 | 0d | AUTOMAÇÃO E INSTRUMENTAÇÃO |
| 526 | 1.2.10.22.4 | Aprovação | 1d | 2026-07-08 | 2026-07-08 | 525 | 2026-07-07 | 2026-07-07 | 1d | 2026-07-07 | 2026-07-07 | 0d | AUTOMAÇÃO E INSTRUMENTAÇÃO |
| 527 | 1.2.10.23 | **FD-F0009-0305-MB-J-00005** | 9d | 2026-06-26 | 2026-07-08 |  | 2026-06-18 | 2026-07-07 | 14d | 2026-06-18 | 2026-07-07 | 0d | AUTOMAÇÃO E INSTRUMENTAÇÃO |
| 528 | 1.2.10.23.1 | Emissão inicial | 6d | 2026-06-26 | 2026-07-03 | 433 | 2026-06-18 | 2026-07-01 | 10d | 2026-06-18 | 2026-07-01 | 0d | AUTOMAÇÃO E INSTRUMENTAÇÃO |
| 529 | 1.2.10.23.2 | Análise Tecnored | 1d | 2026-07-06 | 2026-07-06 | 528 | 2026-07-02 | 2026-07-02 | 1d | 2026-07-02 | 2026-07-02 | 0d | AUTOMAÇÃO E INSTRUMENTAÇÃO |
| 530 | 1.2.10.23.3 | Atendimento de comentários | 1d | 2026-07-07 | 2026-07-07 | 529 | 2026-07-03 | 2026-07-06 | 2d | 2026-07-03 | 2026-07-06 | 0d | AUTOMAÇÃO E INSTRUMENTAÇÃO |
| 531 | 1.2.10.23.4 | Aprovação | 1d | 2026-07-08 | 2026-07-08 | 530 | 2026-07-07 | 2026-07-07 | 1d | 2026-07-07 | 2026-07-07 | 0d | AUTOMAÇÃO E INSTRUMENTAÇÃO |

| ID | WBS | Task | Duration | Start | Finish | Predecessors | Baseline start | Baseline finish | Baseline duration | Baseline 1 start | Baseline 1 finish | Total slack | Disciplina |
| --- | --- | --- | --- | --- | --- | --- | --- | --- | --- | --- | --- | --- | --- |
| 532 | 1.2.10.24 | **FD-F0009-0305-MB-J-00006** | 9d | 2026-06-26 | 2026-07-08 |  | 2026-06-18 | 2026-07-07 | 14d | 2026-06-18 | 2026-07-07 | 0d | AUTOMAÇÃO E INSTRUMENTAÇÃO |
| 533 | 1.2.10.24.1 | Emissão inicial | 6d | 2026-06-26 | 2026-07-03 | 433 | 2026-06-18 | 2026-07-01 | 10d | 2026-06-18 | 2026-07-01 | 0d | AUTOMAÇÃO E INSTRUMENTAÇÃO |
| 534 | 1.2.10.24.2 | Análise Tecnored | 1d | 2026-07-06 | 2026-07-06 | 533 | 2026-07-02 | 2026-07-02 | 1d | 2026-07-02 | 2026-07-02 | 0d | AUTOMAÇÃO E INSTRUMENTAÇÃO |
| 535 | 1.2.10.24.3 | Atendimento de comentários | 1d | 2026-07-07 | 2026-07-07 | 534 | 2026-07-03 | 2026-07-06 | 2d | 2026-07-03 | 2026-07-06 | 0d | AUTOMAÇÃO E INSTRUMENTAÇÃO |
| 536 | 1.2.10.24.4 | Aprovação | 1d | 2026-07-08 | 2026-07-08 | 535 | 2026-07-07 | 2026-07-07 | 1d | 2026-07-07 | 2026-07-07 | 0d | AUTOMAÇÃO E INSTRUMENTAÇÃO |
| 537 | 1.2.10.25 | **FD-F0009-0305-MB-J-00007** | 9d | 2026-06-26 | 2026-07-08 |  | 2026-06-18 | 2026-07-07 | 14d | 2026-06-18 | 2026-07-07 | 0d | AUTOMAÇÃO E INSTRUMENTAÇÃO |
| 538 | 1.2.10.25.1 | Emissão inicial | 6d | 2026-06-26 | 2026-07-03 | 433 | 2026-06-18 | 2026-07-01 | 10d | 2026-06-18 | 2026-07-01 | 0d | AUTOMAÇÃO E INSTRUMENTAÇÃO |
| 539 | 1.2.10.25.2 | Análise Tecnored | 1d | 2026-07-06 | 2026-07-06 | 538 | 2026-07-02 | 2026-07-02 | 1d | 2026-07-02 | 2026-07-02 | 0d | AUTOMAÇÃO E INSTRUMENTAÇÃO |
| 540 | 1.2.10.25.3 | Atendimento de comentários | 1d | 2026-07-07 | 2026-07-07 | 539 | 2026-07-03 | 2026-07-06 | 2d | 2026-07-03 | 2026-07-06 | 0d | AUTOMAÇÃO E INSTRUMENTAÇÃO |
| 541 | 1.2.10.25.4 | Aprovação | 1d | 2026-07-08 | 2026-07-08 | 540 | 2026-07-07 | 2026-07-07 | 1d | 2026-07-07 | 2026-07-07 | 0d | AUTOMAÇÃO E INSTRUMENTAÇÃO |
| 542 | 1.2.10.26 | **FD-F0009-0305-MB-J-00008** | 9d | 2026-06-26 | 2026-07-08 |  | 2026-06-18 | 2026-07-07 | 14d | 2026-06-18 | 2026-07-07 | 0d | AUTOMAÇÃO E INSTRUMENTAÇÃO |
| 543 | 1.2.10.26.1 | Emissão inicial | 6d | 2026-06-26 | 2026-07-03 | 433 | 2026-06-18 | 2026-07-01 | 10d | 2026-06-18 | 2026-07-01 | 0d | AUTOMAÇÃO E INSTRUMENTAÇÃO |
| 544 | 1.2.10.26.2 | Análise Tecnored | 1d | 2026-07-06 | 2026-07-06 | 543 | 2026-07-02 | 2026-07-02 | 1d | 2026-07-02 | 2026-07-02 | 0d | AUTOMAÇÃO E INSTRUMENTAÇÃO |
| 545 | 1.2.10.26.3 | Atendimento de comentários | 1d | 2026-07-07 | 2026-07-07 | 544 | 2026-07-03 | 2026-07-06 | 2d | 2026-07-03 | 2026-07-06 | 0d | AUTOMAÇÃO E INSTRUMENTAÇÃO |
| 546 | 1.2.10.26.4 | Aprovação | 1d | 2026-07-08 | 2026-07-08 | 545 | 2026-07-07 | 2026-07-07 | 1d | 2026-07-07 | 2026-07-07 | 0d | AUTOMAÇÃO E INSTRUMENTAÇÃO |
| 547 | 1.2.10.27 | **FD-F0009-0305-MB-J-00009** | 9d | 2026-06-26 | 2026-07-08 |  | 2026-06-18 | 2026-07-07 | 14d | 2026-06-18 | 2026-07-07 | 0d | AUTOMAÇÃO E INSTRUMENTAÇÃO |
| 548 | 1.2.10.27.1 | Emissão inicial | 6d | 2026-06-26 | 2026-07-03 | 433 | 2026-06-18 | 2026-07-01 | 10d | 2026-06-18 | 2026-07-01 | 0d | AUTOMAÇÃO E INSTRUMENTAÇÃO |
| 549 | 1.2.10.27.2 | Análise Tecnored | 1d | 2026-07-06 | 2026-07-06 | 548 | 2026-07-02 | 2026-07-02 | 1d | 2026-07-02 | 2026-07-02 | 0d | AUTOMAÇÃO E INSTRUMENTAÇÃO |
| 550 | 1.2.10.27.3 | Atendimento de comentários | 1d | 2026-07-07 | 2026-07-07 | 549 | 2026-07-03 | 2026-07-06 | 2d | 2026-07-03 | 2026-07-06 | 0d | AUTOMAÇÃO E INSTRUMENTAÇÃO |
| 551 | 1.2.10.27.4 | Aprovação | 1d | 2026-07-08 | 2026-07-08 | 550 | 2026-07-07 | 2026-07-07 | 1d | 2026-07-07 | 2026-07-07 | 0d | AUTOMAÇÃO E INSTRUMENTAÇÃO |
| 552 | 1.2.10.28 | **FD-F0009-0305-MB-J-00010** | 9d | 2026-06-26 | 2026-07-08 |  | 2026-06-18 | 2026-07-07 | 14d | 2026-06-18 | 2026-07-07 | 0d | AUTOMAÇÃO E INSTRUMENTAÇÃO |
| 553 | 1.2.10.28.1 | Emissão inicial | 6d | 2026-06-26 | 2026-07-03 | 433 | 2026-06-18 | 2026-07-01 | 10d | 2026-06-18 | 2026-07-01 | 0d | AUTOMAÇÃO E INSTRUMENTAÇÃO |
| 554 | 1.2.10.28.2 | Análise Tecnored | 1d | 2026-07-06 | 2026-07-06 | 553 | 2026-07-02 | 2026-07-02 | 1d | 2026-07-02 | 2026-07-02 | 0d | AUTOMAÇÃO E INSTRUMENTAÇÃO |
| 555 | 1.2.10.28.3 | Atendimento de comentários | 1d | 2026-07-07 | 2026-07-07 | 554 | 2026-07-03 | 2026-07-06 | 2d | 2026-07-03 | 2026-07-06 | 0d | AUTOMAÇÃO E INSTRUMENTAÇÃO |
| 556 | 1.2.10.28.4 | Aprovação | 1d | 2026-07-08 | 2026-07-08 | 555 | 2026-07-07 | 2026-07-07 | 1d | 2026-07-07 | 2026-07-07 | 0d | AUTOMAÇÃO E INSTRUMENTAÇÃO |

| ID | WBS | Task | Duration | Start | Finish | Predecessors | Baseline start | Baseline finish | Baseline duration | Baseline 1 start | Baseline 1 finish | Total slack | Disciplina |
| --- | --- | --- | --- | --- | --- | --- | --- | --- | --- | --- | --- | --- | --- |
| 557 | 1.2.10.29 | **FD-F0009-0305-MB-J-00011** | 9d | 2026-06-26 | 2026-07-08 |  | 2026-06-18 | 2026-07-07 | 14d | 2026-06-18 | 2026-07-07 | 0d | AUTOMAÇÃO E INSTRUMENTAÇÃO |
| 558 | 1.2.10.29.1 | Emissão inicial | 6d | 2026-06-26 | 2026-07-03 | 433 | 2026-06-18 | 2026-07-01 | 10d | 2026-06-18 | 2026-07-01 | 0d | AUTOMAÇÃO E INSTRUMENTAÇÃO |
| 559 | 1.2.10.29.2 | Análise Tecnored | 1d | 2026-07-06 | 2026-07-06 | 558 | 2026-07-02 | 2026-07-02 | 1d | 2026-07-02 | 2026-07-02 | 0d | AUTOMAÇÃO E INSTRUMENTAÇÃO |
| 560 | 1.2.10.29.3 | Atendimento de comentários | 1d | 2026-07-07 | 2026-07-07 | 559 | 2026-07-03 | 2026-07-06 | 2d | 2026-07-03 | 2026-07-06 | 0d | AUTOMAÇÃO E INSTRUMENTAÇÃO |
| 561 | 1.2.10.29.4 | Aprovação | 1d | 2026-07-08 | 2026-07-08 | 560 | 2026-07-07 | 2026-07-07 | 1d | 2026-07-07 | 2026-07-07 | 0d | AUTOMAÇÃO E INSTRUMENTAÇÃO |
| 562 | 1.2.10.30 | **FD-F0009-0305-MB-J-00012** | 9d | 2026-06-26 | 2026-07-08 |  | 2026-06-18 | 2026-07-07 | 14d | 2026-06-18 | 2026-07-07 | 0d | AUTOMAÇÃO E INSTRUMENTAÇÃO |
| 563 | 1.2.10.30.1 | Emissão inicial | 6d | 2026-06-26 | 2026-07-03 | 433 | 2026-06-18 | 2026-07-01 | 10d | 2026-06-18 | 2026-07-01 | 0d | AUTOMAÇÃO E INSTRUMENTAÇÃO |
| 564 | 1.2.10.30.2 | Análise Tecnored | 1d | 2026-07-06 | 2026-07-06 | 563 | 2026-07-02 | 2026-07-02 | 1d | 2026-07-02 | 2026-07-02 | 0d | AUTOMAÇÃO E INSTRUMENTAÇÃO |
| 565 | 1.2.10.30.3 | Atendimento de comentários | 1d | 2026-07-07 | 2026-07-07 | 564 | 2026-07-03 | 2026-07-06 | 2d | 2026-07-03 | 2026-07-06 | 0d | AUTOMAÇÃO E INSTRUMENTAÇÃO |
| 566 | 1.2.10.30.4 | Aprovação | 1d | 2026-07-08 | 2026-07-08 | 565 | 2026-07-07 | 2026-07-07 | 1d | 2026-07-07 | 2026-07-07 | 0d | AUTOMAÇÃO E INSTRUMENTAÇÃO |
| 567 | 1.2.10.31 | **FD-F0009-0305-MB-J-00013** | 9d | 2026-06-26 | 2026-07-08 |  | 2026-06-18 | 2026-07-07 | 14d | 2026-06-18 | 2026-07-07 | 0d | AUTOMAÇÃO E INSTRUMENTAÇÃO |
| 568 | 1.2.10.31.1 | Emissão inicial | 6d | 2026-06-26 | 2026-07-03 | 433 | 2026-06-18 | 2026-07-01 | 10d | 2026-06-18 | 2026-07-01 | 0d | AUTOMAÇÃO E INSTRUMENTAÇÃO |
| 569 | 1.2.10.31.2 | Análise Tecnored | 1d | 2026-07-06 | 2026-07-06 | 568 | 2026-07-02 | 2026-07-02 | 1d | 2026-07-02 | 2026-07-02 | 0d | AUTOMAÇÃO E INSTRUMENTAÇÃO |
| 570 | 1.2.10.31.3 | Atendimento de comentários | 1d | 2026-07-07 | 2026-07-07 | 569 | 2026-07-03 | 2026-07-06 | 2d | 2026-07-03 | 2026-07-06 | 0d | AUTOMAÇÃO E INSTRUMENTAÇÃO |
| 571 | 1.2.10.31.4 | Aprovação | 1d | 2026-07-08 | 2026-07-08 | 570 | 2026-07-07 | 2026-07-07 | 1d | 2026-07-07 | 2026-07-07 | 0d | AUTOMAÇÃO E INSTRUMENTAÇÃO |
| 572 | 1.2.10.32 | **FD-F0009-0305-MB-J-00014** | 9d | 2026-06-26 | 2026-07-08 |  | 2026-06-18 | 2026-07-07 | 14d | 2026-06-18 | 2026-07-07 | 0d | AUTOMAÇÃO E INSTRUMENTAÇÃO |
| 573 | 1.2.10.32.1 | Emissão inicial | 6d | 2026-06-26 | 2026-07-03 | 433 | 2026-06-18 | 2026-07-01 | 10d | 2026-06-18 | 2026-07-01 | 0d | AUTOMAÇÃO E INSTRUMENTAÇÃO |
| 574 | 1.2.10.32.2 | Análise Tecnored | 1d | 2026-07-06 | 2026-07-06 | 573 | 2026-07-02 | 2026-07-02 | 1d | 2026-07-02 | 2026-07-02 | 0d | AUTOMAÇÃO E INSTRUMENTAÇÃO |
| 575 | 1.2.10.32.3 | Atendimento de comentários | 1d | 2026-07-07 | 2026-07-07 | 574 | 2026-07-03 | 2026-07-06 | 2d | 2026-07-03 | 2026-07-06 | 0d | AUTOMAÇÃO E INSTRUMENTAÇÃO |
| 576 | 1.2.10.32.4 | Aprovação | 1d | 2026-07-08 | 2026-07-08 | 575 | 2026-07-07 | 2026-07-07 | 1d | 2026-07-07 | 2026-07-07 | 0d | AUTOMAÇÃO E INSTRUMENTAÇÃO |
| 577 | 1.2.10.33 | **FD-F0009-0305-MB-J-00015** | 9d | 2026-06-26 | 2026-07-08 |  | 2026-06-18 | 2026-07-07 | 14d | 2026-06-18 | 2026-07-07 | 0d | AUTOMAÇÃO E INSTRUMENTAÇÃO |
| 578 | 1.2.10.33.1 | Emissão inicial | 6d | 2026-06-26 | 2026-07-03 | 433 | 2026-06-18 | 2026-07-01 | 10d | 2026-06-18 | 2026-07-01 | 0d | AUTOMAÇÃO E INSTRUMENTAÇÃO |
| 579 | 1.2.10.33.2 | Análise Tecnored | 1d | 2026-07-06 | 2026-07-06 | 578 | 2026-07-02 | 2026-07-02 | 1d | 2026-07-02 | 2026-07-02 | 0d | AUTOMAÇÃO E INSTRUMENTAÇÃO |
| 580 | 1.2.10.33.3 | Atendimento de comentários | 1d | 2026-07-07 | 2026-07-07 | 579 | 2026-07-03 | 2026-07-06 | 2d | 2026-07-03 | 2026-07-06 | 0d | AUTOMAÇÃO E INSTRUMENTAÇÃO |
| 581 | 1.2.10.33.4 | Aprovação | 1d | 2026-07-08 | 2026-07-08 | 580 | 2026-07-07 | 2026-07-07 | 1d | 2026-07-07 | 2026-07-07 | 0d | AUTOMAÇÃO E INSTRUMENTAÇÃO |

| ID | WBS | Task | Duration | Start | Finish | Predecessors | Baseline start | Baseline finish | Baseline duration | Baseline 1 start | Baseline 1 finish | Total slack | Free slack | Disciplina |
| --- | --- | --- | --- | --- | --- | --- | --- | --- | --- | --- | --- | --- | --- | --- |
| 582 | 1.2.10.34 | **FD-F0009-0305-MB-J-00016** | 9d | 2026-06-26 | 2026-07-08 |  | 2026-06-18 | 2026-07-07 | 14d | 2026-06-18 | 2026-07-07 | 0d |  | AUTOMAÇÃO E INSTRUMENTAÇÃO |
| 583 | 1.2.10.34.1 | Emissão inicial | 6d | 2026-06-26 | 2026-07-03 | 433 | 2026-06-18 | 2026-07-01 | 10d | 2026-06-18 | 2026-07-01 | 0d |  | AUTOMAÇÃO E INSTRUMENTAÇÃO |
| 584 | 1.2.10.34.2 | Análise Tecnored | 1d | 2026-07-06 | 2026-07-06 | 583 | 2026-07-02 | 2026-07-02 | 1d | 2026-07-02 | 2026-07-02 | 0d |  | AUTOMAÇÃO E INSTRUMENTAÇÃO |
| 585 | 1.2.10.34.3 | Atendimento de comentários | 1d | 2026-07-07 | 2026-07-07 | 584 | 2026-07-03 | 2026-07-06 | 2d | 2026-07-03 | 2026-07-06 | 0d |  | AUTOMAÇÃO E INSTRUMENTAÇÃO |
| 586 | 1.2.10.34.4 | Aprovação | 1d | 2026-07-08 | 2026-07-08 | 585 | 2026-07-07 | 2026-07-07 | 1d | 2026-07-07 | 2026-07-07 | 0d |  | AUTOMAÇÃO E INSTRUMENTAÇÃO |
| 587 | 1.2.10.35 | **DT-F0009-0305-MB-J-00001** | 7d | 2026-06-24 | 2026-07-02 |  | 2026-06-26 | 2026-07-06 | 7d | 2026-06-26 | 2026-07-06 | 4d |  | AUTOMAÇÃO E INSTRUMENTAÇÃO |
| 588 | 1.2.10.35.1 | Emissão inicial | 4d | 2026-06-24 | 2026-06-29 | 493FS-7d | 2026-06-26 | 2026-06-30 | 3d | 2026-06-26 | 2026-06-30 | 4d | 0d | AUTOMAÇÃO E INSTRUMENTAÇÃO |
| 589 | 1.2.10.35.2 | Análise Tecnored | 1d | 2026-06-30 | 2026-06-30 | 588 | 2026-07-01 | 2026-07-01 | 1d | 2026-07-01 | 2026-07-01 | 4d | 0d | AUTOMAÇÃO E INSTRUMENTAÇÃO |
| 590 | 1.2.10.35.3 | Atendimento de comentários | 1d | 2026-07-01 | 2026-07-01 | 589 | 2026-07-02 | 2026-07-03 | 2d | 2026-07-02 | 2026-07-03 | 4d | 0d | AUTOMAÇÃO E INSTRUMENTAÇÃO |
| 591 | 1.2.10.35.4 | Aprovação | 1d | 2026-07-02 | 2026-07-02 | 590 | 2026-07-06 | 2026-07-06 | 1d | 2026-07-06 | 2026-07-06 | 4d |  | AUTOMAÇÃO E INSTRUMENTAÇÃO |
| 592 | 1.2.11 | **Civil** | 10d | 2026-06-25 | 2026-07-08 |  | 2026-06-22 | 2026-07-08 | 13d | 2026-06-22 | 2026-07-08 | 0d |  | CIVIL |
| 593 | 1.2.11.1 | **MC-F0009-0305-MB-C-00001** | 8d | 2026-06-25 | 2026-07-06 |  | 2026-06-22 | 2026-07-07 | 12d | 2026-06-22 | 2026-07-07 | 0d |  | CIVIL |
| 594 | 1.2.11.1.1 | Emissão inicial | 5d | 2026-06-25 | 2026-07-01 | 291 | 2026-06-22 | 2026-07-01 | 8d | 2026-06-22 | 2026-07-01 | 0d |  | CIVIL |
| 595 | 1.2.11.1.2 | Análise Tecnored | 1d | 2026-07-02 | 2026-07-02 | 594 | 2026-07-02 | 2026-07-02 | 1d | 2026-07-02 | 2026-07-02 | 2d | 0d | CIVIL |
| 596 | 1.2.11.1.3 | Atendimento de comentários | 1d | 2026-07-03 | 2026-07-03 | 595 | 2026-07-03 | 2026-07-06 | 2d | 2026-07-03 | 2026-07-06 | 2d | 0d | CIVIL |
| 597 | 1.2.11.1.4 | Aprovação | 1d | 2026-07-06 | 2026-07-06 | 596 | 2026-07-07 | 2026-07-07 | 1d | 2026-07-07 | 2026-07-07 | 2d |  | CIVIL |
| 598 | 1.2.11.2 | **PQ-F0009-0305-MB-C-00001** | 5d | 2026-07-02 | 2026-07-08 |  | 2026-07-02 | 2026-07-08 | 5d | 2026-07-02 | 2026-07-08 | 0d |  | CIVIL |
| 599 | 1.2.11.2.1 | Emissão inicial | 1d | 2026-07-02 | 2026-07-02 | 594 | 2026-07-02 | 2026-07-02 | 1d | 2026-07-02 | 2026-07-02 | 0d |  | CIVIL |
| 600 | 1.2.11.2.2 | Análise Tecnored | 1d | 2026-07-03 | 2026-07-03 | 599 | 2026-07-03 | 2026-07-03 | 1d | 2026-07-03 | 2026-07-03 | 0d |  | CIVIL |
| 601 | 1.2.11.2.3 | Atendimento de comentários | 2d | 2026-07-06 | 2026-07-07 | 600 | 2026-07-06 | 2026-07-07 | 2d | 2026-07-06 | 2026-07-07 | 0d |  | CIVIL |
| 602 | 1.2.11.2.4 | Aprovação | 1d | 2026-07-08 | 2026-07-08 | 601 | 2026-07-08 | 2026-07-08 | 1d | 2026-07-08 | 2026-07-08 | 0d |  | CIVIL |
