# CR-F0009-0305-MB-F-00001

Schedule from MS Project, 2026-04-27 to 2026-07-23, status date 2026-06-17, A marks actual dates.

## Calendars

- Padrão: Mon-Fri 09:00-12:00, 13:00-18:00; Sat-Sun off. Exceptions (off unless hours are given): 2026-06-04 to 2026-06-05 (FERIADO).

## Schedule

| ID | WBS | Task | Type | Duration | Start | Finish | Predecessors | Complete | Remaining | Baseline start | Baseline finish | Baseline duration | Baseline 1 start | Baseline 1 finish | Total slack | Free slack | Constraint | Baseline cost | Disciplina | Início_LB_R0 | Término_LB_R0 |
| --- | --- | --- | --- | --- | --- | --- | --- | --- | --- | --- | --- | --- | --- | --- | --- | --- | --- | --- | --- | --- | --- |
| 1 | 1 | **F0009 - Programa Marabá** |  | 58d | 2026-04-27 A | 2026-07-17 |  | 15% | 49.25d | 2026-04-27 | 2026-07-08 | 53d | 2026-04-27 | 2026-07-08 | 0d |  |  |  | GERAL | Seg 27/04/26 | Qua 08/07/26 |
| 2 | 1.1 | **Área 0000 -Documento geral** |  | 17d | 2026-05-19 A | 2026-06-14 |  | 99% | 0d | 2026-05-19 | 2026-05-22 | 3d | 2026-05-19 | 2026-05-22 | 0d |  |  |  | GERAL | Ter 19/05/26 | Sex 22/05/26 |
| 3 | 1.1.1 | **LF-F0009-0305-MB-F-00001** | inactive | 7d | 2026-07-01 | 2026-07-09 |  |  |  |  |  |  |  |  | 6d |  |  | -0 |  |  |  |
| 4 | 1.1.1.1 | Emissão inicial | inactive | 3d | 2026-07-01 | 2026-07-03 | 16FS+45d |  |  |  |  |  |  |  | 6d | 0d |  | -0 |  |  |  |
| 5 | 1.1.1.2 | Análise Tecnored | inactive | 1d | 2026-07-06 | 2026-07-06 | 4 |  |  |  |  |  |  |  | 6d | 0d |  | -0 |  |  |  |
| 6 | 1.1.1.3 | Atendimento de comentários | inactive | 2d | 2026-07-07 | 2026-07-08 | 5 |  |  |  |  |  |  |  | 6d | 0d |  | -0 |  |  |  |
| 7 | 1.1.1.4 | Aprovação | inactive | 1d | 2026-07-09 | 2026-07-09 | 6 |  |  |  |  |  |  |  | 6d |  |  | -0 |  |  |  |
| 8 | 1.1.2 | **Marcos** |  | 17d | 2026-05-19 A | 2026-06-14 |  | 99% | 0d | 2026-05-19 | 2026-05-22 | 3d | 2026-05-19 | 2026-05-22 | 0d |  |  |  | MARCOS | Ter 19/05/26 | Sex 22/05/26 |
| 9 | 1.1.2.1 | Critério de projeto Processo | milestone, manual | 0d | 2026-06-05 | 2026-06-05 |  |  |  | 2026-05-19 | 2026-05-19 | 0d | 2026-05-19 | 2026-05-19 |  |  |  |  | MARCOS | Ter 19/05/26 | Ter 19/05/26 |
| 10 | 1.1.2.2 | Critério de projeto Mecânica | milestone, manual | 0d | 2026-05-19 A | 2026-05-19 A |  | 100% |  | 2026-05-19 | 2026-05-19 | 0d | 2026-05-19 | 2026-05-19 |  |  |  |  | MARCOS | Ter 19/05/26 | Ter 19/05/26 |
| 11 | 1.1.2.3 | Critério de projeto Tubulação | milestone, manual | 0d | 2026-05-22 A | 2026-05-22 A |  | 100% |  | 2026-05-22 | 2026-05-22 | 0d | 2026-05-22 | 2026-05-22 |  |  |  |  | MARCOS | Sex 22/05/26 | Sex 22/05/26 |
| 12 | 1.1.2.4 | Critério de projeto Elétrica | manual | 7d | 2026-06-05 A | 2026-06-14 A |  | 100% |  | 2026-05-22 | 2026-05-22 | 0d | 2026-05-22 | 2026-05-22 |  |  |  |  | MARCOS | Sex 22/05/26 | Sex 22/05/26 |
| 13 | 1.1.2.5 | Critério de projeto Automação | milestone, manual | 0d | 2026-06-05 A | 2026-06-05 |  | 75% | 0d | 2026-05-22 | 2026-05-22 | 0d | 2026-05-22 | 2026-05-22 |  |  |  |  | MARCOS | Sex 22/05/26 | Sex 22/05/26 |
| 14 | 1.1.2.6 | Critério de projeto Estrutura Metálica | milestone, manual | 0d | 2026-06-05 | 2026-06-05 |  |  |  | 2026-05-22 | 2026-05-22 | 0d | 2026-05-22 | 2026-05-22 |  |  |  |  | MARCOS | Sex 22/05/26 | Sex 22/05/26 |
| 15 | 1.2 | **Área 0305 - Hot Blast Stoves** |  | 58d | 2026-04-27 A | 2026-07-17 |  | 14% | 49.67d | 2026-04-27 | 2026-07-08 | 53d | 2026-04-27 | 2026-07-08 | 0d |  |  |  | GERAL | Seg 27/04/26 | Qua 08/07/26 |
| 16 | 1.2.1 | KOM - Início de projeto | milestone | 0d | 2026-04-27 A | 2026-04-27 A |  | 100% |  | 2026-04-27 | 2026-04-27 | 0d | 2026-04-27 | 2026-04-27 |  |  | start no earlier than 2026-04-27 |  | GERAL | Seg 27/04/26 | Seg 27/04/26 |
| 17 | 1.2.2 | **Pendências** |  | 0d | 2026-04-29 A | 2026-04-29 A |  | 100% |  | 2026-04-29 | 2026-04-29 | 0d | 2026-04-29 | 2026-04-29 |  |  |  |  | PENDÊNCIAS | Qua 29/04/26 | Qua 29/04/26 |
| 18 | 1.2.2.1 | Recebimento de dados de entrada | milestone | 0d | 2026-04-29 A | 2026-04-29 A |  | 100% |  | 2026-04-29 | 2026-04-29 | 0d | 2026-04-29 | 2026-04-29 |  |  |  |  | PENDÊNCIAS | Qua 29/04/26 | Qua 29/04/26 |
| 19 | 1.2.3 | **Planejamento** |  | 25.4d | 2026-04-27 A | 2026-06-01 |  | 89% | 2.82d | 2026-04-27 | 2026-05-19 | 17d | 2026-04-27 | 2026-05-19 | 32.6d |  |  |  | PLANEJAMENTO | Seg 27/04/26 | Ter 19/05/26 |
| 20 | 1.2.3.1 | **LD-F0009-0305-MB-F-00001** |  | 24d | 2026-04-27 A | 2026-05-28 |  | 91% | 2.18d | 2026-04-27 | 2026-05-19 | 17d | 2026-04-27 | 2026-05-19 | 34d |  |  |  | PLANEJAMENTO | Seg 27/04/26 | Ter 19/05/26 |
| 21 | 1.2.3.1.1 | Emissão inicial |  | 3d | 2026-04-27 A | 2026-04-29 A | 16 | 100% |  | 2026-04-27 | 2026-04-29 | 3d | 2026-04-27 | 2026-04-29 |  |  |  |  | PLANEJAMENTO | Seg 27/04/26 | Qua 29/04/26 |
| 22 | 1.2.3.1.2 | Análise Tecnored |  | 1d | 2026-04-30 A | 2026-04-30 A | 21 | 100% |  | 2026-04-30 | 2026-04-30 | 1d | 2026-04-30 | 2026-04-30 |  |  |  |  | PLANEJAMENTO | Qui 30/04/26 | Qui 30/04/26 |
| 23 | 1.2.3.1.3 | Atendimento de comentários |  | 6d | 2026-05-06 A | 2026-05-13 A | 22FS+3d | 100% |  | 2026-05-06 | 2026-05-13 | 6d | 2026-05-06 | 2026-05-13 |  |  |  |  | PLANEJAMENTO | Qua 06/05/26 | Qua 13/05/26 |
| 24 | 1.2.3.1.4 | Aprovação |  | 1d | 2026-05-28 | 2026-05-28 | 23FS+10d |  |  | 2026-05-19 | 2026-05-19 | 1d | 2026-05-19 | 2026-05-19 | 34d |  |  |  | PLANEJAMENTO | Ter 19/05/26 | Ter 19/05/26 |

| ID | WBS | Task | Duration | Start | Finish | Predecessors | Complete | Remaining | Baseline start | Baseline finish | Baseline duration | Baseline 1 start | Baseline 1 finish | Total slack | Free slack | Constraint | Disciplina | Início_LB_R0 | Término_LB_R0 |
| --- | --- | --- | --- | --- | --- | --- | --- | --- | --- | --- | --- | --- | --- | --- | --- | --- | --- | --- | --- |
| 25 | 1.2.3.2 | **CR-F0009-0305-MB-F-00001** | 22.4d | 2026-04-30 A | 2026-06-01 |  | 86% | 3.2d | 2026-04-30 | 2026-05-19 | 13.4d | 2026-04-30 | 2026-05-19 | 32.6d |  |  | PLANEJAMENTO | Qui 30/04/26 | Ter 19/05/26 |
| 26 | 1.2.3.2.1 | Emissão inicial | 3d | 2026-04-30 A | 2026-05-04 A | 21 | 100% |  | 2026-04-30 | 2026-05-04 | 3d | 2026-04-30 | 2026-05-04 |  |  |  | PLANEJAMENTO | Qui 30/04/26 | Seg 04/05/26 |
| 27 | 1.2.3.2.2 | Análise Tecnored | 1d | 2026-05-05 A | 2026-05-05 A | 26 | 100% |  | 2026-05-05 | 2026-05-05 | 1d | 2026-05-05 | 2026-05-05 |  |  |  | PLANEJAMENTO | Ter 05/05/26 | Ter 05/05/26 |
| 28 | 1.2.3.2.3 | Atendimento de comentários | 2d | 2026-05-13 A | 2026-05-18 A | 27FS+8d | 100% |  | 2026-05-13 | 2026-05-18 | 2d | 2026-05-13 | 2026-05-18 |  |  |  | PLANEJAMENTO | Qua 13/05/26 | Seg 18/05/26 |
| 29 | 1.2.3.2.4 | Aprovação | 1d | 2026-05-29 | 2026-06-01 | 28FS+9d |  |  | 2026-05-18 | 2026-05-19 | 1d | 2026-05-18 | 2026-05-19 | 32.6d |  |  | PLANEJAMENTO | Seg 18/05/26 | Ter 19/05/26 |
| 30 | 1.2.4 | **Coordenação** | 58d | 2026-04-27 A | 2026-07-17 |  | 22% | 45.24d | 2026-04-27 | 2026-07-08 | 53d | 2026-04-27 | 2026-07-08 | 0d |  |  | COORDENAÇÃO | Seg 27/04/26 | Qua 08/07/26 |
| 31 | 1.2.4.1 | **RM-F0009-0305-MB-G-00001** | 7d | 2026-06-11 A | 2026-06-19 |  | 21% | 5.5d | 2026-05-25 | 2026-06-02 | 7d | 2026-05-25 | 2026-06-02 | 20d |  |  | COORDENAÇÃO | Seg 25/05/26 | Ter 02/06/26 |
| 32 | 1.2.4.1.1 | Emissão inicial | 3d | 2026-06-11 A | 2026-06-15 | 16FS+23d | 50% | 1.5d | 2026-05-25 | 2026-05-27 | 3d | 2026-05-25 | 2026-05-27 | 0d |  | start no earlier than 2026-06-11 | COORDENAÇÃO | Seg 25/05/26 | Qua 27/05/26 |
| 33 | 1.2.4.1.2 | Análise Tecnored | 1d | 2026-06-16 | 2026-06-16 | 32 |  |  | 2026-05-28 | 2026-05-28 | 1d | 2026-05-28 | 2026-05-28 | 20d | 0d |  | COORDENAÇÃO | Qui 28/05/26 | Qui 28/05/26 |
| 34 | 1.2.4.1.3 | Atendimento de comentários | 2d | 2026-06-17 | 2026-06-18 | 33 |  |  | 2026-05-29 | 2026-06-01 | 2d | 2026-05-29 | 2026-06-01 | 20d | 0d |  | COORDENAÇÃO | Sex 29/05/26 | Seg 01/06/26 |
| 35 | 1.2.4.1.4 | Aprovação | 1d | 2026-06-19 | 2026-06-19 | 34 |  |  | 2026-06-02 | 2026-06-02 | 1d | 2026-06-02 | 2026-06-02 | 20d |  |  | COORDENAÇÃO | Ter 02/06/26 | Ter 02/06/26 |
| 36 | 1.2.4.2 | **RM-F0009-0305MB-G-00002** | 7d | 2026-06-30 | 2026-07-08 |  |  |  | 2026-06-11 | 2026-06-19 | 7d | 2026-06-11 | 2026-06-19 | 0d |  |  | COORDENAÇÃO | Qui 11/06/26 | Sex 19/06/26 |
| 37 | 1.2.4.2.1 | Emissão inicial | 3d | 2026-06-30 | 2026-07-02 | 32FS+10d |  |  | 2026-06-11 | 2026-06-15 | 3d | 2026-06-11 | 2026-06-15 | 0d |  | start no earlier than 2026-06-22 | COORDENAÇÃO | Qui 11/06/26 | Seg 15/06/26 |
| 38 | 1.2.4.2.2 | Análise Tecnored | 1d | 2026-07-03 | 2026-07-03 | 37 |  |  | 2026-06-16 | 2026-06-16 | 1d | 2026-06-16 | 2026-06-16 | 7d | 0d |  | COORDENAÇÃO | Ter 16/06/26 | Ter 16/06/26 |
| 39 | 1.2.4.2.3 | Atendimento de comentários | 2d | 2026-07-06 | 2026-07-07 | 38 |  |  | 2026-06-17 | 2026-06-18 | 2d | 2026-06-17 | 2026-06-18 | 7d | 0d |  | COORDENAÇÃO | Qua 17/06/26 | Qui 18/06/26 |
| 40 | 1.2.4.2.4 | Aprovação | 1d | 2026-07-08 | 2026-07-08 | 39 |  |  | 2026-06-19 | 2026-06-19 | 1d | 2026-06-19 | 2026-06-19 | 7d |  |  | COORDENAÇÃO | Sex 19/06/26 | Sex 19/06/26 |
| 41 | 1.2.4.3 | **RL-F0009-0305-MB-G-00001** | 4d | 2026-07-14 | 2026-07-17 |  |  |  | 2026-06-30 | 2026-07-08 | 7d | 2026-06-30 | 2026-07-08 | 0d |  |  | COORDENAÇÃO | Ter 30/06/26 | Qua 08/07/26 |
| 42 | 1.2.4.3.1 | Emissão inicial | 1d | 2026-07-14 | 2026-07-14 | 37FS+7d |  |  | 2026-06-30 | 2026-07-02 | 3d | 2026-06-30 | 2026-07-02 | 0d |  |  | COORDENAÇÃO | Ter 30/06/26 | Qui 02/07/26 |
| 43 | 1.2.4.3.2 | Análise Tecnored | 1d | 2026-07-15 | 2026-07-15 | 42 |  |  | 2026-07-03 | 2026-07-03 | 1d | 2026-07-03 | 2026-07-03 | 0d |  |  | COORDENAÇÃO | Sex 03/07/26 | Sex 03/07/26 |
| 44 | 1.2.4.3.3 | Atendimento de comentários | 1d | 2026-07-16 | 2026-07-16 | 43 |  |  | 2026-07-06 | 2026-07-07 | 2d | 2026-07-06 | 2026-07-07 | 0d |  |  | COORDENAÇÃO | Seg 06/07/26 | Ter 07/07/26 |
| 45 | 1.2.4.3.4 | Aprovação | 1d | 2026-07-17 | 2026-07-17 | 44 |  |  | 2026-07-08 | 2026-07-08 | 1d | 2026-07-08 | 2026-07-08 | 0d |  |  | COORDENAÇÃO | Qua 08/07/26 | Qua 08/07/26 |
| 46 | 1.2.4.4 | **LP-F0009-0305-MB-G-00001** | 37d | 2026-04-27 A | 2026-06-18 |  | 57% | 15.86d | 2026-04-27 | 2026-06-16 | 37d | 2026-04-27 | 2026-06-16 | 21d |  |  | COORDENAÇÃO | Seg 27/04/26 | Ter 16/06/26 |
| 47 | 1.2.4.4.1 | Emissão inicial | 3d | 2026-04-27 A | 2026-04-29 A | 16 | 100% |  | 2026-04-27 | 2026-04-29 | 3d | 2026-04-27 | 2026-04-29 |  |  |  | COORDENAÇÃO | Seg 27/04/26 | Qua 29/04/26 |
| 48 | 1.2.4.4.2 | Análise Tecnored | 1d | 2026-04-30 A | 2026-04-30 A | 47 | 100% |  | 2026-04-30 | 2026-04-30 | 1d | 2026-04-30 | 2026-04-30 |  |  |  | COORDENAÇÃO | Qui 30/04/26 | Qui 30/04/26 |
| 49 | 1.2.4.4.3 | Atendimento de comentários | 2d | 2026-06-16 | 2026-06-17 | 48FS+30d |  |  | 2026-06-12 | 2026-06-15 | 2d | 2026-06-12 | 2026-06-15 | 21d | 0d |  | COORDENAÇÃO | Sex 12/06/26 | Seg 15/06/26 |
| 50 | 1.2.4.4.4 | Aprovação | 1d | 2026-06-18 | 2026-06-18 | 49 |  |  | 2026-06-16 | 2026-06-16 | 1d | 2026-06-16 | 2026-06-16 | 21d |  |  | COORDENAÇÃO | Ter 16/06/26 | Ter 16/06/26 |

| ID | WBS | Task | Type | Duration | Start | Finish | Predecessors | Complete | Remaining | Baseline start | Baseline finish | Baseline duration | Baseline 1 start | Baseline 1 finish | Total slack | Free slack | Baseline cost | Disciplina | Início_LB_R0 | Término_LB_R0 |
| --- | --- | --- | --- | --- | --- | --- | --- | --- | --- | --- | --- | --- | --- | --- | --- | --- | --- | --- | --- | --- |
| 51 | 1.2.5 | **Processo** |  | 16d | 2026-05-19 A | 2026-06-11 |  | 73% | 4.36d | 2026-05-19 | 2026-06-25 | 28d | 2026-05-19 | 2026-06-25 | 26d |  |  | PROCESSOS | Ter 19/05/26 | Qui 25/06/26 |
| 52 | 1.2.5.1 | **CP-F0009-0305-MB-P-00001** | inactive | 22d | 2026-05-11 | 2026-06-11 |  |  |  |  |  |  |  |  | 26d |  | -0 |  |  |  |
| 53 | 1.2.5.1.1 | Emissão inicial | inactive | 5d | 2026-05-11 | 2026-05-15 | 26FS+4d |  |  |  |  |  |  |  | 39d | 13d | -0 |  |  |  |
| 54 | 1.2.5.1.2 | Análise Tecnored | inactive | 1d | 2026-06-08 | 2026-06-08 | 53, 9 |  |  |  |  |  |  |  | 26d | 0d | -0 |  |  |  |
| 55 | 1.2.5.1.3 | Atendimento de comentários | inactive | 2d | 2026-06-09 | 2026-06-10 | 54 |  |  |  |  |  |  |  | 26d | 0d | -0 |  |  |  |
| 56 | 1.2.5.1.4 | Aprovação | inactive | 1d | 2026-06-11 | 2026-06-11 | 55 |  |  |  |  |  |  |  | 26d |  | -0 |  |  |  |
| 57 | 1.2.5.2 | **MD-F0009-0305-MB-P-00001** | inactive | 7d | 2026-06-19 | 2026-06-29 |  |  |  | 2026-06-17 | 2026-06-25 | 7d | 2026-06-17 | 2026-06-25 | 14d |  |  |  |  |  |
| 58 | 1.2.5.2.1 | Emissão inicial | inactive | 3d | 2026-06-19 | 2026-06-23 | 63FS+20d |  |  | 2026-06-17 | 2026-06-19 | 3d | 2026-06-17 | 2026-06-19 | 14d | 0d |  |  |  |  |
| 59 | 1.2.5.2.2 | Análise Tecnored | inactive | 1d | 2026-06-24 | 2026-06-24 | 58 |  |  | 2026-06-22 | 2026-06-22 | 1d | 2026-06-22 | 2026-06-22 | 14d | 0d |  |  |  |  |
| 60 | 1.2.5.2.3 | Atendimento de comentários | inactive | 2d | 2026-06-25 | 2026-06-26 | 59 |  |  | 2026-06-23 | 2026-06-24 | 2d | 2026-06-23 | 2026-06-24 | 14d | 0d |  |  |  |  |
| 61 | 1.2.5.2.4 | Aprovação | inactive | 1d | 2026-06-29 | 2026-06-29 | 60 |  |  | 2026-06-25 | 2026-06-25 | 1d | 2026-06-25 | 2026-06-25 | 14d |  |  |  |  |  |
| 62 | 1.2.5.3 | **FG-F0009-0305-MB-P-00001** |  | 16d | 2026-05-19 A | 2026-06-11 |  | 73% | 4.36d | 2026-05-19 | 2026-05-25 | 5d | 2026-05-19 | 2026-05-25 | 26d |  |  | PROCESSOS | Ter 19/05/26 | Seg 25/05/26 |
| 63 | 1.2.5.3.1 | Emissão inicial |  | 1d | 2026-05-19 A | 2026-05-19 A | 53FS+8d, 9 | 100% |  | 2026-05-19 | 2026-05-19 | 1d | 2026-05-19 | 2026-05-19 |  |  |  | PROCESSOS | Ter 19/05/26 | Ter 19/05/26 |
| 64 | 1.2.5.3.2 | Análise Tecnored |  | 7d | 2026-05-20 A | 2026-05-28 A | 63 | 100% |  | 2026-05-20 | 2026-05-20 | 1d | 2026-05-20 | 2026-05-20 |  |  |  | PROCESSOS | Qua 20/05/26 | Qua 20/05/26 |
| 65 | 1.2.5.3.3 | Atendimento de comentários |  | 2d | 2026-05-29 | 2026-06-01 | 64 |  |  | 2026-05-21 | 2026-05-22 | 2d | 2026-05-21 | 2026-05-22 | 26d | 0d |  | PROCESSOS | Qui 21/05/26 | Sex 22/05/26 |
| 66 | 1.2.5.3.4 | Aprovação |  | 1d | 2026-06-11 | 2026-06-11 | 65FS+5d |  |  | 2026-05-25 | 2026-05-25 | 1d | 2026-05-25 | 2026-05-25 | 26d |  |  | PROCESSOS | Seg 25/05/26 | Seg 25/05/26 |
| 67 | 1.2.6 | **Mecânica** |  | 32d | 2026-05-15 A | 2026-07-01 |  | 28% | 22.9d | 2026-05-19 | 2026-07-08 | 37d | 2026-05-19 | 2026-07-08 | 12d |  |  | MECÂNICA | Ter 19/05/26 | Qua 08/07/26 |
| 68 | 1.2.6.1 | **CP-F0009-0305-MB-M-00001** | inactive | 11d | 2026-05-08 | 2026-05-22 |  |  |  |  |  |  |  |  | 35d |  | -0 |  |  |  |
| 69 | 1.2.6.1.1 | Emissão inicial | inactive | 5d | 2026-05-08 | 2026-05-14 | 26FS+3d |  |  |  |  |  |  |  | 35d | 2d | -0 |  |  |  |
| 70 | 1.2.6.1.2 | Análise Tecnored | inactive | 1d | 2026-05-19 | 2026-05-19 | 69, 10 |  |  |  |  |  |  |  | 38d | 0d | -0 |  |  |  |
| 71 | 1.2.6.1.3 | Atendimento de comentários | inactive | 2d | 2026-05-20 | 2026-05-21 | 70 |  |  |  |  |  |  |  | 38d | 0d | -0 |  |  |  |
| 72 | 1.2.6.1.4 | Aprovação | inactive | 1d | 2026-05-22 | 2026-05-22 | 71 |  |  |  |  |  |  |  | 38d |  | -0 |  |  |  |
| 73 | 1.2.6.2 | **MD-F0009-0305-MB-M-00001** | inactive | 6d | 2026-06-02 | 2026-06-11 |  |  |  | 2026-05-26 | 2026-06-02 | 6d | 2026-05-26 | 2026-06-02 | 23d |  |  |  |  |  |
| 74 | 1.2.6.2.1 | Emissão inicial | inactive | 2d | 2026-06-02 | 2026-06-03 | 69, 81, 10 |  |  | 2026-05-26 | 2026-05-27 | 2d | 2026-05-26 | 2026-05-27 | 23d | 0d |  |  |  |  |
| 75 | 1.2.6.2.2 | Análise Tecnored | inactive | 1d | 2026-06-08 | 2026-06-08 | 74 |  |  | 2026-05-28 | 2026-05-28 | 1d | 2026-05-28 | 2026-05-28 | 26d | 0d |  |  |  |  |
| 76 | 1.2.6.2.3 | Atendimento de comentários | inactive | 2d | 2026-06-09 | 2026-06-10 | 75 |  |  | 2026-05-29 | 2026-06-01 | 2d | 2026-05-29 | 2026-06-01 | 26d | 0d |  |  |  |  |
| 77 | 1.2.6.2.4 | Aprovação | inactive | 1d | 2026-06-11 | 2026-06-11 | 76 |  |  | 2026-06-02 | 2026-06-02 | 1d | 2026-06-02 | 2026-06-02 | 26d |  |  |  |  |  |

| ID | WBS | Task | Duration | Start | Finish | Predecessors | Complete | Remaining | Baseline start | Baseline finish | Baseline duration | Baseline 1 start | Baseline 1 finish | Total slack | Free slack | Constraint | Disciplina | Início_LB_R0 | Término_LB_R0 |
| --- | --- | --- | --- | --- | --- | --- | --- | --- | --- | --- | --- | --- | --- | --- | --- | --- | --- | --- | --- |
| 78 | 1.2.6.3 | **LE-F0009-0305-MB-M-00001** | 6d | 2026-05-26 A | 2026-06-02 |  | 83% | 1d | 2026-05-19 | 2026-05-26 | 6d | 2026-05-19 | 2026-05-26 | 31d |  |  | MECÂNICA | Ter 19/05/26 | Ter 26/05/26 |
| 79 | 1.2.6.3.1 | Emissão inicial | 2d | 2026-05-26 A | 2026-05-27 A | 69, 10FS+5d | 100% |  | 2026-05-19 | 2026-05-20 | 2d | 2026-05-19 | 2026-05-20 |  |  |  | MECÂNICA | Ter 19/05/26 | Qua 20/05/26 |
| 80 | 1.2.6.3.2 | Análise Tecnored | 1d | 2026-05-28 A | 2026-05-28 A | 79 | 100% |  | 2026-05-21 | 2026-05-21 | 1d | 2026-05-21 | 2026-05-21 |  |  |  | MECÂNICA | Qui 21/05/26 | Qui 21/05/26 |
| 81 | 1.2.6.3.3 | Atendimento de comentários | 2d | 2026-05-29 A | 2026-06-01 A | 80 | 100% |  | 2026-05-22 | 2026-05-25 | 2d | 2026-05-22 | 2026-05-25 |  |  |  | MECÂNICA | Sex 22/05/26 | Seg 25/05/26 |
| 82 | 1.2.6.3.4 | Aprovação | 1d | 2026-06-02 | 2026-06-02 | 81 |  |  | 2026-05-26 | 2026-05-26 | 1d | 2026-05-26 | 2026-05-26 | 31d |  |  | MECÂNICA | Ter 26/05/26 | Ter 26/05/26 |
| 83 | 1.2.6.4 | **PQ-F0009-0305-MB-M-00001** | 7d | 2026-06-18 | 2026-06-26 |  |  |  | 2026-05-28 | 2026-06-05 | 7d | 2026-05-28 | 2026-06-05 | 15d |  |  | MECÂNICA | Qui 28/05/26 | Sex 05/06/26 |
| 84 | 1.2.6.4.1 | Emissão inicial | 3d | 2026-06-18 | 2026-06-22 | 74 |  |  | 2026-05-28 | 2026-06-01 | 3d | 2026-05-28 | 2026-06-01 | 15d | 0d | start no earlier than 2026-06-18 | MECÂNICA | Qui 28/05/26 | Seg 01/06/26 |
| 85 | 1.2.6.4.2 | Análise Tecnored | 1d | 2026-06-23 | 2026-06-23 | 84 |  |  | 2026-06-02 | 2026-06-02 | 1d | 2026-06-02 | 2026-06-02 | 15d | 0d |  | MECÂNICA | Ter 02/06/26 | Ter 02/06/26 |
| 86 | 1.2.6.4.3 | Atendimento de comentários | 2d | 2026-06-24 | 2026-06-25 | 85 |  |  | 2026-06-03 | 2026-06-04 | 2d | 2026-06-03 | 2026-06-04 | 15d | 0d |  | MECÂNICA | Qua 03/06/26 | Qui 04/06/26 |
| 87 | 1.2.6.4.4 | Aprovação | 1d | 2026-06-26 | 2026-06-26 | 86 |  |  | 2026-06-05 | 2026-06-05 | 1d | 2026-06-05 | 2026-06-05 | 15d |  |  | MECÂNICA | Sex 05/06/26 | Sex 05/06/26 |
| 88 | 1.2.6.5 | **AG-F0009-0305-MB-L-00001** | 6d | 2026-06-24 | 2026-07-01 |  |  |  | 2026-06-22 | 2026-07-08 | 13d | 2026-06-22 | 2026-07-08 | 12d |  |  | MECÂNICA | Seg 22/06/26 | Qua 08/07/26 |
| 89 | 1.2.6.5.1 | Emissão inicial | 3d | 2026-06-24 | 2026-06-26 | 291 |  |  | 2026-06-22 | 2026-07-02 | 9d | 2026-06-22 | 2026-07-02 | 12d | 0d | finish no earlier than 2026-06-26 | MECÂNICA | Seg 22/06/26 | Qui 02/07/26 |
| 90 | 1.2.6.5.2 | Análise Tecnored | 1d | 2026-06-29 | 2026-06-29 | 89 |  |  | 2026-07-03 | 2026-07-03 | 1d | 2026-07-03 | 2026-07-03 | 12d | 0d |  | MECÂNICA | Sex 03/07/26 | Sex 03/07/26 |
| 91 | 1.2.6.5.3 | Atendimento de comentários | 1d | 2026-06-30 | 2026-06-30 | 90 |  |  | 2026-07-06 | 2026-07-07 | 2d | 2026-07-06 | 2026-07-07 | 12d | 0d |  | MECÂNICA | Seg 06/07/26 | Ter 07/07/26 |
| 92 | 1.2.6.5.4 | Aprovação | 1d | 2026-07-01 | 2026-07-01 | 91 |  |  | 2026-07-08 | 2026-07-08 | 1d | 2026-07-08 | 2026-07-08 | 12d |  |  | MECÂNICA | Qua 08/07/26 | Qua 08/07/26 |
| 93 | 1.2.6.6 | **AG-F0009-0305-MB-L-00002** | 6d | 2026-06-24 | 2026-07-01 |  |  |  | 2026-06-22 | 2026-07-08 | 13d | 2026-06-22 | 2026-07-08 | 12d |  |  | MECÂNICA | Seg 22/06/26 | Qua 08/07/26 |
| 94 | 1.2.6.6.1 | Emissão inicial | 3d | 2026-06-24 | 2026-06-26 | 291 |  |  | 2026-06-22 | 2026-07-02 | 9d | 2026-06-22 | 2026-07-02 | 12d | 0d |  | MECÂNICA | Seg 22/06/26 | Qui 02/07/26 |
| 95 | 1.2.6.6.2 | Análise Tecnored | 1d | 2026-06-29 | 2026-06-29 | 94 |  |  | 2026-07-03 | 2026-07-03 | 1d | 2026-07-03 | 2026-07-03 | 12d | 0d |  | MECÂNICA | Sex 03/07/26 | Sex 03/07/26 |
| 96 | 1.2.6.6.3 | Atendimento de comentários | 1d | 2026-06-30 | 2026-06-30 | 95 |  |  | 2026-07-06 | 2026-07-07 | 2d | 2026-07-06 | 2026-07-07 | 12d | 0d |  | MECÂNICA | Seg 06/07/26 | Ter 07/07/26 |
| 97 | 1.2.6.6.4 | Aprovação | 1d | 2026-07-01 | 2026-07-01 | 96 |  |  | 2026-07-08 | 2026-07-08 | 1d | 2026-07-08 | 2026-07-08 | 12d |  |  | MECÂNICA | Qua 08/07/26 | Qua 08/07/26 |
| 98 | 1.2.6.7 | **AG-F0009-0305-MB-L-00003** | 6d | 2026-06-24 | 2026-07-01 |  |  |  | 2026-06-22 | 2026-07-08 | 13d | 2026-06-22 | 2026-07-08 | 12d |  |  | MECÂNICA | Seg 22/06/26 | Qua 08/07/26 |
| 99 | 1.2.6.7.1 | Emissão inicial | 3d | 2026-06-24 | 2026-06-26 | 291 |  |  | 2026-06-22 | 2026-07-02 | 9d | 2026-06-22 | 2026-07-02 | 12d | 0d |  | MECÂNICA | Seg 22/06/26 | Qui 02/07/26 |
| 100 | 1.2.6.7.2 | Análise Tecnored | 1d | 2026-06-29 | 2026-06-29 | 99 |  |  | 2026-07-03 | 2026-07-03 | 1d | 2026-07-03 | 2026-07-03 | 12d | 0d |  | MECÂNICA | Sex 03/07/26 | Sex 03/07/26 |
| 101 | 1.2.6.7.3 | Atendimento de comentários | 1d | 2026-06-30 | 2026-06-30 | 100 |  |  | 2026-07-06 | 2026-07-07 | 2d | 2026-07-06 | 2026-07-07 | 12d | 0d |  | MECÂNICA | Seg 06/07/26 | Ter 07/07/26 |
| 102 | 1.2.6.7.4 | Aprovação | 1d | 2026-07-01 | 2026-07-01 | 101 |  |  | 2026-07-08 | 2026-07-08 | 1d | 2026-07-08 | 2026-07-08 | 12d |  |  | MECÂNICA | Qua 08/07/26 | Qua 08/07/26 |

| ID | WBS | Task | Duration | Start | Finish | Predecessors | Baseline start | Baseline finish | Baseline duration | Baseline 1 start | Baseline 1 finish | Total slack | Free slack | Disciplina | Início_LB_R0 | Término_LB_R0 |
| --- | --- | --- | --- | --- | --- | --- | --- | --- | --- | --- | --- | --- | --- | --- | --- | --- |
| 103 | 1.2.6.8 | **AG-F0009-0305-MB-L-00004** | 6d | 2026-06-24 | 2026-07-01 |  | 2026-06-22 | 2026-07-08 | 13d | 2026-06-22 | 2026-07-08 | 12d |  | MECÂNICA | Seg 22/06/26 | Qua 08/07/26 |
| 104 | 1.2.6.8.1 | Emissão inicial | 3d | 2026-06-24 | 2026-06-26 | 291 | 2026-06-22 | 2026-07-02 | 9d | 2026-06-22 | 2026-07-02 | 12d | 0d | MECÂNICA | Seg 22/06/26 | Qui 02/07/26 |
| 105 | 1.2.6.8.2 | Análise Tecnored | 1d | 2026-06-29 | 2026-06-29 | 104 | 2026-07-03 | 2026-07-03 | 1d | 2026-07-03 | 2026-07-03 | 12d | 0d | MECÂNICA | Sex 03/07/26 | Sex 03/07/26 |
| 106 | 1.2.6.8.3 | Atendimento de comentários | 1d | 2026-06-30 | 2026-06-30 | 105 | 2026-07-06 | 2026-07-07 | 2d | 2026-07-06 | 2026-07-07 | 12d | 0d | MECÂNICA | Seg 06/07/26 | Ter 07/07/26 |
| 107 | 1.2.6.8.4 | Aprovação | 1d | 2026-07-01 | 2026-07-01 | 106 | 2026-07-08 | 2026-07-08 | 1d | 2026-07-08 | 2026-07-08 | 12d |  | MECÂNICA | Qua 08/07/26 | Qua 08/07/26 |
| 108 | 1.2.6.9 | **AG-F0009-0305-MB-L-00005** | 6d | 2026-06-24 | 2026-07-01 |  | 2026-06-22 | 2026-07-08 | 13d | 2026-06-22 | 2026-07-08 | 12d |  | MECÂNICA | Seg 22/06/26 | Qua 08/07/26 |
| 109 | 1.2.6.9.1 | Emissão inicial | 3d | 2026-06-24 | 2026-06-26 | 291 | 2026-06-22 | 2026-07-02 | 9d | 2026-06-22 | 2026-07-02 | 12d | 0d | MECÂNICA | Seg 22/06/26 | Qui 02/07/26 |
| 110 | 1.2.6.9.2 | Análise Tecnored | 1d | 2026-06-29 | 2026-06-29 | 109 | 2026-07-03 | 2026-07-03 | 1d | 2026-07-03 | 2026-07-03 | 12d | 0d | MECÂNICA | Sex 03/07/26 | Sex 03/07/26 |
| 111 | 1.2.6.9.3 | Atendimento de comentários | 1d | 2026-06-30 | 2026-06-30 | 110 | 2026-07-06 | 2026-07-07 | 2d | 2026-07-06 | 2026-07-07 | 12d | 0d | MECÂNICA | Seg 06/07/26 | Ter 07/07/26 |
| 112 | 1.2.6.9.4 | Aprovação | 1d | 2026-07-01 | 2026-07-01 | 111 | 2026-07-08 | 2026-07-08 | 1d | 2026-07-08 | 2026-07-08 | 12d |  | MECÂNICA | Qua 08/07/26 | Qua 08/07/26 |
| 113 | 1.2.6.10 | **AG-F0009-0305-MB-L-00006** | 6d | 2026-06-24 | 2026-07-01 |  | 2026-06-22 | 2026-07-08 | 13d | 2026-06-22 | 2026-07-08 | 12d |  | MECÂNICA | Seg 22/06/26 | Qua 08/07/26 |
| 114 | 1.2.6.10.1 | Emissão inicial | 3d | 2026-06-24 | 2026-06-26 | 291 | 2026-06-22 | 2026-07-02 | 9d | 2026-06-22 | 2026-07-02 | 12d | 0d | MECÂNICA | Seg 22/06/26 | Qui 02/07/26 |
| 115 | 1.2.6.10.2 | Análise Tecnored | 1d | 2026-06-29 | 2026-06-29 | 114 | 2026-07-03 | 2026-07-03 | 1d | 2026-07-03 | 2026-07-03 | 12d | 0d | MECÂNICA | Sex 03/07/26 | Sex 03/07/26 |
| 116 | 1.2.6.10.3 | Atendimento de comentários | 1d | 2026-06-30 | 2026-06-30 | 115 | 2026-07-06 | 2026-07-07 | 2d | 2026-07-06 | 2026-07-07 | 12d | 0d | MECÂNICA | Seg 06/07/26 | Ter 07/07/26 |
| 117 | 1.2.6.10.4 | Aprovação | 1d | 2026-07-01 | 2026-07-01 | 116 | 2026-07-08 | 2026-07-08 | 1d | 2026-07-08 | 2026-07-08 | 12d |  | MECÂNICA | Qua 08/07/26 | Qua 08/07/26 |
| 118 | 1.2.6.11 | **AG-F0009-0305-MB-L-00007** | 6d | 2026-06-24 | 2026-07-01 |  | 2026-06-22 | 2026-07-08 | 13d | 2026-06-22 | 2026-07-08 | 12d |  | MECÂNICA | Seg 22/06/26 | Qua 08/07/26 |
| 119 | 1.2.6.11.1 | Emissão inicial | 3d | 2026-06-24 | 2026-06-26 | 291 | 2026-06-22 | 2026-07-02 | 9d | 2026-06-22 | 2026-07-02 | 12d | 0d | MECÂNICA | Seg 22/06/26 | Qui 02/07/26 |
| 120 | 1.2.6.11.2 | Análise Tecnored | 1d | 2026-06-29 | 2026-06-29 | 119 | 2026-07-03 | 2026-07-03 | 1d | 2026-07-03 | 2026-07-03 | 12d | 0d | MECÂNICA | Sex 03/07/26 | Sex 03/07/26 |
| 121 | 1.2.6.11.3 | Atendimento de comentários | 1d | 2026-06-30 | 2026-06-30 | 120 | 2026-07-06 | 2026-07-07 | 2d | 2026-07-06 | 2026-07-07 | 12d | 0d | MECÂNICA | Seg 06/07/26 | Ter 07/07/26 |
| 122 | 1.2.6.11.4 | Aprovação | 1d | 2026-07-01 | 2026-07-01 | 121 | 2026-07-08 | 2026-07-08 | 1d | 2026-07-08 | 2026-07-08 | 12d |  | MECÂNICA | Qua 08/07/26 | Qua 08/07/26 |
| 123 | 1.2.6.12 | **AG-F0009-0305-MB-L-00008** | 6d | 2026-06-24 | 2026-07-01 |  | 2026-06-22 | 2026-07-08 | 13d | 2026-06-22 | 2026-07-08 | 12d |  | MECÂNICA | Seg 22/06/26 | Qua 08/07/26 |
| 124 | 1.2.6.12.1 | Emissão inicial | 3d | 2026-06-24 | 2026-06-26 | 291 | 2026-06-22 | 2026-07-02 | 9d | 2026-06-22 | 2026-07-02 | 12d | 0d | MECÂNICA | Seg 22/06/26 | Qui 02/07/26 |
| 125 | 1.2.6.12.2 | Análise Tecnored | 1d | 2026-06-29 | 2026-06-29 | 124 | 2026-07-03 | 2026-07-03 | 1d | 2026-07-03 | 2026-07-03 | 12d | 0d | MECÂNICA | Sex 03/07/26 | Sex 03/07/26 |
| 126 | 1.2.6.12.3 | Atendimento de comentários | 1d | 2026-06-30 | 2026-06-30 | 125 | 2026-07-06 | 2026-07-07 | 2d | 2026-07-06 | 2026-07-07 | 12d | 0d | MECÂNICA | Seg 06/07/26 | Ter 07/07/26 |
| 127 | 1.2.6.12.4 | Aprovação | 1d | 2026-07-01 | 2026-07-01 | 126 | 2026-07-08 | 2026-07-08 | 1d | 2026-07-08 | 2026-07-08 | 12d |  | MECÂNICA | Qua 08/07/26 | Qua 08/07/26 |

| ID | WBS | Task | Duration | Start | Finish | Predecessors | Baseline start | Baseline finish | Baseline duration | Baseline 1 start | Baseline 1 finish | Total slack | Free slack | Constraint | Disciplina | Início_LB_R0 | Término_LB_R0 |
| --- | --- | --- | --- | --- | --- | --- | --- | --- | --- | --- | --- | --- | --- | --- | --- | --- | --- |
| 128 | 1.2.6.13 | **AG-F0009-0305-MB-L-00009** | 6d | 2026-06-24 | 2026-07-01 |  | 2026-06-22 | 2026-07-08 | 13d | 2026-06-22 | 2026-07-08 | 12d |  |  | MECÂNICA | Seg 22/06/26 | Qua 08/07/26 |
| 129 | 1.2.6.13.1 | Emissão inicial | 3d | 2026-06-24 | 2026-06-26 | 291 | 2026-06-22 | 2026-07-02 | 9d | 2026-06-22 | 2026-07-02 | 12d | 0d |  | MECÂNICA | Seg 22/06/26 | Qui 02/07/26 |
| 130 | 1.2.6.13.2 | Análise Tecnored | 1d | 2026-06-29 | 2026-06-29 | 129 | 2026-07-03 | 2026-07-03 | 1d | 2026-07-03 | 2026-07-03 | 12d | 0d |  | MECÂNICA | Sex 03/07/26 | Sex 03/07/26 |
| 131 | 1.2.6.13.3 | Atendimento de comentários | 1d | 2026-06-30 | 2026-06-30 | 130 | 2026-07-06 | 2026-07-07 | 2d | 2026-07-06 | 2026-07-07 | 12d | 0d |  | MECÂNICA | Seg 06/07/26 | Ter 07/07/26 |
| 132 | 1.2.6.13.4 | Aprovação | 1d | 2026-07-01 | 2026-07-01 | 131 | 2026-07-08 | 2026-07-08 | 1d | 2026-07-08 | 2026-07-08 | 12d |  |  | MECÂNICA | Qua 08/07/26 | Qua 08/07/26 |
| 133 | 1.2.6.14 | **PL-F0009-0305-MB-M-00001** | 12d | 2026-06-15 | 2026-06-30 |  | 2026-05-29 | 2026-06-15 | 12d | 2026-05-29 | 2026-06-15 | 13d |  |  | MECÂNICA | Sex 29/05/26 | Seg 15/06/26 |
| 134 | 1.2.6.14.1 | Emissão inicial | 8d | 2026-06-15 | 2026-06-24 | 175 | 2026-05-29 | 2026-06-09 | 8d | 2026-05-29 | 2026-06-09 | 13d | 0d | start no earlier than 2026-06-15 | MECÂNICA | Sex 29/05/26 | Ter 09/06/26 |
| 135 | 1.2.6.14.2 | Análise Tecnored | 1d | 2026-06-25 | 2026-06-25 | 134 | 2026-06-10 | 2026-06-10 | 1d | 2026-06-10 | 2026-06-10 | 13d | 0d |  | MECÂNICA | Qua 10/06/26 | Qua 10/06/26 |
| 136 | 1.2.6.14.3 | Atendimento de comentários | 2d | 2026-06-26 | 2026-06-29 | 135 | 2026-06-11 | 2026-06-12 | 2d | 2026-06-11 | 2026-06-12 | 13d | 0d |  | MECÂNICA | Qui 11/06/26 | Sex 12/06/26 |
| 137 | 1.2.6.14.4 | Aprovação | 1d | 2026-06-30 | 2026-06-30 | 136 | 2026-06-15 | 2026-06-15 | 1d | 2026-06-15 | 2026-06-15 | 13d |  |  | MECÂNICA | Seg 15/06/26 | Seg 15/06/26 |
| 138 | 1.2.6.15 | **PL-F0009-0305-MB-M-00002** | 12d | 2026-06-15 | 2026-06-30 |  | 2026-05-29 | 2026-06-15 | 12d | 2026-05-29 | 2026-06-15 | 13d |  |  | MECÂNICA | Sex 29/05/26 | Seg 15/06/26 |
| 139 | 1.2.6.15.1 | Emissão inicial | 8d | 2026-06-15 | 2026-06-24 | 175 | 2026-05-29 | 2026-06-09 | 8d | 2026-05-29 | 2026-06-09 | 13d | 0d | start no earlier than 2026-06-15 | MECÂNICA | Sex 29/05/26 | Ter 09/06/26 |
| 140 | 1.2.6.15.2 | Análise Tecnored | 1d | 2026-06-25 | 2026-06-25 | 139 | 2026-06-10 | 2026-06-10 | 1d | 2026-06-10 | 2026-06-10 | 13d | 0d |  | MECÂNICA | Qua 10/06/26 | Qua 10/06/26 |
| 141 | 1.2.6.15.3 | Atendimento de comentários | 2d | 2026-06-26 | 2026-06-29 | 140 | 2026-06-11 | 2026-06-12 | 2d | 2026-06-11 | 2026-06-12 | 13d | 0d |  | MECÂNICA | Qui 11/06/26 | Sex 12/06/26 |
| 142 | 1.2.6.15.4 | Aprovação | 1d | 2026-06-30 | 2026-06-30 | 141 | 2026-06-15 | 2026-06-15 | 1d | 2026-06-15 | 2026-06-15 | 13d |  |  | MECÂNICA | Seg 15/06/26 | Seg 15/06/26 |
| 143 | 1.2.6.16 | **PL-F0009-0305-MB-M-00003** | 12d | 2026-06-15 | 2026-06-30 |  | 2026-05-29 | 2026-06-15 | 12d | 2026-05-29 | 2026-06-15 | 13d |  |  | MECÂNICA | Sex 29/05/26 | Seg 15/06/26 |
| 144 | 1.2.6.16.1 | Emissão inicial | 8d | 2026-06-15 | 2026-06-24 | 175 | 2026-05-29 | 2026-06-09 | 8d | 2026-05-29 | 2026-06-09 | 13d | 0d | start no earlier than 2026-06-15 | MECÂNICA | Sex 29/05/26 | Ter 09/06/26 |
| 145 | 1.2.6.16.2 | Análise Tecnored | 1d | 2026-06-25 | 2026-06-25 | 144 | 2026-06-10 | 2026-06-10 | 1d | 2026-06-10 | 2026-06-10 | 13d | 0d |  | MECÂNICA | Qua 10/06/26 | Qua 10/06/26 |
| 146 | 1.2.6.16.3 | Atendimento de comentários | 2d | 2026-06-26 | 2026-06-29 | 145 | 2026-06-11 | 2026-06-12 | 2d | 2026-06-11 | 2026-06-12 | 13d | 0d |  | MECÂNICA | Qui 11/06/26 | Sex 12/06/26 |
| 147 | 1.2.6.16.4 | Aprovação | 1d | 2026-06-30 | 2026-06-30 | 146 | 2026-06-15 | 2026-06-15 | 1d | 2026-06-15 | 2026-06-15 | 13d |  |  | MECÂNICA | Seg 15/06/26 | Seg 15/06/26 |
| 148 | 1.2.6.17 | **PL-F0009-0305-MB-M-00004** | 12d | 2026-06-15 | 2026-06-30 |  | 2026-05-29 | 2026-06-15 | 12d | 2026-05-29 | 2026-06-15 | 13d |  |  | MECÂNICA | Sex 29/05/26 | Seg 15/06/26 |
| 149 | 1.2.6.17.1 | Emissão inicial | 8d | 2026-06-15 | 2026-06-24 | 175 | 2026-05-29 | 2026-06-09 | 8d | 2026-05-29 | 2026-06-09 | 13d | 0d | start no earlier than 2026-06-15 | MECÂNICA | Sex 29/05/26 | Ter 09/06/26 |
| 150 | 1.2.6.17.2 | Análise Tecnored | 1d | 2026-06-25 | 2026-06-25 | 149 | 2026-06-10 | 2026-06-10 | 1d | 2026-06-10 | 2026-06-10 | 13d | 0d |  | MECÂNICA | Qua 10/06/26 | Qua 10/06/26 |
| 151 | 1.2.6.17.3 | Atendimento de comentários | 2d | 2026-06-26 | 2026-06-29 | 150 | 2026-06-11 | 2026-06-12 | 2d | 2026-06-11 | 2026-06-12 | 13d | 0d |  | MECÂNICA | Qui 11/06/26 | Sex 12/06/26 |
| 152 | 1.2.6.17.4 | Aprovação | 1d | 2026-06-30 | 2026-06-30 | 151 | 2026-06-15 | 2026-06-15 | 1d | 2026-06-15 | 2026-06-15 | 13d |  |  | MECÂNICA | Seg 15/06/26 | Seg 15/06/26 |

| ID | WBS | Task | Duration | Start | Finish | Predecessors | Complete | Remaining | Baseline start | Baseline finish | Baseline duration | Baseline 1 start | Baseline 1 finish | Total slack | Free slack | Disciplina | Início_LB_R0 | Término_LB_R0 |
| --- | --- | --- | --- | --- | --- | --- | --- | --- | --- | --- | --- | --- | --- | --- | --- | --- | --- | --- |
| 153 | 1.2.6.18 | **MC-F0009-0305-MB-M-00001** | 14d | 2026-06-01 A | 2026-06-22 |  | 75% | 3.5d | 2026-05-29 | 2026-06-17 | 14d | 2026-05-29 | 2026-06-17 | 19d |  | MECÂNICA | Sex 29/05/26 | Qua 17/06/26 |
| 154 | 1.2.6.18.1 | Emissão inicial | 10d | 2026-06-01 A | 2026-06-16 A | 175 | 100% |  | 2026-05-29 | 2026-06-11 | 10d | 2026-05-29 | 2026-06-11 |  |  | MECÂNICA | Sex 29/05/26 | Qui 11/06/26 |
| 155 | 1.2.6.18.2 | Análise Tecnored | 1d | 2026-06-17 A | 2026-06-17 | 154 | 50% | 0.5d | 2026-06-12 | 2026-06-12 | 1d | 2026-06-12 | 2026-06-12 | 19d | 0d | MECÂNICA | Sex 12/06/26 | Sex 12/06/26 |
| 156 | 1.2.6.18.3 | Atendimento de comentários | 2d | 2026-06-18 | 2026-06-19 | 155 |  |  | 2026-06-15 | 2026-06-16 | 2d | 2026-06-15 | 2026-06-16 | 19d | 0d | MECÂNICA | Seg 15/06/26 | Ter 16/06/26 |
| 157 | 1.2.6.18.4 | Aprovação | 1d | 2026-06-22 | 2026-06-22 | 156 |  |  | 2026-06-17 | 2026-06-17 | 1d | 2026-06-17 | 2026-06-17 | 19d |  | MECÂNICA | Qua 17/06/26 | Qua 17/06/26 |
| 158 | 1.2.6.19 | **MC-F0009-0305-MB-M-00002** | 14d | 2026-06-01 A | 2026-06-22 |  | 75% | 3.5d | 2026-05-29 | 2026-06-17 | 14d | 2026-05-29 | 2026-06-17 | 19d |  | MECÂNICA | Sex 29/05/26 | Qua 17/06/26 |
| 159 | 1.2.6.19.1 | Emissão inicial | 10d | 2026-06-01 A | 2026-06-16 A | 175 | 100% |  | 2026-05-29 | 2026-06-11 | 10d | 2026-05-29 | 2026-06-11 |  |  | MECÂNICA | Sex 29/05/26 | Qui 11/06/26 |
| 160 | 1.2.6.19.2 | Análise Tecnored | 1d | 2026-06-17 A | 2026-06-17 | 159 | 50% | 0.5d | 2026-06-12 | 2026-06-12 | 1d | 2026-06-12 | 2026-06-12 | 19d | 0d | MECÂNICA | Sex 12/06/26 | Sex 12/06/26 |
| 161 | 1.2.6.19.3 | Atendimento de comentários | 2d | 2026-06-18 | 2026-06-19 | 160 |  |  | 2026-06-15 | 2026-06-16 | 2d | 2026-06-15 | 2026-06-16 | 19d | 0d | MECÂNICA | Seg 15/06/26 | Ter 16/06/26 |
| 162 | 1.2.6.19.4 | Aprovação | 1d | 2026-06-22 | 2026-06-22 | 161 |  |  | 2026-06-17 | 2026-06-17 | 1d | 2026-06-17 | 2026-06-17 | 19d |  | MECÂNICA | Qua 17/06/26 | Qua 17/06/26 |
| 163 | 1.2.6.20 | **MC-F0009-0305-MB-M-00003** | 14d | 2026-06-01 A | 2026-06-22 |  | 79% | 3d | 2026-05-29 | 2026-06-17 | 14d | 2026-05-29 | 2026-06-17 | 19d |  | MECÂNICA | Sex 29/05/26 | Qua 17/06/26 |
| 164 | 1.2.6.20.1 | Emissão inicial | 10d | 2026-06-01 A | 2026-06-16 A | 175 | 100% |  | 2026-05-29 | 2026-06-11 | 10d | 2026-05-29 | 2026-06-11 |  |  | MECÂNICA | Sex 29/05/26 | Qui 11/06/26 |
| 165 | 1.2.6.20.2 | Análise Tecnored | 1d | 2026-06-17 A | 2026-06-17 A | 164 | 100% |  | 2026-06-12 | 2026-06-12 | 1d | 2026-06-12 | 2026-06-12 |  |  | MECÂNICA | Sex 12/06/26 | Sex 12/06/26 |
| 166 | 1.2.6.20.3 | Atendimento de comentários | 2d | 2026-06-18 | 2026-06-19 | 165 |  |  | 2026-06-15 | 2026-06-16 | 2d | 2026-06-15 | 2026-06-16 | 19d | 0d | MECÂNICA | Seg 15/06/26 | Ter 16/06/26 |
| 167 | 1.2.6.20.4 | Aprovação | 1d | 2026-06-22 | 2026-06-22 | 166 |  |  | 2026-06-17 | 2026-06-17 | 1d | 2026-06-17 | 2026-06-17 | 19d |  | MECÂNICA | Qua 17/06/26 | Qua 17/06/26 |
| 168 | 1.2.6.21 | **MC-F0009-0305-MB-M-00004** | 14d | 2026-06-01 A | 2026-06-22 |  | 71% | 4d | 2026-05-29 | 2026-06-17 | 14d | 2026-05-29 | 2026-06-17 | 19d |  | MECÂNICA | Sex 29/05/26 | Qua 17/06/26 |
| 169 | 1.2.6.21.1 | Emissão inicial | 10d | 2026-06-01 A | 2026-06-16 A | 175 | 100% |  | 2026-05-29 | 2026-06-11 | 10d | 2026-05-29 | 2026-06-11 |  |  | MECÂNICA | Sex 29/05/26 | Qui 11/06/26 |
| 170 | 1.2.6.21.2 | Análise Tecnored | 1d | 2026-06-17 | 2026-06-17 | 169 |  |  | 2026-06-12 | 2026-06-12 | 1d | 2026-06-12 | 2026-06-12 | 19d | 0d | MECÂNICA | Sex 12/06/26 | Sex 12/06/26 |
| 171 | 1.2.6.21.3 | Atendimento de comentários | 2d | 2026-06-18 | 2026-06-19 | 170 |  |  | 2026-06-15 | 2026-06-16 | 2d | 2026-06-15 | 2026-06-16 | 19d | 0d | MECÂNICA | Seg 15/06/26 | Ter 16/06/26 |
| 172 | 1.2.6.21.4 | Aprovação | 1d | 2026-06-22 | 2026-06-22 | 171 |  |  | 2026-06-17 | 2026-06-17 | 1d | 2026-06-17 | 2026-06-17 | 19d |  | MECÂNICA | Qua 17/06/26 | Qua 17/06/26 |
| 173 | 1.2.6.22 | **ML-F0009-0305-MB-M-00001** | 14d | 2026-05-15 A | 2026-06-03 |  | 92% | 1.17d | 2026-05-19 | 2026-06-02 | 11d | 2026-05-19 | 2026-06-02 | 30d |  | MECÂNICA | Ter 19/05/26 | Ter 02/06/26 |
| 174 | 1.2.6.22.1 | Emissão inicial | 8d | 2026-05-15 A | 2026-05-26 A | 69, 10 | 100% |  | 2026-05-19 | 2026-05-27 | 7d | 2026-05-19 | 2026-05-27 |  |  | MECÂNICA | Ter 19/05/26 | Qua 27/05/26 |
| 175 | 1.2.6.22.2 | Análise Tecnored | 1d | 2026-05-29 A | 2026-05-29 A | 174 | 100% |  | 2026-05-28 | 2026-05-28 | 1d | 2026-05-28 | 2026-05-28 |  |  | MECÂNICA | Qui 28/05/26 | Qui 28/05/26 |
| 176 | 1.2.6.22.3 | Atendimento de comentários | 2d | 2026-06-01 A | 2026-06-02 | 175 | 75% | 0.5d | 2026-05-29 | 2026-06-01 | 2d | 2026-05-29 | 2026-06-01 | 0.5d | 0d | MECÂNICA | Sex 29/05/26 | Seg 01/06/26 |
| 177 | 1.2.6.22.4 | Aprovação | 1d | 2026-06-03 A | 2026-06-03 | 176 | 50% | 0.5d | 2026-06-02 | 2026-06-02 | 1d | 2026-06-02 | 2026-06-02 | 30d |  | MECÂNICA | Ter 02/06/26 | Ter 02/06/26 |

| ID | WBS | Task | Type | Duration | Start | Finish | Predecessors | Complete | Remaining | Baseline start | Baseline finish | Baseline duration | Baseline 1 start | Baseline 1 finish | Total slack | Free slack | Baseline cost | Disciplina | Início_LB_R0 | Término_LB_R0 |
| --- | --- | --- | --- | --- | --- | --- | --- | --- | --- | --- | --- | --- | --- | --- | --- | --- | --- | --- | --- | --- |
| 178 | 1.2.6.23 | **FD-F0009-0305-MB-M-00001** |  | 7d | 2026-06-17 | 2026-06-25 |  |  |  | 2026-06-12 | 2026-06-22 | 7d | 2026-06-12 | 2026-06-22 | 16d |  |  | MECÂNICA | Sex 12/06/26 | Seg 22/06/26 |
| 179 | 1.2.6.23.1 | Emissão inicial |  | 3d | 2026-06-17 | 2026-06-19 | 154, 159, 164, 169 |  |  | 2026-06-12 | 2026-06-16 | 3d | 2026-06-12 | 2026-06-16 | 16d | 0d |  | MECÂNICA | Sex 12/06/26 | Ter 16/06/26 |
| 180 | 1.2.6.23.2 | Análise Tecnored |  | 1d | 2026-06-22 | 2026-06-22 | 179 |  |  | 2026-06-17 | 2026-06-17 | 1d | 2026-06-17 | 2026-06-17 | 16d | 0d |  | MECÂNICA | Qua 17/06/26 | Qua 17/06/26 |
| 181 | 1.2.6.23.3 | Atendimento de comentários |  | 2d | 2026-06-23 | 2026-06-24 | 180 |  |  | 2026-06-18 | 2026-06-19 | 2d | 2026-06-18 | 2026-06-19 | 16d | 0d |  | MECÂNICA | Qui 18/06/26 | Sex 19/06/26 |
| 182 | 1.2.6.23.4 | Aprovação |  | 1d | 2026-06-25 | 2026-06-25 | 181 |  |  | 2026-06-22 | 2026-06-22 | 1d | 2026-06-22 | 2026-06-22 | 16d |  |  | MECÂNICA | Seg 22/06/26 | Seg 22/06/26 |
| 183 | 1.2.6.24 | **FD-F0009-0305-MB-M-00002** |  | 7d | 2026-06-17 | 2026-06-25 |  |  |  | 2026-06-12 | 2026-06-22 | 7d | 2026-06-12 | 2026-06-22 | 16d |  |  | MECÂNICA | Sex 12/06/26 | Seg 22/06/26 |
| 184 | 1.2.6.24.1 | Emissão inicial |  | 3d | 2026-06-17 | 2026-06-19 | 154, 159, 164, 169 |  |  | 2026-06-12 | 2026-06-16 | 3d | 2026-06-12 | 2026-06-16 | 16d | 0d |  | MECÂNICA | Sex 12/06/26 | Ter 16/06/26 |
| 185 | 1.2.6.24.2 | Análise Tecnored |  | 1d | 2026-06-22 | 2026-06-22 | 184 |  |  | 2026-06-17 | 2026-06-17 | 1d | 2026-06-17 | 2026-06-17 | 16d | 0d |  | MECÂNICA | Qua 17/06/26 | Qua 17/06/26 |
| 186 | 1.2.6.24.3 | Atendimento de comentários |  | 2d | 2026-06-23 | 2026-06-24 | 185 |  |  | 2026-06-18 | 2026-06-19 | 2d | 2026-06-18 | 2026-06-19 | 16d | 0d |  | MECÂNICA | Qui 18/06/26 | Sex 19/06/26 |
| 187 | 1.2.6.24.4 | Aprovação |  | 1d | 2026-06-25 | 2026-06-25 | 186 |  |  | 2026-06-22 | 2026-06-22 | 1d | 2026-06-22 | 2026-06-22 | 16d |  |  | MECÂNICA | Seg 22/06/26 | Seg 22/06/26 |
| 188 | 1.2.6.25 | **FD-F0009-0305-MB-M-00003** |  | 7d | 2026-06-17 | 2026-06-25 |  |  |  | 2026-06-12 | 2026-06-22 | 7d | 2026-06-12 | 2026-06-22 | 16d |  |  | MECÂNICA | Sex 12/06/26 | Seg 22/06/26 |
| 189 | 1.2.6.25.1 | Emissão inicial |  | 3d | 2026-06-17 | 2026-06-19 | 154, 159, 164, 169 |  |  | 2026-06-12 | 2026-06-16 | 3d | 2026-06-12 | 2026-06-16 | 16d | 0d |  | MECÂNICA | Sex 12/06/26 | Ter 16/06/26 |
| 190 | 1.2.6.25.2 | Análise Tecnored |  | 1d | 2026-06-22 | 2026-06-22 | 189 |  |  | 2026-06-17 | 2026-06-17 | 1d | 2026-06-17 | 2026-06-17 | 16d | 0d |  | MECÂNICA | Qua 17/06/26 | Qua 17/06/26 |
| 191 | 1.2.6.25.3 | Atendimento de comentários |  | 2d | 2026-06-23 | 2026-06-24 | 190 |  |  | 2026-06-18 | 2026-06-19 | 2d | 2026-06-18 | 2026-06-19 | 16d | 0d |  | MECÂNICA | Qui 18/06/26 | Sex 19/06/26 |
| 192 | 1.2.6.25.4 | Aprovação |  | 1d | 2026-06-25 | 2026-06-25 | 191 |  |  | 2026-06-22 | 2026-06-22 | 1d | 2026-06-22 | 2026-06-22 | 16d |  |  | MECÂNICA | Seg 22/06/26 | Seg 22/06/26 |
| 193 | 1.2.7 | **Tubulação/Utilidades** |  | 20d | 2026-06-10 A | 2026-07-07 |  | 6% | 18.73d | 2026-05-20 | 2026-07-08 | 36d | 2026-05-20 | 2026-07-08 | 8d |  |  | TUBULAÇÃO / UTILIDADES | Qua 20/05/26 | Qua 08/07/26 |
| 194 | 1.2.7.1 | **CP-F0009-0305-MB-T-00001** | inactive | 14d | 2026-05-08 | 2026-05-27 |  |  |  |  |  |  |  |  | 35d |  | -0 |  |  |  |
| 195 | 1.2.7.1.1 | Emissão inicial | inactive | 5d | 2026-05-08 | 2026-05-14 | 26FS+3d |  |  |  |  |  |  |  | 40d | 5d | -0 |  |  |  |
| 196 | 1.2.7.1.2 | Análise Tecnored | inactive | 1d | 2026-05-22 | 2026-05-22 | 195, 11 |  |  |  |  |  |  |  | 35d | 0d | -0 |  |  |  |
| 197 | 1.2.7.1.3 | Atendimento de comentários | inactive | 2d | 2026-05-25 | 2026-05-26 | 196 |  |  |  |  |  |  |  | 35d | 0d | -0 |  |  |  |
| 198 | 1.2.7.1.4 | Aprovação | inactive | 1d | 2026-05-27 | 2026-05-27 | 197 |  |  |  |  |  |  |  | 35d |  | -0 |  |  |  |
| 199 | 1.2.7.2 | **MD-F0009-0305-MB-U-00001** | inactive | 7d | 2026-07-15 | 2026-07-23 |  |  |  | 2026-06-18 | 2026-06-26 | 7d | 2026-06-18 | 2026-06-26 | -4d | 0d |  |  |  |  |
| 200 | 1.2.7.2.1 | Emissão inicial | inactive | 3d | 2026-07-15 | 2026-07-17 | 244FS+5d |  |  | 2026-06-18 | 2026-06-22 | 3d | 2026-06-18 | 2026-06-22 | -4d | 0d |  |  |  |  |
| 201 | 1.2.7.2.2 | Análise Tecnored | inactive | 1d | 2026-07-20 | 2026-07-20 | 200 |  |  | 2026-06-23 | 2026-06-23 | 1d | 2026-06-23 | 2026-06-23 | -4d | 0d |  |  |  |  |
| 202 | 1.2.7.2.3 | Atendimento de comentários | inactive | 2d | 2026-07-21 | 2026-07-22 | 201 |  |  | 2026-06-24 | 2026-06-25 | 2d | 2026-06-24 | 2026-06-25 | -4d | 0d |  |  |  |  |
| 203 | 1.2.7.2.4 | Aprovação | inactive | 1d | 2026-07-23 | 2026-07-23 | 202 |  |  | 2026-06-26 | 2026-06-26 | 1d | 2026-06-26 | 2026-06-26 | -4d | 0d |  |  |  |  |

| ID | WBS | Task | Type | Duration | Start | Finish | Predecessors | Baseline start | Baseline finish | Baseline duration | Baseline 1 start | Baseline 1 finish | Total slack | Free slack | Constraint | Disciplina | Início_LB_R0 | Término_LB_R0 |
| --- | --- | --- | --- | --- | --- | --- | --- | --- | --- | --- | --- | --- | --- | --- | --- | --- | --- | --- |
| 204 | 1.2.7.3 | **ML-F0009-0305-MB-T-00001** |  | 7d | 2026-06-18 | 2026-06-26 |  | 2026-05-28 | 2026-06-05 | 7d | 2026-05-28 | 2026-06-05 | 8d |  |  | TUBULAÇÃO / UTILIDADES | Qui 28/05/26 | Sex 05/06/26 |
| 205 | 1.2.7.3.1 | Emissão inicial |  | 3d | 2026-06-18 | 2026-06-22 | 174, 235 | 2026-05-28 | 2026-06-01 | 3d | 2026-05-28 | 2026-06-01 | 8d | 0d | start no earlier than 2026-06-18 | TUBULAÇÃO / UTILIDADES | Qui 28/05/26 | Seg 01/06/26 |
| 206 | 1.2.7.3.2 | Análise Tecnored |  | 1d | 2026-06-23 | 2026-06-23 | 205 | 2026-06-02 | 2026-06-02 | 1d | 2026-06-02 | 2026-06-02 | 8d | 0d |  | TUBULAÇÃO / UTILIDADES | Ter 02/06/26 | Ter 02/06/26 |
| 207 | 1.2.7.3.3 | Atendimento de comentários |  | 2d | 2026-06-24 | 2026-06-25 | 206 | 2026-06-03 | 2026-06-04 | 2d | 2026-06-03 | 2026-06-04 | 8d | 0d |  | TUBULAÇÃO / UTILIDADES | Qua 03/06/26 | Qui 04/06/26 |
| 208 | 1.2.7.3.4 | Aprovação |  | 1d | 2026-06-26 | 2026-06-26 | 207 | 2026-06-05 | 2026-06-05 | 1d | 2026-06-05 | 2026-06-05 | 8d | 0d |  | TUBULAÇÃO / UTILIDADES | Sex 05/06/26 | Sex 05/06/26 |
| 209 | 1.2.7.4 | **ET-F0009-0305-MB-T-00001** | inactive | 7d | 2026-06-29 | 2026-07-07 |  | 2026-06-30 | 2026-07-08 | 7d | 2026-06-30 | 2026-07-08 | 8d |  |  | TUBULAÇÃO / UTILIDADES |  |  |
| 210 | 1.2.7.4.1 | Emissão inicial | inactive | 3d | 2026-06-29 | 2026-07-01 | 215FS+2d | 2026-06-30 | 2026-07-02 | 3d | 2026-06-30 | 2026-07-02 | 8d | 0d |  | TUBULAÇÃO / UTILIDADES |  |  |
| 211 | 1.2.7.4.2 | Análise Tecnored | inactive | 1d | 2026-07-02 | 2026-07-02 | 210 | 2026-07-03 | 2026-07-03 | 1d | 2026-07-03 | 2026-07-03 | 8d | 0d |  | TUBULAÇÃO / UTILIDADES |  |  |
| 212 | 1.2.7.4.3 | Atendimento de comentários | inactive | 2d | 2026-07-03 | 2026-07-06 | 211 | 2026-07-06 | 2026-07-07 | 2d | 2026-07-06 | 2026-07-07 | 8d | 0d |  | TUBULAÇÃO / UTILIDADES |  |  |
| 213 | 1.2.7.4.4 | Aprovação | inactive | 1d | 2026-07-07 | 2026-07-07 | 212 | 2026-07-08 | 2026-07-08 | 1d | 2026-07-08 | 2026-07-08 | 8d |  |  | TUBULAÇÃO / UTILIDADES |  |  |
| 214 | 1.2.7.5 | **FD-F0009-0305-MB-T-00001** |  | 7d | 2026-06-22 | 2026-06-30 |  | 2026-06-23 | 2026-07-01 | 7d | 2026-06-23 | 2026-07-01 | 13d |  |  | TUBULAÇÃO / UTILIDADES | Ter 23/06/26 | Qua 01/07/26 |
| 215 | 1.2.7.5.1 | Emissão inicial |  | 3d | 2026-06-22 | 2026-06-24 | 235 | 2026-06-23 | 2026-06-25 | 3d | 2026-06-23 | 2026-06-25 | 13d | 0d | start no earlier than 2026-06-22 | TUBULAÇÃO / UTILIDADES | Ter 23/06/26 | Qui 25/06/26 |
| 216 | 1.2.7.5.2 | Análise Tecnored |  | 1d | 2026-06-25 | 2026-06-25 | 215 | 2026-06-26 | 2026-06-26 | 1d | 2026-06-26 | 2026-06-26 | 13d | 0d |  | TUBULAÇÃO / UTILIDADES | Sex 26/06/26 | Sex 26/06/26 |
| 217 | 1.2.7.5.3 | Atendimento de comentários |  | 2d | 2026-06-26 | 2026-06-29 | 216 | 2026-06-29 | 2026-06-30 | 2d | 2026-06-29 | 2026-06-30 | 13d | 0d |  | TUBULAÇÃO / UTILIDADES | Seg 29/06/26 | Ter 30/06/26 |
| 218 | 1.2.7.5.4 | Aprovação |  | 1d | 2026-06-30 | 2026-06-30 | 217 | 2026-07-01 | 2026-07-01 | 1d | 2026-07-01 | 2026-07-01 | 13d |  |  | TUBULAÇÃO / UTILIDADES | Qua 01/07/26 | Qua 01/07/26 |
| 219 | 1.2.7.6 | **FD-F0009-0305-MB-T-00002** | inactive | 7d | 2026-06-29 | 2026-07-07 |  | 2026-06-23 | 2026-07-01 | 7d | 2026-06-23 | 2026-07-01 | 8d |  |  | TUBULAÇÃO / UTILIDADES |  |  |
| 220 | 1.2.7.6.1 | Emissão inicial | inactive | 3d | 2026-06-29 | 2026-07-01 | 230 | 2026-06-23 | 2026-06-25 | 3d | 2026-06-23 | 2026-06-25 | 8d | 0d |  | TUBULAÇÃO / UTILIDADES |  |  |
| 221 | 1.2.7.6.2 | Análise Tecnored | inactive | 1d | 2026-07-02 | 2026-07-02 | 220 | 2026-06-26 | 2026-06-26 | 1d | 2026-06-26 | 2026-06-26 | 8d | 0d |  | TUBULAÇÃO / UTILIDADES |  |  |
| 222 | 1.2.7.6.3 | Atendimento de comentários | inactive | 2d | 2026-07-03 | 2026-07-06 | 221 | 2026-06-29 | 2026-06-30 | 2d | 2026-06-29 | 2026-06-30 | 8d | 0d |  | TUBULAÇÃO / UTILIDADES |  |  |
| 223 | 1.2.7.6.4 | Aprovação | inactive | 1d | 2026-07-07 | 2026-07-07 | 222 | 2026-07-01 | 2026-07-01 | 1d | 2026-07-01 | 2026-07-01 | 8d |  |  | TUBULAÇÃO / UTILIDADES |  |  |
| 224 | 1.2.7.7 | **PQ-F0009-0305-MB-T-00001** |  | 7d | 2026-06-22 | 2026-06-30 |  | 2026-06-23 | 2026-07-01 | 7d | 2026-06-23 | 2026-07-01 | 13d |  |  | TUBULAÇÃO / UTILIDADES | Ter 23/06/26 | Qua 01/07/26 |
| 225 | 1.2.7.7.1 | Emissão inicial |  | 3d | 2026-06-22 | 2026-06-24 | 233 | 2026-06-23 | 2026-06-25 | 3d | 2026-06-23 | 2026-06-25 | 13d | 0d |  | TUBULAÇÃO / UTILIDADES | Ter 23/06/26 | Qui 25/06/26 |
| 226 | 1.2.7.7.2 | Análise Tecnored |  | 1d | 2026-06-25 | 2026-06-25 | 225 | 2026-06-26 | 2026-06-26 | 1d | 2026-06-26 | 2026-06-26 | 13d | 0d |  | TUBULAÇÃO / UTILIDADES | Sex 26/06/26 | Sex 26/06/26 |
| 227 | 1.2.7.7.3 | Atendimento de comentários |  | 2d | 2026-06-26 | 2026-06-29 | 226 | 2026-06-29 | 2026-06-30 | 2d | 2026-06-29 | 2026-06-30 | 13d | 0d |  | TUBULAÇÃO / UTILIDADES | Seg 29/06/26 | Ter 30/06/26 |
| 228 | 1.2.7.7.4 | Aprovação |  | 1d | 2026-06-30 | 2026-06-30 | 227 | 2026-07-01 | 2026-07-01 | 1d | 2026-07-01 | 2026-07-01 | 13d |  |  | TUBULAÇÃO / UTILIDADES | Qua 01/07/26 | Qua 01/07/26 |

| ID | WBS | Task | Type | Duration | Start | Finish | Predecessors | Complete | Remaining | Baseline start | Baseline finish | Baseline duration | Baseline 1 start | Baseline 1 finish | Total slack | Free slack | Constraint | Disciplina | Início_LB_R0 | Término_LB_R0 |
| --- | --- | --- | --- | --- | --- | --- | --- | --- | --- | --- | --- | --- | --- | --- | --- | --- | --- | --- | --- | --- |
| 229 | 1.2.7.8 | **MC-F0009-0305-MB-T-00001** | inactive | 9d | 2026-06-22 | 2026-07-02 |  |  |  | 2026-06-18 | 2026-06-26 | 7d | 2026-06-18 | 2026-06-26 | 4d |  |  | TUBULAÇÃO / UTILIDADES | Qui 18/06/26 | Sex 26/06/26 |
| 230 | 1.2.7.8.1 | Emissão inicial | inactive | 5d | 2026-06-22 | 2026-06-26 | 215SS |  |  | 2026-06-18 | 2026-06-22 | 3d | 2026-06-18 | 2026-06-22 | 4d | 0d |  | TUBULAÇÃO / UTILIDADES | Qui 18/06/26 | Seg 22/06/26 |
| 231 | 1.2.7.8.2 | Análise Tecnored | inactive | 1d | 2026-06-29 | 2026-06-29 | 230 |  |  | 2026-06-23 | 2026-06-23 | 1d | 2026-06-23 | 2026-06-23 | 4d | 0d |  | TUBULAÇÃO / UTILIDADES | Ter 23/06/26 | Ter 23/06/26 |
| 232 | 1.2.7.8.3 | Atendimento de comentários | inactive | 2d | 2026-06-30 | 2026-07-01 | 231 |  |  | 2026-06-24 | 2026-06-25 | 2d | 2026-06-24 | 2026-06-25 | 4d | 0d |  | TUBULAÇÃO / UTILIDADES | Qua 24/06/26 | Qui 25/06/26 |
| 233 | 1.2.7.8.4 | Aprovação | inactive | 1d | 2026-07-02 | 2026-07-02 | 232 |  |  | 2026-06-26 | 2026-06-26 | 1d | 2026-06-26 | 2026-06-26 | 4d | 0d |  | TUBULAÇÃO / UTILIDADES | Sex 26/06/26 | Sex 26/06/26 |
| 234 | 1.2.7.9 | **FG-F0009-0305-MB-T-00001** |  | 7d | 2026-06-10 A | 2026-06-18 |  | 50% | 3.5d | 2026-05-20 | 2026-05-27 | 6d | 2026-05-20 | 2026-05-27 | 21d |  |  | TUBULAÇÃO / UTILIDADES | Qua 20/05/26 | Qua 27/05/26 |
| 235 | 1.2.7.9.1 | Emissão inicial |  | 3d | 2026-06-10 A | 2026-06-12 A | 63FS+13d | 100% |  | 2026-05-20 | 2026-05-21 | 2d | 2026-05-20 | 2026-05-21 |  |  | finish no earlier than 2026-06-12 | TUBULAÇÃO / UTILIDADES | Qua 20/05/26 | Qui 21/05/26 |
| 236 | 1.2.7.9.2 | Análise Tecnored |  | 1d | 2026-06-15 A | 2026-06-15 | 235 | 50% | 0.5d | 2026-05-22 | 2026-05-22 | 1d | 2026-05-22 | 2026-05-22 | 21d | 0d |  | TUBULAÇÃO / UTILIDADES | Sex 22/05/26 | Sex 22/05/26 |
| 237 | 1.2.7.9.3 | Atendimento de comentários |  | 2d | 2026-06-16 | 2026-06-17 | 236 |  |  | 2026-05-25 | 2026-05-26 | 2d | 2026-05-25 | 2026-05-26 | 21d | 0d |  | TUBULAÇÃO / UTILIDADES | Seg 25/05/26 | Ter 26/05/26 |
| 238 | 1.2.7.9.4 | Aprovação |  | 1d | 2026-06-18 | 2026-06-18 | 237 |  |  | 2026-05-27 | 2026-05-27 | 1d | 2026-05-27 | 2026-05-27 | 21d |  |  | TUBULAÇÃO / UTILIDADES | Qua 27/05/26 | Qua 27/05/26 |
| 239 | 1.2.7.10 | **FG-F0009-0305-MB-T-00002** | inactive | 6d | 2026-06-03 | 2026-06-12 |  |  |  | 2026-05-20 | 2026-05-27 | 6d | 2026-05-20 | 2026-05-27 | 25d |  |  | TUBULAÇÃO / UTILIDADES |  |  |
| 240 | 1.2.7.10.1 | Emissão inicial | inactive | 2d | 2026-06-03 | 2026-06-08 | 63FS+10d |  |  | 2026-05-20 | 2026-05-21 | 2d | 2026-05-20 | 2026-05-21 | 25d | 0d |  | TUBULAÇÃO / UTILIDADES |  |  |
| 241 | 1.2.7.10.2 | Análise Tecnored | inactive | 1d | 2026-06-09 | 2026-06-09 | 240 |  |  | 2026-05-22 | 2026-05-22 | 1d | 2026-05-22 | 2026-05-22 | 25d | 0d |  | TUBULAÇÃO / UTILIDADES |  |  |
| 242 | 1.2.7.10.3 | Atendimento de comentários | inactive | 2d | 2026-06-10 | 2026-06-11 | 241 |  |  | 2026-05-25 | 2026-05-26 | 2d | 2026-05-25 | 2026-05-26 | 25d | 0d |  | TUBULAÇÃO / UTILIDADES |  |  |
| 243 | 1.2.7.10.4 | Aprovação | inactive | 1d | 2026-06-12 | 2026-06-12 | 242 |  |  | 2026-05-27 | 2026-05-27 | 1d | 2026-05-27 | 2026-05-27 | 25d |  |  | TUBULAÇÃO / UTILIDADES |  |  |
| 244 | 1.2.7.11 | **AG-F0009-0305-MB-T-00001** |  | 7d | 2026-06-29 | 2026-07-07 |  |  |  | 2026-06-02 | 2026-06-10 | 7d | 2026-06-02 | 2026-06-10 | 8d | 0d |  | TUBULAÇÃO / UTILIDADES | Ter 02/06/26 | Qua 10/06/26 |
| 245 | 1.2.7.11.1 | Emissão inicial |  | 3d | 2026-06-29 | 2026-07-01 | 208 |  |  | 2026-06-02 | 2026-06-04 | 3d | 2026-06-02 | 2026-06-04 | 8d | 0d |  | TUBULAÇÃO / UTILIDADES | Ter 02/06/26 | Qui 04/06/26 |
| 246 | 1.2.7.11.2 | Análise Tecnored |  | 1d | 2026-07-02 | 2026-07-02 | 245 |  |  | 2026-06-05 | 2026-06-05 | 1d | 2026-06-05 | 2026-06-05 | 8d | 0d |  | TUBULAÇÃO / UTILIDADES | Sex 05/06/26 | Sex 05/06/26 |
| 247 | 1.2.7.11.3 | Atendimento de comentários |  | 2d | 2026-07-03 | 2026-07-06 | 246 |  |  | 2026-06-08 | 2026-06-09 | 2d | 2026-06-08 | 2026-06-09 | 8d | 0d |  | TUBULAÇÃO / UTILIDADES | Seg 08/06/26 | Ter 09/06/26 |
| 248 | 1.2.7.11.4 | Aprovação |  | 1d | 2026-07-07 | 2026-07-07 | 247 |  |  | 2026-06-10 | 2026-06-10 | 1d | 2026-06-10 | 2026-06-10 | 8d |  |  | TUBULAÇÃO / UTILIDADES | Qua 10/06/26 | Qua 10/06/26 |
| 249 | 1.2.7.12 | **AG-F0009-0305-MB-T-00002** |  | 7d | 2026-06-29 | 2026-07-07 |  |  |  | 2026-06-02 | 2026-06-10 | 7d | 2026-06-02 | 2026-06-10 | 8d |  |  | TUBULAÇÃO / UTILIDADES | Ter 02/06/26 | Qua 10/06/26 |
| 250 | 1.2.7.12.1 | Emissão inicial |  | 3d | 2026-06-29 | 2026-07-01 | 208 |  |  | 2026-06-02 | 2026-06-04 | 3d | 2026-06-02 | 2026-06-04 | 8d | 0d |  | TUBULAÇÃO / UTILIDADES | Ter 02/06/26 | Qui 04/06/26 |
| 251 | 1.2.7.12.2 | Análise Tecnored |  | 1d | 2026-07-02 | 2026-07-02 | 250 |  |  | 2026-06-05 | 2026-06-05 | 1d | 2026-06-05 | 2026-06-05 | 8d | 0d |  | TUBULAÇÃO / UTILIDADES | Sex 05/06/26 | Sex 05/06/26 |
| 252 | 1.2.7.12.3 | Atendimento de comentários |  | 2d | 2026-07-03 | 2026-07-06 | 251 |  |  | 2026-06-08 | 2026-06-09 | 2d | 2026-06-08 | 2026-06-09 | 8d | 0d |  | TUBULAÇÃO / UTILIDADES | Seg 08/06/26 | Ter 09/06/26 |
| 253 | 1.2.7.12.4 | Aprovação |  | 1d | 2026-07-07 | 2026-07-07 | 252 |  |  | 2026-06-10 | 2026-06-10 | 1d | 2026-06-10 | 2026-06-10 | 8d |  |  | TUBULAÇÃO / UTILIDADES | Qua 10/06/26 | Qua 10/06/26 |

| ID | WBS | Task | Type | Duration | Start | Finish | Predecessors | Baseline start | Baseline finish | Baseline duration | Baseline 1 start | Baseline 1 finish | Total slack | Free slack | Disciplina | Início_LB_R0 | Término_LB_R0 |
| --- | --- | --- | --- | --- | --- | --- | --- | --- | --- | --- | --- | --- | --- | --- | --- | --- | --- |
| 254 | 1.2.7.13 | **AG-F0009-0305-MB-T-00003** |  | 7d | 2026-06-29 | 2026-07-07 |  | 2026-06-02 | 2026-06-10 | 7d | 2026-06-02 | 2026-06-10 | 8d |  | ESTRUTURA METÁLICA | Ter 02/06/26 | Qua 10/06/26 |
| 255 | 1.2.7.13.1 | Emissão inicial |  | 3d | 2026-06-29 | 2026-07-01 | 208 | 2026-06-02 | 2026-06-04 | 3d | 2026-06-02 | 2026-06-04 | 8d | 0d | ESTRUTURA METÁLICA | Ter 02/06/26 | Qui 04/06/26 |
| 256 | 1.2.7.13.2 | Análise Tecnored |  | 1d | 2026-07-02 | 2026-07-02 | 255 | 2026-06-05 | 2026-06-05 | 1d | 2026-06-05 | 2026-06-05 | 8d | 0d | ESTRUTURA METÁLICA | Sex 05/06/26 | Sex 05/06/26 |
| 257 | 1.2.7.13.3 | Atendimento de comentários |  | 2d | 2026-07-03 | 2026-07-06 | 256 | 2026-06-08 | 2026-06-09 | 2d | 2026-06-08 | 2026-06-09 | 8d | 0d | ESTRUTURA METÁLICA | Seg 08/06/26 | Ter 09/06/26 |
| 258 | 1.2.7.13.4 | Aprovação |  | 1d | 2026-07-07 | 2026-07-07 | 257 | 2026-06-10 | 2026-06-10 | 1d | 2026-06-10 | 2026-06-10 | 8d |  | ESTRUTURA METÁLICA | Qua 10/06/26 | Qua 10/06/26 |
| 259 | 1.2.7.14 | **AG-F0009-0305-MB-T-00004** | inactive | 7d | 2026-06-03 | 2026-06-15 |  | 2026-06-02 | 2026-06-10 | 7d | 2026-06-02 | 2026-06-10 | 24d |  | ESTRUTURA METÁLICA |  |  |
| 260 | 1.2.7.14.1 | Emissão inicial | inactive | 3d | 2026-06-03 | 2026-06-09 | 176 | 2026-06-02 | 2026-06-04 | 3d | 2026-06-02 | 2026-06-04 | 24d | 0d | ESTRUTURA METÁLICA |  |  |
| 261 | 1.2.7.14.2 | Análise Tecnored | inactive | 1d | 2026-06-10 | 2026-06-10 | 260 | 2026-06-05 | 2026-06-05 | 1d | 2026-06-05 | 2026-06-05 | 24d | 0d | ESTRUTURA METÁLICA |  |  |
| 262 | 1.2.7.14.3 | Atendimento de comentários | inactive | 2d | 2026-06-11 | 2026-06-12 | 261 | 2026-06-08 | 2026-06-09 | 2d | 2026-06-08 | 2026-06-09 | 24d | 0d | ESTRUTURA METÁLICA |  |  |
| 263 | 1.2.7.14.4 | Aprovação | inactive | 1d | 2026-06-15 | 2026-06-15 | 262 | 2026-06-10 | 2026-06-10 | 1d | 2026-06-10 | 2026-06-10 | 24d |  | ESTRUTURA METÁLICA |  |  |
| 264 | 1.2.7.15 | **AG-F0009-0305-MB-T-00005** | inactive | 7d | 2026-06-03 | 2026-06-15 |  | 2026-06-02 | 2026-06-10 | 7d | 2026-06-02 | 2026-06-10 | 24d |  | ESTRUTURA METÁLICA |  |  |
| 265 | 1.2.7.15.1 | Emissão inicial | inactive | 3d | 2026-06-03 | 2026-06-09 | 176 | 2026-06-02 | 2026-06-04 | 3d | 2026-06-02 | 2026-06-04 | 24d | 0d | ESTRUTURA METÁLICA |  |  |
| 266 | 1.2.7.15.2 | Análise Tecnored | inactive | 1d | 2026-06-10 | 2026-06-10 | 265 | 2026-06-05 | 2026-06-05 | 1d | 2026-06-05 | 2026-06-05 | 24d | 0d | ESTRUTURA METÁLICA |  |  |
| 267 | 1.2.7.15.3 | Atendimento de comentários | inactive | 2d | 2026-06-11 | 2026-06-12 | 266 | 2026-06-08 | 2026-06-09 | 2d | 2026-06-08 | 2026-06-09 | 24d | 0d | ESTRUTURA METÁLICA |  |  |
| 268 | 1.2.7.15.4 | Aprovação | inactive | 1d | 2026-06-15 | 2026-06-15 | 267 | 2026-06-10 | 2026-06-10 | 1d | 2026-06-10 | 2026-06-10 | 24d |  | ESTRUTURA METÁLICA |  |  |
| 269 | 1.2.7.16 | **AG-F0009-0305-MB-T-00006** | inactive | 7d | 2026-06-03 | 2026-06-15 |  | 2026-06-02 | 2026-06-10 | 7d | 2026-06-02 | 2026-06-10 | 24d |  | ESTRUTURA METÁLICA |  |  |
| 270 | 1.2.7.16.1 | Emissão inicial | inactive | 3d | 2026-06-03 | 2026-06-09 | 176 | 2026-06-02 | 2026-06-04 | 3d | 2026-06-02 | 2026-06-04 | 24d | 0d | ESTRUTURA METÁLICA |  |  |
| 271 | 1.2.7.16.2 | Análise Tecnored | inactive | 1d | 2026-06-10 | 2026-06-10 | 270 | 2026-06-05 | 2026-06-05 | 1d | 2026-06-05 | 2026-06-05 | 24d | 0d | ESTRUTURA METÁLICA |  |  |
| 272 | 1.2.7.16.3 | Atendimento de comentários | inactive | 2d | 2026-06-11 | 2026-06-12 | 271 | 2026-06-08 | 2026-06-09 | 2d | 2026-06-08 | 2026-06-09 | 24d | 0d | ESTRUTURA METÁLICA |  |  |
| 273 | 1.2.7.16.4 | Aprovação | inactive | 1d | 2026-06-15 | 2026-06-15 | 272 | 2026-06-10 | 2026-06-10 | 1d | 2026-06-10 | 2026-06-10 | 24d |  | ESTRUTURA METÁLICA |  |  |
| 274 | 1.2.7.17 | **LK-F0009-0305-MB-T-00001** |  | 6d | 2026-06-22 | 2026-06-29 |  | 2026-06-02 | 2026-06-10 | 7d | 2026-06-02 | 2026-06-10 | 14d |  | ESTRUTURA METÁLICA | Ter 02/06/26 | Qua 10/06/26 |
| 275 | 1.2.7.17.1 | Emissão inicial |  | 2d | 2026-06-22 | 2026-06-23 | 232 | 2026-06-02 | 2026-06-04 | 3d | 2026-06-02 | 2026-06-04 | 14d | 0d | ESTRUTURA METÁLICA | Ter 02/06/26 | Qui 04/06/26 |
| 276 | 1.2.7.17.2 | Análise Tecnored |  | 1d | 2026-06-24 | 2026-06-24 | 275 | 2026-06-05 | 2026-06-05 | 1d | 2026-06-05 | 2026-06-05 | 14d | 0d | ESTRUTURA METÁLICA | Sex 05/06/26 | Sex 05/06/26 |
| 277 | 1.2.7.17.3 | Atendimento de comentários |  | 2d | 2026-06-25 | 2026-06-26 | 276 | 2026-06-08 | 2026-06-09 | 2d | 2026-06-08 | 2026-06-09 | 14d | 0d | ESTRUTURA METÁLICA | Seg 08/06/26 | Ter 09/06/26 |
| 278 | 1.2.7.17.4 | Aprovação |  | 1d | 2026-06-29 | 2026-06-29 | 277 | 2026-06-10 | 2026-06-10 | 1d | 2026-06-10 | 2026-06-10 | 14d |  | ESTRUTURA METÁLICA | Qua 10/06/26 | Qua 10/06/26 |

| ID | WBS | Task | Type | Duration | Start | Finish | Predecessors | Baseline start | Baseline finish | Baseline duration | Baseline 1 start | Baseline 1 finish | Total slack | Free slack | Constraint | Baseline cost | Disciplina | Início_LB_R0 | Término_LB_R0 |
| --- | --- | --- | --- | --- | --- | --- | --- | --- | --- | --- | --- | --- | --- | --- | --- | --- | --- | --- | --- |
| 279 | 1.2.7.18 | **MC-F0009-0305-MB-T-00002** | inactive | 14d | 2026-05-27 | 2026-06-17 |  | 2026-05-28 | 2026-06-16 | 14d | 2026-05-28 | 2026-06-16 | 22d |  |  |  | ESTRUTURA METÁLICA |  |  |
| 280 | 1.2.7.18.1 | Emissão inicial | inactive | 10d | 2026-05-27 | 2026-06-11 | 174 | 2026-05-28 | 2026-06-10 | 10d | 2026-05-28 | 2026-06-10 | 22d | 0d |  |  | ESTRUTURA METÁLICA |  |  |
| 281 | 1.2.7.18.2 | Análise Tecnored | inactive | 1d | 2026-06-12 | 2026-06-12 | 280 | 2026-06-11 | 2026-06-11 | 1d | 2026-06-11 | 2026-06-11 | 22d | 0d |  |  | ESTRUTURA METÁLICA |  |  |
| 282 | 1.2.7.18.3 | Atendimento de comentários | inactive | 2d | 2026-06-15 | 2026-06-16 | 281 | 2026-06-12 | 2026-06-15 | 2d | 2026-06-12 | 2026-06-15 | 22d | 0d |  |  | ESTRUTURA METÁLICA |  |  |
| 283 | 1.2.7.18.4 | Aprovação | inactive | 1d | 2026-06-17 | 2026-06-17 | 282 | 2026-06-16 | 2026-06-16 | 1d | 2026-06-16 | 2026-06-16 | 22d |  |  |  | ESTRUTURA METÁLICA |  |  |
| 284 | 1.2.8 | **Estrutura metálica** |  | 17d | 2026-06-17 | 2026-07-09 |  | 2026-06-15 | 2026-07-08 | 18d | 2026-06-15 | 2026-07-08 | 6d |  |  |  | ESTRUTURA METÁLICA | Seg 15/06/26 | Qua 08/07/26 |
| 285 | 1.2.8.1 | **CP-F0009-0305-MB-S-00001** | inactive | 21d | 2026-05-12 | 2026-06-11 |  |  |  |  |  |  | 26d |  |  | -0 |  |  |  |
| 286 | 1.2.8.1.1 | Emissão inicial | inactive | 3d | 2026-05-12 | 2026-05-14 | 26FS+5d |  |  |  |  |  | 40d | 14d |  | -0 |  |  |  |
| 287 | 1.2.8.1.2 | Análise Tecnored | inactive | 1d | 2026-06-08 | 2026-06-08 | 286, 14 |  |  |  |  |  | 26d | 0d |  | -0 |  |  |  |
| 288 | 1.2.8.1.3 | Atendimento de comentários | inactive | 2d | 2026-06-09 | 2026-06-10 | 287 |  |  |  |  |  | 26d | 0d |  | -0 |  |  |  |
| 289 | 1.2.8.1.4 | Aprovação | inactive | 1d | 2026-06-11 | 2026-06-11 | 288 |  |  |  |  |  | 26d |  |  | -0 |  |  |  |
| 290 | 1.2.8.2 | **ML-F0009-0305-MB-S-00001** |  | 6d | 2026-06-19 | 2026-06-26 |  | 2026-06-17 | 2026-06-25 | 7d | 2026-06-17 | 2026-06-25 | 6d |  |  |  | ESTRUTURA METÁLICA | Qua 17/06/26 | Qui 25/06/26 |
| 291 | 1.2.8.2.1 | Emissão inicial |  | 3d | 2026-06-19 | 2026-06-23 | 306FS-8d | 2026-06-17 | 2026-06-19 | 3d | 2026-06-17 | 2026-06-19 | 6d | 0d | start no earlier than 2026-06-19 |  | ESTRUTURA METÁLICA | Qua 17/06/26 | Sex 19/06/26 |
| 292 | 1.2.8.2.2 | Análise Tecnored |  | 1d | 2026-06-24 | 2026-06-24 | 291 | 2026-06-22 | 2026-06-22 | 1d | 2026-06-22 | 2026-06-22 | 6d | 0d |  |  | ESTRUTURA METÁLICA | Seg 22/06/26 | Seg 22/06/26 |
| 293 | 1.2.8.2.3 | Atendimento de comentários |  | 1d | 2026-06-25 | 2026-06-25 | 292 | 2026-06-23 | 2026-06-24 | 2d | 2026-06-23 | 2026-06-24 | 6d | 0d |  |  | ESTRUTURA METÁLICA | Ter 23/06/26 | Qua 24/06/26 |
| 294 | 1.2.8.2.4 | Aprovação |  | 1d | 2026-06-26 | 2026-06-26 | 293 | 2026-06-25 | 2026-06-25 | 1d | 2026-06-25 | 2026-06-25 | 8d | 0d |  |  | ESTRUTURA METÁLICA | Qui 25/06/26 | Qui 25/06/26 |
| 295 | 1.2.8.3 | **PQ-F0009-0305-MB-S-00001** |  | 5d | 2026-07-01 | 2026-07-07 |  | 2026-06-30 | 2026-07-07 | 6d | 2026-06-30 | 2026-07-07 | 8d |  |  |  | ESTRUTURA METÁLICA | Ter 30/06/26 | Ter 07/07/26 |
| 296 | 1.2.8.3.1 | Emissão inicial |  | 2d | 2026-07-01 | 2026-07-02 | 301 | 2026-06-30 | 2026-07-01 | 2d | 2026-06-30 | 2026-07-01 | 8d | 0d |  |  | ESTRUTURA METÁLICA | Ter 30/06/26 | Qua 01/07/26 |
| 297 | 1.2.8.3.2 | Análise Tecnored |  | 1d | 2026-07-03 | 2026-07-03 | 296 | 2026-07-02 | 2026-07-02 | 1d | 2026-07-02 | 2026-07-02 | 8d | 0d |  |  | ESTRUTURA METÁLICA | Qui 02/07/26 | Qui 02/07/26 |
| 298 | 1.2.8.3.3 | Atendimento de comentários |  | 1d | 2026-07-06 | 2026-07-06 | 297 | 2026-07-03 | 2026-07-06 | 2d | 2026-07-03 | 2026-07-06 | 8d | 0d |  |  | ESTRUTURA METÁLICA | Sex 03/07/26 | Seg 06/07/26 |
| 299 | 1.2.8.3.4 | Aprovação |  | 1d | 2026-07-07 | 2026-07-07 | 298 | 2026-07-07 | 2026-07-07 | 1d | 2026-07-07 | 2026-07-07 | 8d |  |  |  | ESTRUTURA METÁLICA | Ter 07/07/26 | Ter 07/07/26 |
| 300 | 1.2.8.4 | **LM-F0009-0305-MB-S-00001** |  | 5d | 2026-06-29 | 2026-07-03 |  | 2026-06-26 | 2026-07-03 | 6d | 2026-06-26 | 2026-07-03 | 8d |  |  |  | ESTRUTURA METÁLICA | Sex 26/06/26 | Sex 03/07/26 |
| 301 | 1.2.8.4.1 | Emissão inicial |  | 2d | 2026-06-29 | 2026-06-30 | 294 | 2026-06-26 | 2026-06-29 | 2d | 2026-06-26 | 2026-06-29 | 8d | 0d |  |  | ESTRUTURA METÁLICA | Sex 26/06/26 | Seg 29/06/26 |
| 302 | 1.2.8.4.2 | Análise Tecnored |  | 1d | 2026-07-01 | 2026-07-01 | 301 | 2026-06-30 | 2026-06-30 | 1d | 2026-06-30 | 2026-06-30 | 10d | 0d |  |  | ESTRUTURA METÁLICA | Ter 30/06/26 | Ter 30/06/26 |
| 303 | 1.2.8.4.3 | Atendimento de comentários |  | 1d | 2026-07-02 | 2026-07-02 | 302 | 2026-07-01 | 2026-07-02 | 2d | 2026-07-01 | 2026-07-02 | 10d | 0d |  |  | ESTRUTURA METÁLICA | Qua 01/07/26 | Qui 02/07/26 |
| 304 | 1.2.8.4.4 | Aprovação |  | 1d | 2026-07-03 | 2026-07-03 | 303 | 2026-07-03 | 2026-07-03 | 1d | 2026-07-03 | 2026-07-03 | 10d |  |  |  | ESTRUTURA METÁLICA | Sex 03/07/26 | Sex 03/07/26 |

| ID | WBS | Task | Duration | Start | Finish | Predecessors | Baseline start | Baseline finish | Baseline duration | Baseline 1 start | Baseline 1 finish | Total slack | Free slack | Constraint | Disciplina | Início_LB_R0 | Término_LB_R0 |
| --- | --- | --- | --- | --- | --- | --- | --- | --- | --- | --- | --- | --- | --- | --- | --- | --- | --- |
| 305 | 1.2.8.5 | **MC-F0009-0305-MB-S-00001** | 8d | 2026-06-17 | 2026-06-26 |  | 2026-06-15 | 2026-06-25 | 9d | 2026-06-15 | 2026-06-25 | 8d |  |  | ESTRUTURA METÁLICA | Seg 15/06/26 | Qui 25/06/26 |
| 306 | 1.2.8.5.1 | Emissão inicial | 5d | 2026-06-17 | 2026-06-23 | 159, 164, 169, 154 | 2026-06-15 | 2026-06-19 | 5d | 2026-06-15 | 2026-06-19 | 8d | 0d | start no earlier than 2026-06-17 | ESTRUTURA METÁLICA | Seg 15/06/26 | Sex 19/06/26 |
| 307 | 1.2.8.5.2 | Análise Tecnored | 1d | 2026-06-24 | 2026-06-24 | 306 | 2026-06-22 | 2026-06-22 | 1d | 2026-06-22 | 2026-06-22 | 15d | 0d |  | ESTRUTURA METÁLICA | Seg 22/06/26 | Seg 22/06/26 |
| 308 | 1.2.8.5.3 | Atendimento de comentários | 1d | 2026-06-25 | 2026-06-25 | 307 | 2026-06-23 | 2026-06-24 | 2d | 2026-06-23 | 2026-06-24 | 15d | 0d |  | ESTRUTURA METÁLICA | Ter 23/06/26 | Qua 24/06/26 |
| 309 | 1.2.8.5.4 | Aprovação | 1d | 2026-06-26 | 2026-06-26 | 308 | 2026-06-25 | 2026-06-25 | 1d | 2026-06-25 | 2026-06-25 | 15d |  |  | ESTRUTURA METÁLICA | Qui 25/06/26 | Qui 25/06/26 |
| 310 | 1.2.8.6 | **AG-F0009-0305-MB-S-00001** | 9d | 2026-06-26 | 2026-07-08 |  | 2026-06-25 | 2026-07-08 | 10d | 2026-06-25 | 2026-07-08 | 7d |  |  | ESTRUTURA METÁLICA | Qui 25/06/26 | Qua 08/07/26 |
| 311 | 1.2.8.6.1 | Emissão inicial | 6d | 2026-06-26 | 2026-07-03 | 293 | 2026-06-25 | 2026-07-02 | 6d | 2026-06-25 | 2026-07-02 | 7d | 0d |  | ESTRUTURA METÁLICA | Qui 25/06/26 | Qui 02/07/26 |
| 312 | 1.2.8.6.2 | Análise Tecnored | 1d | 2026-07-06 | 2026-07-06 | 311 | 2026-07-03 | 2026-07-03 | 1d | 2026-07-03 | 2026-07-03 | 7d | 0d |  | ESTRUTURA METÁLICA | Sex 03/07/26 | Sex 03/07/26 |
| 313 | 1.2.8.6.3 | Atendimento de comentários | 1d | 2026-07-07 | 2026-07-07 | 312 | 2026-07-06 | 2026-07-07 | 2d | 2026-07-06 | 2026-07-07 | 7d | 0d |  | ESTRUTURA METÁLICA | Seg 06/07/26 | Ter 07/07/26 |
| 314 | 1.2.8.6.4 | Aprovação | 1d | 2026-07-08 | 2026-07-08 | 313 | 2026-07-08 | 2026-07-08 | 1d | 2026-07-08 | 2026-07-08 | 7d |  |  | ESTRUTURA METÁLICA | Qua 08/07/26 | Qua 08/07/26 |
| 315 | 1.2.8.7 | **AG-F0009-0305-MB-S-00002** | 9d | 2026-06-26 | 2026-07-08 |  | 2026-06-25 | 2026-07-08 | 10d | 2026-06-25 | 2026-07-08 | 7d |  |  | ESTRUTURA METÁLICA | Qui 25/06/26 | Qua 08/07/26 |
| 316 | 1.2.8.7.1 | Emissão inicial | 6d | 2026-06-26 | 2026-07-03 | 293 | 2026-06-25 | 2026-07-02 | 6d | 2026-06-25 | 2026-07-02 | 7d | 0d |  | ESTRUTURA METÁLICA | Qui 25/06/26 | Qui 02/07/26 |
| 317 | 1.2.8.7.2 | Análise Tecnored | 1d | 2026-07-06 | 2026-07-06 | 316 | 2026-07-03 | 2026-07-03 | 1d | 2026-07-03 | 2026-07-03 | 7d | 0d |  | ESTRUTURA METÁLICA | Sex 03/07/26 | Sex 03/07/26 |
| 318 | 1.2.8.7.3 | Atendimento de comentários | 1d | 2026-07-07 | 2026-07-07 | 317 | 2026-07-06 | 2026-07-07 | 2d | 2026-07-06 | 2026-07-07 | 7d | 0d |  | ESTRUTURA METÁLICA | Seg 06/07/26 | Ter 07/07/26 |
| 319 | 1.2.8.7.4 | Aprovação | 1d | 2026-07-08 | 2026-07-08 | 318 | 2026-07-08 | 2026-07-08 | 1d | 2026-07-08 | 2026-07-08 | 7d |  |  | ESTRUTURA METÁLICA | Qua 08/07/26 | Qua 08/07/26 |
| 320 | 1.2.8.8 | **AG-F0009-0305-MB-S-00003** | 9d | 2026-06-26 | 2026-07-08 |  | 2026-06-25 | 2026-07-08 | 10d | 2026-06-25 | 2026-07-08 | 7d |  |  | ESTRUTURA METÁLICA | Qui 25/06/26 | Qua 08/07/26 |
| 321 | 1.2.8.8.1 | Emissão inicial | 6d | 2026-06-26 | 2026-07-03 | 293 | 2026-06-25 | 2026-07-02 | 6d | 2026-06-25 | 2026-07-02 | 7d | 0d |  | ESTRUTURA METÁLICA | Qui 25/06/26 | Qui 02/07/26 |
| 322 | 1.2.8.8.2 | Análise Tecnored | 1d | 2026-07-06 | 2026-07-06 | 321 | 2026-07-03 | 2026-07-03 | 1d | 2026-07-03 | 2026-07-03 | 7d | 0d |  | ESTRUTURA METÁLICA | Sex 03/07/26 | Sex 03/07/26 |
| 323 | 1.2.8.8.3 | Atendimento de comentários | 1d | 2026-07-07 | 2026-07-07 | 322 | 2026-07-06 | 2026-07-07 | 2d | 2026-07-06 | 2026-07-07 | 7d | 0d |  | ESTRUTURA METÁLICA | Seg 06/07/26 | Ter 07/07/26 |
| 324 | 1.2.8.8.4 | Aprovação | 1d | 2026-07-08 | 2026-07-08 | 323 | 2026-07-08 | 2026-07-08 | 1d | 2026-07-08 | 2026-07-08 | 7d |  |  | ESTRUTURA METÁLICA | Qua 08/07/26 | Qua 08/07/26 |
| 325 | 1.2.8.9 | **AG-F0009-0305-MB-S-00004** | 9d | 2026-06-26 | 2026-07-08 |  | 2026-06-25 | 2026-07-08 | 10d | 2026-06-25 | 2026-07-08 | 7d |  |  | ESTRUTURA METÁLICA | Qui 25/06/26 | Qua 08/07/26 |
| 326 | 1.2.8.9.1 | Emissão inicial | 6d | 2026-06-26 | 2026-07-03 | 293 | 2026-06-25 | 2026-07-02 | 6d | 2026-06-25 | 2026-07-02 | 7d | 0d |  | ESTRUTURA METÁLICA | Qui 25/06/26 | Qui 02/07/26 |
| 327 | 1.2.8.9.2 | Análise Tecnored | 1d | 2026-07-06 | 2026-07-06 | 326 | 2026-07-03 | 2026-07-03 | 1d | 2026-07-03 | 2026-07-03 | 7d | 0d |  | ESTRUTURA METÁLICA | Sex 03/07/26 | Sex 03/07/26 |
| 328 | 1.2.8.9.3 | Atendimento de comentários | 1d | 2026-07-07 | 2026-07-07 | 327 | 2026-07-06 | 2026-07-07 | 2d | 2026-07-06 | 2026-07-07 | 7d | 0d |  | ESTRUTURA METÁLICA | Seg 06/07/26 | Ter 07/07/26 |
| 329 | 1.2.8.9.4 | Aprovação | 1d | 2026-07-08 | 2026-07-08 | 328 | 2026-07-08 | 2026-07-08 | 1d | 2026-07-08 | 2026-07-08 | 7d |  |  | ESTRUTURA METÁLICA | Qua 08/07/26 | Qua 08/07/26 |

| ID | WBS | Task | Duration | Start | Finish | Predecessors | Baseline start | Baseline finish | Baseline duration | Baseline 1 start | Baseline 1 finish | Total slack | Free slack | Disciplina | Início_LB_R0 | Término_LB_R0 |
| --- | --- | --- | --- | --- | --- | --- | --- | --- | --- | --- | --- | --- | --- | --- | --- | --- |
| 330 | 1.2.8.10 | **AG-F0009-0305-MB-S-00005** | 10d | 2026-06-26 | 2026-07-09 |  | 2026-06-25 | 2026-07-08 | 10d | 2026-06-25 | 2026-07-08 | 6d |  | ESTRUTURA METÁLICA | Qui 25/06/26 | Qua 08/07/26 |
| 331 | 1.2.8.10.1 | Emissão inicial | 6d | 2026-06-26 | 2026-07-03 | 293 | 2026-06-25 | 2026-07-02 | 6d | 2026-06-25 | 2026-07-02 | 6d | 0d | ESTRUTURA METÁLICA | Qui 25/06/26 | Qui 02/07/26 |
| 332 | 1.2.8.10.2 | Análise Tecnored | 1d | 2026-07-06 | 2026-07-06 | 331 | 2026-07-03 | 2026-07-03 | 1d | 2026-07-03 | 2026-07-03 | 6d | 0d | ESTRUTURA METÁLICA | Sex 03/07/26 | Sex 03/07/26 |
| 333 | 1.2.8.10.3 | Atendimento de comentários | 2d | 2026-07-07 | 2026-07-08 | 332 | 2026-07-06 | 2026-07-07 | 2d | 2026-07-06 | 2026-07-07 | 6d | 0d | ESTRUTURA METÁLICA | Seg 06/07/26 | Ter 07/07/26 |
| 334 | 1.2.8.10.4 | Aprovação | 1d | 2026-07-09 | 2026-07-09 | 333 | 2026-07-08 | 2026-07-08 | 1d | 2026-07-08 | 2026-07-08 | 6d |  | ESTRUTURA METÁLICA | Qua 08/07/26 | Qua 08/07/26 |
| 335 | 1.2.8.11 | **AG-F0009-0305-MB-S-00006** | 9d | 2026-06-26 | 2026-07-08 |  | 2026-06-25 | 2026-07-08 | 10d | 2026-06-25 | 2026-07-08 | 7d |  | ELÉTRICA | Qui 25/06/26 | Qua 08/07/26 |
| 336 | 1.2.8.11.1 | Emissão inicial | 6d | 2026-06-26 | 2026-07-03 | 293 | 2026-06-25 | 2026-07-02 | 6d | 2026-06-25 | 2026-07-02 | 7d | 0d | ELÉTRICA | Qui 25/06/26 | Qui 02/07/26 |
| 337 | 1.2.8.11.2 | Análise Tecnored | 1d | 2026-07-06 | 2026-07-06 | 336 | 2026-07-03 | 2026-07-03 | 1d | 2026-07-03 | 2026-07-03 | 7d | 0d | ELÉTRICA | Sex 03/07/26 | Sex 03/07/26 |
| 338 | 1.2.8.11.3 | Atendimento de comentários | 1d | 2026-07-07 | 2026-07-07 | 337 | 2026-07-06 | 2026-07-07 | 2d | 2026-07-06 | 2026-07-07 | 7d | 0d | ELÉTRICA | Seg 06/07/26 | Ter 07/07/26 |
| 339 | 1.2.8.11.4 | Aprovação | 1d | 2026-07-08 | 2026-07-08 | 338 | 2026-07-08 | 2026-07-08 | 1d | 2026-07-08 | 2026-07-08 | 7d |  | ELÉTRICA | Qua 08/07/26 | Qua 08/07/26 |
| 340 | 1.2.8.12 | **AG-F0009-0305-MB-S-00007** | 9d | 2026-06-26 | 2026-07-08 |  | 2026-06-25 | 2026-07-08 | 10d | 2026-06-25 | 2026-07-08 | 7d |  | ELÉTRICA | Qui 25/06/26 | Qua 08/07/26 |
| 341 | 1.2.8.12.1 | Emissão inicial | 6d | 2026-06-26 | 2026-07-03 | 293 | 2026-06-25 | 2026-07-02 | 6d | 2026-06-25 | 2026-07-02 | 7d | 0d | ELÉTRICA | Qui 25/06/26 | Qui 02/07/26 |
| 342 | 1.2.8.12.2 | Análise Tecnored | 1d | 2026-07-06 | 2026-07-06 | 341 | 2026-07-03 | 2026-07-03 | 1d | 2026-07-03 | 2026-07-03 | 7d | 0d | ELÉTRICA | Sex 03/07/26 | Sex 03/07/26 |
| 343 | 1.2.8.12.3 | Atendimento de comentários | 1d | 2026-07-07 | 2026-07-07 | 342 | 2026-07-06 | 2026-07-07 | 2d | 2026-07-06 | 2026-07-07 | 7d | 0d | ELÉTRICA | Seg 06/07/26 | Ter 07/07/26 |
| 344 | 1.2.8.12.4 | Aprovação | 1d | 2026-07-08 | 2026-07-08 | 343 | 2026-07-08 | 2026-07-08 | 1d | 2026-07-08 | 2026-07-08 | 7d |  | ELÉTRICA | Qua 08/07/26 | Qua 08/07/26 |
| 345 | 1.2.8.13 | **AG-F0009-0305-MB-S-00008** | 9d | 2026-06-26 | 2026-07-08 |  | 2026-06-25 | 2026-07-08 | 10d | 2026-06-25 | 2026-07-08 | 7d |  | ELÉTRICA | Qui 25/06/26 | Qua 08/07/26 |
| 346 | 1.2.8.13.1 | Emissão inicial | 6d | 2026-06-26 | 2026-07-03 | 293 | 2026-06-25 | 2026-07-02 | 6d | 2026-06-25 | 2026-07-02 | 7d | 0d | ELÉTRICA | Qui 25/06/26 | Qui 02/07/26 |
| 347 | 1.2.8.13.2 | Análise Tecnored | 1d | 2026-07-06 | 2026-07-06 | 346 | 2026-07-03 | 2026-07-03 | 1d | 2026-07-03 | 2026-07-03 | 7d | 0d | ELÉTRICA | Sex 03/07/26 | Sex 03/07/26 |
| 348 | 1.2.8.13.3 | Atendimento de comentários | 1d | 2026-07-07 | 2026-07-07 | 347 | 2026-07-06 | 2026-07-07 | 2d | 2026-07-06 | 2026-07-07 | 7d | 0d | ELÉTRICA | Seg 06/07/26 | Ter 07/07/26 |
| 349 | 1.2.8.13.4 | Aprovação | 1d | 2026-07-08 | 2026-07-08 | 348 | 2026-07-08 | 2026-07-08 | 1d | 2026-07-08 | 2026-07-08 | 7d |  | ELÉTRICA | Qua 08/07/26 | Qua 08/07/26 |
| 350 | 1.2.8.14 | **AG-F0009-0305-MB-S-00009** | 9d | 2026-06-26 | 2026-07-08 |  | 2026-06-25 | 2026-07-08 | 10d | 2026-06-25 | 2026-07-08 | 7d |  | ELÉTRICA | Qui 25/06/26 | Qua 08/07/26 |
| 351 | 1.2.8.14.1 | Emissão inicial | 6d | 2026-06-26 | 2026-07-03 | 293 | 2026-06-25 | 2026-07-02 | 6d | 2026-06-25 | 2026-07-02 | 7d | 0d | ELÉTRICA | Qui 25/06/26 | Qui 02/07/26 |
| 352 | 1.2.8.14.2 | Análise Tecnored | 1d | 2026-07-06 | 2026-07-06 | 351 | 2026-07-03 | 2026-07-03 | 1d | 2026-07-03 | 2026-07-03 | 7d | 0d | ELÉTRICA | Sex 03/07/26 | Sex 03/07/26 |
| 353 | 1.2.8.14.3 | Atendimento de comentários | 1d | 2026-07-07 | 2026-07-07 | 352 | 2026-07-06 | 2026-07-07 | 2d | 2026-07-06 | 2026-07-07 | 7d | 0d | ELÉTRICA | Seg 06/07/26 | Ter 07/07/26 |
| 354 | 1.2.8.14.4 | Aprovação | 1d | 2026-07-08 | 2026-07-08 | 353 | 2026-07-08 | 2026-07-08 | 1d | 2026-07-08 | 2026-07-08 | 7d |  | ELÉTRICA | Qua 08/07/26 | Qua 08/07/26 |

| ID | WBS | Task | Type | Duration | Start | Finish | Predecessors | Complete | Remaining | Baseline start | Baseline finish | Baseline duration | Baseline 1 start | Baseline 1 finish | Total slack | Free slack | Baseline cost | Disciplina | Início_LB_R0 | Término_LB_R0 |
| --- | --- | --- | --- | --- | --- | --- | --- | --- | --- | --- | --- | --- | --- | --- | --- | --- | --- | --- | --- | --- |
| 355 | 1.2.8.15 | **AG-F0009-0305-MB-S-00010** |  | 9d | 2026-06-26 | 2026-07-08 |  |  |  | 2026-06-25 | 2026-07-08 | 10d | 2026-06-25 | 2026-07-08 | 7d |  |  | ELÉTRICA | Qui 25/06/26 | Qua 08/07/26 |
| 356 | 1.2.8.15.1 | Emissão inicial |  | 6d | 2026-06-26 | 2026-07-03 | 293 |  |  | 2026-06-25 | 2026-07-02 | 6d | 2026-06-25 | 2026-07-02 | 7d | 0d |  | ELÉTRICA | Qui 25/06/26 | Qui 02/07/26 |
| 357 | 1.2.8.15.2 | Análise Tecnored |  | 1d | 2026-07-06 | 2026-07-06 | 356 |  |  | 2026-07-03 | 2026-07-03 | 1d | 2026-07-03 | 2026-07-03 | 7d | 0d |  | ELÉTRICA | Sex 03/07/26 | Sex 03/07/26 |
| 358 | 1.2.8.15.3 | Atendimento de comentários |  | 1d | 2026-07-07 | 2026-07-07 | 357 |  |  | 2026-07-06 | 2026-07-07 | 2d | 2026-07-06 | 2026-07-07 | 7d | 0d |  | ELÉTRICA | Seg 06/07/26 | Ter 07/07/26 |
| 359 | 1.2.8.15.4 | Aprovação |  | 1d | 2026-07-08 | 2026-07-08 | 358 |  |  | 2026-07-08 | 2026-07-08 | 1d | 2026-07-08 | 2026-07-08 | 7d |  |  | ELÉTRICA | Qua 08/07/26 | Qua 08/07/26 |
| 360 | 1.2.8.16 | **PL-F0009-0305-MB-S-00001** |  | 8d | 2026-06-26 | 2026-07-07 |  |  |  | 2026-06-25 | 2026-07-07 | 9d | 2026-06-25 | 2026-07-07 | 8d |  |  | ELÉTRICA | Qui 25/06/26 | Ter 07/07/26 |
| 361 | 1.2.8.16.1 | Emissão inicial |  | 5d | 2026-06-26 | 2026-07-02 | 293 |  |  | 2026-06-25 | 2026-07-01 | 5d | 2026-06-25 | 2026-07-01 | 8d | 0d |  | ELÉTRICA | Qui 25/06/26 | Qua 01/07/26 |
| 362 | 1.2.8.16.2 | Análise Tecnored |  | 1d | 2026-07-03 | 2026-07-03 | 361 |  |  | 2026-07-02 | 2026-07-02 | 1d | 2026-07-02 | 2026-07-02 | 8d | 0d |  | ELÉTRICA | Qui 02/07/26 | Qui 02/07/26 |
| 363 | 1.2.8.16.3 | Atendimento de comentários |  | 1d | 2026-07-06 | 2026-07-06 | 362 |  |  | 2026-07-03 | 2026-07-06 | 2d | 2026-07-03 | 2026-07-06 | 8d | 0d |  | ELÉTRICA | Sex 03/07/26 | Seg 06/07/26 |
| 364 | 1.2.8.16.4 | Aprovação |  | 1d | 2026-07-07 | 2026-07-07 | 363 |  |  | 2026-07-07 | 2026-07-07 | 1d | 2026-07-07 | 2026-07-07 | 8d |  |  | ELÉTRICA | Ter 07/07/26 | Ter 07/07/26 |
| 365 | 1.2.9 | **Elétrica** |  | 21d | 2026-05-28 A | 2026-06-29 |  | 13% | 18.38d | 2026-05-21 | 2026-07-08 | 35d | 2026-05-21 | 2026-07-08 | 14d |  |  | ELÉTRICA | Qui 21/05/26 | Qua 08/07/26 |
| 366 | 1.2.9.1 | **CP-F0009-0305-MB-E-00001** | inactive | 28d | 2026-05-08 | 2026-06-18 |  |  |  |  |  |  |  |  | 21d |  | -0 |  |  |  |
| 367 | 1.2.9.1.1 | Emissão inicial | inactive | 5d | 2026-05-08 | 2026-05-14 | 26FS+3d |  |  |  |  |  |  |  | 40d | 19d | -0 |  |  |  |
| 368 | 1.2.9.1.2 | Análise Tecnored | inactive | 1d | 2026-06-15 | 2026-06-15 | 367, 12 |  |  |  |  |  |  |  | 21d | 0d | -0 |  |  |  |
| 369 | 1.2.9.1.3 | Atendimento de comentários | inactive | 2d | 2026-06-16 | 2026-06-17 | 368 |  |  |  |  |  |  |  | 21d | 0d | -0 |  |  |  |
| 370 | 1.2.9.1.4 | Aprovação | inactive | 1d | 2026-06-18 | 2026-06-18 | 369 |  |  |  |  |  |  |  | 21d |  | -0 |  |  |  |
| 371 | 1.2.9.2 | **ML-F0009-0305-MB-E-00001** |  | 6d | 2026-06-17 | 2026-06-24 |  |  |  | 2026-06-15 | 2026-06-29 | 11d | 2026-06-15 | 2026-06-29 | 14d |  |  | ELÉTRICA | Seg 15/06/26 | Seg 29/06/26 |
| 372 | 1.2.9.2.1 | Emissão inicial |  | 4d | 2026-06-17 | 2026-06-22 | 407FS-5d |  |  | 2026-06-15 | 2026-06-23 | 7d | 2026-06-15 | 2026-06-23 | 14d | 0d |  | ELÉTRICA | Seg 15/06/26 | Ter 23/06/26 |
| 373 | 1.2.9.2.2 | Análise Tecnored |  | 1d | 2026-06-23 | 2026-06-23 | 372 |  |  | 2026-06-24 | 2026-06-24 | 1d | 2026-06-24 | 2026-06-24 | 17d | 0d |  | ELÉTRICA | Qua 24/06/26 | Qua 24/06/26 |
| 374 | 1.2.9.2.3 | Atendimento de comentários |  | 1d | 2026-06-24 | 2026-06-24 | 373 |  |  | 2026-06-25 | 2026-06-26 | 2d | 2026-06-25 | 2026-06-26 | 17d | 0d |  | ELÉTRICA | Qui 25/06/26 | Sex 26/06/26 |
| 375 | 1.2.9.2.4 | Aprovação |  | 1d | 2026-06-24 | 2026-06-24 | 374FF |  |  | 2026-06-29 | 2026-06-29 | 1d | 2026-06-29 | 2026-06-29 | 17d |  |  | ELÉTRICA | Seg 29/06/26 | Seg 29/06/26 |
| 376 | 1.2.9.3 | **RL-F0009-0305-MB-E-00001** |  | 5d | 2026-06-02 A | 2026-06-10 |  | 70% | 1.5d | 2026-05-26 | 2026-06-03 | 7d | 2026-05-26 | 2026-06-03 | 27d |  |  | ELÉTRICA | Ter 26/05/26 | Qua 03/06/26 |
| 377 | 1.2.9.3.1 | Emissão inicial |  | 2d | 2026-06-02 A | 2026-06-03 A | 387FS-1d | 100% |  | 2026-05-26 | 2026-05-28 | 3d | 2026-05-26 | 2026-05-28 |  |  |  | ELÉTRICA | Ter 26/05/26 | Qui 28/05/26 |
| 378 | 1.2.9.3.2 | Análise Tecnored |  | 1d | 2026-06-09 A | 2026-06-09 A | 377 | 100% |  | 2026-05-29 | 2026-05-29 | 1d | 2026-05-29 | 2026-05-29 |  |  |  | ELÉTRICA | Sex 29/05/26 | Sex 29/05/26 |
| 379 | 1.2.9.3.3 | Atendimento de comentários |  | 1d | 2026-06-10 A | 2026-06-10 | 378 | 50% | 0.5d | 2026-06-01 | 2026-06-02 | 2d | 2026-06-01 | 2026-06-02 | 27d | 0d |  | ELÉTRICA | Seg 01/06/26 | Ter 02/06/26 |
| 380 | 1.2.9.3.4 | Aprovação |  | 1d | 2026-06-10 | 2026-06-10 | 379FF |  |  | 2026-06-03 | 2026-06-03 | 1d | 2026-06-03 | 2026-06-03 | 27d |  |  | ELÉTRICA | Qua 03/06/26 | Qua 03/06/26 |

| ID | WBS | Task | Type | Duration | Start | Finish | Predecessors | Complete | Remaining | Baseline start | Baseline finish | Baseline duration | Baseline 1 start | Baseline 1 finish | Total slack | Free slack | Disciplina | Início_LB_R0 | Término_LB_R0 |
| --- | --- | --- | --- | --- | --- | --- | --- | --- | --- | --- | --- | --- | --- | --- | --- | --- | --- | --- | --- |
| 381 | 1.2.9.4 | **LE-F0009-0305-MB-E-00001** |  | 4d | 2026-06-23 | 2026-06-26 |  |  |  | 2026-06-15 | 2026-06-23 | 7d | 2026-06-15 | 2026-06-23 | 15d |  | ELÉTRICA | Seg 15/06/26 | Ter 23/06/26 |
| 382 | 1.2.9.4.1 | Emissão inicial |  | 2d | 2026-06-23 | 2026-06-24 | 407FS-1d |  |  | 2026-06-15 | 2026-06-17 | 3d | 2026-06-15 | 2026-06-17 | 15d | 0d | ELÉTRICA | Seg 15/06/26 | Qua 17/06/26 |
| 383 | 1.2.9.4.2 | Análise Tecnored |  | 1d | 2026-06-25 | 2026-06-25 | 382 |  |  | 2026-06-18 | 2026-06-18 | 1d | 2026-06-18 | 2026-06-18 | 15d | 0d | ELÉTRICA | Qui 18/06/26 | Qui 18/06/26 |
| 384 | 1.2.9.4.3 | Atendimento de comentários |  | 1d | 2026-06-26 | 2026-06-26 | 383 |  |  | 2026-06-19 | 2026-06-22 | 2d | 2026-06-19 | 2026-06-22 | 15d | 0d | ELÉTRICA | Sex 19/06/26 | Seg 22/06/26 |
| 385 | 1.2.9.4.4 | Aprovação |  | 1d | 2026-06-26 | 2026-06-26 | 384FF |  |  | 2026-06-23 | 2026-06-23 | 1d | 2026-06-23 | 2026-06-23 | 15d |  | ELÉTRICA | Ter 23/06/26 | Ter 23/06/26 |
| 386 | 1.2.9.5 | **LR-F0009-0305-MB-E-00001** |  | 5d | 2026-05-28 A | 2026-06-03 |  | 70% | 1.5d | 2026-05-21 | 2026-05-29 | 7d | 2026-05-21 | 2026-05-29 | 30d |  | ELÉTRICA | Qui 21/05/26 | Sex 29/05/26 |
| 387 | 1.2.9.5.1 | Emissão inicial |  | 2d | 2026-05-28 A | 2026-05-29 A | 79FS-1d | 100% |  | 2026-05-21 | 2026-05-25 | 3d | 2026-05-21 | 2026-05-25 |  |  | ELÉTRICA | Qui 21/05/26 | Seg 25/05/26 |
| 388 | 1.2.9.5.2 | Análise Tecnored |  | 1d | 2026-06-02 A | 2026-06-02 A | 387 | 100% |  | 2026-05-26 | 2026-05-26 | 1d | 2026-05-26 | 2026-05-26 |  |  | ELÉTRICA | Ter 26/05/26 | Ter 26/05/26 |
| 389 | 1.2.9.5.3 | Atendimento de comentários |  | 1d | 2026-06-03 A | 2026-06-03 | 388 | 50% | 0.5d | 2026-05-27 | 2026-05-28 | 2d | 2026-05-27 | 2026-05-28 | 30d | 0d | ELÉTRICA | Qua 27/05/26 | Qui 28/05/26 |
| 390 | 1.2.9.5.4 | Aprovação |  | 1d | 2026-06-03 | 2026-06-03 | 389FF |  |  | 2026-05-29 | 2026-05-29 | 1d | 2026-05-29 | 2026-05-29 | 30d |  | ELÉTRICA | Sex 29/05/26 | Sex 29/05/26 |
| 391 | 1.2.9.6 | **LM-F0009-0305-MB-E-00001** |  | 4d | 2026-06-24 | 2026-06-29 |  |  |  | 2026-06-30 | 2026-07-07 | 6d | 2026-06-30 | 2026-07-07 | 14d |  | ELÉTRICA | Ter 30/06/26 | Ter 07/07/26 |
| 392 | 1.2.9.6.1 | Emissão inicial |  | 2d | 2026-06-24 | 2026-06-25 | 413FS-1d |  |  | 2026-06-30 | 2026-07-01 | 2d | 2026-06-30 | 2026-07-01 | 14d | 0d | ELÉTRICA | Ter 30/06/26 | Qua 01/07/26 |
| 393 | 1.2.9.6.2 | Análise Tecnored |  | 1d | 2026-06-26 | 2026-06-26 | 392 |  |  | 2026-07-02 | 2026-07-02 | 1d | 2026-07-02 | 2026-07-02 | 14d | 0d | ELÉTRICA | Qui 02/07/26 | Qui 02/07/26 |
| 394 | 1.2.9.6.3 | Atendimento de comentários |  | 1d | 2026-06-29 | 2026-06-29 | 393 |  |  | 2026-07-03 | 2026-07-06 | 2d | 2026-07-03 | 2026-07-06 | 14d | 0d | ELÉTRICA | Sex 03/07/26 | Seg 06/07/26 |
| 395 | 1.2.9.6.4 | Aprovação |  | 1d | 2026-06-29 | 2026-06-29 | 394FF |  |  | 2026-07-07 | 2026-07-07 | 1d | 2026-07-07 | 2026-07-07 | 14d |  | ELÉTRICA | Ter 07/07/26 | Ter 07/07/26 |
| 396 | 1.2.9.7 | **PQ-F0009-0305-MB-E-00001** |  | 3d | 2026-06-24 | 2026-06-26 |  |  |  | 2026-07-02 | 2026-07-08 | 5d | 2026-07-02 | 2026-07-08 | 15d |  | AUTOMAÇÃO E INSTRUMENTAÇÃO | Qui 02/07/26 | Qua 08/07/26 |
| 397 | 1.2.9.7.1 | Emissão inicial |  | 1d | 2026-06-24 | 2026-06-24 | 392SS |  |  | 2026-07-02 | 2026-07-02 | 1d | 2026-07-02 | 2026-07-02 | 15d | 0d | AUTOMAÇÃO E INSTRUMENTAÇÃO | Qui 02/07/26 | Qui 02/07/26 |
| 398 | 1.2.9.7.2 | Análise Tecnored |  | 1d | 2026-06-25 | 2026-06-25 | 397 |  |  | 2026-07-03 | 2026-07-03 | 1d | 2026-07-03 | 2026-07-03 | 15d | 0d | AUTOMAÇÃO E INSTRUMENTAÇÃO | Sex 03/07/26 | Sex 03/07/26 |
| 399 | 1.2.9.7.3 | Atendimento de comentários |  | 1d | 2026-06-26 | 2026-06-26 | 398 |  |  | 2026-07-06 | 2026-07-07 | 2d | 2026-07-06 | 2026-07-07 | 15d | 0d | AUTOMAÇÃO E INSTRUMENTAÇÃO | Seg 06/07/26 | Ter 07/07/26 |
| 400 | 1.2.9.7.4 | Aprovação |  | 1d | 2026-06-26 | 2026-06-26 | 399FF |  |  | 2026-07-08 | 2026-07-08 | 1d | 2026-07-08 | 2026-07-08 | 15d |  | AUTOMAÇÃO E INSTRUMENTAÇÃO | Qua 08/07/26 | Qua 08/07/26 |
| 401 | 1.2.9.8 | **MD-F0009-0305-MB-E-00001** | inactive | 7d | 2026-06-24 | 2026-07-02 |  |  |  | 2026-06-30 | 2026-07-08 | 7d | 2026-06-30 | 2026-07-08 | 11d |  |  |  |  |
| 402 | 1.2.9.8.1 | Emissão inicial | inactive | 3d | 2026-06-24 | 2026-06-26 | 392FS-2d |  |  | 2026-06-30 | 2026-07-02 | 3d | 2026-06-30 | 2026-07-02 | 11d | 0d |  |  |  |
| 403 | 1.2.9.8.2 | Análise Tecnored | inactive | 1d | 2026-06-29 | 2026-06-29 | 402 |  |  | 2026-07-03 | 2026-07-03 | 1d | 2026-07-03 | 2026-07-03 | 11d | 0d |  |  |  |
| 404 | 1.2.9.8.3 | Atendimento de comentários | inactive | 2d | 2026-06-30 | 2026-07-01 | 403 |  |  | 2026-07-06 | 2026-07-07 | 2d | 2026-07-06 | 2026-07-07 | 11d | 0d |  |  |  |
| 405 | 1.2.9.8.4 | Aprovação | inactive | 1d | 2026-07-02 | 2026-07-02 | 404 |  |  | 2026-07-08 | 2026-07-08 | 1d | 2026-07-08 | 2026-07-08 | 11d |  |  |  |  |

| ID | WBS | Task | Duration | Start | Finish | Predecessors | Baseline start | Baseline finish | Baseline duration | Baseline 1 start | Baseline 1 finish | Total slack | Free slack | Constraint | Disciplina | Início_LB_R0 | Término_LB_R0 |
| --- | --- | --- | --- | --- | --- | --- | --- | --- | --- | --- | --- | --- | --- | --- | --- | --- | --- |
| 406 | 1.2.9.9 | **MC-F0009-0305-MB-E-00001** | 4d | 2026-06-22 | 2026-06-25 |  | 2026-06-08 | 2026-06-18 | 9d | 2026-06-08 | 2026-06-18 | 14d |  |  | AUTOMAÇÃO E INSTRUMENTAÇÃO | Seg 08/06/26 | Qui 18/06/26 |
| 407 | 1.2.9.9.1 | Emissão inicial | 2d | 2026-06-22 | 2026-06-23 | 427FS-1d | 2026-06-08 | 2026-06-12 | 5d | 2026-06-08 | 2026-06-12 | 14d | 0d |  | AUTOMAÇÃO E INSTRUMENTAÇÃO | Seg 08/06/26 | Sex 12/06/26 |
| 408 | 1.2.9.9.2 | Análise Tecnored | 1d | 2026-06-24 | 2026-06-24 | 407 | 2026-06-15 | 2026-06-15 | 1d | 2026-06-15 | 2026-06-15 | 16d | 0d |  | AUTOMAÇÃO E INSTRUMENTAÇÃO | Seg 15/06/26 | Seg 15/06/26 |
| 409 | 1.2.9.9.3 | Atendimento de comentários | 1d | 2026-06-25 | 2026-06-25 | 408 | 2026-06-16 | 2026-06-17 | 2d | 2026-06-16 | 2026-06-17 | 16d | 0d |  | AUTOMAÇÃO E INSTRUMENTAÇÃO | Ter 16/06/26 | Qua 17/06/26 |
| 410 | 1.2.9.9.4 | Aprovação | 1d | 2026-06-25 | 2026-06-25 | 409FF | 2026-06-18 | 2026-06-18 | 1d | 2026-06-18 | 2026-06-18 | 16d |  |  | AUTOMAÇÃO E INSTRUMENTAÇÃO | Qui 18/06/26 | Qui 18/06/26 |
| 411 | 1.2.9.10 | **AG-F0009-0305-MB-E-00001** | 4d | 2026-06-22 | 2026-06-25 |  | 2026-06-24 | 2026-07-02 | 7d | 2026-06-24 | 2026-07-02 | 14d |  |  | AUTOMAÇÃO E INSTRUMENTAÇÃO | Qua 24/06/26 | Qui 02/07/26 |
| 412 | 1.2.9.10.1 | Emissão inicial | 2d | 2026-06-22 | 2026-06-23 | 372FS-1d | 2026-06-24 | 2026-06-26 | 3d | 2026-06-24 | 2026-06-26 | 14d | 0d |  | AUTOMAÇÃO E INSTRUMENTAÇÃO | Qua 24/06/26 | Sex 26/06/26 |
| 413 | 1.2.9.10.2 | Análise Tecnored | 1d | 2026-06-24 | 2026-06-24 | 412 | 2026-06-29 | 2026-06-29 | 1d | 2026-06-29 | 2026-06-29 | 14d | 0d |  | AUTOMAÇÃO E INSTRUMENTAÇÃO | Seg 29/06/26 | Seg 29/06/26 |
| 414 | 1.2.9.10.3 | Atendimento de comentários | 1d | 2026-06-25 | 2026-06-25 | 413 | 2026-06-30 | 2026-07-01 | 2d | 2026-06-30 | 2026-07-01 | 16d | 0d |  | AUTOMAÇÃO E INSTRUMENTAÇÃO | Ter 30/06/26 | Qua 01/07/26 |
| 415 | 1.2.9.10.4 | Aprovação | 1d | 2026-06-25 | 2026-06-25 | 414FF | 2026-07-02 | 2026-07-02 | 1d | 2026-07-02 | 2026-07-02 | 16d |  |  | AUTOMAÇÃO E INSTRUMENTAÇÃO | Qui 02/07/26 | Qui 02/07/26 |
| 416 | 1.2.9.11 | **DU-F0009-0305-MB-E-00001** | 4d | 2026-06-18 | 2026-06-23 |  | 2026-05-29 | 2026-06-08 | 7d | 2026-05-29 | 2026-06-08 | 14d |  |  | AUTOMAÇÃO E INSTRUMENTAÇÃO | Sex 29/05/26 | Seg 08/06/26 |
| 417 | 1.2.9.11.1 | Emissão inicial | 2d | 2026-06-18 | 2026-06-19 | 377FS-1d | 2026-05-29 | 2026-06-02 | 3d | 2026-05-29 | 2026-06-02 | 14d | 0d | finish no earlier than 2026-06-19 | AUTOMAÇÃO E INSTRUMENTAÇÃO | Sex 29/05/26 | Ter 02/06/26 |
| 418 | 1.2.9.11.2 | Análise Tecnored | 1d | 2026-06-22 | 2026-06-22 | 417 | 2026-06-03 | 2026-06-03 | 1d | 2026-06-03 | 2026-06-03 | 18d | 0d |  | AUTOMAÇÃO E INSTRUMENTAÇÃO | Qua 03/06/26 | Qua 03/06/26 |
| 419 | 1.2.9.11.3 | Atendimento de comentários | 1d | 2026-06-23 | 2026-06-23 | 418 | 2026-06-04 | 2026-06-05 | 2d | 2026-06-04 | 2026-06-05 | 18d | 0d |  | AUTOMAÇÃO E INSTRUMENTAÇÃO | Qui 04/06/26 | Sex 05/06/26 |
| 420 | 1.2.9.11.4 | Aprovação | 1d | 2026-06-23 | 2026-06-23 | 419FF | 2026-06-08 | 2026-06-08 | 1d | 2026-06-08 | 2026-06-08 | 18d |  |  | AUTOMAÇÃO E INSTRUMENTAÇÃO | Seg 08/06/26 | Seg 08/06/26 |
| 421 | 1.2.9.12 | **AG-F0009-0305-MB-E-00002** | 4d | 2026-06-24 | 2026-06-29 |  | 2026-06-24 | 2026-07-03 | 8d | 2026-06-24 | 2026-07-03 | 14d |  |  | AUTOMAÇÃO E INSTRUMENTAÇÃO | Qua 24/06/26 | Sex 03/07/26 |
| 422 | 1.2.9.12.1 | Emissão inicial | 2d | 2026-06-24 | 2026-06-25 | 372FS+1d | 2026-06-24 | 2026-06-29 | 4d | 2026-06-24 | 2026-06-29 | 14d | 0d |  | AUTOMAÇÃO E INSTRUMENTAÇÃO | Qua 24/06/26 | Seg 29/06/26 |
| 423 | 1.2.9.12.2 | Análise Tecnored | 1d | 2026-06-26 | 2026-06-26 | 422 | 2026-06-30 | 2026-06-30 | 1d | 2026-06-30 | 2026-06-30 | 14d | 0d |  | AUTOMAÇÃO E INSTRUMENTAÇÃO | Ter 30/06/26 | Ter 30/06/26 |
| 424 | 1.2.9.12.3 | Atendimento de comentários | 1d | 2026-06-29 | 2026-06-29 | 423 | 2026-07-01 | 2026-07-02 | 2d | 2026-07-01 | 2026-07-02 | 14d | 0d |  | AUTOMAÇÃO E INSTRUMENTAÇÃO | Qua 01/07/26 | Qui 02/07/26 |
| 425 | 1.2.9.12.4 | Aprovação | 1d | 2026-06-29 | 2026-06-29 | 424FF | 2026-07-03 | 2026-07-03 | 1d | 2026-07-03 | 2026-07-03 | 14d |  |  | AUTOMAÇÃO E INSTRUMENTAÇÃO | Sex 03/07/26 | Sex 03/07/26 |
| 426 | 1.2.9.13 | **FD-F0009-0305-MB-E-00013** | 4d | 2026-06-19 | 2026-06-24 |  | 2026-06-03 | 2026-06-11 | 7d | 2026-06-03 | 2026-06-11 | 14d |  |  | AUTOMAÇÃO E INSTRUMENTAÇÃO | Qua 03/06/26 | Qui 11/06/26 |
| 427 | 1.2.9.13.1 | Emissão inicial | 2d | 2026-06-19 | 2026-06-22 | 417FS-1d | 2026-06-03 | 2026-06-05 | 3d | 2026-06-03 | 2026-06-05 | 14d | 0d |  | AUTOMAÇÃO E INSTRUMENTAÇÃO | Qua 03/06/26 | Sex 05/06/26 |
| 428 | 1.2.9.13.2 | Análise Tecnored | 1d | 2026-06-23 | 2026-06-23 | 427 | 2026-06-08 | 2026-06-08 | 1d | 2026-06-08 | 2026-06-08 | 17d | 0d |  | AUTOMAÇÃO E INSTRUMENTAÇÃO | Seg 08/06/26 | Seg 08/06/26 |
| 429 | 1.2.9.13.3 | Atendimento de comentários | 1d | 2026-06-24 | 2026-06-24 | 428 | 2026-06-09 | 2026-06-10 | 2d | 2026-06-09 | 2026-06-10 | 17d | 0d |  | AUTOMAÇÃO E INSTRUMENTAÇÃO | Ter 09/06/26 | Qua 10/06/26 |
| 430 | 1.2.9.13.4 | Aprovação | 1d | 2026-06-24 | 2026-06-24 | 429FF | 2026-06-11 | 2026-06-11 | 1d | 2026-06-11 | 2026-06-11 | 17d |  |  | AUTOMAÇÃO E INSTRUMENTAÇÃO | Qui 11/06/26 | Qui 11/06/26 |

| ID | WBS | Task | Type | Duration | Start | Finish | Predecessors | Complete | Remaining | Baseline start | Baseline finish | Baseline duration | Baseline 1 start | Baseline 1 finish | Total slack | Free slack | Constraint | Baseline cost | Disciplina | Início_LB_R0 | Término_LB_R0 |
| --- | --- | --- | --- | --- | --- | --- | --- | --- | --- | --- | --- | --- | --- | --- | --- | --- | --- | --- | --- | --- | --- |
| 431 | 1.2.10 | **Automação e instrumentação** |  | 26d | 2026-06-01 A | 2026-07-08 |  | 6% | 24.38d | 2026-05-20 | 2026-07-08 | 36d | 2026-05-20 | 2026-07-08 | 7d |  |  |  | AUTOMAÇÃO E INSTRUMENTAÇÃO | Qua 20/05/26 | Qua 08/07/26 |
| 432 | 1.2.10.1 | **CP-F0009-0305-MB-J-00001** | inactive | 9d | 2026-06-08 | 2026-06-18 |  |  |  |  |  |  |  |  | 21d |  |  | -0 |  |  |  |
| 433 | 1.2.10.1.1 | Emissão inicial | inactive | 5d | 2026-06-08 | 2026-06-12 | 26FS+5d, 13 |  |  |  |  |  |  |  | 21d | 0d |  | -0 |  |  |  |
| 434 | 1.2.10.1.2 | Análise Tecnored | inactive | 1d | 2026-06-15 | 2026-06-15 | 433 |  |  |  |  |  |  |  | 21d | 0d |  | -0 |  |  |  |
| 435 | 1.2.10.1.3 | Atendimento de comentários | inactive | 2d | 2026-06-16 | 2026-06-17 | 434 |  |  |  |  |  |  |  | 21d | 0d |  | -0 |  |  |  |
| 436 | 1.2.10.1.4 | Aprovação | inactive | 1d | 2026-06-18 | 2026-06-18 | 435 |  |  |  |  |  |  |  | 21d |  |  | -0 |  |  |  |
| 437 | 1.2.10.2 | **LI-F0009-0305-MB-J-00001** |  | 11d | 2026-06-15 | 2026-06-29 |  |  |  | 2026-05-22 | 2026-06-01 | 7d | 2026-05-22 | 2026-06-01 | 12d |  |  |  | AUTOMAÇÃO E INSTRUMENTAÇÃO | Sex 22/05/26 | Seg 01/06/26 |
| 438 | 1.2.10.2.1 | Emissão inicial |  | 5d | 2026-06-15 | 2026-06-19 | 473 |  |  | 2026-05-22 | 2026-05-26 | 3d | 2026-05-22 | 2026-05-26 | 12d | 0d | finish no earlier than 2026-06-19 |  | AUTOMAÇÃO E INSTRUMENTAÇÃO | Sex 22/05/26 | Ter 26/05/26 |
| 439 | 1.2.10.2.2 | Análise Tecnored |  | 1d | 2026-06-22 | 2026-06-22 | 438 |  |  | 2026-05-27 | 2026-05-27 | 1d | 2026-05-27 | 2026-05-27 | 16d | 0d |  |  | AUTOMAÇÃO E INSTRUMENTAÇÃO | Qua 27/05/26 | Qua 27/05/26 |
| 440 | 1.2.10.2.3 | Atendimento de comentários |  | 2d | 2026-06-23 | 2026-06-24 | 439 |  |  | 2026-05-28 | 2026-05-29 | 2d | 2026-05-28 | 2026-05-29 | 16d | 2d |  |  | AUTOMAÇÃO E INSTRUMENTAÇÃO | Qui 28/05/26 | Sex 29/05/26 |
| 441 | 1.2.10.2.4 | Aprovação |  | 1d | 2026-06-29 | 2026-06-29 | 440 |  |  | 2026-06-01 | 2026-06-01 | 1d | 2026-06-01 | 2026-06-01 | 14d |  | finish no earlier than 2026-06-29 |  | AUTOMAÇÃO E INSTRUMENTAÇÃO | Seg 01/06/26 | Seg 01/06/26 |
| 442 | 1.2.10.3 | **LE-F0009-0305-MB-J-00001** |  | 8d | 2026-06-26 | 2026-07-07 |  |  |  | 2026-06-23 | 2026-07-01 | 7d | 2026-06-23 | 2026-07-01 | 8d |  |  |  | AUTOMAÇÃO E INSTRUMENTAÇÃO | Ter 23/06/26 | Qua 01/07/26 |
| 443 | 1.2.10.3.1 | Emissão inicial |  | 4d | 2026-06-26 | 2026-07-01 |  |  |  | 2026-06-23 | 2026-06-25 | 3d | 2026-06-23 | 2026-06-25 | 8d | 0d | finish no earlier than 2026-07-01 |  | AUTOMAÇÃO E INSTRUMENTAÇÃO | Ter 23/06/26 | Qui 25/06/26 |
| 444 | 1.2.10.3.2 | Análise Tecnored |  | 1d | 2026-07-02 | 2026-07-02 | 443 |  |  | 2026-06-26 | 2026-06-26 | 1d | 2026-06-26 | 2026-06-26 | 8d | 0d | start no earlier than 2026-07-02 |  | AUTOMAÇÃO E INSTRUMENTAÇÃO | Sex 26/06/26 | Sex 26/06/26 |
| 445 | 1.2.10.3.3 | Atendimento de comentários |  | 2d | 2026-07-03 | 2026-07-06 | 444 |  |  | 2026-06-29 | 2026-06-30 | 2d | 2026-06-29 | 2026-06-30 | 8d | 0d | start no earlier than 2026-07-03 |  | AUTOMAÇÃO E INSTRUMENTAÇÃO | Seg 29/06/26 | Ter 30/06/26 |
| 446 | 1.2.10.3.4 | Aprovação |  | 1d | 2026-07-07 | 2026-07-07 | 445 |  |  | 2026-07-01 | 2026-07-01 | 1d | 2026-07-01 | 2026-07-01 | 8d |  | start no earlier than 2026-07-07 |  | AUTOMAÇÃO E INSTRUMENTAÇÃO | Qua 01/07/26 | Qua 01/07/26 |
| 447 | 1.2.10.4 | **LL-F0009-0305-MB-J-00001** |  | 8d | 2026-06-26 | 2026-07-07 |  |  |  | 2026-06-15 | 2026-06-23 | 7d | 2026-06-15 | 2026-06-23 | 8d |  |  |  | AUTOMAÇÃO E INSTRUMENTAÇÃO | Seg 15/06/26 | Ter 23/06/26 |
| 448 | 1.2.10.4.1 | Emissão inicial |  | 4d | 2026-06-26 | 2026-07-01 | 503 |  |  | 2026-06-15 | 2026-06-17 | 3d | 2026-06-15 | 2026-06-17 | 8d | 0d | finish no earlier than 2026-07-01 |  | AUTOMAÇÃO E INSTRUMENTAÇÃO | Seg 15/06/26 | Qua 17/06/26 |
| 449 | 1.2.10.4.2 | Análise Tecnored |  | 1d | 2026-07-02 | 2026-07-02 | 448 |  |  | 2026-06-18 | 2026-06-18 | 1d | 2026-06-18 | 2026-06-18 | 8d | 0d | start no earlier than 2026-07-02 |  | AUTOMAÇÃO E INSTRUMENTAÇÃO | Qui 18/06/26 | Qui 18/06/26 |
| 450 | 1.2.10.4.3 | Atendimento de comentários |  | 2d | 2026-07-03 | 2026-07-06 | 449 |  |  | 2026-06-19 | 2026-06-22 | 2d | 2026-06-19 | 2026-06-22 | 8d | 0d | start no earlier than 2026-07-03 |  | AUTOMAÇÃO E INSTRUMENTAÇÃO | Sex 19/06/26 | Seg 22/06/26 |
| 451 | 1.2.10.4.4 | Aprovação |  | 1d | 2026-07-07 | 2026-07-07 | 450 |  |  | 2026-06-23 | 2026-06-23 | 1d | 2026-06-23 | 2026-06-23 | 8d |  | start no earlier than 2026-07-07 |  | AUTOMAÇÃO E INSTRUMENTAÇÃO | Ter 23/06/26 | Ter 23/06/26 |
| 452 | 1.2.10.5 | **LZ-F0009-0305-MB-J-00001** | inactive | 8d | 2026-06-26 | 2026-07-07 |  |  |  | 2026-06-15 | 2026-06-23 | 7d | 2026-06-15 | 2026-06-23 | 8d |  |  |  | AUTOMAÇÃO E INSTRUMENTAÇÃO | Seg 15/06/26 | Ter 23/06/26 |
| 453 | 1.2.10.5.1 | Emissão inicial | inactive | 4d | 2026-06-26 | 2026-07-01 | 503 |  |  | 2026-06-15 | 2026-06-17 | 3d | 2026-06-15 | 2026-06-17 | 8d | 0d | finish no earlier than 2026-07-01 |  | AUTOMAÇÃO E INSTRUMENTAÇÃO | Seg 15/06/26 | Qua 17/06/26 |
| 454 | 1.2.10.5.2 | Análise Tecnored | inactive | 1d | 2026-07-02 | 2026-07-02 | 453 |  |  | 2026-06-18 | 2026-06-18 | 1d | 2026-06-18 | 2026-06-18 | 8d | 0d | start no earlier than 2026-07-02 |  | AUTOMAÇÃO E INSTRUMENTAÇÃO | Qui 18/06/26 | Qui 18/06/26 |
| 455 | 1.2.10.5.3 | Atendimento de comentários | inactive | 2d | 2026-07-03 | 2026-07-06 | 454 |  |  | 2026-06-19 | 2026-06-22 | 2d | 2026-06-19 | 2026-06-22 | 8d | 0d | start no earlier than 2026-07-03 |  | AUTOMAÇÃO E INSTRUMENTAÇÃO | Sex 19/06/26 | Seg 22/06/26 |
| 456 | 1.2.10.5.4 | Aprovação | inactive | 1d | 2026-07-07 | 2026-07-07 | 455 |  |  | 2026-06-23 | 2026-06-23 | 1d | 2026-06-23 | 2026-06-23 | 8d |  | start no earlier than 2026-07-07 |  | AUTOMAÇÃO E INSTRUMENTAÇÃO | Ter 23/06/26 | Ter 23/06/26 |

| ID | WBS | Task | Duration | Start | Finish | Predecessors | Complete | Remaining | Baseline start | Baseline finish | Baseline duration | Baseline 1 start | Baseline 1 finish | Total slack | Free slack | Constraint | Disciplina | Início_LB_R0 | Término_LB_R0 |
| --- | --- | --- | --- | --- | --- | --- | --- | --- | --- | --- | --- | --- | --- | --- | --- | --- | --- | --- | --- |
| 457 | 1.2.10.6 | **LE-F0009-0305-MB-J-00002** | 8d | 2026-06-26 | 2026-07-07 |  |  |  | 2026-06-23 | 2026-07-01 | 7d | 2026-06-23 | 2026-07-01 | 8d |  |  | AUTOMAÇÃO E INSTRUMENTAÇÃO | Ter 23/06/26 | Qua 01/07/26 |
| 458 | 1.2.10.6.1 | Emissão inicial | 4d | 2026-06-26 | 2026-07-01 |  |  |  | 2026-06-23 | 2026-06-25 | 3d | 2026-06-23 | 2026-06-25 | 8d | 0d | finish no earlier than 2026-07-01 | AUTOMAÇÃO E INSTRUMENTAÇÃO | Ter 23/06/26 | Qui 25/06/26 |
| 459 | 1.2.10.6.2 | Análise Tecnored | 1d | 2026-07-02 | 2026-07-02 | 458 |  |  | 2026-06-26 | 2026-06-26 | 1d | 2026-06-26 | 2026-06-26 | 8d | 0d | start no earlier than 2026-07-02 | AUTOMAÇÃO E INSTRUMENTAÇÃO | Sex 26/06/26 | Sex 26/06/26 |
| 460 | 1.2.10.6.3 | Atendimento de comentários | 2d | 2026-07-03 | 2026-07-06 | 459 |  |  | 2026-06-29 | 2026-06-30 | 2d | 2026-06-29 | 2026-06-30 | 8d | 0d | start no earlier than 2026-07-03 | AUTOMAÇÃO E INSTRUMENTAÇÃO | Seg 29/06/26 | Ter 30/06/26 |
| 461 | 1.2.10.6.4 | Aprovação | 1d | 2026-07-07 | 2026-07-07 | 460 |  |  | 2026-07-01 | 2026-07-01 | 1d | 2026-07-01 | 2026-07-01 | 8d |  | start no earlier than 2026-07-07 | AUTOMAÇÃO E INSTRUMENTAÇÃO | Qua 01/07/26 | Qua 01/07/26 |
| 462 | 1.2.10.7 | **PQ-F0009-0305-MB-J-00001** | 9d | 2026-06-25 | 2026-07-07 |  |  |  | 2026-07-02 | 2026-07-08 | 5d | 2026-07-02 | 2026-07-08 | 8d |  |  | AUTOMAÇÃO E INSTRUMENTAÇÃO | Qui 02/07/26 | Qua 08/07/26 |
| 463 | 1.2.10.7.1 | Emissão inicial | 6d | 2026-06-25 | 2026-07-02 | 518FS-9d |  |  | 2026-07-02 | 2026-07-02 | 1d | 2026-07-02 | 2026-07-02 | 8d | 0d | start no earlier than 2026-06-25 | AUTOMAÇÃO E INSTRUMENTAÇÃO | Qui 02/07/26 | Qui 02/07/26 |
| 464 | 1.2.10.7.2 | Análise Tecnored | 1d | 2026-07-03 | 2026-07-03 | 463 |  |  | 2026-07-03 | 2026-07-03 | 1d | 2026-07-03 | 2026-07-03 | 8d | 0d |  | AUTOMAÇÃO E INSTRUMENTAÇÃO | Sex 03/07/26 | Sex 03/07/26 |
| 465 | 1.2.10.7.3 | Atendimento de comentários | 1d | 2026-07-06 | 2026-07-06 | 464 |  |  | 2026-07-06 | 2026-07-07 | 2d | 2026-07-06 | 2026-07-07 | 8d | 0d |  | AUTOMAÇÃO E INSTRUMENTAÇÃO | Seg 06/07/26 | Ter 07/07/26 |
| 466 | 1.2.10.7.4 | Aprovação | 1d | 2026-07-07 | 2026-07-07 | 465 |  |  | 2026-07-08 | 2026-07-08 | 1d | 2026-07-08 | 2026-07-08 | 8d |  |  | AUTOMAÇÃO E INSTRUMENTAÇÃO | Qua 08/07/26 | Qua 08/07/26 |
| 467 | 1.2.10.8 | **FG-F0009-0305-MB-J-00001** | 12d | 2026-06-01 A | 2026-06-18 |  | 65% | 4.2d | 2026-05-20 | 2026-05-27 | 6d | 2026-05-20 | 2026-05-27 | 21d |  |  | AUTOMAÇÃO E INSTRUMENTAÇÃO | Qua 20/05/26 | Qua 27/05/26 |
| 468 | 1.2.10.8.1 | Emissão inicial | 6d | 2026-06-01 A | 2026-06-12 A | 63FS+10d | 100% |  | 2026-05-20 | 2026-05-21 | 2d | 2026-05-20 | 2026-05-21 |  |  | finish no earlier than 2026-06-12 | AUTOMAÇÃO E INSTRUMENTAÇÃO | Qua 20/05/26 | Qui 21/05/26 |
| 469 | 1.2.10.8.2 | Análise Tecnored | 1d | 2026-06-15 A | 2026-06-15 | 468 | 50% | 0.5d | 2026-05-22 | 2026-05-22 | 1d | 2026-05-22 | 2026-05-22 | 21d | 0d |  | AUTOMAÇÃO E INSTRUMENTAÇÃO | Sex 22/05/26 | Sex 22/05/26 |
| 470 | 1.2.10.8.3 | Atendimento de comentários | 2d | 2026-06-16 | 2026-06-17 | 469 |  |  | 2026-05-25 | 2026-05-26 | 2d | 2026-05-25 | 2026-05-26 | 21d | 0d |  | AUTOMAÇÃO E INSTRUMENTAÇÃO | Seg 25/05/26 | Ter 26/05/26 |
| 471 | 1.2.10.8.4 | Aprovação | 1d | 2026-06-18 | 2026-06-18 | 470 |  |  | 2026-05-27 | 2026-05-27 | 1d | 2026-05-27 | 2026-05-27 | 21d |  |  | AUTOMAÇÃO E INSTRUMENTAÇÃO | Qua 27/05/26 | Qua 27/05/26 |
| 472 | 1.2.10.9 | **FG-F0009-0305-MB-J-00002** | 10d | 2026-06-03 A | 2026-06-18 |  | 65% | 3.5d | 2026-05-20 | 2026-05-27 | 6d | 2026-05-20 | 2026-05-27 | 21d |  |  | AUTOMAÇÃO E INSTRUMENTAÇÃO | Qua 20/05/26 | Qua 27/05/26 |
| 473 | 1.2.10.9.1 | Emissão inicial | 6d | 2026-06-03 A | 2026-06-12 A | 63FS+10d | 100% |  | 2026-05-20 | 2026-05-21 | 2d | 2026-05-20 | 2026-05-21 |  |  | start no earlier than 2026-06-01 | AUTOMAÇÃO E INSTRUMENTAÇÃO | Qua 20/05/26 | Qui 21/05/26 |
| 474 | 1.2.10.9.2 | Análise Tecnored | 1d | 2026-06-15 A | 2026-06-15 | 473 | 50% | 0.5d | 2026-05-22 | 2026-05-22 | 1d | 2026-05-22 | 2026-05-22 | 21d | 0d |  | AUTOMAÇÃO E INSTRUMENTAÇÃO | Sex 22/05/26 | Sex 22/05/26 |
| 475 | 1.2.10.9.3 | Atendimento de comentários | 2d | 2026-06-16 | 2026-06-17 | 474 |  |  | 2026-05-25 | 2026-05-26 | 2d | 2026-05-25 | 2026-05-26 | 21d | 0d |  | AUTOMAÇÃO E INSTRUMENTAÇÃO | Seg 25/05/26 | Ter 26/05/26 |
| 476 | 1.2.10.9.4 | Aprovação | 1d | 2026-06-18 | 2026-06-18 | 475 |  |  | 2026-05-27 | 2026-05-27 | 1d | 2026-05-27 | 2026-05-27 | 21d |  |  | AUTOMAÇÃO E INSTRUMENTAÇÃO | Qua 27/05/26 | Qua 27/05/26 |
| 477 | 1.2.10.10 | **FG-F0009-0305-MB-J-00003** | 10d | 2026-06-03 A | 2026-06-18 |  | 65% | 3.5d | 2026-05-20 | 2026-05-27 | 6d | 2026-05-20 | 2026-05-27 | 21d |  |  | AUTOMAÇÃO E INSTRUMENTAÇÃO | Qua 20/05/26 | Qua 27/05/26 |
| 478 | 1.2.10.10.1 | Emissão inicial | 6d | 2026-06-03 A | 2026-06-12 A | 63FS+10d | 100% |  | 2026-05-20 | 2026-05-21 | 2d | 2026-05-20 | 2026-05-21 |  |  | finish no earlier than 2026-06-12 | AUTOMAÇÃO E INSTRUMENTAÇÃO | Qua 20/05/26 | Qui 21/05/26 |
| 479 | 1.2.10.10.2 | Análise Tecnored | 1d | 2026-06-15 A | 2026-06-15 | 478 | 50% | 0.5d | 2026-05-22 | 2026-05-22 | 1d | 2026-05-22 | 2026-05-22 | 21d | 0d |  | AUTOMAÇÃO E INSTRUMENTAÇÃO | Sex 22/05/26 | Sex 22/05/26 |
| 480 | 1.2.10.10.3 | Atendimento de comentários | 2d | 2026-06-16 | 2026-06-17 | 479 |  |  | 2026-05-25 | 2026-05-26 | 2d | 2026-05-25 | 2026-05-26 | 21d | 0d |  | AUTOMAÇÃO E INSTRUMENTAÇÃO | Seg 25/05/26 | Ter 26/05/26 |
| 481 | 1.2.10.10.4 | Aprovação | 1d | 2026-06-18 | 2026-06-18 | 480 |  |  | 2026-05-27 | 2026-05-27 | 1d | 2026-05-27 | 2026-05-27 | 21d |  |  | AUTOMAÇÃO E INSTRUMENTAÇÃO | Qua 27/05/26 | Qua 27/05/26 |

| ID | WBS | Task | Duration | Start | Finish | Predecessors | Baseline start | Baseline finish | Baseline duration | Baseline 1 start | Baseline 1 finish | Total slack | Free slack | Constraint | Disciplina | Início_LB_R0 | Término_LB_R0 |
| --- | --- | --- | --- | --- | --- | --- | --- | --- | --- | --- | --- | --- | --- | --- | --- | --- | --- |
| 482 | 1.2.10.11 | **AG-F0009-0305-MB-J-00001** | 8d | 2026-06-24 | 2026-07-03 |  | 2026-05-27 | 2026-06-15 | 14d | 2026-05-27 | 2026-06-15 | 10d |  |  | AUTOMAÇÃO E INSTRUMENTAÇÃO | Qua 27/05/26 | Seg 15/06/26 |
| 483 | 1.2.10.11.1 | Emissão inicial | 4d | 2026-06-24 | 2026-06-29 | 438 | 2026-05-27 | 2026-06-09 | 10d | 2026-05-27 | 2026-06-09 | 10d | 0d | start no earlier than 2026-06-24 | AUTOMAÇÃO E INSTRUMENTAÇÃO | Qua 27/05/26 | Ter 09/06/26 |
| 484 | 1.2.10.11.2 | Análise Tecnored | 1d | 2026-06-30 | 2026-06-30 | 483 | 2026-06-10 | 2026-06-10 | 1d | 2026-06-10 | 2026-06-10 | 10d | 0d |  | AUTOMAÇÃO E INSTRUMENTAÇÃO | Qua 10/06/26 | Qua 10/06/26 |
| 485 | 1.2.10.11.3 | Atendimento de comentários | 2d | 2026-07-01 | 2026-07-02 | 484 | 2026-06-11 | 2026-06-12 | 2d | 2026-06-11 | 2026-06-12 | 10d | 0d |  | AUTOMAÇÃO E INSTRUMENTAÇÃO | Qui 11/06/26 | Sex 12/06/26 |
| 486 | 1.2.10.11.4 | Aprovação | 1d | 2026-07-03 | 2026-07-03 | 485 | 2026-06-15 | 2026-06-15 | 1d | 2026-06-15 | 2026-06-15 | 10d |  | finish no earlier than 2026-07-03 | AUTOMAÇÃO E INSTRUMENTAÇÃO | Seg 15/06/26 | Seg 15/06/26 |
| 487 | 1.2.10.12 | **AG-F0009-0305-MB-J-00002** | 7d | 2026-06-24 | 2026-07-02 |  | 2026-05-27 | 2026-06-15 | 14d | 2026-05-27 | 2026-06-15 | 11d |  |  | AUTOMAÇÃO E INSTRUMENTAÇÃO | Qua 27/05/26 | Seg 15/06/26 |
| 488 | 1.2.10.12.1 | Emissão inicial | 3d | 2026-06-24 | 2026-06-26 | 438 | 2026-05-27 | 2026-06-09 | 10d | 2026-05-27 | 2026-06-09 | 11d | 0d | start no earlier than 2026-06-24 | AUTOMAÇÃO E INSTRUMENTAÇÃO | Qua 27/05/26 | Ter 09/06/26 |
| 489 | 1.2.10.12.2 | Análise Tecnored | 1d | 2026-06-29 | 2026-06-29 | 488 | 2026-06-10 | 2026-06-10 | 1d | 2026-06-10 | 2026-06-10 | 11d | 0d |  | AUTOMAÇÃO E INSTRUMENTAÇÃO | Qua 10/06/26 | Qua 10/06/26 |
| 490 | 1.2.10.12.3 | Atendimento de comentários | 2d | 2026-06-30 | 2026-07-01 | 489 | 2026-06-11 | 2026-06-12 | 2d | 2026-06-11 | 2026-06-12 | 11d | 0d |  | AUTOMAÇÃO E INSTRUMENTAÇÃO | Qui 11/06/26 | Sex 12/06/26 |
| 491 | 1.2.10.12.4 | Aprovação | 1d | 2026-07-02 | 2026-07-02 | 490 | 2026-06-15 | 2026-06-15 | 1d | 2026-06-15 | 2026-06-15 | 11d |  | finish no earlier than 2026-07-02 | AUTOMAÇÃO E INSTRUMENTAÇÃO | Seg 15/06/26 | Seg 15/06/26 |
| 492 | 1.2.10.13 | **AG-F0009-0305-MB-J-00003** | 7d | 2026-06-24 | 2026-07-02 |  | 2026-05-27 | 2026-06-15 | 14d | 2026-05-27 | 2026-06-15 | 11d |  |  | AUTOMAÇÃO E INSTRUMENTAÇÃO | Qua 27/05/26 | Seg 15/06/26 |
| 493 | 1.2.10.13.1 | Emissão inicial | 3d | 2026-06-24 | 2026-06-26 | 438 | 2026-05-27 | 2026-06-09 | 10d | 2026-05-27 | 2026-06-09 | 11d | 0d | start no earlier than 2026-06-24 | AUTOMAÇÃO E INSTRUMENTAÇÃO | Qua 27/05/26 | Ter 09/06/26 |
| 494 | 1.2.10.13.2 | Análise Tecnored | 1d | 2026-06-29 | 2026-06-29 | 493 | 2026-06-10 | 2026-06-10 | 1d | 2026-06-10 | 2026-06-10 | 11d | 0d |  | AUTOMAÇÃO E INSTRUMENTAÇÃO | Qua 10/06/26 | Qua 10/06/26 |
| 495 | 1.2.10.13.3 | Atendimento de comentários | 2d | 2026-06-30 | 2026-07-01 | 494 | 2026-06-11 | 2026-06-12 | 2d | 2026-06-11 | 2026-06-12 | 11d | 0d |  | AUTOMAÇÃO E INSTRUMENTAÇÃO | Qui 11/06/26 | Sex 12/06/26 |
| 496 | 1.2.10.13.4 | Aprovação | 1d | 2026-07-02 | 2026-07-02 | 495 | 2026-06-15 | 2026-06-15 | 1d | 2026-06-15 | 2026-06-15 | 11d |  |  | AUTOMAÇÃO E INSTRUMENTAÇÃO | Seg 15/06/26 | Seg 15/06/26 |
| 497 | 1.2.10.14 | **AG-F0009-0305-MB-J-00004** | 6d | 2026-06-24 | 2026-07-01 |  | 2026-05-27 | 2026-06-15 | 14d | 2026-05-27 | 2026-06-15 | 12d |  |  | AUTOMAÇÃO E INSTRUMENTAÇÃO | Qua 27/05/26 | Seg 15/06/26 |
| 498 | 1.2.10.14.1 | Emissão inicial | 2d | 2026-06-24 | 2026-06-25 | 438 | 2026-05-27 | 2026-06-09 | 10d | 2026-05-27 | 2026-06-09 | 12d | 0d | start no earlier than 2026-06-24 | AUTOMAÇÃO E INSTRUMENTAÇÃO | Qua 27/05/26 | Ter 09/06/26 |
| 499 | 1.2.10.14.2 | Análise Tecnored | 1d | 2026-06-26 | 2026-06-26 | 498 | 2026-06-10 | 2026-06-10 | 1d | 2026-06-10 | 2026-06-10 | 12d | 0d |  | AUTOMAÇÃO E INSTRUMENTAÇÃO | Qua 10/06/26 | Qua 10/06/26 |
| 500 | 1.2.10.14.3 | Atendimento de comentários | 2d | 2026-06-29 | 2026-06-30 | 499 | 2026-06-11 | 2026-06-12 | 2d | 2026-06-11 | 2026-06-12 | 12d | 0d |  | AUTOMAÇÃO E INSTRUMENTAÇÃO | Qui 11/06/26 | Sex 12/06/26 |
| 501 | 1.2.10.14.4 | Aprovação | 1d | 2026-07-01 | 2026-07-01 | 500 | 2026-06-15 | 2026-06-15 | 1d | 2026-06-15 | 2026-06-15 | 12d |  |  | AUTOMAÇÃO E INSTRUMENTAÇÃO | Seg 15/06/26 | Seg 15/06/26 |
| 502 | 1.2.10.15 | **DI-F0009-0305-MB-J-00001** | 8d | 2026-06-17 | 2026-06-26 |  | 2026-06-10 | 2026-06-18 | 7d | 2026-06-10 | 2026-06-18 | 11d |  |  | AUTOMAÇÃO E INSTRUMENTAÇÃO | Qua 10/06/26 | Qui 18/06/26 |
| 503 | 1.2.10.15.1 | Emissão inicial | 4d | 2026-06-17 | 2026-06-22 |  | 2026-06-10 | 2026-06-12 | 3d | 2026-06-10 | 2026-06-12 | 11d | 0d | start no earlier than 2026-06-17 | AUTOMAÇÃO E INSTRUMENTAÇÃO | Qua 10/06/26 | Sex 12/06/26 |
| 504 | 1.2.10.15.2 | Análise Tecnored | 1d | 2026-06-23 | 2026-06-23 | 503 | 2026-06-15 | 2026-06-15 | 1d | 2026-06-15 | 2026-06-15 | 15d | 0d |  | AUTOMAÇÃO E INSTRUMENTAÇÃO | Seg 15/06/26 | Seg 15/06/26 |
| 505 | 1.2.10.15.3 | Atendimento de comentários | 2d | 2026-06-24 | 2026-06-25 | 504 | 2026-06-16 | 2026-06-17 | 2d | 2026-06-16 | 2026-06-17 | 15d | 0d |  | AUTOMAÇÃO E INSTRUMENTAÇÃO | Ter 16/06/26 | Qua 17/06/26 |
| 506 | 1.2.10.15.4 | Aprovação | 1d | 2026-06-26 | 2026-06-26 | 505 | 2026-06-18 | 2026-06-18 | 1d | 2026-06-18 | 2026-06-18 | 15d |  |  | AUTOMAÇÃO E INSTRUMENTAÇÃO | Qui 18/06/26 | Qui 18/06/26 |

| ID | WBS | Task | Duration | Start | Finish | Predecessors | Baseline start | Baseline finish | Baseline duration | Baseline 1 start | Baseline 1 finish | Total slack | Free slack | Constraint | Disciplina | Início_LB_R0 | Término_LB_R0 |
| --- | --- | --- | --- | --- | --- | --- | --- | --- | --- | --- | --- | --- | --- | --- | --- | --- | --- |
| 507 | 1.2.10.16 | **LI-F0009-0305-MB-J-00002** | 9d | 2026-06-17 | 2026-06-29 |  | 2026-06-23 | 2026-07-01 | 7d | 2026-06-23 | 2026-07-01 | 14d |  |  | AUTOMAÇÃO E INSTRUMENTAÇÃO | Ter 23/06/26 | Qua 01/07/26 |
| 508 | 1.2.10.16.1 | Emissão inicial | 5d | 2026-06-17 | 2026-06-23 |  | 2026-06-23 | 2026-06-25 | 3d | 2026-06-23 | 2026-06-25 | 14d | 0d | start no earlier than 2026-06-17 | AUTOMAÇÃO E INSTRUMENTAÇÃO | Ter 23/06/26 | Qui 25/06/26 |
| 509 | 1.2.10.16.2 | Análise Tecnored | 1d | 2026-06-24 | 2026-06-24 | 508 | 2026-06-26 | 2026-06-26 | 1d | 2026-06-26 | 2026-06-26 | 14d | 0d |  | AUTOMAÇÃO E INSTRUMENTAÇÃO | Sex 26/06/26 | Sex 26/06/26 |
| 510 | 1.2.10.16.3 | Atendimento de comentários | 2d | 2026-06-25 | 2026-06-26 | 509 | 2026-06-29 | 2026-06-30 | 2d | 2026-06-29 | 2026-06-30 | 14d | 0d |  | AUTOMAÇÃO E INSTRUMENTAÇÃO | Seg 29/06/26 | Ter 30/06/26 |
| 511 | 1.2.10.16.4 | Aprovação | 1d | 2026-06-29 | 2026-06-29 | 510 | 2026-07-01 | 2026-07-01 | 1d | 2026-07-01 | 2026-07-01 | 14d |  |  | AUTOMAÇÃO E INSTRUMENTAÇÃO | Qua 01/07/26 | Qua 01/07/26 |
| 512 | 1.2.10.17 | **LI-F0009-0305-MB-J-00003** | 9d | 2026-06-17 | 2026-06-29 |  | 2026-06-23 | 2026-07-01 | 7d | 2026-06-23 | 2026-07-01 | 14d |  |  | AUTOMAÇÃO E INSTRUMENTAÇÃO | Ter 23/06/26 | Qua 01/07/26 |
| 513 | 1.2.10.17.1 | Emissão inicial | 5d | 2026-06-17 | 2026-06-23 |  | 2026-06-23 | 2026-06-25 | 3d | 2026-06-23 | 2026-06-25 | 14d | 0d | start no earlier than 2026-06-17 | AUTOMAÇÃO E INSTRUMENTAÇÃO | Ter 23/06/26 | Qui 25/06/26 |
| 514 | 1.2.10.17.2 | Análise Tecnored | 1d | 2026-06-24 | 2026-06-24 | 513 | 2026-06-26 | 2026-06-26 | 1d | 2026-06-26 | 2026-06-26 | 14d | 0d |  | AUTOMAÇÃO E INSTRUMENTAÇÃO | Sex 26/06/26 | Sex 26/06/26 |
| 515 | 1.2.10.17.3 | Atendimento de comentários | 2d | 2026-06-25 | 2026-06-26 | 514 | 2026-06-29 | 2026-06-30 | 2d | 2026-06-29 | 2026-06-30 | 14d | 0d |  | AUTOMAÇÃO E INSTRUMENTAÇÃO | Seg 29/06/26 | Ter 30/06/26 |
| 516 | 1.2.10.17.4 | Aprovação | 1d | 2026-06-29 | 2026-06-29 | 515 | 2026-07-01 | 2026-07-01 | 1d | 2026-07-01 | 2026-07-01 | 14d |  |  | AUTOMAÇÃO E INSTRUMENTAÇÃO | Qua 01/07/26 | Qua 01/07/26 |
| 517 | 1.2.10.18 | **LM-F0009-0305-MB-J-00001** | 7d | 2026-06-26 | 2026-07-06 |  | 2026-07-01 | 2026-07-07 | 5d | 2026-07-01 | 2026-07-07 | 9d |  |  | AUTOMAÇÃO E INSTRUMENTAÇÃO | Qua 01/07/26 | Ter 07/07/26 |
| 518 | 1.2.10.18.1 | Emissão inicial | 4d | 2026-06-26 | 2026-07-01 | 608FS-7d | 2026-07-01 | 2026-07-01 | 1d | 2026-07-01 | 2026-07-01 | 9d | 0d | start no earlier than 2026-06-26 | AUTOMAÇÃO E INSTRUMENTAÇÃO | Qua 01/07/26 | Qua 01/07/26 |
| 519 | 1.2.10.18.2 | Análise Tecnored | 1d | 2026-07-02 | 2026-07-02 | 518 | 2026-07-02 | 2026-07-02 | 1d | 2026-07-02 | 2026-07-02 | 9d | 0d |  | AUTOMAÇÃO E INSTRUMENTAÇÃO | Qui 02/07/26 | Qui 02/07/26 |
| 520 | 1.2.10.18.3 | Atendimento de comentários | 1d | 2026-07-03 | 2026-07-03 | 519 | 2026-07-03 | 2026-07-06 | 2d | 2026-07-03 | 2026-07-06 | 9d | 0d |  | AUTOMAÇÃO E INSTRUMENTAÇÃO | Sex 03/07/26 | Seg 06/07/26 |
| 521 | 1.2.10.18.4 | Aprovação | 1d | 2026-07-06 | 2026-07-06 | 520 | 2026-07-07 | 2026-07-07 | 1d | 2026-07-07 | 2026-07-07 | 9d |  |  | AUTOMAÇÃO E INSTRUMENTAÇÃO | Ter 07/07/26 | Ter 07/07/26 |
| 522 | 1.2.10.19 | **ET-F0009-0305-MB-J-00001** | 7d | 2026-06-26 | 2026-07-06 |  | 2026-06-18 | 2026-06-26 | 7d | 2026-06-18 | 2026-06-26 | 9d |  |  | AUTOMAÇÃO E INSTRUMENTAÇÃO | Qui 18/06/26 | Sex 26/06/26 |
| 523 | 1.2.10.19.1 | Emissão inicial | 3d | 2026-06-26 | 2026-06-30 | 453SS, 448SS | 2026-06-18 | 2026-06-22 | 3d | 2026-06-18 | 2026-06-22 | 9d | 0d | start no earlier than 2026-06-26 | AUTOMAÇÃO E INSTRUMENTAÇÃO | Qui 18/06/26 | Seg 22/06/26 |
| 524 | 1.2.10.19.2 | Análise Tecnored | 1d | 2026-07-01 | 2026-07-01 | 523 | 2026-06-23 | 2026-06-23 | 1d | 2026-06-23 | 2026-06-23 | 9d | 0d |  | AUTOMAÇÃO E INSTRUMENTAÇÃO | Ter 23/06/26 | Ter 23/06/26 |
| 525 | 1.2.10.19.3 | Atendimento de comentários | 2d | 2026-07-02 | 2026-07-03 | 524 | 2026-06-24 | 2026-06-25 | 2d | 2026-06-24 | 2026-06-25 | 9d | 0d |  | AUTOMAÇÃO E INSTRUMENTAÇÃO | Qua 24/06/26 | Qui 25/06/26 |
| 526 | 1.2.10.19.4 | Aprovação | 1d | 2026-07-06 | 2026-07-06 | 525 | 2026-06-26 | 2026-06-26 | 1d | 2026-06-26 | 2026-06-26 | 9d |  |  | AUTOMAÇÃO E INSTRUMENTAÇÃO | Sex 26/06/26 | Sex 26/06/26 |
| 527 | 1.2.10.20 | **FD-F0009-0305-MB-J-00001** | 10d | 2026-06-17 | 2026-06-30 |  | 2026-06-18 | 2026-07-07 | 14d | 2026-06-18 | 2026-07-07 | 7d |  |  | AUTOMAÇÃO E INSTRUMENTAÇÃO | Qui 18/06/26 | Ter 07/07/26 |
| 528 | 1.2.10.20.1 | Emissão inicial | 7d | 2026-06-17 | 2026-06-25 |  | 2026-06-18 | 2026-07-01 | 10d | 2026-06-18 | 2026-07-01 | 7d | 0d | start no earlier than 2026-06-17 | AUTOMAÇÃO E INSTRUMENTAÇÃO | Qui 18/06/26 | Qua 01/07/26 |
| 529 | 1.2.10.20.2 | Análise Tecnored | 1d | 2026-06-26 | 2026-06-26 | 528 | 2026-07-02 | 2026-07-02 | 1d | 2026-07-02 | 2026-07-02 | 13d | 0d |  | AUTOMAÇÃO E INSTRUMENTAÇÃO | Qui 02/07/26 | Qui 02/07/26 |
| 530 | 1.2.10.20.3 | Atendimento de comentários | 1d | 2026-06-29 | 2026-06-29 | 529 | 2026-07-03 | 2026-07-06 | 2d | 2026-07-03 | 2026-07-06 | 13d | 0d |  | AUTOMAÇÃO E INSTRUMENTAÇÃO | Sex 03/07/26 | Seg 06/07/26 |
| 531 | 1.2.10.20.4 | Aprovação | 1d | 2026-06-30 | 2026-06-30 | 530 | 2026-07-07 | 2026-07-07 | 1d | 2026-07-07 | 2026-07-07 | 13d |  |  | AUTOMAÇÃO E INSTRUMENTAÇÃO | Ter 07/07/26 | Ter 07/07/26 |

| ID | WBS | Task | Duration | Start | Finish | Predecessors | Baseline start | Baseline finish | Baseline duration | Baseline 1 start | Baseline 1 finish | Total slack | Free slack | Disciplina | Início_LB_R0 | Término_LB_R0 |
| --- | --- | --- | --- | --- | --- | --- | --- | --- | --- | --- | --- | --- | --- | --- | --- | --- |
| 532 | 1.2.10.21 | **FD-F0009-0305-MB-J-00002** | 10d | 2026-06-17 | 2026-06-30 |  | 2026-06-18 | 2026-07-07 | 14d | 2026-06-18 | 2026-07-07 | 13d |  | AUTOMAÇÃO E INSTRUMENTAÇÃO | Qui 18/06/26 | Ter 07/07/26 |
| 533 | 1.2.10.21.1 | Emissão inicial | 7d | 2026-06-17 | 2026-06-25 | 528SS | 2026-06-18 | 2026-07-01 | 10d | 2026-06-18 | 2026-07-01 | 13d | 0d | AUTOMAÇÃO E INSTRUMENTAÇÃO | Qui 18/06/26 | Qua 01/07/26 |
| 534 | 1.2.10.21.2 | Análise Tecnored | 1d | 2026-06-26 | 2026-06-26 | 533 | 2026-07-02 | 2026-07-02 | 1d | 2026-07-02 | 2026-07-02 | 13d | 0d | AUTOMAÇÃO E INSTRUMENTAÇÃO | Qui 02/07/26 | Qui 02/07/26 |
| 535 | 1.2.10.21.3 | Atendimento de comentários | 1d | 2026-06-29 | 2026-06-29 | 534 | 2026-07-03 | 2026-07-06 | 2d | 2026-07-03 | 2026-07-06 | 13d | 0d | AUTOMAÇÃO E INSTRUMENTAÇÃO | Sex 03/07/26 | Seg 06/07/26 |
| 536 | 1.2.10.21.4 | Aprovação | 1d | 2026-06-30 | 2026-06-30 | 535 | 2026-07-07 | 2026-07-07 | 1d | 2026-07-07 | 2026-07-07 | 13d |  | AUTOMAÇÃO E INSTRUMENTAÇÃO | Ter 07/07/26 | Ter 07/07/26 |
| 537 | 1.2.10.22 | **FD-F0009-0305-MB-J-00003** | 10d | 2026-06-17 | 2026-06-30 |  | 2026-06-18 | 2026-07-07 | 14d | 2026-06-18 | 2026-07-07 | 13d |  | AUTOMAÇÃO E INSTRUMENTAÇÃO | Qui 18/06/26 | Ter 07/07/26 |
| 538 | 1.2.10.22.1 | Emissão inicial | 7d | 2026-06-17 | 2026-06-25 | 528SS | 2026-06-18 | 2026-07-01 | 10d | 2026-06-18 | 2026-07-01 | 13d | 0d | AUTOMAÇÃO E INSTRUMENTAÇÃO | Qui 18/06/26 | Qua 01/07/26 |
| 539 | 1.2.10.22.2 | Análise Tecnored | 1d | 2026-06-26 | 2026-06-26 | 538 | 2026-07-02 | 2026-07-02 | 1d | 2026-07-02 | 2026-07-02 | 13d | 0d | AUTOMAÇÃO E INSTRUMENTAÇÃO | Qui 02/07/26 | Qui 02/07/26 |
| 540 | 1.2.10.22.3 | Atendimento de comentários | 1d | 2026-06-29 | 2026-06-29 | 539 | 2026-07-03 | 2026-07-06 | 2d | 2026-07-03 | 2026-07-06 | 13d | 0d | AUTOMAÇÃO E INSTRUMENTAÇÃO | Sex 03/07/26 | Seg 06/07/26 |
| 541 | 1.2.10.22.4 | Aprovação | 1d | 2026-06-30 | 2026-06-30 | 540 | 2026-07-07 | 2026-07-07 | 1d | 2026-07-07 | 2026-07-07 | 13d |  | AUTOMAÇÃO E INSTRUMENTAÇÃO | Ter 07/07/26 | Ter 07/07/26 |
| 542 | 1.2.10.23 | **FD-F0009-0305-MB-J-00004** | 9d | 2026-06-17 | 2026-06-29 |  | 2026-06-18 | 2026-07-07 | 14d | 2026-06-18 | 2026-07-07 | 14d |  | AUTOMAÇÃO E INSTRUMENTAÇÃO | Qui 18/06/26 | Ter 07/07/26 |
| 543 | 1.2.10.23.1 | Emissão inicial | 6d | 2026-06-17 | 2026-06-24 | 528SS | 2026-06-18 | 2026-07-01 | 10d | 2026-06-18 | 2026-07-01 | 14d | 0d | AUTOMAÇÃO E INSTRUMENTAÇÃO | Qui 18/06/26 | Qua 01/07/26 |
| 544 | 1.2.10.23.2 | Análise Tecnored | 1d | 2026-06-25 | 2026-06-25 | 543 | 2026-07-02 | 2026-07-02 | 1d | 2026-07-02 | 2026-07-02 | 14d | 0d | AUTOMAÇÃO E INSTRUMENTAÇÃO | Qui 02/07/26 | Qui 02/07/26 |
| 545 | 1.2.10.23.3 | Atendimento de comentários | 1d | 2026-06-26 | 2026-06-26 | 544 | 2026-07-03 | 2026-07-06 | 2d | 2026-07-03 | 2026-07-06 | 14d | 0d | AUTOMAÇÃO E INSTRUMENTAÇÃO | Sex 03/07/26 | Seg 06/07/26 |
| 546 | 1.2.10.23.4 | Aprovação | 1d | 2026-06-29 | 2026-06-29 | 545 | 2026-07-07 | 2026-07-07 | 1d | 2026-07-07 | 2026-07-07 | 14d |  | AUTOMAÇÃO E INSTRUMENTAÇÃO | Ter 07/07/26 | Ter 07/07/26 |
| 547 | 1.2.10.24 | **FD-F0009-0305-MB-J-00005** | 10d | 2026-06-17 | 2026-06-30 |  | 2026-06-18 | 2026-07-07 | 14d | 2026-06-18 | 2026-07-07 | 13d |  | AUTOMAÇÃO E INSTRUMENTAÇÃO | Qui 18/06/26 | Ter 07/07/26 |
| 548 | 1.2.10.24.1 | Emissão inicial | 7d | 2026-06-17 | 2026-06-25 | 528SS | 2026-06-18 | 2026-07-01 | 10d | 2026-06-18 | 2026-07-01 | 13d | 0d | AUTOMAÇÃO E INSTRUMENTAÇÃO | Qui 18/06/26 | Qua 01/07/26 |
| 549 | 1.2.10.24.2 | Análise Tecnored | 1d | 2026-06-26 | 2026-06-26 | 548 | 2026-07-02 | 2026-07-02 | 1d | 2026-07-02 | 2026-07-02 | 13d | 0d | AUTOMAÇÃO E INSTRUMENTAÇÃO | Qui 02/07/26 | Qui 02/07/26 |
| 550 | 1.2.10.24.3 | Atendimento de comentários | 1d | 2026-06-29 | 2026-06-29 | 549 | 2026-07-03 | 2026-07-06 | 2d | 2026-07-03 | 2026-07-06 | 13d | 0d | AUTOMAÇÃO E INSTRUMENTAÇÃO | Sex 03/07/26 | Seg 06/07/26 |
| 551 | 1.2.10.24.4 | Aprovação | 1d | 2026-06-30 | 2026-06-30 | 550 | 2026-07-07 | 2026-07-07 | 1d | 2026-07-07 | 2026-07-07 | 13d |  | AUTOMAÇÃO E INSTRUMENTAÇÃO | Ter 07/07/26 | Ter 07/07/26 |
| 552 | 1.2.10.25 | **FD-F0009-0305-MB-J-00006** | 10d | 2026-06-17 | 2026-06-30 |  | 2026-06-18 | 2026-07-07 | 14d | 2026-06-18 | 2026-07-07 | 13d |  | AUTOMAÇÃO E INSTRUMENTAÇÃO | Qui 18/06/26 | Ter 07/07/26 |
| 553 | 1.2.10.25.1 | Emissão inicial | 7d | 2026-06-17 | 2026-06-25 | 528SS | 2026-06-18 | 2026-07-01 | 10d | 2026-06-18 | 2026-07-01 | 13d | 0d | AUTOMAÇÃO E INSTRUMENTAÇÃO | Qui 18/06/26 | Qua 01/07/26 |
| 554 | 1.2.10.25.2 | Análise Tecnored | 1d | 2026-06-26 | 2026-06-26 | 553 | 2026-07-02 | 2026-07-02 | 1d | 2026-07-02 | 2026-07-02 | 13d | 0d | AUTOMAÇÃO E INSTRUMENTAÇÃO | Qui 02/07/26 | Qui 02/07/26 |
| 555 | 1.2.10.25.3 | Atendimento de comentários | 1d | 2026-06-29 | 2026-06-29 | 554 | 2026-07-03 | 2026-07-06 | 2d | 2026-07-03 | 2026-07-06 | 13d | 0d | AUTOMAÇÃO E INSTRUMENTAÇÃO | Sex 03/07/26 | Seg 06/07/26 |
| 556 | 1.2.10.25.4 | Aprovação | 1d | 2026-06-30 | 2026-06-30 | 555 | 2026-07-07 | 2026-07-07 | 1d | 2026-07-07 | 2026-07-07 | 13d |  | AUTOMAÇÃO E INSTRUMENTAÇÃO | Ter 07/07/26 | Ter 07/07/26 |

| ID | WBS | Task | Duration | Start | Finish | Predecessors | Baseline start | Baseline finish | Baseline duration | Baseline 1 start | Baseline 1 finish | Total slack | Free slack | Disciplina | Início_LB_R0 | Término_LB_R0 |
| --- | --- | --- | --- | --- | --- | --- | --- | --- | --- | --- | --- | --- | --- | --- | --- | --- |
| 557 | 1.2.10.26 | **FD-F0009-0305-MB-J-00007** | 10d | 2026-06-17 | 2026-06-30 |  | 2026-06-18 | 2026-07-07 | 14d | 2026-06-18 | 2026-07-07 | 13d |  | AUTOMAÇÃO E INSTRUMENTAÇÃO | Qui 18/06/26 | Ter 07/07/26 |
| 558 | 1.2.10.26.1 | Emissão inicial | 7d | 2026-06-17 | 2026-06-25 | 528SS | 2026-06-18 | 2026-07-01 | 10d | 2026-06-18 | 2026-07-01 | 13d | 0d | AUTOMAÇÃO E INSTRUMENTAÇÃO | Qui 18/06/26 | Qua 01/07/26 |
| 559 | 1.2.10.26.2 | Análise Tecnored | 1d | 2026-06-26 | 2026-06-26 | 558 | 2026-07-02 | 2026-07-02 | 1d | 2026-07-02 | 2026-07-02 | 13d | 0d | AUTOMAÇÃO E INSTRUMENTAÇÃO | Qui 02/07/26 | Qui 02/07/26 |
| 560 | 1.2.10.26.3 | Atendimento de comentários | 1d | 2026-06-29 | 2026-06-29 | 559 | 2026-07-03 | 2026-07-06 | 2d | 2026-07-03 | 2026-07-06 | 13d | 0d | AUTOMAÇÃO E INSTRUMENTAÇÃO | Sex 03/07/26 | Seg 06/07/26 |
| 561 | 1.2.10.26.4 | Aprovação | 1d | 2026-06-30 | 2026-06-30 | 560 | 2026-07-07 | 2026-07-07 | 1d | 2026-07-07 | 2026-07-07 | 13d |  | AUTOMAÇÃO E INSTRUMENTAÇÃO | Ter 07/07/26 | Ter 07/07/26 |
| 562 | 1.2.10.27 | **FD-F0009-0305-MB-J-00008** | 10d | 2026-06-17 | 2026-06-30 |  | 2026-06-18 | 2026-07-07 | 14d | 2026-06-18 | 2026-07-07 | 13d |  | AUTOMAÇÃO E INSTRUMENTAÇÃO | Qui 18/06/26 | Ter 07/07/26 |
| 563 | 1.2.10.27.1 | Emissão inicial | 7d | 2026-06-17 | 2026-06-25 | 528SS | 2026-06-18 | 2026-07-01 | 10d | 2026-06-18 | 2026-07-01 | 13d | 0d | AUTOMAÇÃO E INSTRUMENTAÇÃO | Qui 18/06/26 | Qua 01/07/26 |
| 564 | 1.2.10.27.2 | Análise Tecnored | 1d | 2026-06-26 | 2026-06-26 | 563 | 2026-07-02 | 2026-07-02 | 1d | 2026-07-02 | 2026-07-02 | 13d | 0d | AUTOMAÇÃO E INSTRUMENTAÇÃO | Qui 02/07/26 | Qui 02/07/26 |
| 565 | 1.2.10.27.3 | Atendimento de comentários | 1d | 2026-06-29 | 2026-06-29 | 564 | 2026-07-03 | 2026-07-06 | 2d | 2026-07-03 | 2026-07-06 | 13d | 0d | AUTOMAÇÃO E INSTRUMENTAÇÃO | Sex 03/07/26 | Seg 06/07/26 |
| 566 | 1.2.10.27.4 | Aprovação | 1d | 2026-06-30 | 2026-06-30 | 565 | 2026-07-07 | 2026-07-07 | 1d | 2026-07-07 | 2026-07-07 | 13d |  | AUTOMAÇÃO E INSTRUMENTAÇÃO | Ter 07/07/26 | Ter 07/07/26 |
| 567 | 1.2.10.28 | **FD-F0009-0305-MB-J-00009** | 10d | 2026-06-17 | 2026-06-30 |  | 2026-06-18 | 2026-07-07 | 14d | 2026-06-18 | 2026-07-07 | 13d |  | AUTOMAÇÃO E INSTRUMENTAÇÃO | Qui 18/06/26 | Ter 07/07/26 |
| 568 | 1.2.10.28.1 | Emissão inicial | 7d | 2026-06-17 | 2026-06-25 | 528SS | 2026-06-18 | 2026-07-01 | 10d | 2026-06-18 | 2026-07-01 | 13d | 0d | AUTOMAÇÃO E INSTRUMENTAÇÃO | Qui 18/06/26 | Qua 01/07/26 |
| 569 | 1.2.10.28.2 | Análise Tecnored | 1d | 2026-06-26 | 2026-06-26 | 568 | 2026-07-02 | 2026-07-02 | 1d | 2026-07-02 | 2026-07-02 | 13d | 0d | AUTOMAÇÃO E INSTRUMENTAÇÃO | Qui 02/07/26 | Qui 02/07/26 |
| 570 | 1.2.10.28.3 | Atendimento de comentários | 1d | 2026-06-29 | 2026-06-29 | 569 | 2026-07-03 | 2026-07-06 | 2d | 2026-07-03 | 2026-07-06 | 13d | 0d | AUTOMAÇÃO E INSTRUMENTAÇÃO | Sex 03/07/26 | Seg 06/07/26 |
| 571 | 1.2.10.28.4 | Aprovação | 1d | 2026-06-30 | 2026-06-30 | 570 | 2026-07-07 | 2026-07-07 | 1d | 2026-07-07 | 2026-07-07 | 13d |  | AUTOMAÇÃO E INSTRUMENTAÇÃO | Ter 07/07/26 | Ter 07/07/26 |
| 572 | 1.2.10.29 | **FD-F0009-0305-MB-J-00010** | 10d | 2026-06-17 | 2026-06-30 |  | 2026-06-18 | 2026-07-07 | 14d | 2026-06-18 | 2026-07-07 | 13d |  | AUTOMAÇÃO E INSTRUMENTAÇÃO | Qui 18/06/26 | Ter 07/07/26 |
| 573 | 1.2.10.29.1 | Emissão inicial | 7d | 2026-06-17 | 2026-06-25 | 528SS | 2026-06-18 | 2026-07-01 | 10d | 2026-06-18 | 2026-07-01 | 13d | 0d | AUTOMAÇÃO E INSTRUMENTAÇÃO | Qui 18/06/26 | Qua 01/07/26 |
| 574 | 1.2.10.29.2 | Análise Tecnored | 1d | 2026-06-26 | 2026-06-26 | 573 | 2026-07-02 | 2026-07-02 | 1d | 2026-07-02 | 2026-07-02 | 13d | 0d | AUTOMAÇÃO E INSTRUMENTAÇÃO | Qui 02/07/26 | Qui 02/07/26 |
| 575 | 1.2.10.29.3 | Atendimento de comentários | 1d | 2026-06-29 | 2026-06-29 | 574 | 2026-07-03 | 2026-07-06 | 2d | 2026-07-03 | 2026-07-06 | 13d | 0d | AUTOMAÇÃO E INSTRUMENTAÇÃO | Sex 03/07/26 | Seg 06/07/26 |
| 576 | 1.2.10.29.4 | Aprovação | 1d | 2026-06-30 | 2026-06-30 | 575 | 2026-07-07 | 2026-07-07 | 1d | 2026-07-07 | 2026-07-07 | 13d |  | AUTOMAÇÃO E INSTRUMENTAÇÃO | Ter 07/07/26 | Ter 07/07/26 |
| 577 | 1.2.10.30 | **FD-F0009-0305-MB-J-00011** | 10d | 2026-06-17 | 2026-06-30 |  | 2026-06-18 | 2026-07-07 | 14d | 2026-06-18 | 2026-07-07 | 13d |  | AUTOMAÇÃO E INSTRUMENTAÇÃO | Qui 18/06/26 | Ter 07/07/26 |
| 578 | 1.2.10.30.1 | Emissão inicial | 7d | 2026-06-17 | 2026-06-25 | 528SS | 2026-06-18 | 2026-07-01 | 10d | 2026-06-18 | 2026-07-01 | 13d | 0d | AUTOMAÇÃO E INSTRUMENTAÇÃO | Qui 18/06/26 | Qua 01/07/26 |
| 579 | 1.2.10.30.2 | Análise Tecnored | 1d | 2026-06-26 | 2026-06-26 | 578 | 2026-07-02 | 2026-07-02 | 1d | 2026-07-02 | 2026-07-02 | 13d | 0d | AUTOMAÇÃO E INSTRUMENTAÇÃO | Qui 02/07/26 | Qui 02/07/26 |
| 580 | 1.2.10.30.3 | Atendimento de comentários | 1d | 2026-06-29 | 2026-06-29 | 579 | 2026-07-03 | 2026-07-06 | 2d | 2026-07-03 | 2026-07-06 | 13d | 0d | AUTOMAÇÃO E INSTRUMENTAÇÃO | Sex 03/07/26 | Seg 06/07/26 |
| 581 | 1.2.10.30.4 | Aprovação | 1d | 2026-06-30 | 2026-06-30 | 580 | 2026-07-07 | 2026-07-07 | 1d | 2026-07-07 | 2026-07-07 | 13d |  | AUTOMAÇÃO E INSTRUMENTAÇÃO | Ter 07/07/26 | Ter 07/07/26 |

| ID | WBS | Task | Duration | Start | Finish | Predecessors | Baseline start | Baseline finish | Baseline duration | Baseline 1 start | Baseline 1 finish | Total slack | Free slack | Disciplina | Início_LB_R0 | Término_LB_R0 |
| --- | --- | --- | --- | --- | --- | --- | --- | --- | --- | --- | --- | --- | --- | --- | --- | --- |
| 582 | 1.2.10.31 | **FD-F0009-0305-MB-J-00012** | 10d | 2026-06-17 | 2026-06-30 |  | 2026-06-18 | 2026-07-07 | 14d | 2026-06-18 | 2026-07-07 | 13d |  | AUTOMAÇÃO E INSTRUMENTAÇÃO | Qui 18/06/26 | Ter 07/07/26 |
| 583 | 1.2.10.31.1 | Emissão inicial | 7d | 2026-06-17 | 2026-06-25 | 528SS | 2026-06-18 | 2026-07-01 | 10d | 2026-06-18 | 2026-07-01 | 13d | 0d | AUTOMAÇÃO E INSTRUMENTAÇÃO | Qui 18/06/26 | Qua 01/07/26 |
| 584 | 1.2.10.31.2 | Análise Tecnored | 1d | 2026-06-26 | 2026-06-26 | 583 | 2026-07-02 | 2026-07-02 | 1d | 2026-07-02 | 2026-07-02 | 13d | 0d | AUTOMAÇÃO E INSTRUMENTAÇÃO | Qui 02/07/26 | Qui 02/07/26 |
| 585 | 1.2.10.31.3 | Atendimento de comentários | 1d | 2026-06-29 | 2026-06-29 | 584 | 2026-07-03 | 2026-07-06 | 2d | 2026-07-03 | 2026-07-06 | 13d | 0d | AUTOMAÇÃO E INSTRUMENTAÇÃO | Sex 03/07/26 | Seg 06/07/26 |
| 586 | 1.2.10.31.4 | Aprovação | 1d | 2026-06-30 | 2026-06-30 | 585 | 2026-07-07 | 2026-07-07 | 1d | 2026-07-07 | 2026-07-07 | 13d |  | AUTOMAÇÃO E INSTRUMENTAÇÃO | Ter 07/07/26 | Ter 07/07/26 |
| 587 | 1.2.10.32 | **FD-F0009-0305-MB-J-00013** | 10d | 2026-06-17 | 2026-06-30 |  | 2026-06-18 | 2026-07-07 | 14d | 2026-06-18 | 2026-07-07 | 13d |  | AUTOMAÇÃO E INSTRUMENTAÇÃO | Qui 18/06/26 | Ter 07/07/26 |
| 588 | 1.2.10.32.1 | Emissão inicial | 7d | 2026-06-17 | 2026-06-25 | 528SS | 2026-06-18 | 2026-07-01 | 10d | 2026-06-18 | 2026-07-01 | 13d | 0d | AUTOMAÇÃO E INSTRUMENTAÇÃO | Qui 18/06/26 | Qua 01/07/26 |
| 589 | 1.2.10.32.2 | Análise Tecnored | 1d | 2026-06-26 | 2026-06-26 | 588 | 2026-07-02 | 2026-07-02 | 1d | 2026-07-02 | 2026-07-02 | 13d | 0d | AUTOMAÇÃO E INSTRUMENTAÇÃO | Qui 02/07/26 | Qui 02/07/26 |
| 590 | 1.2.10.32.3 | Atendimento de comentários | 1d | 2026-06-29 | 2026-06-29 | 589 | 2026-07-03 | 2026-07-06 | 2d | 2026-07-03 | 2026-07-06 | 13d | 0d | AUTOMAÇÃO E INSTRUMENTAÇÃO | Sex 03/07/26 | Seg 06/07/26 |
| 591 | 1.2.10.32.4 | Aprovação | 1d | 2026-06-30 | 2026-06-30 | 590 | 2026-07-07 | 2026-07-07 | 1d | 2026-07-07 | 2026-07-07 | 13d |  | AUTOMAÇÃO E INSTRUMENTAÇÃO | Ter 07/07/26 | Ter 07/07/26 |
| 592 | 1.2.10.33 | **FD-F0009-0305-MB-J-00014** | 10d | 2026-06-17 | 2026-06-30 |  | 2026-06-18 | 2026-07-07 | 14d | 2026-06-18 | 2026-07-07 | 13d |  | AUTOMAÇÃO E INSTRUMENTAÇÃO | Qui 18/06/26 | Ter 07/07/26 |
| 593 | 1.2.10.33.1 | Emissão inicial | 7d | 2026-06-17 | 2026-06-25 | 528SS | 2026-06-18 | 2026-07-01 | 10d | 2026-06-18 | 2026-07-01 | 13d | 0d | AUTOMAÇÃO E INSTRUMENTAÇÃO | Qui 18/06/26 | Qua 01/07/26 |
| 594 | 1.2.10.33.2 | Análise Tecnored | 1d | 2026-06-26 | 2026-06-26 | 593 | 2026-07-02 | 2026-07-02 | 1d | 2026-07-02 | 2026-07-02 | 13d | 0d | AUTOMAÇÃO E INSTRUMENTAÇÃO | Qui 02/07/26 | Qui 02/07/26 |
| 595 | 1.2.10.33.3 | Atendimento de comentários | 1d | 2026-06-29 | 2026-06-29 | 594 | 2026-07-03 | 2026-07-06 | 2d | 2026-07-03 | 2026-07-06 | 13d | 0d | AUTOMAÇÃO E INSTRUMENTAÇÃO | Sex 03/07/26 | Seg 06/07/26 |
| 596 | 1.2.10.33.4 | Aprovação | 1d | 2026-06-30 | 2026-06-30 | 595 | 2026-07-07 | 2026-07-07 | 1d | 2026-07-07 | 2026-07-07 | 13d |  | AUTOMAÇÃO E INSTRUMENTAÇÃO | Ter 07/07/26 | Ter 07/07/26 |
| 597 | 1.2.10.34 | **FD-F0009-0305-MB-J-00015** | 10d | 2026-06-17 | 2026-06-30 |  | 2026-06-18 | 2026-07-07 | 14d | 2026-06-18 | 2026-07-07 | 13d |  | AUTOMAÇÃO E INSTRUMENTAÇÃO | Qui 18/06/26 | Ter 07/07/26 |
| 598 | 1.2.10.34.1 | Emissão inicial | 7d | 2026-06-17 | 2026-06-25 | 528SS | 2026-06-18 | 2026-07-01 | 10d | 2026-06-18 | 2026-07-01 | 13d | 0d | AUTOMAÇÃO E INSTRUMENTAÇÃO | Qui 18/06/26 | Qua 01/07/26 |
| 599 | 1.2.10.34.2 | Análise Tecnored | 1d | 2026-06-26 | 2026-06-26 | 598 | 2026-07-02 | 2026-07-02 | 1d | 2026-07-02 | 2026-07-02 | 13d | 0d | AUTOMAÇÃO E INSTRUMENTAÇÃO | Qui 02/07/26 | Qui 02/07/26 |
| 600 | 1.2.10.34.3 | Atendimento de comentários | 1d | 2026-06-29 | 2026-06-29 | 599 | 2026-07-03 | 2026-07-06 | 2d | 2026-07-03 | 2026-07-06 | 13d | 0d | AUTOMAÇÃO E INSTRUMENTAÇÃO | Sex 03/07/26 | Seg 06/07/26 |
| 601 | 1.2.10.34.4 | Aprovação | 1d | 2026-06-30 | 2026-06-30 | 600 | 2026-07-07 | 2026-07-07 | 1d | 2026-07-07 | 2026-07-07 | 13d |  | AUTOMAÇÃO E INSTRUMENTAÇÃO | Ter 07/07/26 | Ter 07/07/26 |
| 602 | 1.2.10.35 | **FD-F0009-0305-MB-J-00016** | 16d | 2026-06-17 | 2026-07-08 |  | 2026-06-18 | 2026-07-07 | 14d | 2026-06-18 | 2026-07-07 | 7d |  | AUTOMAÇÃO E INSTRUMENTAÇÃO | Qui 18/06/26 | Ter 07/07/26 |
| 603 | 1.2.10.35.1 | Emissão inicial | 7d | 2026-06-17 | 2026-06-25 | 528SS | 2026-06-18 | 2026-07-01 | 10d | 2026-06-18 | 2026-07-01 | 7d | 0d | AUTOMAÇÃO E INSTRUMENTAÇÃO | Qui 18/06/26 | Qua 01/07/26 |
| 604 | 1.2.10.35.2 | Análise Tecnored | 6d | 2026-06-26 | 2026-07-03 | 603 | 2026-07-02 | 2026-07-02 | 1d | 2026-07-02 | 2026-07-02 | 7d | 0d | AUTOMAÇÃO E INSTRUMENTAÇÃO | Qui 02/07/26 | Qui 02/07/26 |
| 605 | 1.2.10.35.3 | Atendimento de comentários | 1d | 2026-07-06 | 2026-07-06 | 604 | 2026-07-03 | 2026-07-06 | 2d | 2026-07-03 | 2026-07-06 | 7d | 0d | AUTOMAÇÃO E INSTRUMENTAÇÃO | Sex 03/07/26 | Seg 06/07/26 |
| 606 | 1.2.10.35.4 | Aprovação | 2d | 2026-07-07 | 2026-07-08 | 605 | 2026-07-07 | 2026-07-07 | 1d | 2026-07-07 | 2026-07-07 | 7d |  | AUTOMAÇÃO E INSTRUMENTAÇÃO | Ter 07/07/26 | Ter 07/07/26 |

| ID | WBS | Task | Duration | Start | Finish | Predecessors | Baseline start | Baseline finish | Baseline duration | Baseline 1 start | Baseline 1 finish | Total slack | Free slack | Constraint | Disciplina | Início_LB_R0 | Término_LB_R0 |
| --- | --- | --- | --- | --- | --- | --- | --- | --- | --- | --- | --- | --- | --- | --- | --- | --- | --- |
| 607 | 1.2.10.36 | **DT-F0009-0305-MB-J-00001** | 8d | 2026-06-17 | 2026-06-26 |  | 2026-06-26 | 2026-07-06 | 7d | 2026-06-26 | 2026-07-06 | 15d |  |  | AUTOMAÇÃO E INSTRUMENTAÇÃO | Sex 26/06/26 | Seg 06/07/26 |
| 608 | 1.2.10.36.1 | Emissão inicial | 4d | 2026-06-17 | 2026-06-22 | 513FS-7d | 2026-06-26 | 2026-06-30 | 3d | 2026-06-26 | 2026-06-30 | 15d | 0d | start no earlier than 2026-06-17 | AUTOMAÇÃO E INSTRUMENTAÇÃO | Sex 26/06/26 | Ter 30/06/26 |
| 609 | 1.2.10.36.2 | Análise Tecnored | 1d | 2026-06-23 | 2026-06-23 | 608 | 2026-07-01 | 2026-07-01 | 1d | 2026-07-01 | 2026-07-01 | 15d | 0d |  | AUTOMAÇÃO E INSTRUMENTAÇÃO | Qua 01/07/26 | Qua 01/07/26 |
| 610 | 1.2.10.36.3 | Atendimento de comentários | 2d | 2026-06-24 | 2026-06-25 | 609 | 2026-07-02 | 2026-07-03 | 2d | 2026-07-02 | 2026-07-03 | 15d | 0d |  | AUTOMAÇÃO E INSTRUMENTAÇÃO | Qui 02/07/26 | Sex 03/07/26 |
| 611 | 1.2.10.36.4 | Aprovação | 1d | 2026-06-26 | 2026-06-26 | 610 | 2026-07-06 | 2026-07-06 | 1d | 2026-07-06 | 2026-07-06 | 15d |  |  | AUTOMAÇÃO E INSTRUMENTAÇÃO | Seg 06/07/26 | Seg 06/07/26 |
| 612 | 1.2.11 | **Civil** | 10d | 2026-06-24 | 2026-07-07 |  | 2026-06-22 | 2026-07-08 | 13d | 2026-06-22 | 2026-07-08 | 8d |  |  | CIVIL | Seg 22/06/26 | Qua 08/07/26 |
| 613 | 1.2.11.1 | **MC-F0009-0305-MB-C-00001** | 8d | 2026-06-24 | 2026-07-03 |  | 2026-06-22 | 2026-07-07 | 12d | 2026-06-22 | 2026-07-07 | 8d |  |  | CIVIL | Seg 22/06/26 | Ter 07/07/26 |
| 614 | 1.2.11.1.1 | Emissão inicial | 5d | 2026-06-24 | 2026-06-30 | 306 | 2026-06-22 | 2026-07-01 | 8d | 2026-06-22 | 2026-07-01 | 8d | 0d |  | CIVIL | Seg 22/06/26 | Qua 01/07/26 |
| 615 | 1.2.11.1.2 | Análise Tecnored | 1d | 2026-07-01 | 2026-07-01 | 614 | 2026-07-02 | 2026-07-02 | 1d | 2026-07-02 | 2026-07-02 | 10d | 0d |  | CIVIL | Qui 02/07/26 | Qui 02/07/26 |
| 616 | 1.2.11.1.3 | Atendimento de comentários | 1d | 2026-07-02 | 2026-07-02 | 615 | 2026-07-03 | 2026-07-06 | 2d | 2026-07-03 | 2026-07-06 | 10d | 0d |  | CIVIL | Sex 03/07/26 | Seg 06/07/26 |
| 617 | 1.2.11.1.4 | Aprovação | 1d | 2026-07-03 | 2026-07-03 | 616 | 2026-07-07 | 2026-07-07 | 1d | 2026-07-07 | 2026-07-07 | 10d |  |  | CIVIL | Ter 07/07/26 | Ter 07/07/26 |
| 618 | 1.2.11.2 | **PQ-F0009-0305-MB-C-00001** | 5d | 2026-07-01 | 2026-07-07 |  | 2026-07-02 | 2026-07-08 | 5d | 2026-07-02 | 2026-07-08 | 8d |  |  | CIVIL | Qui 02/07/26 | Qua 08/07/26 |
| 619 | 1.2.11.2.1 | Emissão inicial | 1d | 2026-07-01 | 2026-07-01 | 614 | 2026-07-02 | 2026-07-02 | 1d | 2026-07-02 | 2026-07-02 | 8d | 0d |  | CIVIL | Qui 02/07/26 | Qui 02/07/26 |
| 620 | 1.2.11.2.2 | Análise Tecnored | 1d | 2026-07-02 | 2026-07-02 | 619 | 2026-07-03 | 2026-07-03 | 1d | 2026-07-03 | 2026-07-03 | 8d | 0d |  | CIVIL | Sex 03/07/26 | Sex 03/07/26 |
| 621 | 1.2.11.2.3 | Atendimento de comentários | 2d | 2026-07-03 | 2026-07-06 | 620 | 2026-07-06 | 2026-07-07 | 2d | 2026-07-06 | 2026-07-07 | 8d | 0d |  | CIVIL | Seg 06/07/26 | Ter 07/07/26 |
| 622 | 1.2.11.2.4 | Aprovação | 1d | 2026-07-07 | 2026-07-07 | 621 | 2026-07-08 | 2026-07-08 | 1d | 2026-07-08 | 2026-07-08 | 8d |  |  | CIVIL | Qua 08/07/26 | Qua 08/07/26 |
