# CR-F0009-0305-MB-F-00001

Schedule from MS Project, 2026-04-27 to 2026-07-27, status date 2026-06-30, A marks actual dates.

## Calendars

- Padrão: Mon-Fri 09:00-12:00, 13:00-18:00; Sat-Sun off. Exceptions (off unless hours are given): 2026-06-04 to 2026-06-05 (FERIADO).

## Schedule

| ID | WBS | Task | Type | Duration | Start | Finish | Predecessors | Complete | Remaining | Baseline start | Baseline finish | Baseline duration | Baseline 1 start | Baseline 1 finish | Total slack | Constraint | Disciplina | Início_LB_R0 | Término_LB_R0 | Sprints |
| --- | --- | --- | --- | --- | --- | --- | --- | --- | --- | --- | --- | --- | --- | --- | --- | --- | --- | --- | --- | --- |
| 1 | 1 | **F0009 - Programa Marabá** |  | 60d | 2026-04-27 A | 2026-07-21 |  | 44% | 33.32d | 2026-04-27 | 2026-07-08 | 53d | 2026-04-27 | 2026-07-08 | 0d |  | GERAL | Seg 27/04/26 | Qua 08/07/26 | Sprint 2 |
| 2 | 1.1 | **Área 0000 -Documento geral** |  | 24d | 2026-05-19 A | 2026-06-23 |  | 50% | 12d | 2026-05-19 | 2026-05-22 | 3d | 2026-05-19 | 2026-05-22 | 0d |  | GERAL | Ter 19/05/26 | Sex 22/05/26 | Sprint 4 |
| 3 | 1.1.1 | **Marcos** |  | 24d | 2026-05-19 A | 2026-06-23 |  | 50% | 12d | 2026-05-19 | 2026-05-22 | 3d | 2026-05-19 | 2026-05-22 | 0d |  | MARCOS | Ter 19/05/26 | Sex 22/05/26 | Sprint 4 |
| 4 | 1.1.1.1 | Critério de projeto Processo | manual | 1d | 2026-06-05 | 2026-06-05 |  |  |  | 2026-05-19 | 2026-05-19 | 0d | 2026-05-19 | 2026-05-19 |  |  | MARCOS | Ter 19/05/26 | Ter 19/05/26 | Sprint 2 |
| 5 | 1.1.1.2 | Critério de projeto Mecânica | manual | 1d | 2026-05-19 A | 2026-05-19 A |  | 100% |  | 2026-05-19 | 2026-05-19 | 0d | 2026-05-19 | 2026-05-19 |  |  | MARCOS | Ter 19/05/26 | Ter 19/05/26 | Sprint 4 |
| 6 | 1.1.1.3 | Critério de projeto Tubulação | manual | 1d | 2026-05-22 A | 2026-05-22 A |  | 100% |  | 2026-05-22 | 2026-05-22 | 0d | 2026-05-22 | 2026-05-22 |  |  | MARCOS | Sex 22/05/26 | Sex 22/05/26 | Sprint 4 |
| 7 | 1.1.1.4 | Critério de projeto Elétrica | manual | 1d | 2026-06-05 A | 2026-06-05 A |  | 100% |  | 2026-05-22 | 2026-05-22 | 0d | 2026-05-22 | 2026-05-22 |  |  | MARCOS | Sex 22/05/26 | Sex 22/05/26 | Sprint 7 |
| 8 | 1.1.1.5 | Critério de projeto Automação | manual | 1d | 2026-06-05 A | 2026-06-05 |  |  | 1d | 2026-05-22 | 2026-05-22 | 0d | 2026-05-22 | 2026-05-22 |  |  | MARCOS | Sex 22/05/26 | Sex 22/05/26 | Sprint 7 |
| 9 | 1.1.1.6 | Critério de projeto Estrutura Metálica | manual | 1d | 2026-06-23 | 2026-06-23 |  |  |  | 2026-05-22 | 2026-05-22 | 0d | 2026-05-22 | 2026-05-22 |  |  | MARCOS | Sex 22/05/26 | Sex 22/05/26 | Sprint 2 |
| 10 | 1.2 | **Área 0305 - Hot Blast Stoves** |  | 60d | 2026-04-27 A | 2026-07-21 |  | 44% | 33.35d | 2026-04-27 | 2026-07-08 | 53d | 2026-04-27 | 2026-07-08 | 0d |  | GERAL | Seg 27/04/26 | Qua 08/07/26 | Sprint 2 |
| 11 | 1.2.1 | KOM - Início de projeto | milestone | 0d | 2026-04-27 A | 2026-04-27 A |  | 100% |  | 2026-04-27 | 2026-04-27 | 0d | 2026-04-27 | 2026-04-27 |  | start no earlier than 2026-04-27 | GERAL | Seg 27/04/26 | Seg 27/04/26 | Sprint 2 |
| 12 | 1.2.2 | **Pendências** |  | 0d | 2026-04-29 A | 2026-04-29 A |  | 100% |  | 2026-04-29 | 2026-04-29 | 0d | 2026-04-29 | 2026-04-29 |  |  | PENDÊNCIAS | Qua 29/04/26 | Qua 29/04/26 | Sprint 2 |
| 13 | 1.2.2.1 | Recebimento de dados de entrada | milestone | 0d | 2026-04-29 A | 2026-04-29 A |  | 100% |  | 2026-04-29 | 2026-04-29 | 0d | 2026-04-29 | 2026-04-29 |  |  | PENDÊNCIAS | Qua 29/04/26 | Qua 29/04/26 | Sprint 2 |
| 14 | 1.2.3 | **Planejamento** |  | 25.4d | 2026-04-27 A | 2026-06-01 A |  | 100% |  | 2026-04-27 | 2026-05-19 | 17d | 2026-04-27 | 2026-05-19 |  |  | PLANEJAMENTO | Seg 27/04/26 | Ter 19/05/26 | Sprint 2 |
| 15 | 1.2.3.1 | **LD-F0009-0305-MB-F-00001** |  | 24d | 2026-04-27 A | 2026-05-28 A |  | 100% |  | 2026-04-27 | 2026-05-19 | 17d | 2026-04-27 | 2026-05-19 |  |  | PLANEJAMENTO | Seg 27/04/26 | Ter 19/05/26 | Sprint 2 |
| 16 | 1.2.3.1.1 | Emissão inicial |  | 3d | 2026-04-27 A | 2026-04-29 A | 11 | 100% |  | 2026-04-27 | 2026-04-29 | 3d | 2026-04-27 | 2026-04-29 |  |  | PLANEJAMENTO | Seg 27/04/26 | Qua 29/04/26 | Sprint 2 |
| 17 | 1.2.3.1.2 | Análise Tecnored |  | 1d | 2026-04-30 A | 2026-04-30 A | 16 | 100% |  | 2026-04-30 | 2026-04-30 | 1d | 2026-04-30 | 2026-04-30 |  |  | PLANEJAMENTO | Qui 30/04/26 | Qui 30/04/26 | Sprint 2 |
| 18 | 1.2.3.1.3 | Atendimento de comentários |  | 6d | 2026-05-06 A | 2026-05-13 A | 17FS+3d | 100% |  | 2026-05-06 | 2026-05-13 | 6d | 2026-05-06 | 2026-05-13 |  |  | PLANEJAMENTO | Qua 06/05/26 | Qua 13/05/26 | Sprint 2 |
| 19 | 1.2.3.1.4 | Aprovação |  | 1d | 2026-05-28 A | 2026-05-28 A | 18FS+10d | 100% |  | 2026-05-19 | 2026-05-19 | 1d | 2026-05-19 | 2026-05-19 |  |  | PLANEJAMENTO | Ter 19/05/26 | Ter 19/05/26 | Sprint 5 |
| 20 | 1.2.3.2 | **CR-F0009-0305-MB-F-00001** |  | 22.4d | 2026-04-30 A | 2026-06-01 A |  | 100% |  | 2026-04-30 | 2026-05-19 | 13.4d | 2026-04-30 | 2026-05-19 |  |  | PLANEJAMENTO | Qui 30/04/26 | Ter 19/05/26 | Sprint 2 |
| 21 | 1.2.3.2.1 | Emissão inicial |  | 3d | 2026-04-30 A | 2026-05-04 A | 16 | 100% |  | 2026-04-30 | 2026-05-04 | 3d | 2026-04-30 | 2026-05-04 |  |  | PLANEJAMENTO | Qui 30/04/26 | Seg 04/05/26 | Sprint 2 |
| 22 | 1.2.3.2.2 | Análise Tecnored |  | 1d | 2026-05-05 A | 2026-05-05 A | 21 | 100% |  | 2026-05-05 | 2026-05-05 | 1d | 2026-05-05 | 2026-05-05 |  |  | PLANEJAMENTO | Ter 05/05/26 | Ter 05/05/26 | Sprint 2 |
| 23 | 1.2.3.2.3 | Atendimento de comentários |  | 2d | 2026-05-13 A | 2026-05-18 A | 22FS+8d | 100% |  | 2026-05-13 | 2026-05-18 | 2d | 2026-05-13 | 2026-05-18 |  |  | PLANEJAMENTO | Qua 13/05/26 | Seg 18/05/26 | Sprint 3 |
| 24 | 1.2.3.2.4 | Aprovação |  | 1d | 2026-05-29 A | 2026-06-01 A | 23FS+9d | 100% |  | 2026-05-18 | 2026-05-19 | 1d | 2026-05-18 | 2026-05-19 |  |  | PLANEJAMENTO | Seg 18/05/26 | Ter 19/05/26 | Sprint 5 |

| ID | WBS | Task | Type | Duration | Start | Finish | Predecessors | Complete | Remaining | Baseline start | Baseline finish | Baseline duration | Baseline 1 start | Baseline 1 finish | Total slack | Free slack | Constraint | Baseline cost | Sprints | Disciplina | Início_LB_R0 | Término_LB_R0 |
| --- | --- | --- | --- | --- | --- | --- | --- | --- | --- | --- | --- | --- | --- | --- | --- | --- | --- | --- | --- | --- | --- | --- |
| 25 | 1.2.3.3 | **LF-F0009-0305-MB-F-00001** | inactive | 7d | 2026-07-01 | 2026-07-09 |  |  |  |  |  |  |  |  | 8d |  |  | -0 | Sprint 10 |  |  |  |
| 26 | 1.2.3.3.1 | Emissão inicial | inactive | 3d | 2026-07-01 | 2026-07-03 | 11FS+45d |  |  |  |  |  |  |  | 8d | 0d |  | -0 | Sprint 10 |  |  |  |
| 27 | 1.2.3.3.2 | Análise Tecnored | inactive | 1d | 2026-07-06 | 2026-07-06 | 26 |  |  |  |  |  |  |  | 8d | 0d |  | -0 | Sprint 11 |  |  |  |
| 28 | 1.2.3.3.3 | Atendimento de comentários | inactive | 2d | 2026-07-07 | 2026-07-08 | 27 |  |  |  |  |  |  |  | 8d | 0d |  | -0 | Sprint 11 |  |  |  |
| 29 | 1.2.3.3.4 | Aprovação | inactive | 1d | 2026-07-09 | 2026-07-09 | 28 |  |  |  |  |  |  |  | 8d |  |  | -0 | Sprint 11 |  |  |  |
| 30 | 1.2.4 | **Coordenação** |  | 47d | 2026-04-27 A | 2026-07-02 |  | 31% | 32.64d | 2026-04-27 | 2026-07-08 | 53d | 2026-04-27 | 2026-07-08 | 13d |  |  |  | Sprint 2 | COORDENAÇÃO | Seg 27/04/26 | Qua 08/07/26 |
| 31 | 1.2.4.1 | **RM-F0009-0305-MB-G-00001** |  | 7d | 2026-06-24 A | 2026-07-02 |  | 21% | 5.5d | 2026-05-25 | 2026-06-02 | 7d | 2026-05-25 | 2026-06-02 | 13d |  |  |  | Sprint 9 | COORDENAÇÃO | Seg 25/05/26 | Ter 02/06/26 |
| 32 | 1.2.4.1.1 | Emissão inicial |  | 3d | 2026-06-24 A | 2026-06-28 | 11FS+23d | 50% | 1.5d | 2026-05-25 | 2026-05-27 | 3d | 2026-05-25 | 2026-05-27 | 13d | 0d | finish no earlier than 2026-06-28 |  | Sprint 9 | COORDENAÇÃO | Seg 25/05/26 | Qua 27/05/26 |
| 33 | 1.2.4.1.2 | Análise Tecnored |  | 1d | 2026-06-29 | 2026-06-29 | 32 |  |  | 2026-05-28 | 2026-05-28 | 1d | 2026-05-28 | 2026-05-28 | 13d | 0d |  |  | Sprint 10 | COORDENAÇÃO | Qui 28/05/26 | Qui 28/05/26 |
| 34 | 1.2.4.1.3 | Atendimento de comentários |  | 2d | 2026-06-30 | 2026-07-01 | 33 |  |  | 2026-05-29 | 2026-06-01 | 2d | 2026-05-29 | 2026-06-01 | 13d | 0d |  |  | Sprint 10 | COORDENAÇÃO | Sex 29/05/26 | Seg 01/06/26 |
| 35 | 1.2.4.1.4 | Aprovação |  | 1d | 2026-07-02 | 2026-07-02 | 34 |  |  | 2026-06-02 | 2026-06-02 | 1d | 2026-06-02 | 2026-06-02 | 13d |  |  |  | Sprint 10 | COORDENAÇÃO | Ter 02/06/26 | Ter 02/06/26 |
| 36 | 1.2.4.2 | **RM-F0009-0305MB-G-00002** | inactive | 7d | 2026-07-13 | 2026-07-21 |  |  |  | 2026-06-11 | 2026-06-19 | 7d | 2026-06-11 | 2026-06-19 | 0d |  |  |  | Sprint 12 | COORDENAÇÃO | Qui 11/06/26 | Sex 19/06/26 |
| 37 | 1.2.4.2.1 | Emissão inicial | inactive | 3d | 2026-07-13 | 2026-07-15 | 32FS+10d |  |  | 2026-06-11 | 2026-06-15 | 3d | 2026-06-11 | 2026-06-15 | 0d |  | start no earlier than 2026-06-22 |  | Sprint 12 | COORDENAÇÃO | Qui 11/06/26 | Seg 15/06/26 |
| 38 | 1.2.4.2.2 | Análise Tecnored | inactive | 1d | 2026-07-16 | 2026-07-16 | 37 |  |  | 2026-06-16 | 2026-06-16 | 1d | 2026-06-16 | 2026-06-16 | 0d |  |  |  | Sprint 12 | COORDENAÇÃO | Ter 16/06/26 | Ter 16/06/26 |
| 39 | 1.2.4.2.3 | Atendimento de comentários | inactive | 2d | 2026-07-17 | 2026-07-20 | 38 |  |  | 2026-06-17 | 2026-06-18 | 2d | 2026-06-17 | 2026-06-18 | 0d |  |  |  | Sprint 12 | COORDENAÇÃO | Qua 17/06/26 | Qui 18/06/26 |
| 40 | 1.2.4.2.4 | Aprovação | inactive | 1d | 2026-07-21 | 2026-07-21 | 39 |  |  | 2026-06-19 | 2026-06-19 | 1d | 2026-06-19 | 2026-06-19 | 0d |  |  |  | Sprint 13 | COORDENAÇÃO | Sex 19/06/26 | Sex 19/06/26 |
| 41 | 1.2.4.3 | **RL-F0009-0305-MB-G-00001** |  | 4d | 2026-06-26 | 2026-07-01 |  |  |  | 2026-06-30 | 2026-07-08 | 7d | 2026-06-30 | 2026-07-08 | 14d |  |  |  | Sprint 9 | COORDENAÇÃO | Ter 30/06/26 | Qua 08/07/26 |
| 42 | 1.2.4.3.1 | Emissão inicial |  | 1d | 2026-06-26 | 2026-06-28 |  |  |  | 2026-06-30 | 2026-07-02 | 3d | 2026-06-30 | 2026-07-02 | 14d | 0d | finish no earlier than 2026-06-28 |  | Sprint 9 | COORDENAÇÃO | Ter 30/06/26 | Qui 02/07/26 |
| 43 | 1.2.4.3.2 | Análise Tecnored |  | 1d | 2026-06-29 | 2026-06-29 | 42 |  |  | 2026-07-03 | 2026-07-03 | 1d | 2026-07-03 | 2026-07-03 | 14d | 0d | start no earlier than 2026-06-26 |  | Sprint 10 | COORDENAÇÃO | Sex 03/07/26 | Sex 03/07/26 |
| 44 | 1.2.4.3.3 | Atendimento de comentários |  | 1d | 2026-06-30 | 2026-06-30 | 43 |  |  | 2026-07-06 | 2026-07-07 | 2d | 2026-07-06 | 2026-07-07 | 14d | 0d | start no earlier than 2026-06-29 |  | Sprint 10 | COORDENAÇÃO | Seg 06/07/26 | Ter 07/07/26 |
| 45 | 1.2.4.3.4 | Aprovação |  | 1d | 2026-07-01 | 2026-07-01 | 44 |  |  | 2026-07-08 | 2026-07-08 | 1d | 2026-07-08 | 2026-07-08 | 14d |  | start no earlier than 2026-06-30 |  | Sprint 10 | COORDENAÇÃO | Qua 08/07/26 | Qua 08/07/26 |
| 46 | 1.2.4.4 | **LP-F0009-0305-MB-G-00001** |  | 45d | 2026-04-27 A | 2026-06-30 |  | 57% | 19.29d | 2026-04-27 | 2026-06-16 | 37d | 2026-04-27 | 2026-06-16 | 15d |  |  |  | Sprint 2 | COORDENAÇÃO | Seg 27/04/26 | Ter 16/06/26 |
| 47 | 1.2.4.4.1 | Emissão inicial |  | 3d | 2026-04-27 A | 2026-04-29 A | 11 | 100% |  | 2026-04-27 | 2026-04-29 | 3d | 2026-04-27 | 2026-04-29 |  |  | finish no earlier than 2026-06-29 |  | Sprint 2 | COORDENAÇÃO | Seg 27/04/26 | Qua 29/04/26 |
| 48 | 1.2.4.4.2 | Análise Tecnored |  | 1d | 2026-04-30 A | 2026-04-30 A | 47 | 100% |  | 2026-04-30 | 2026-04-30 | 1d | 2026-04-30 | 2026-04-30 |  |  |  |  | Sprint 2 | COORDENAÇÃO | Qui 30/04/26 | Qui 30/04/26 |
| 49 | 1.2.4.4.3 | Atendimento de comentários |  | 2d | 2026-06-26 | 2026-06-29 | 48FS+38d |  |  | 2026-06-12 | 2026-06-15 | 2d | 2026-06-12 | 2026-06-15 | 15d | 0d | start no earlier than 2026-06-12 |  | Sprint 9 | COORDENAÇÃO | Sex 12/06/26 | Seg 15/06/26 |
| 50 | 1.2.4.4.4 | Aprovação |  | 1d | 2026-06-30 | 2026-06-30 | 49 |  |  | 2026-06-16 | 2026-06-16 | 1d | 2026-06-16 | 2026-06-16 | 15d |  | start no earlier than 2026-06-16 |  | Sprint 10 | COORDENAÇÃO | Ter 16/06/26 | Ter 16/06/26 |

| ID | WBS | Task | Type | Duration | Start | Finish | Predecessors | Complete | Remaining | Baseline start | Baseline finish | Baseline duration | Baseline 1 start | Baseline 1 finish | Total slack | Free slack | Constraint | Baseline cost | Disciplina | Início_LB_R0 | Término_LB_R0 | Sprints |
| --- | --- | --- | --- | --- | --- | --- | --- | --- | --- | --- | --- | --- | --- | --- | --- | --- | --- | --- | --- | --- | --- | --- |
| 51 | 1.2.5 | **Processo** |  | 16d | 2026-06-18 A | 2026-07-09 |  | 60% | 6.4d | 2026-05-19 | 2026-06-25 | 28d | 2026-05-19 | 2026-06-25 | 8d |  |  |  | PROCESSOS | Ter 19/05/26 | Qui 25/06/26 | Sprint 8 |
| 52 | 1.2.5.1 | **CP-F0009-0305-MB-P-00001** | inactive | 22d | 2026-05-11 | 2026-06-11 |  |  |  |  |  |  |  |  | 28d |  |  | -0 |  |  |  | Sprint 3 |
| 53 | 1.2.5.1.1 | Emissão inicial | inactive | 5d | 2026-05-11 | 2026-05-15 | 21FS+4d |  |  |  |  |  |  |  | 41d | 13d |  | -0 |  |  |  | Sprint 3 |
| 54 | 1.2.5.1.2 | Análise Tecnored | inactive | 1d | 2026-06-08 | 2026-06-08 | 53, 4 |  |  |  |  |  |  |  | 28d | 0d |  | -0 |  |  |  | Sprint 7 |
| 55 | 1.2.5.1.3 | Atendimento de comentários | inactive | 2d | 2026-06-09 | 2026-06-10 | 54 |  |  |  |  |  |  |  | 28d | 0d |  | -0 |  |  |  | Sprint 7 |
| 56 | 1.2.5.1.4 | Aprovação | inactive | 1d | 2026-06-11 | 2026-06-11 | 55 |  |  |  |  |  |  |  | 28d |  |  | -0 |  |  |  | Sprint 7 |
| 57 | 1.2.5.2 | **MD-F0009-0305-MB-P-00001** | inactive | 7d | 2026-07-17 | 2026-07-27 |  |  |  | 2026-06-17 | 2026-06-25 | 7d | 2026-06-17 | 2026-06-25 | -4d | 0d |  |  |  |  |  | Sprint 12 |
| 58 | 1.2.5.2.1 | Emissão inicial | inactive | 3d | 2026-07-17 | 2026-07-21 | 63FS+20d |  |  | 2026-06-17 | 2026-06-19 | 3d | 2026-06-17 | 2026-06-19 | -4d | 0d |  |  |  |  |  | Sprint 12 |
| 59 | 1.2.5.2.2 | Análise Tecnored | inactive | 1d | 2026-07-22 | 2026-07-22 | 58 |  |  | 2026-06-22 | 2026-06-22 | 1d | 2026-06-22 | 2026-06-22 | -4d | 0d |  |  |  |  |  | Sprint 13 |
| 60 | 1.2.5.2.3 | Atendimento de comentários | inactive | 2d | 2026-07-23 | 2026-07-24 | 59 |  |  | 2026-06-23 | 2026-06-24 | 2d | 2026-06-23 | 2026-06-24 | -4d | 0d |  |  |  |  |  | Sprint 13 |
| 61 | 1.2.5.2.4 | Aprovação | inactive | 1d | 2026-07-27 | 2026-07-27 | 60 |  |  | 2026-06-25 | 2026-06-25 | 1d | 2026-06-25 | 2026-06-25 | -4d | 0d |  |  |  |  |  | Fora do Período |
| 62 | 1.2.5.3 | **FG-F0009-0305-MB-P-00001** |  | 16d | 2026-06-18 A | 2026-07-09 |  | 60% | 6.4d | 2026-05-19 | 2026-05-25 | 5d | 2026-05-19 | 2026-05-25 | 8d |  |  |  | PROCESSOS | Ter 19/05/26 | Seg 25/05/26 | Sprint 8 |
| 63 | 1.2.5.3.1 | Emissão inicial |  | 1d | 2026-06-18 A | 2026-06-18 A | 53FS+8d, 4 | 100% |  | 2026-05-19 | 2026-05-19 | 1d | 2026-05-19 | 2026-05-19 |  |  | finish no earlier than 2026-06-18 |  | PROCESSOS | Ter 19/05/26 | Ter 19/05/26 | Sprint 8 |
| 64 | 1.2.5.3.2 | Análise Tecnored |  | 1d | 2026-06-19 A | 2026-06-19 A | 63 | 100% |  | 2026-05-20 | 2026-05-20 | 1d | 2026-05-20 | 2026-05-20 |  |  |  |  | PROCESSOS | Qua 20/05/26 | Qua 20/05/26 | Sprint 8 |
| 65 | 1.2.5.3.3 | Atendimento de comentários |  | 2d | 2026-06-30 A | 2026-07-01 | 64 | 50% | 1d | 2026-05-21 | 2026-05-22 | 2d | 2026-05-21 | 2026-05-22 | 8d | 0d |  |  | PROCESSOS | Qui 21/05/26 | Sex 22/05/26 | Sprint 10 |
| 66 | 1.2.5.3.4 | Aprovação |  | 1d | 2026-07-09 | 2026-07-09 | 65FS+5d |  |  | 2026-05-25 | 2026-05-25 | 1d | 2026-05-25 | 2026-05-25 | 8d |  |  |  | PROCESSOS | Seg 25/05/26 | Seg 25/05/26 | Sprint 11 |
| 67 | 1.2.6 | **Mecânica** |  | 43d | 2026-05-15 A | 2026-07-16 |  | 43% | 24.56d | 2026-05-19 | 2026-07-08 | 37d | 2026-05-19 | 2026-07-08 | 3d |  |  |  | MECÂNICA | Ter 19/05/26 | Qua 08/07/26 | Sprint 3 |
| 68 | 1.2.6.1 | **CP-F0009-0305-MB-M-00001** | inactive | 12d | 2026-05-08 | 2026-05-25 |  |  |  |  |  |  |  |  | 37d |  |  | -0 |  |  |  | Sprint 2 |
| 69 | 1.2.6.1.1 | Emissão inicial | inactive | 5d | 2026-05-08 | 2026-05-14 | 21FS+3d |  |  |  |  |  |  |  | 37d | 3d |  | -0 |  |  |  | Sprint 2 |
| 70 | 1.2.6.1.2 | Análise Tecnored | inactive | 1d | 2026-05-20 | 2026-05-20 | 69, 5 |  |  |  |  |  |  |  | 39d | 0d |  | -0 |  |  |  | Sprint 4 |
| 71 | 1.2.6.1.3 | Atendimento de comentários | inactive | 2d | 2026-05-21 | 2026-05-22 | 70 |  |  |  |  |  |  |  | 39d | 0d |  | -0 |  |  |  | Sprint 4 |
| 72 | 1.2.6.1.4 | Aprovação | inactive | 1d | 2026-05-25 | 2026-05-25 | 71 |  |  |  |  |  |  |  | 39d |  |  | -0 |  |  |  | Sprint 5 |
| 73 | 1.2.6.2 | **MD-F0009-0305-MB-M-00001** | inactive | 6d | 2026-06-02 | 2026-06-11 |  |  |  | 2026-05-26 | 2026-06-02 | 6d | 2026-05-26 | 2026-06-02 | 25d |  |  |  |  |  |  | Sprint 6 |
| 74 | 1.2.6.2.1 | Emissão inicial | inactive | 2d | 2026-06-02 | 2026-06-03 | 69, 81, 5 |  |  | 2026-05-26 | 2026-05-27 | 2d | 2026-05-26 | 2026-05-27 | 25d | 0d |  |  |  |  |  | Sprint 6 |
| 75 | 1.2.6.2.2 | Análise Tecnored | inactive | 1d | 2026-06-08 | 2026-06-08 | 74 |  |  | 2026-05-28 | 2026-05-28 | 1d | 2026-05-28 | 2026-05-28 | 28d | 0d |  |  |  |  |  | Sprint 7 |
| 76 | 1.2.6.2.3 | Atendimento de comentários | inactive | 2d | 2026-06-09 | 2026-06-10 | 75 |  |  | 2026-05-29 | 2026-06-01 | 2d | 2026-05-29 | 2026-06-01 | 28d | 0d |  |  |  |  |  | Sprint 7 |
| 77 | 1.2.6.2.4 | Aprovação | inactive | 1d | 2026-06-11 | 2026-06-11 | 76 |  |  | 2026-06-02 | 2026-06-02 | 1d | 2026-06-02 | 2026-06-02 | 28d |  |  |  |  |  |  | Sprint 7 |

| ID | WBS | Task | Duration | Start | Finish | Predecessors | Complete | Baseline start | Baseline finish | Baseline duration | Baseline 1 start | Baseline 1 finish | Total slack | Free slack | Constraint | Disciplina | Início_LB_R0 | Término_LB_R0 | Sprints |
| --- | --- | --- | --- | --- | --- | --- | --- | --- | --- | --- | --- | --- | --- | --- | --- | --- | --- | --- | --- |
| 78 | 1.2.6.3 | **LE-F0009-0305-MB-M-00001** | 6d | 2026-05-26 A | 2026-06-02 A |  | 100% | 2026-05-19 | 2026-05-26 | 6d | 2026-05-19 | 2026-05-26 |  |  |  | MECÂNICA | Ter 19/05/26 | Ter 26/05/26 | Sprint 5 |
| 79 | 1.2.6.3.1 | Emissão inicial | 2d | 2026-05-26 A | 2026-05-27 A | 69, 5FS+5d | 100% | 2026-05-19 | 2026-05-20 | 2d | 2026-05-19 | 2026-05-20 |  |  |  | MECÂNICA | Ter 19/05/26 | Qua 20/05/26 | Sprint 5 |
| 80 | 1.2.6.3.2 | Análise Tecnored | 1d | 2026-05-28 A | 2026-05-28 A | 79 | 100% | 2026-05-21 | 2026-05-21 | 1d | 2026-05-21 | 2026-05-21 |  |  |  | MECÂNICA | Qui 21/05/26 | Qui 21/05/26 | Sprint 5 |
| 81 | 1.2.6.3.3 | Atendimento de comentários | 2d | 2026-05-29 A | 2026-06-01 A | 80 | 100% | 2026-05-22 | 2026-05-25 | 2d | 2026-05-22 | 2026-05-25 |  |  |  | MECÂNICA | Sex 22/05/26 | Seg 25/05/26 | Sprint 5 |
| 82 | 1.2.6.3.4 | Aprovação | 1d | 2026-06-02 A | 2026-06-02 A | 81 | 100% | 2026-05-26 | 2026-05-26 | 1d | 2026-05-26 | 2026-05-26 |  |  |  | MECÂNICA | Ter 26/05/26 | Ter 26/05/26 | Sprint 6 |
| 83 | 1.2.6.4 | **PQ-F0009-0305-MB-M-00001** | 7d | 2026-06-25 | 2026-07-03 |  |  | 2026-05-28 | 2026-06-05 | 7d | 2026-05-28 | 2026-06-05 | 12d |  |  | MECÂNICA | Qui 28/05/26 | Sex 05/06/26 | Sprint 9 |
| 84 | 1.2.6.4.1 | Emissão inicial | 3d | 2026-06-25 | 2026-06-29 | 74 |  | 2026-05-28 | 2026-06-01 | 3d | 2026-05-28 | 2026-06-01 | 12d | 0d | start no earlier than 2026-06-25 | MECÂNICA | Qui 28/05/26 | Seg 01/06/26 | Sprint 9 |
| 85 | 1.2.6.4.2 | Análise Tecnored | 1d | 2026-06-30 | 2026-06-30 | 84 |  | 2026-06-02 | 2026-06-02 | 1d | 2026-06-02 | 2026-06-02 | 12d | 0d |  | MECÂNICA | Ter 02/06/26 | Ter 02/06/26 | Sprint 10 |
| 86 | 1.2.6.4.3 | Atendimento de comentários | 2d | 2026-07-01 | 2026-07-02 | 85 |  | 2026-06-03 | 2026-06-04 | 2d | 2026-06-03 | 2026-06-04 | 12d | 0d |  | MECÂNICA | Qua 03/06/26 | Qui 04/06/26 | Sprint 10 |
| 87 | 1.2.6.4.4 | Aprovação | 1d | 2026-07-03 | 2026-07-03 | 86 |  | 2026-06-05 | 2026-06-05 | 1d | 2026-06-05 | 2026-06-05 | 12d |  |  | MECÂNICA | Sex 05/06/26 | Sex 05/06/26 | Sprint 10 |
| 88 | 1.2.6.5 | **AG-F0009-0305-MB-L-00001** | 6d | 2026-07-09 | 2026-07-16 |  |  | 2026-06-22 | 2026-07-08 | 13d | 2026-06-22 | 2026-07-08 | 3d |  |  | MECÂNICA | Seg 22/06/26 | Qua 08/07/26 | Sprint 11 |
| 89 | 1.2.6.5.1 | Emissão inicial | 3d | 2026-07-09 | 2026-07-13 | 291 |  | 2026-06-22 | 2026-07-02 | 9d | 2026-06-22 | 2026-07-02 | 3d | 0d | finish no earlier than 2026-06-26 | MECÂNICA | Seg 22/06/26 | Qui 02/07/26 | Sprint 11 |
| 90 | 1.2.6.5.2 | Análise Tecnored | 1d | 2026-07-14 | 2026-07-14 | 89 |  | 2026-07-03 | 2026-07-03 | 1d | 2026-07-03 | 2026-07-03 | 3d | 0d |  | MECÂNICA | Sex 03/07/26 | Sex 03/07/26 | Sprint 12 |
| 91 | 1.2.6.5.3 | Atendimento de comentários | 1d | 2026-07-15 | 2026-07-15 | 90 |  | 2026-07-06 | 2026-07-07 | 2d | 2026-07-06 | 2026-07-07 | 3d | 0d |  | MECÂNICA | Seg 06/07/26 | Ter 07/07/26 | Sprint 12 |
| 92 | 1.2.6.5.4 | Aprovação | 1d | 2026-07-16 | 2026-07-16 | 91 |  | 2026-07-08 | 2026-07-08 | 1d | 2026-07-08 | 2026-07-08 | 3d |  |  | MECÂNICA | Qua 08/07/26 | Qua 08/07/26 | Sprint 12 |
| 93 | 1.2.6.6 | **AG-F0009-0305-MB-L-00002** | 6d | 2026-07-09 | 2026-07-16 |  |  | 2026-06-22 | 2026-07-08 | 13d | 2026-06-22 | 2026-07-08 | 3d |  |  | MECÂNICA | Seg 22/06/26 | Qua 08/07/26 | Sprint 11 |
| 94 | 1.2.6.6.1 | Emissão inicial | 3d | 2026-07-09 | 2026-07-13 | 291 |  | 2026-06-22 | 2026-07-02 | 9d | 2026-06-22 | 2026-07-02 | 3d | 0d |  | MECÂNICA | Seg 22/06/26 | Qui 02/07/26 | Sprint 11 |
| 95 | 1.2.6.6.2 | Análise Tecnored | 1d | 2026-07-14 | 2026-07-14 | 94 |  | 2026-07-03 | 2026-07-03 | 1d | 2026-07-03 | 2026-07-03 | 3d | 0d |  | MECÂNICA | Sex 03/07/26 | Sex 03/07/26 | Sprint 12 |
| 96 | 1.2.6.6.3 | Atendimento de comentários | 1d | 2026-07-15 | 2026-07-15 | 95 |  | 2026-07-06 | 2026-07-07 | 2d | 2026-07-06 | 2026-07-07 | 3d | 0d |  | MECÂNICA | Seg 06/07/26 | Ter 07/07/26 | Sprint 12 |
| 97 | 1.2.6.6.4 | Aprovação | 1d | 2026-07-16 | 2026-07-16 | 96 |  | 2026-07-08 | 2026-07-08 | 1d | 2026-07-08 | 2026-07-08 | 3d |  |  | MECÂNICA | Qua 08/07/26 | Qua 08/07/26 | Sprint 12 |
| 98 | 1.2.6.7 | **AG-F0009-0305-MB-L-00003** | 6d | 2026-07-09 | 2026-07-16 |  |  | 2026-06-22 | 2026-07-08 | 13d | 2026-06-22 | 2026-07-08 | 3d |  |  | MECÂNICA | Seg 22/06/26 | Qua 08/07/26 | Sprint 11 |
| 99 | 1.2.6.7.1 | Emissão inicial | 3d | 2026-07-09 | 2026-07-13 | 291 |  | 2026-06-22 | 2026-07-02 | 9d | 2026-06-22 | 2026-07-02 | 3d | 0d |  | MECÂNICA | Seg 22/06/26 | Qui 02/07/26 | Sprint 11 |
| 100 | 1.2.6.7.2 | Análise Tecnored | 1d | 2026-07-14 | 2026-07-14 | 99 |  | 2026-07-03 | 2026-07-03 | 1d | 2026-07-03 | 2026-07-03 | 3d | 0d |  | MECÂNICA | Sex 03/07/26 | Sex 03/07/26 | Sprint 12 |
| 101 | 1.2.6.7.3 | Atendimento de comentários | 1d | 2026-07-15 | 2026-07-15 | 100 |  | 2026-07-06 | 2026-07-07 | 2d | 2026-07-06 | 2026-07-07 | 3d | 0d |  | MECÂNICA | Seg 06/07/26 | Ter 07/07/26 | Sprint 12 |
| 102 | 1.2.6.7.4 | Aprovação | 1d | 2026-07-16 | 2026-07-16 | 101 |  | 2026-07-08 | 2026-07-08 | 1d | 2026-07-08 | 2026-07-08 | 3d |  |  | MECÂNICA | Qua 08/07/26 | Qua 08/07/26 | Sprint 12 |

| ID | WBS | Task | Duration | Start | Finish | Predecessors | Baseline start | Baseline finish | Baseline duration | Baseline 1 start | Baseline 1 finish | Total slack | Free slack | Disciplina | Início_LB_R0 | Término_LB_R0 | Sprints |
| --- | --- | --- | --- | --- | --- | --- | --- | --- | --- | --- | --- | --- | --- | --- | --- | --- | --- |
| 103 | 1.2.6.8 | **AG-F0009-0305-MB-L-00004** | 6d | 2026-07-09 | 2026-07-16 |  | 2026-06-22 | 2026-07-08 | 13d | 2026-06-22 | 2026-07-08 | 3d |  | MECÂNICA | Seg 22/06/26 | Qua 08/07/26 | Sprint 11 |
| 104 | 1.2.6.8.1 | Emissão inicial | 3d | 2026-07-09 | 2026-07-13 | 291 | 2026-06-22 | 2026-07-02 | 9d | 2026-06-22 | 2026-07-02 | 3d | 0d | MECÂNICA | Seg 22/06/26 | Qui 02/07/26 | Sprint 11 |
| 105 | 1.2.6.8.2 | Análise Tecnored | 1d | 2026-07-14 | 2026-07-14 | 104 | 2026-07-03 | 2026-07-03 | 1d | 2026-07-03 | 2026-07-03 | 3d | 0d | MECÂNICA | Sex 03/07/26 | Sex 03/07/26 | Sprint 12 |
| 106 | 1.2.6.8.3 | Atendimento de comentários | 1d | 2026-07-15 | 2026-07-15 | 105 | 2026-07-06 | 2026-07-07 | 2d | 2026-07-06 | 2026-07-07 | 3d | 0d | MECÂNICA | Seg 06/07/26 | Ter 07/07/26 | Sprint 12 |
| 107 | 1.2.6.8.4 | Aprovação | 1d | 2026-07-16 | 2026-07-16 | 106 | 2026-07-08 | 2026-07-08 | 1d | 2026-07-08 | 2026-07-08 | 3d |  | MECÂNICA | Qua 08/07/26 | Qua 08/07/26 | Sprint 12 |
| 108 | 1.2.6.9 | **AG-F0009-0305-MB-L-00005** | 6d | 2026-07-09 | 2026-07-16 |  | 2026-06-22 | 2026-07-08 | 13d | 2026-06-22 | 2026-07-08 | 3d |  | MECÂNICA | Seg 22/06/26 | Qua 08/07/26 | Sprint 11 |
| 109 | 1.2.6.9.1 | Emissão inicial | 3d | 2026-07-09 | 2026-07-13 | 291 | 2026-06-22 | 2026-07-02 | 9d | 2026-06-22 | 2026-07-02 | 3d | 0d | MECÂNICA | Seg 22/06/26 | Qui 02/07/26 | Sprint 11 |
| 110 | 1.2.6.9.2 | Análise Tecnored | 1d | 2026-07-14 | 2026-07-14 | 109 | 2026-07-03 | 2026-07-03 | 1d | 2026-07-03 | 2026-07-03 | 3d | 0d | MECÂNICA | Sex 03/07/26 | Sex 03/07/26 | Sprint 12 |
| 111 | 1.2.6.9.3 | Atendimento de comentários | 1d | 2026-07-15 | 2026-07-15 | 110 | 2026-07-06 | 2026-07-07 | 2d | 2026-07-06 | 2026-07-07 | 3d | 0d | MECÂNICA | Seg 06/07/26 | Ter 07/07/26 | Sprint 12 |
| 112 | 1.2.6.9.4 | Aprovação | 1d | 2026-07-16 | 2026-07-16 | 111 | 2026-07-08 | 2026-07-08 | 1d | 2026-07-08 | 2026-07-08 | 3d |  | MECÂNICA | Qua 08/07/26 | Qua 08/07/26 | Sprint 12 |
| 113 | 1.2.6.10 | **AG-F0009-0305-MB-L-00006** | 6d | 2026-07-09 | 2026-07-16 |  | 2026-06-22 | 2026-07-08 | 13d | 2026-06-22 | 2026-07-08 | 3d |  | MECÂNICA | Seg 22/06/26 | Qua 08/07/26 | Sprint 11 |
| 114 | 1.2.6.10.1 | Emissão inicial | 3d | 2026-07-09 | 2026-07-13 | 291 | 2026-06-22 | 2026-07-02 | 9d | 2026-06-22 | 2026-07-02 | 3d | 0d | MECÂNICA | Seg 22/06/26 | Qui 02/07/26 | Sprint 11 |
| 115 | 1.2.6.10.2 | Análise Tecnored | 1d | 2026-07-14 | 2026-07-14 | 114 | 2026-07-03 | 2026-07-03 | 1d | 2026-07-03 | 2026-07-03 | 3d | 0d | MECÂNICA | Sex 03/07/26 | Sex 03/07/26 | Sprint 12 |
| 116 | 1.2.6.10.3 | Atendimento de comentários | 1d | 2026-07-15 | 2026-07-15 | 115 | 2026-07-06 | 2026-07-07 | 2d | 2026-07-06 | 2026-07-07 | 3d | 0d | MECÂNICA | Seg 06/07/26 | Ter 07/07/26 | Sprint 12 |
| 117 | 1.2.6.10.4 | Aprovação | 1d | 2026-07-16 | 2026-07-16 | 116 | 2026-07-08 | 2026-07-08 | 1d | 2026-07-08 | 2026-07-08 | 3d |  | MECÂNICA | Qua 08/07/26 | Qua 08/07/26 | Sprint 12 |
| 118 | 1.2.6.11 | **AG-F0009-0305-MB-L-00007** | 6d | 2026-07-09 | 2026-07-16 |  | 2026-06-22 | 2026-07-08 | 13d | 2026-06-22 | 2026-07-08 | 3d |  | MECÂNICA | Seg 22/06/26 | Qua 08/07/26 | Sprint 11 |
| 119 | 1.2.6.11.1 | Emissão inicial | 3d | 2026-07-09 | 2026-07-13 | 291 | 2026-06-22 | 2026-07-02 | 9d | 2026-06-22 | 2026-07-02 | 3d | 0d | MECÂNICA | Seg 22/06/26 | Qui 02/07/26 | Sprint 11 |
| 120 | 1.2.6.11.2 | Análise Tecnored | 1d | 2026-07-14 | 2026-07-14 | 119 | 2026-07-03 | 2026-07-03 | 1d | 2026-07-03 | 2026-07-03 | 3d | 0d | MECÂNICA | Sex 03/07/26 | Sex 03/07/26 | Sprint 12 |
| 121 | 1.2.6.11.3 | Atendimento de comentários | 1d | 2026-07-15 | 2026-07-15 | 120 | 2026-07-06 | 2026-07-07 | 2d | 2026-07-06 | 2026-07-07 | 3d | 0d | MECÂNICA | Seg 06/07/26 | Ter 07/07/26 | Sprint 12 |
| 122 | 1.2.6.11.4 | Aprovação | 1d | 2026-07-16 | 2026-07-16 | 121 | 2026-07-08 | 2026-07-08 | 1d | 2026-07-08 | 2026-07-08 | 3d |  | MECÂNICA | Qua 08/07/26 | Qua 08/07/26 | Sprint 12 |
| 123 | 1.2.6.12 | **AG-F0009-0305-MB-L-00008** | 6d | 2026-07-09 | 2026-07-16 |  | 2026-06-22 | 2026-07-08 | 13d | 2026-06-22 | 2026-07-08 | 3d |  | MECÂNICA | Seg 22/06/26 | Qua 08/07/26 | Sprint 11 |
| 124 | 1.2.6.12.1 | Emissão inicial | 3d | 2026-07-09 | 2026-07-13 | 291 | 2026-06-22 | 2026-07-02 | 9d | 2026-06-22 | 2026-07-02 | 3d | 0d | MECÂNICA | Seg 22/06/26 | Qui 02/07/26 | Sprint 11 |
| 125 | 1.2.6.12.2 | Análise Tecnored | 1d | 2026-07-14 | 2026-07-14 | 124 | 2026-07-03 | 2026-07-03 | 1d | 2026-07-03 | 2026-07-03 | 3d | 0d | MECÂNICA | Sex 03/07/26 | Sex 03/07/26 | Sprint 12 |
| 126 | 1.2.6.12.3 | Atendimento de comentários | 1d | 2026-07-15 | 2026-07-15 | 125 | 2026-07-06 | 2026-07-07 | 2d | 2026-07-06 | 2026-07-07 | 3d | 0d | MECÂNICA | Seg 06/07/26 | Ter 07/07/26 | Sprint 12 |
| 127 | 1.2.6.12.4 | Aprovação | 1d | 2026-07-16 | 2026-07-16 | 126 | 2026-07-08 | 2026-07-08 | 1d | 2026-07-08 | 2026-07-08 | 3d |  | MECÂNICA | Qua 08/07/26 | Qua 08/07/26 | Sprint 12 |

| ID | WBS | Task | Duration | Start | Finish | Predecessors | Complete | Remaining | Baseline start | Baseline finish | Baseline duration | Baseline 1 start | Baseline 1 finish | Total slack | Free slack | Constraint | Disciplina | Início_LB_R0 | Término_LB_R0 | Sprints |
| --- | --- | --- | --- | --- | --- | --- | --- | --- | --- | --- | --- | --- | --- | --- | --- | --- | --- | --- | --- | --- |
| 128 | 1.2.6.13 | **AG-F0009-0305-MB-L-00009** | 6d | 2026-07-09 | 2026-07-16 |  |  |  | 2026-06-22 | 2026-07-08 | 13d | 2026-06-22 | 2026-07-08 | 3d |  |  | MECÂNICA | Seg 22/06/26 | Qua 08/07/26 | Sprint 11 |
| 129 | 1.2.6.13.1 | Emissão inicial | 3d | 2026-07-09 | 2026-07-13 | 291 |  |  | 2026-06-22 | 2026-07-02 | 9d | 2026-06-22 | 2026-07-02 | 3d | 0d |  | MECÂNICA | Seg 22/06/26 | Qui 02/07/26 | Sprint 11 |
| 130 | 1.2.6.13.2 | Análise Tecnored | 1d | 2026-07-14 | 2026-07-14 | 129 |  |  | 2026-07-03 | 2026-07-03 | 1d | 2026-07-03 | 2026-07-03 | 3d | 0d |  | MECÂNICA | Sex 03/07/26 | Sex 03/07/26 | Sprint 12 |
| 131 | 1.2.6.13.3 | Atendimento de comentários | 1d | 2026-07-15 | 2026-07-15 | 130 |  |  | 2026-07-06 | 2026-07-07 | 2d | 2026-07-06 | 2026-07-07 | 3d | 0d |  | MECÂNICA | Seg 06/07/26 | Ter 07/07/26 | Sprint 12 |
| 132 | 1.2.6.13.4 | Aprovação | 1d | 2026-07-16 | 2026-07-16 | 131 |  |  | 2026-07-08 | 2026-07-08 | 1d | 2026-07-08 | 2026-07-08 | 3d |  |  | MECÂNICA | Qua 08/07/26 | Qua 08/07/26 | Sprint 12 |
| 133 | 1.2.6.14 | **PL-F0009-0305-MB-M-00001** | 12d | 2026-06-17 A | 2026-07-02 |  | 33% | 8d | 2026-05-29 | 2026-06-15 | 12d | 2026-05-29 | 2026-06-15 | 13d |  |  | MECÂNICA | Sex 29/05/26 | Seg 15/06/26 | Sprint 8 |
| 134 | 1.2.6.14.1 | Emissão inicial | 8d | 2026-06-17 A | 2026-06-26 | 175 | 50% | 4d | 2026-05-29 | 2026-06-09 | 8d | 2026-05-29 | 2026-06-09 | 13d | 0d | start no earlier than 2026-06-15 | MECÂNICA | Sex 29/05/26 | Ter 09/06/26 | Sprint 8 |
| 135 | 1.2.6.14.2 | Análise Tecnored | 1d | 2026-06-29 | 2026-06-29 | 134 |  |  | 2026-06-10 | 2026-06-10 | 1d | 2026-06-10 | 2026-06-10 | 13d | 0d |  | MECÂNICA | Qua 10/06/26 | Qua 10/06/26 | Sprint 10 |
| 136 | 1.2.6.14.3 | Atendimento de comentários | 2d | 2026-06-30 | 2026-07-01 | 135 |  |  | 2026-06-11 | 2026-06-12 | 2d | 2026-06-11 | 2026-06-12 | 13d | 0d |  | MECÂNICA | Qui 11/06/26 | Sex 12/06/26 | Sprint 10 |
| 137 | 1.2.6.14.4 | Aprovação | 1d | 2026-07-02 | 2026-07-02 | 136 |  |  | 2026-06-15 | 2026-06-15 | 1d | 2026-06-15 | 2026-06-15 | 13d |  |  | MECÂNICA | Seg 15/06/26 | Seg 15/06/26 | Sprint 10 |
| 138 | 1.2.6.15 | **PL-F0009-0305-MB-M-00002** | 12d | 2026-06-17 A | 2026-07-02 |  | 33% | 8d | 2026-05-29 | 2026-06-15 | 12d | 2026-05-29 | 2026-06-15 | 13d |  |  | MECÂNICA | Sex 29/05/26 | Seg 15/06/26 | Sprint 8 |
| 139 | 1.2.6.15.1 | Emissão inicial | 8d | 2026-06-17 A | 2026-06-26 | 175 | 50% | 4d | 2026-05-29 | 2026-06-09 | 8d | 2026-05-29 | 2026-06-09 | 13d | 0d | start no earlier than 2026-06-15 | MECÂNICA | Sex 29/05/26 | Ter 09/06/26 | Sprint 8 |
| 140 | 1.2.6.15.2 | Análise Tecnored | 1d | 2026-06-29 | 2026-06-29 | 139 |  |  | 2026-06-10 | 2026-06-10 | 1d | 2026-06-10 | 2026-06-10 | 13d | 0d |  | MECÂNICA | Qua 10/06/26 | Qua 10/06/26 | Sprint 10 |
| 141 | 1.2.6.15.3 | Atendimento de comentários | 2d | 2026-06-30 | 2026-07-01 | 140 |  |  | 2026-06-11 | 2026-06-12 | 2d | 2026-06-11 | 2026-06-12 | 13d | 0d |  | MECÂNICA | Qui 11/06/26 | Sex 12/06/26 | Sprint 10 |
| 142 | 1.2.6.15.4 | Aprovação | 1d | 2026-07-02 | 2026-07-02 | 141 |  |  | 2026-06-15 | 2026-06-15 | 1d | 2026-06-15 | 2026-06-15 | 13d |  |  | MECÂNICA | Seg 15/06/26 | Seg 15/06/26 | Sprint 10 |
| 143 | 1.2.6.16 | **PL-F0009-0305-MB-M-00003** | 12d | 2026-06-17 A | 2026-07-02 |  | 33% | 8d | 2026-05-29 | 2026-06-15 | 12d | 2026-05-29 | 2026-06-15 | 13d |  |  | MECÂNICA | Sex 29/05/26 | Seg 15/06/26 | Sprint 8 |
| 144 | 1.2.6.16.1 | Emissão inicial | 8d | 2026-06-17 A | 2026-06-26 | 175 | 50% | 4d | 2026-05-29 | 2026-06-09 | 8d | 2026-05-29 | 2026-06-09 | 13d | 0d | start no earlier than 2026-06-15 | MECÂNICA | Sex 29/05/26 | Ter 09/06/26 | Sprint 8 |
| 145 | 1.2.6.16.2 | Análise Tecnored | 1d | 2026-06-29 | 2026-06-29 | 144 |  |  | 2026-06-10 | 2026-06-10 | 1d | 2026-06-10 | 2026-06-10 | 13d | 0d |  | MECÂNICA | Qua 10/06/26 | Qua 10/06/26 | Sprint 10 |
| 146 | 1.2.6.16.3 | Atendimento de comentários | 2d | 2026-06-30 | 2026-07-01 | 145 |  |  | 2026-06-11 | 2026-06-12 | 2d | 2026-06-11 | 2026-06-12 | 13d | 0d |  | MECÂNICA | Qui 11/06/26 | Sex 12/06/26 | Sprint 10 |
| 147 | 1.2.6.16.4 | Aprovação | 1d | 2026-07-02 | 2026-07-02 | 146 |  |  | 2026-06-15 | 2026-06-15 | 1d | 2026-06-15 | 2026-06-15 | 13d |  |  | MECÂNICA | Seg 15/06/26 | Seg 15/06/26 | Sprint 10 |
| 148 | 1.2.6.17 | **PL-F0009-0305-MB-M-00004** | 12d | 2026-06-17 A | 2026-07-02 |  | 33% | 8d | 2026-05-29 | 2026-06-15 | 12d | 2026-05-29 | 2026-06-15 | 13d |  |  | MECÂNICA | Sex 29/05/26 | Seg 15/06/26 | Sprint 8 |
| 149 | 1.2.6.17.1 | Emissão inicial | 8d | 2026-06-17 A | 2026-06-26 | 175 | 50% | 4d | 2026-05-29 | 2026-06-09 | 8d | 2026-05-29 | 2026-06-09 | 13d | 0d | start no earlier than 2026-06-15 | MECÂNICA | Sex 29/05/26 | Ter 09/06/26 | Sprint 8 |
| 150 | 1.2.6.17.2 | Análise Tecnored | 1d | 2026-06-29 | 2026-06-29 | 149 |  |  | 2026-06-10 | 2026-06-10 | 1d | 2026-06-10 | 2026-06-10 | 13d | 0d |  | MECÂNICA | Qua 10/06/26 | Qua 10/06/26 | Sprint 10 |
| 151 | 1.2.6.17.3 | Atendimento de comentários | 2d | 2026-06-30 | 2026-07-01 | 150 |  |  | 2026-06-11 | 2026-06-12 | 2d | 2026-06-11 | 2026-06-12 | 13d | 0d |  | MECÂNICA | Qui 11/06/26 | Sex 12/06/26 | Sprint 10 |
| 152 | 1.2.6.17.4 | Aprovação | 1d | 2026-07-02 | 2026-07-02 | 151 |  |  | 2026-06-15 | 2026-06-15 | 1d | 2026-06-15 | 2026-06-15 | 13d |  |  | MECÂNICA | Seg 15/06/26 | Seg 15/06/26 | Sprint 10 |

| ID | WBS | Task | Duration | Start | Finish | Predecessors | Complete | Remaining | Baseline start | Baseline finish | Baseline duration | Baseline 1 start | Baseline 1 finish | Total slack | Free slack | Disciplina | Início_LB_R0 | Término_LB_R0 | Sprints |
| --- | --- | --- | --- | --- | --- | --- | --- | --- | --- | --- | --- | --- | --- | --- | --- | --- | --- | --- | --- |
| 153 | 1.2.6.18 | **MC-F0009-0305-MB-M-00001** | 14d | 2026-06-01 A | 2026-06-22 |  | 86% | 2d | 2026-05-29 | 2026-06-17 | 14d | 2026-05-29 | 2026-06-17 | 21d |  | MECÂNICA | Sex 29/05/26 | Qua 17/06/26 | Sprint 6 |
| 154 | 1.2.6.18.1 | Emissão inicial | 10d | 2026-06-01 A | 2026-06-16 A | 175 | 100% |  | 2026-05-29 | 2026-06-11 | 10d | 2026-05-29 | 2026-06-11 |  |  | MECÂNICA | Sex 29/05/26 | Qui 11/06/26 | Sprint 6 |
| 155 | 1.2.6.18.2 | Análise Tecnored | 1d | 2026-06-17 A | 2026-06-17 A | 154 | 100% |  | 2026-06-12 | 2026-06-12 | 1d | 2026-06-12 | 2026-06-12 |  |  | MECÂNICA | Sex 12/06/26 | Sex 12/06/26 | Sprint 8 |
| 156 | 1.2.6.18.3 | Atendimento de comentários | 2d | 2026-06-18 A | 2026-06-19 | 155 | 50% | 1d | 2026-06-15 | 2026-06-16 | 2d | 2026-06-15 | 2026-06-16 | 21d | 0d | MECÂNICA | Seg 15/06/26 | Ter 16/06/26 | Sprint 8 |
| 157 | 1.2.6.18.4 | Aprovação | 1d | 2026-06-22 | 2026-06-22 | 156 |  |  | 2026-06-17 | 2026-06-17 | 1d | 2026-06-17 | 2026-06-17 | 21d |  | MECÂNICA | Qua 17/06/26 | Qua 17/06/26 | Sprint 9 |
| 158 | 1.2.6.19 | **MC-F0009-0305-MB-M-00002** | 14d | 2026-06-01 A | 2026-06-22 |  | 75% | 3.5d | 2026-05-29 | 2026-06-17 | 14d | 2026-05-29 | 2026-06-17 | 21d |  | MECÂNICA | Sex 29/05/26 | Qua 17/06/26 | Sprint 6 |
| 159 | 1.2.6.19.1 | Emissão inicial | 10d | 2026-06-01 A | 2026-06-16 A | 175 | 100% |  | 2026-05-29 | 2026-06-11 | 10d | 2026-05-29 | 2026-06-11 |  |  | MECÂNICA | Sex 29/05/26 | Qui 11/06/26 | Sprint 6 |
| 160 | 1.2.6.19.2 | Análise Tecnored | 1d | 2026-06-17 A | 2026-06-17 | 159 | 50% | 0.5d | 2026-06-12 | 2026-06-12 | 1d | 2026-06-12 | 2026-06-12 | 21d | 0d | MECÂNICA | Sex 12/06/26 | Sex 12/06/26 | Sprint 8 |
| 161 | 1.2.6.19.3 | Atendimento de comentários | 2d | 2026-06-18 | 2026-06-19 | 160 |  |  | 2026-06-15 | 2026-06-16 | 2d | 2026-06-15 | 2026-06-16 | 21d | 0d | MECÂNICA | Seg 15/06/26 | Ter 16/06/26 | Sprint 8 |
| 162 | 1.2.6.19.4 | Aprovação | 1d | 2026-06-22 | 2026-06-22 | 161 |  |  | 2026-06-17 | 2026-06-17 | 1d | 2026-06-17 | 2026-06-17 | 21d |  | MECÂNICA | Qua 17/06/26 | Qua 17/06/26 | Sprint 9 |
| 163 | 1.2.6.20 | **MC-F0009-0305-MB-M-00003** | 14d | 2026-06-01 A | 2026-06-22 |  | 86% | 2d | 2026-05-29 | 2026-06-17 | 14d | 2026-05-29 | 2026-06-17 | 21d |  | MECÂNICA | Sex 29/05/26 | Qua 17/06/26 | Sprint 6 |
| 164 | 1.2.6.20.1 | Emissão inicial | 10d | 2026-06-01 A | 2026-06-16 A | 175 | 100% |  | 2026-05-29 | 2026-06-11 | 10d | 2026-05-29 | 2026-06-11 |  |  | MECÂNICA | Sex 29/05/26 | Qui 11/06/26 | Sprint 6 |
| 165 | 1.2.6.20.2 | Análise Tecnored | 1d | 2026-06-17 A | 2026-06-17 A | 164 | 100% |  | 2026-06-12 | 2026-06-12 | 1d | 2026-06-12 | 2026-06-12 |  |  | MECÂNICA | Sex 12/06/26 | Sex 12/06/26 | Sprint 8 |
| 166 | 1.2.6.20.3 | Atendimento de comentários | 2d | 2026-06-18 A | 2026-06-19 | 165 | 50% | 1d | 2026-06-15 | 2026-06-16 | 2d | 2026-06-15 | 2026-06-16 | 21d | 0d | MECÂNICA | Seg 15/06/26 | Ter 16/06/26 | Sprint 8 |
| 167 | 1.2.6.20.4 | Aprovação | 1d | 2026-06-22 | 2026-06-22 | 166 |  |  | 2026-06-17 | 2026-06-17 | 1d | 2026-06-17 | 2026-06-17 | 21d |  | MECÂNICA | Qua 17/06/26 | Qua 17/06/26 | Sprint 9 |
| 168 | 1.2.6.21 | **MC-F0009-0305-MB-M-00004** | 14d | 2026-06-01 A | 2026-06-22 |  | 75% | 3.5d | 2026-05-29 | 2026-06-17 | 14d | 2026-05-29 | 2026-06-17 | 21d |  | MECÂNICA | Sex 29/05/26 | Qua 17/06/26 | Sprint 6 |
| 169 | 1.2.6.21.1 | Emissão inicial | 10d | 2026-06-01 A | 2026-06-16 A | 175 | 100% |  | 2026-05-29 | 2026-06-11 | 10d | 2026-05-29 | 2026-06-11 |  |  | MECÂNICA | Sex 29/05/26 | Qui 11/06/26 | Sprint 6 |
| 170 | 1.2.6.21.2 | Análise Tecnored | 1d | 2026-06-17 A | 2026-06-17 | 169 | 50% | 0.5d | 2026-06-12 | 2026-06-12 | 1d | 2026-06-12 | 2026-06-12 | 21d | 0d | MECÂNICA | Sex 12/06/26 | Sex 12/06/26 | Sprint 8 |
| 171 | 1.2.6.21.3 | Atendimento de comentários | 2d | 2026-06-18 | 2026-06-19 | 170 |  |  | 2026-06-15 | 2026-06-16 | 2d | 2026-06-15 | 2026-06-16 | 21d | 0d | MECÂNICA | Seg 15/06/26 | Ter 16/06/26 | Sprint 8 |
| 172 | 1.2.6.21.4 | Aprovação | 1d | 2026-06-22 | 2026-06-22 | 171 |  |  | 2026-06-17 | 2026-06-17 | 1d | 2026-06-17 | 2026-06-17 | 21d |  | MECÂNICA | Qua 17/06/26 | Qua 17/06/26 | Sprint 9 |
| 173 | 1.2.6.22 | **ML-F0009-0305-MB-M-00001** | 14d | 2026-05-15 A | 2026-06-03 |  | 92% | 1.17d | 2026-05-19 | 2026-06-02 | 11d | 2026-05-19 | 2026-06-02 | 32d |  | MECÂNICA | Ter 19/05/26 | Ter 02/06/26 | Sprint 3 |
| 174 | 1.2.6.22.1 | Emissão inicial | 8d | 2026-05-15 A | 2026-05-26 A | 69, 5 | 100% |  | 2026-05-19 | 2026-05-27 | 7d | 2026-05-19 | 2026-05-27 |  |  | MECÂNICA | Ter 19/05/26 | Qua 27/05/26 | Sprint 3 |
| 175 | 1.2.6.22.2 | Análise Tecnored | 1d | 2026-05-29 A | 2026-05-29 A | 174 | 100% |  | 2026-05-28 | 2026-05-28 | 1d | 2026-05-28 | 2026-05-28 |  |  | MECÂNICA | Qui 28/05/26 | Qui 28/05/26 | Sprint 5 |
| 176 | 1.2.6.22.3 | Atendimento de comentários | 2d | 2026-06-01 A | 2026-06-02 | 175 | 75% | 0.5d | 2026-05-29 | 2026-06-01 | 2d | 2026-05-29 | 2026-06-01 | 0.5d | 0d | MECÂNICA | Sex 29/05/26 | Seg 01/06/26 | Sprint 6 |
| 177 | 1.2.6.22.4 | Aprovação | 1d | 2026-06-03 A | 2026-06-03 | 176 | 50% | 0.5d | 2026-06-02 | 2026-06-02 | 1d | 2026-06-02 | 2026-06-02 | 32d |  | MECÂNICA | Ter 02/06/26 | Ter 02/06/26 | Sprint 6 |

| ID | WBS | Task | Type | Duration | Start | Finish | Predecessors | Complete | Remaining | Baseline start | Baseline finish | Baseline duration | Baseline 1 start | Baseline 1 finish | Total slack | Free slack | Baseline cost | Disciplina | Início_LB_R0 | Término_LB_R0 | Sprints |
| --- | --- | --- | --- | --- | --- | --- | --- | --- | --- | --- | --- | --- | --- | --- | --- | --- | --- | --- | --- | --- | --- |
| 178 | 1.2.6.23 | **FD-F0009-0305-MB-M-00001** |  | 7d | 2026-06-17 A | 2026-06-25 |  | 43% | 4d | 2026-06-12 | 2026-06-22 | 7d | 2026-06-12 | 2026-06-22 | 18d |  |  | MECÂNICA | Sex 12/06/26 | Seg 22/06/26 | Sprint 8 |
| 179 | 1.2.6.23.1 | Emissão inicial |  | 3d | 2026-06-17 A | 2026-06-19 A | 154, 159, 164, 169 | 100% |  | 2026-06-12 | 2026-06-16 | 3d | 2026-06-12 | 2026-06-16 |  |  |  | MECÂNICA | Sex 12/06/26 | Ter 16/06/26 | Sprint 8 |
| 180 | 1.2.6.23.2 | Análise Tecnored |  | 1d | 2026-06-22 | 2026-06-22 | 179 |  |  | 2026-06-17 | 2026-06-17 | 1d | 2026-06-17 | 2026-06-17 | 18d | 0d |  | MECÂNICA | Qua 17/06/26 | Qua 17/06/26 | Sprint 9 |
| 181 | 1.2.6.23.3 | Atendimento de comentários |  | 2d | 2026-06-23 | 2026-06-24 | 180 |  |  | 2026-06-18 | 2026-06-19 | 2d | 2026-06-18 | 2026-06-19 | 18d | 0d |  | MECÂNICA | Qui 18/06/26 | Sex 19/06/26 | Sprint 9 |
| 182 | 1.2.6.23.4 | Aprovação |  | 1d | 2026-06-25 | 2026-06-25 | 181 |  |  | 2026-06-22 | 2026-06-22 | 1d | 2026-06-22 | 2026-06-22 | 18d |  |  | MECÂNICA | Seg 22/06/26 | Seg 22/06/26 | Sprint 9 |
| 183 | 1.2.6.24 | **FD-F0009-0305-MB-M-00002** |  | 7d | 2026-06-17 A | 2026-06-25 |  | 50% | 3.5d | 2026-06-12 | 2026-06-22 | 7d | 2026-06-12 | 2026-06-22 | 18d |  |  | MECÂNICA | Sex 12/06/26 | Seg 22/06/26 | Sprint 8 |
| 184 | 1.2.6.24.1 | Emissão inicial |  | 3d | 2026-06-17 A | 2026-06-19 A | 154, 159, 164, 169 | 100% |  | 2026-06-12 | 2026-06-16 | 3d | 2026-06-12 | 2026-06-16 |  |  |  | MECÂNICA | Sex 12/06/26 | Ter 16/06/26 | Sprint 8 |
| 185 | 1.2.6.24.2 | Análise Tecnored |  | 1d | 2026-06-22 A | 2026-06-22 | 184 | 50% | 0.5d | 2026-06-17 | 2026-06-17 | 1d | 2026-06-17 | 2026-06-17 | 18d | 0d |  | MECÂNICA | Qua 17/06/26 | Qua 17/06/26 | Sprint 9 |
| 186 | 1.2.6.24.3 | Atendimento de comentários |  | 2d | 2026-06-23 | 2026-06-24 | 185 |  |  | 2026-06-18 | 2026-06-19 | 2d | 2026-06-18 | 2026-06-19 | 18d | 0d |  | MECÂNICA | Qui 18/06/26 | Sex 19/06/26 | Sprint 9 |
| 187 | 1.2.6.24.4 | Aprovação |  | 1d | 2026-06-25 | 2026-06-25 | 186 |  |  | 2026-06-22 | 2026-06-22 | 1d | 2026-06-22 | 2026-06-22 | 18d |  |  | MECÂNICA | Seg 22/06/26 | Seg 22/06/26 | Sprint 9 |
| 188 | 1.2.6.25 | **FD-F0009-0305-MB-M-00003** |  | 7d | 2026-06-17 A | 2026-06-25 |  | 43% | 4d | 2026-06-12 | 2026-06-22 | 7d | 2026-06-12 | 2026-06-22 | 18d |  |  | MECÂNICA | Sex 12/06/26 | Seg 22/06/26 | Sprint 8 |
| 189 | 1.2.6.25.1 | Emissão inicial |  | 3d | 2026-06-17 A | 2026-06-19 A | 154, 159, 164, 169 | 100% |  | 2026-06-12 | 2026-06-16 | 3d | 2026-06-12 | 2026-06-16 |  |  |  | MECÂNICA | Sex 12/06/26 | Ter 16/06/26 | Sprint 8 |
| 190 | 1.2.6.25.2 | Análise Tecnored |  | 1d | 2026-06-22 | 2026-06-22 | 189 |  |  | 2026-06-17 | 2026-06-17 | 1d | 2026-06-17 | 2026-06-17 | 18d | 0d |  | MECÂNICA | Qua 17/06/26 | Qua 17/06/26 | Sprint 9 |
| 191 | 1.2.6.25.3 | Atendimento de comentários |  | 2d | 2026-06-23 | 2026-06-24 | 190 |  |  | 2026-06-18 | 2026-06-19 | 2d | 2026-06-18 | 2026-06-19 | 18d | 0d |  | MECÂNICA | Qui 18/06/26 | Sex 19/06/26 | Sprint 9 |
| 192 | 1.2.6.25.4 | Aprovação |  | 1d | 2026-06-25 | 2026-06-25 | 191 |  |  | 2026-06-22 | 2026-06-22 | 1d | 2026-06-22 | 2026-06-22 | 18d |  |  | MECÂNICA | Seg 22/06/26 | Seg 22/06/26 | Sprint 9 |
| 193 | 1.2.7 | **Tubulação/Utilidades** |  | 21d | 2026-06-10 A | 2026-07-08 |  | 14% | 18.06d | 2026-05-20 | 2026-07-08 | 36d | 2026-05-20 | 2026-07-08 | 9d |  |  | TUBULAÇÃO / UTILIDADES | Qua 20/05/26 | Qua 08/07/26 | Sprint 7 |
| 194 | 1.2.7.1 | **CP-F0009-0305-MB-T-00001** | inactive | 15d | 2026-05-08 | 2026-05-28 |  |  |  |  |  |  |  |  | 36d |  | -0 |  |  |  | Sprint 2 |
| 195 | 1.2.7.1.1 | Emissão inicial | inactive | 5d | 2026-05-08 | 2026-05-14 | 21FS+3d |  |  |  |  |  |  |  | 42d | 6d | -0 |  |  |  | Sprint 2 |
| 196 | 1.2.7.1.2 | Análise Tecnored | inactive | 1d | 2026-05-25 | 2026-05-25 | 195, 6 |  |  |  |  |  |  |  | 36d | 0d | -0 |  |  |  | Sprint 5 |
| 197 | 1.2.7.1.3 | Atendimento de comentários | inactive | 2d | 2026-05-26 | 2026-05-27 | 196 |  |  |  |  |  |  |  | 36d | 0d | -0 |  |  |  | Sprint 5 |
| 198 | 1.2.7.1.4 | Aprovação | inactive | 1d | 2026-05-28 | 2026-05-28 | 197 |  |  |  |  |  |  |  | 36d |  | -0 |  |  |  | Sprint 5 |
| 199 | 1.2.7.2 | **MD-F0009-0305-MB-U-00001** | inactive | 7d | 2026-07-16 | 2026-07-24 |  |  |  | 2026-06-18 | 2026-06-26 | 7d | 2026-06-18 | 2026-06-26 | -3d | 0d |  |  |  |  | Sprint 12 |
| 200 | 1.2.7.2.1 | Emissão inicial | inactive | 3d | 2026-07-16 | 2026-07-20 | 244FS+5d |  |  | 2026-06-18 | 2026-06-22 | 3d | 2026-06-18 | 2026-06-22 | -3d | 0d |  |  |  |  | Sprint 12 |
| 201 | 1.2.7.2.2 | Análise Tecnored | inactive | 1d | 2026-07-21 | 2026-07-21 | 200 |  |  | 2026-06-23 | 2026-06-23 | 1d | 2026-06-23 | 2026-06-23 | -3d | 0d |  |  |  |  | Sprint 13 |
| 202 | 1.2.7.2.3 | Atendimento de comentários | inactive | 2d | 2026-07-22 | 2026-07-23 | 201 |  |  | 2026-06-24 | 2026-06-25 | 2d | 2026-06-24 | 2026-06-25 | -3d | 0d |  |  |  |  | Sprint 13 |
| 203 | 1.2.7.2.4 | Aprovação | inactive | 1d | 2026-07-24 | 2026-07-24 | 202 |  |  | 2026-06-26 | 2026-06-26 | 1d | 2026-06-26 | 2026-06-26 | -3d | 0d |  |  |  |  | Sprint 13 |

| ID | WBS | Task | Type | Duration | Start | Finish | Predecessors | Complete | Remaining | Baseline start | Baseline finish | Baseline duration | Baseline 1 start | Baseline 1 finish | Total slack | Free slack | Constraint | Disciplina | Início_LB_R0 | Término_LB_R0 | Sprints |
| --- | --- | --- | --- | --- | --- | --- | --- | --- | --- | --- | --- | --- | --- | --- | --- | --- | --- | --- | --- | --- | --- |
| 204 | 1.2.7.3 | **ML-F0009-0305-MB-T-00001** |  | 7d | 2026-06-24 A | 2026-07-02 |  | 39% | 4.3d | 2026-05-28 | 2026-06-05 | 7d | 2026-05-28 | 2026-06-05 | 13d |  |  | TUBULAÇÃO / UTILIDADES | Qui 28/05/26 | Sex 05/06/26 | Sprint 9 |
| 205 | 1.2.7.3.1 | Emissão inicial |  | 3d | 2026-06-24 A | 2026-06-26 | 174, 235 | 90% | 0.3d | 2026-05-28 | 2026-06-01 | 3d | 2026-05-28 | 2026-06-01 | 9d | 0d | start no earlier than 2026-06-24 | TUBULAÇÃO / UTILIDADES | Qui 28/05/26 | Seg 01/06/26 | Sprint 9 |
| 206 | 1.2.7.3.2 | Análise Tecnored |  | 1d | 2026-06-29 | 2026-06-29 | 205 |  |  | 2026-06-02 | 2026-06-02 | 1d | 2026-06-02 | 2026-06-02 | 9d | 0d |  | TUBULAÇÃO / UTILIDADES | Ter 02/06/26 | Ter 02/06/26 | Sprint 10 |
| 207 | 1.2.7.3.3 | Atendimento de comentários |  | 2d | 2026-06-30 | 2026-07-01 | 206 |  |  | 2026-06-03 | 2026-06-04 | 2d | 2026-06-03 | 2026-06-04 | 13d | 0d |  | TUBULAÇÃO / UTILIDADES | Qua 03/06/26 | Qui 04/06/26 | Sprint 10 |
| 208 | 1.2.7.3.4 | Aprovação |  | 1d | 2026-07-02 | 2026-07-02 | 207 |  |  | 2026-06-05 | 2026-06-05 | 1d | 2026-06-05 | 2026-06-05 | 13d |  |  | TUBULAÇÃO / UTILIDADES | Sex 05/06/26 | Sex 05/06/26 | Sprint 10 |
| 209 | 1.2.7.4 | **ET-F0009-0305-MB-T-00001** | inactive | 7d | 2026-06-29 | 2026-07-07 |  |  |  | 2026-06-30 | 2026-07-08 | 7d | 2026-06-30 | 2026-07-08 | 10d |  |  | TUBULAÇÃO / UTILIDADES |  |  | Sprint 10 |
| 210 | 1.2.7.4.1 | Emissão inicial | inactive | 3d | 2026-06-29 | 2026-07-01 | 215FS+2d |  |  | 2026-06-30 | 2026-07-02 | 3d | 2026-06-30 | 2026-07-02 | 10d | 0d |  | TUBULAÇÃO / UTILIDADES |  |  | Sprint 10 |
| 211 | 1.2.7.4.2 | Análise Tecnored | inactive | 1d | 2026-07-02 | 2026-07-02 | 210 |  |  | 2026-07-03 | 2026-07-03 | 1d | 2026-07-03 | 2026-07-03 | 10d | 0d |  | TUBULAÇÃO / UTILIDADES |  |  | Sprint 10 |
| 212 | 1.2.7.4.3 | Atendimento de comentários | inactive | 2d | 2026-07-03 | 2026-07-06 | 211 |  |  | 2026-07-06 | 2026-07-07 | 2d | 2026-07-06 | 2026-07-07 | 10d | 0d |  | TUBULAÇÃO / UTILIDADES |  |  | Sprint 10 |
| 213 | 1.2.7.4.4 | Aprovação | inactive | 1d | 2026-07-07 | 2026-07-07 | 212 |  |  | 2026-07-08 | 2026-07-08 | 1d | 2026-07-08 | 2026-07-08 | 10d |  |  | TUBULAÇÃO / UTILIDADES |  |  | Sprint 11 |
| 214 | 1.2.7.5 | **FD-F0009-0305-MB-T-00001** |  | 7d | 2026-06-22 | 2026-06-30 |  |  |  | 2026-06-23 | 2026-07-01 | 7d | 2026-06-23 | 2026-07-01 | 15d |  |  | TUBULAÇÃO / UTILIDADES | Ter 23/06/26 | Qua 01/07/26 | Sprint 9 |
| 215 | 1.2.7.5.1 | Emissão inicial |  | 3d | 2026-06-22 | 2026-06-24 | 235 |  |  | 2026-06-23 | 2026-06-25 | 3d | 2026-06-23 | 2026-06-25 | 15d | 0d | start no earlier than 2026-06-22 | TUBULAÇÃO / UTILIDADES | Ter 23/06/26 | Qui 25/06/26 | Sprint 9 |
| 216 | 1.2.7.5.2 | Análise Tecnored |  | 1d | 2026-06-25 | 2026-06-25 | 215 |  |  | 2026-06-26 | 2026-06-26 | 1d | 2026-06-26 | 2026-06-26 | 15d | 0d |  | TUBULAÇÃO / UTILIDADES | Sex 26/06/26 | Sex 26/06/26 | Sprint 9 |
| 217 | 1.2.7.5.3 | Atendimento de comentários |  | 2d | 2026-06-26 | 2026-06-29 | 216 |  |  | 2026-06-29 | 2026-06-30 | 2d | 2026-06-29 | 2026-06-30 | 15d | 0d |  | TUBULAÇÃO / UTILIDADES | Seg 29/06/26 | Ter 30/06/26 | Sprint 9 |
| 218 | 1.2.7.5.4 | Aprovação |  | 1d | 2026-06-30 | 2026-06-30 | 217 |  |  | 2026-07-01 | 2026-07-01 | 1d | 2026-07-01 | 2026-07-01 | 15d |  |  | TUBULAÇÃO / UTILIDADES | Qua 01/07/26 | Qua 01/07/26 | Sprint 10 |
| 219 | 1.2.7.6 | **FD-F0009-0305-MB-T-00002** | inactive | 7d | 2026-06-29 | 2026-07-07 |  |  |  | 2026-06-23 | 2026-07-01 | 7d | 2026-06-23 | 2026-07-01 | 10d |  |  | TUBULAÇÃO / UTILIDADES |  |  | Sprint 10 |
| 220 | 1.2.7.6.1 | Emissão inicial | inactive | 3d | 2026-06-29 | 2026-07-01 | 230 |  |  | 2026-06-23 | 2026-06-25 | 3d | 2026-06-23 | 2026-06-25 | 10d | 0d |  | TUBULAÇÃO / UTILIDADES |  |  | Sprint 10 |
| 221 | 1.2.7.6.2 | Análise Tecnored | inactive | 1d | 2026-07-02 | 2026-07-02 | 220 |  |  | 2026-06-26 | 2026-06-26 | 1d | 2026-06-26 | 2026-06-26 | 10d | 0d |  | TUBULAÇÃO / UTILIDADES |  |  | Sprint 10 |
| 222 | 1.2.7.6.3 | Atendimento de comentários | inactive | 2d | 2026-07-03 | 2026-07-06 | 221 |  |  | 2026-06-29 | 2026-06-30 | 2d | 2026-06-29 | 2026-06-30 | 10d | 0d |  | TUBULAÇÃO / UTILIDADES |  |  | Sprint 10 |
| 223 | 1.2.7.6.4 | Aprovação | inactive | 1d | 2026-07-07 | 2026-07-07 | 222 |  |  | 2026-07-01 | 2026-07-01 | 1d | 2026-07-01 | 2026-07-01 | 10d |  |  | TUBULAÇÃO / UTILIDADES |  |  | Sprint 11 |
| 224 | 1.2.7.7 | **PQ-F0009-0305-MB-T-00001** |  | 7d | 2026-06-29 | 2026-07-07 |  |  |  | 2026-06-23 | 2026-07-01 | 7d | 2026-06-23 | 2026-07-01 | 10d |  |  | TUBULAÇÃO / UTILIDADES | Ter 23/06/26 | Qua 01/07/26 | Sprint 10 |
| 225 | 1.2.7.7.1 | Emissão inicial |  | 3d | 2026-06-29 | 2026-07-01 |  |  |  | 2026-06-23 | 2026-06-25 | 3d | 2026-06-23 | 2026-06-25 | 10d | 0d | start no earlier than 2026-06-29 | TUBULAÇÃO / UTILIDADES | Ter 23/06/26 | Qui 25/06/26 | Sprint 10 |
| 226 | 1.2.7.7.2 | Análise Tecnored |  | 1d | 2026-07-02 | 2026-07-02 | 225 |  |  | 2026-06-26 | 2026-06-26 | 1d | 2026-06-26 | 2026-06-26 | 10d | 0d |  | TUBULAÇÃO / UTILIDADES | Sex 26/06/26 | Sex 26/06/26 | Sprint 10 |
| 227 | 1.2.7.7.3 | Atendimento de comentários |  | 2d | 2026-07-03 | 2026-07-06 | 226 |  |  | 2026-06-29 | 2026-06-30 | 2d | 2026-06-29 | 2026-06-30 | 10d | 0d |  | TUBULAÇÃO / UTILIDADES | Seg 29/06/26 | Ter 30/06/26 | Sprint 10 |
| 228 | 1.2.7.7.4 | Aprovação |  | 1d | 2026-07-07 | 2026-07-07 | 227 |  |  | 2026-07-01 | 2026-07-01 | 1d | 2026-07-01 | 2026-07-01 | 10d |  |  | TUBULAÇÃO / UTILIDADES | Qua 01/07/26 | Qua 01/07/26 | Sprint 11 |

| ID | WBS | Task | Type | Duration | Start | Finish | Predecessors | Complete | Remaining | Baseline start | Baseline finish | Baseline duration | Baseline 1 start | Baseline 1 finish | Total slack | Free slack | Constraint | Disciplina | Início_LB_R0 | Término_LB_R0 | Sprints |
| --- | --- | --- | --- | --- | --- | --- | --- | --- | --- | --- | --- | --- | --- | --- | --- | --- | --- | --- | --- | --- | --- |
| 229 | 1.2.7.8 | **MC-F0009-0305-MB-T-00001** | inactive | 9d | 2026-06-22 | 2026-07-02 |  |  |  | 2026-06-18 | 2026-06-26 | 7d | 2026-06-18 | 2026-06-26 | 8d |  |  | TUBULAÇÃO / UTILIDADES | Qui 18/06/26 | Sex 26/06/26 | Sprint 9 |
| 230 | 1.2.7.8.1 | Emissão inicial | inactive | 5d | 2026-06-22 | 2026-06-26 | 215SS |  |  | 2026-06-18 | 2026-06-22 | 3d | 2026-06-18 | 2026-06-22 | 8d | 0d |  | TUBULAÇÃO / UTILIDADES | Qui 18/06/26 | Seg 22/06/26 | Sprint 9 |
| 231 | 1.2.7.8.2 | Análise Tecnored | inactive | 1d | 2026-06-29 | 2026-06-29 | 230 |  |  | 2026-06-23 | 2026-06-23 | 1d | 2026-06-23 | 2026-06-23 | 8d | 0d |  | TUBULAÇÃO / UTILIDADES | Ter 23/06/26 | Ter 23/06/26 | Sprint 10 |
| 232 | 1.2.7.8.3 | Atendimento de comentários | inactive | 2d | 2026-06-30 | 2026-07-01 | 231 |  |  | 2026-06-24 | 2026-06-25 | 2d | 2026-06-24 | 2026-06-25 | 8d | 0d |  | TUBULAÇÃO / UTILIDADES | Qua 24/06/26 | Qui 25/06/26 | Sprint 10 |
| 233 | 1.2.7.8.4 | Aprovação | inactive | 1d | 2026-07-02 | 2026-07-02 | 232 |  |  | 2026-06-26 | 2026-06-26 | 1d | 2026-06-26 | 2026-06-26 | 13d |  |  | TUBULAÇÃO / UTILIDADES | Sex 26/06/26 | Sex 26/06/26 | Sprint 10 |
| 234 | 1.2.7.9 | **FG-F0009-0305-MB-T-00001** |  | 7d | 2026-06-10 A | 2026-06-18 |  | 71% | 2d | 2026-05-20 | 2026-05-27 | 6d | 2026-05-20 | 2026-05-27 | 23d |  |  | TUBULAÇÃO / UTILIDADES | Qua 20/05/26 | Qua 27/05/26 | Sprint 7 |
| 235 | 1.2.7.9.1 | Emissão inicial |  | 3d | 2026-06-10 A | 2026-06-12 A | 63FS+13d | 100% |  | 2026-05-20 | 2026-05-21 | 2d | 2026-05-20 | 2026-05-21 |  |  | finish no earlier than 2026-06-12 | TUBULAÇÃO / UTILIDADES | Qua 20/05/26 | Qui 21/05/26 | Sprint 7 |
| 236 | 1.2.7.9.2 | Análise Tecnored |  | 1d | 2026-06-15 A | 2026-06-15 A | 235 | 100% |  | 2026-05-22 | 2026-05-22 | 1d | 2026-05-22 | 2026-05-22 |  |  |  | TUBULAÇÃO / UTILIDADES | Sex 22/05/26 | Sex 22/05/26 | Sprint 8 |
| 237 | 1.2.7.9.3 | Atendimento de comentários |  | 2d | 2026-06-16 A | 2026-06-17 | 236 | 50% | 1d | 2026-05-25 | 2026-05-26 | 2d | 2026-05-25 | 2026-05-26 | 23d | 0d |  | TUBULAÇÃO / UTILIDADES | Seg 25/05/26 | Ter 26/05/26 | Sprint 8 |
| 238 | 1.2.7.9.4 | Aprovação |  | 1d | 2026-06-18 | 2026-06-18 | 237 |  |  | 2026-05-27 | 2026-05-27 | 1d | 2026-05-27 | 2026-05-27 | 23d |  |  | TUBULAÇÃO / UTILIDADES | Qua 27/05/26 | Qua 27/05/26 | Sprint 8 |
| 239 | 1.2.7.10 | **FG-F0009-0305-MB-T-00002** | inactive | 6d | 2026-07-03 | 2026-07-10 |  |  |  | 2026-05-20 | 2026-05-27 | 6d | 2026-05-20 | 2026-05-27 | 7d |  |  | TUBULAÇÃO / UTILIDADES |  |  | Sprint 10 |
| 240 | 1.2.7.10.1 | Emissão inicial | inactive | 2d | 2026-07-03 | 2026-07-06 | 63FS+10d |  |  | 2026-05-20 | 2026-05-21 | 2d | 2026-05-20 | 2026-05-21 | 7d | 0d |  | TUBULAÇÃO / UTILIDADES |  |  | Sprint 10 |
| 241 | 1.2.7.10.2 | Análise Tecnored | inactive | 1d | 2026-07-07 | 2026-07-07 | 240 |  |  | 2026-05-22 | 2026-05-22 | 1d | 2026-05-22 | 2026-05-22 | 7d | 0d |  | TUBULAÇÃO / UTILIDADES |  |  | Sprint 11 |
| 242 | 1.2.7.10.3 | Atendimento de comentários | inactive | 2d | 2026-07-08 | 2026-07-09 | 241 |  |  | 2026-05-25 | 2026-05-26 | 2d | 2026-05-25 | 2026-05-26 | 7d | 0d |  | TUBULAÇÃO / UTILIDADES |  |  | Sprint 11 |
| 243 | 1.2.7.10.4 | Aprovação | inactive | 1d | 2026-07-10 | 2026-07-10 | 242 |  |  | 2026-05-27 | 2026-05-27 | 1d | 2026-05-27 | 2026-05-27 | 7d |  |  | TUBULAÇÃO / UTILIDADES |  |  | Sprint 11 |
| 244 | 1.2.7.11 | **AG-F0009-0305-MB-T-00001** |  | 7d | 2026-06-30 | 2026-07-08 |  |  |  | 2026-06-02 | 2026-06-10 | 7d | 2026-06-02 | 2026-06-10 | 9d | 0d |  | TUBULAÇÃO / UTILIDADES | Ter 02/06/26 | Qua 10/06/26 | Sprint 10 |
| 245 | 1.2.7.11.1 | Emissão inicial |  | 3d | 2026-06-30 | 2026-07-02 | 206 |  |  | 2026-06-02 | 2026-06-04 | 3d | 2026-06-02 | 2026-06-04 | 9d | 0d |  | TUBULAÇÃO / UTILIDADES | Ter 02/06/26 | Qui 04/06/26 | Sprint 10 |
| 246 | 1.2.7.11.2 | Análise Tecnored |  | 1d | 2026-07-03 | 2026-07-03 | 245 |  |  | 2026-06-05 | 2026-06-05 | 1d | 2026-06-05 | 2026-06-05 | 9d | 0d |  | TUBULAÇÃO / UTILIDADES | Sex 05/06/26 | Sex 05/06/26 | Sprint 10 |
| 247 | 1.2.7.11.3 | Atendimento de comentários |  | 2d | 2026-07-06 | 2026-07-07 | 246 |  |  | 2026-06-08 | 2026-06-09 | 2d | 2026-06-08 | 2026-06-09 | 9d | 0d |  | TUBULAÇÃO / UTILIDADES | Seg 08/06/26 | Ter 09/06/26 | Sprint 11 |
| 248 | 1.2.7.11.4 | Aprovação |  | 1d | 2026-07-08 | 2026-07-08 | 247 |  |  | 2026-06-10 | 2026-06-10 | 1d | 2026-06-10 | 2026-06-10 | 9d |  |  | TUBULAÇÃO / UTILIDADES | Qua 10/06/26 | Qua 10/06/26 | Sprint 11 |
| 249 | 1.2.7.12 | **AG-F0009-0305-MB-T-00002** |  | 7d | 2026-06-30 | 2026-07-08 |  |  |  | 2026-06-02 | 2026-06-10 | 7d | 2026-06-02 | 2026-06-10 | 9d |  |  | TUBULAÇÃO / UTILIDADES | Ter 02/06/26 | Qua 10/06/26 | Sprint 10 |
| 250 | 1.2.7.12.1 | Emissão inicial |  | 3d | 2026-06-30 | 2026-07-02 | 206 |  |  | 2026-06-02 | 2026-06-04 | 3d | 2026-06-02 | 2026-06-04 | 9d | 0d |  | TUBULAÇÃO / UTILIDADES | Ter 02/06/26 | Qui 04/06/26 | Sprint 10 |
| 251 | 1.2.7.12.2 | Análise Tecnored |  | 1d | 2026-07-03 | 2026-07-03 | 250 |  |  | 2026-06-05 | 2026-06-05 | 1d | 2026-06-05 | 2026-06-05 | 9d | 0d |  | TUBULAÇÃO / UTILIDADES | Sex 05/06/26 | Sex 05/06/26 | Sprint 10 |
| 252 | 1.2.7.12.3 | Atendimento de comentários |  | 2d | 2026-07-06 | 2026-07-07 | 251 |  |  | 2026-06-08 | 2026-06-09 | 2d | 2026-06-08 | 2026-06-09 | 9d | 0d |  | TUBULAÇÃO / UTILIDADES | Seg 08/06/26 | Ter 09/06/26 | Sprint 11 |
| 253 | 1.2.7.12.4 | Aprovação |  | 1d | 2026-07-08 | 2026-07-08 | 252 |  |  | 2026-06-10 | 2026-06-10 | 1d | 2026-06-10 | 2026-06-10 | 9d |  |  | TUBULAÇÃO / UTILIDADES | Qua 10/06/26 | Qua 10/06/26 | Sprint 11 |

| ID | WBS | Task | Type | Duration | Start | Finish | Predecessors | Baseline start | Baseline finish | Baseline duration | Baseline 1 start | Baseline 1 finish | Total slack | Free slack | Constraint | Disciplina | Início_LB_R0 | Término_LB_R0 | Sprints |
| --- | --- | --- | --- | --- | --- | --- | --- | --- | --- | --- | --- | --- | --- | --- | --- | --- | --- | --- | --- |
| 254 | 1.2.7.13 | **AG-F0009-0305-MB-T-00003** |  | 7d | 2026-06-30 | 2026-07-08 |  | 2026-06-02 | 2026-06-10 | 7d | 2026-06-02 | 2026-06-10 | 9d |  |  | ESTRUTURA METÁLICA | Ter 02/06/26 | Qua 10/06/26 | Sprint 10 |
| 255 | 1.2.7.13.1 | Emissão inicial |  | 3d | 2026-06-30 | 2026-07-02 | 206 | 2026-06-02 | 2026-06-04 | 3d | 2026-06-02 | 2026-06-04 | 9d | 0d |  | ESTRUTURA METÁLICA | Ter 02/06/26 | Qui 04/06/26 | Sprint 10 |
| 256 | 1.2.7.13.2 | Análise Tecnored |  | 1d | 2026-07-03 | 2026-07-03 | 255 | 2026-06-05 | 2026-06-05 | 1d | 2026-06-05 | 2026-06-05 | 9d | 0d |  | ESTRUTURA METÁLICA | Sex 05/06/26 | Sex 05/06/26 | Sprint 10 |
| 257 | 1.2.7.13.3 | Atendimento de comentários |  | 2d | 2026-07-06 | 2026-07-07 | 256 | 2026-06-08 | 2026-06-09 | 2d | 2026-06-08 | 2026-06-09 | 9d | 0d |  | ESTRUTURA METÁLICA | Seg 08/06/26 | Ter 09/06/26 | Sprint 11 |
| 258 | 1.2.7.13.4 | Aprovação |  | 1d | 2026-07-08 | 2026-07-08 | 257 | 2026-06-10 | 2026-06-10 | 1d | 2026-06-10 | 2026-06-10 | 9d |  |  | ESTRUTURA METÁLICA | Qua 10/06/26 | Qua 10/06/26 | Sprint 11 |
| 259 | 1.2.7.14 | **AG-F0009-0305-MB-T-00004** | inactive | 7d | 2026-06-03 | 2026-06-15 |  | 2026-06-02 | 2026-06-10 | 7d | 2026-06-02 | 2026-06-10 | 26d |  |  | ESTRUTURA METÁLICA |  |  | Sprint 6 |
| 260 | 1.2.7.14.1 | Emissão inicial | inactive | 3d | 2026-06-03 | 2026-06-09 | 176 | 2026-06-02 | 2026-06-04 | 3d | 2026-06-02 | 2026-06-04 | 26d | 0d |  | ESTRUTURA METÁLICA |  |  | Sprint 6 |
| 261 | 1.2.7.14.2 | Análise Tecnored | inactive | 1d | 2026-06-10 | 2026-06-10 | 260 | 2026-06-05 | 2026-06-05 | 1d | 2026-06-05 | 2026-06-05 | 26d | 0d |  | ESTRUTURA METÁLICA |  |  | Sprint 7 |
| 262 | 1.2.7.14.3 | Atendimento de comentários | inactive | 2d | 2026-06-11 | 2026-06-12 | 261 | 2026-06-08 | 2026-06-09 | 2d | 2026-06-08 | 2026-06-09 | 26d | 0d |  | ESTRUTURA METÁLICA |  |  | Sprint 7 |
| 263 | 1.2.7.14.4 | Aprovação | inactive | 1d | 2026-06-15 | 2026-06-15 | 262 | 2026-06-10 | 2026-06-10 | 1d | 2026-06-10 | 2026-06-10 | 26d |  |  | ESTRUTURA METÁLICA |  |  | Sprint 8 |
| 264 | 1.2.7.15 | **AG-F0009-0305-MB-T-00005** | inactive | 7d | 2026-06-03 | 2026-06-15 |  | 2026-06-02 | 2026-06-10 | 7d | 2026-06-02 | 2026-06-10 | 26d |  |  | ESTRUTURA METÁLICA |  |  | Sprint 6 |
| 265 | 1.2.7.15.1 | Emissão inicial | inactive | 3d | 2026-06-03 | 2026-06-09 | 176 | 2026-06-02 | 2026-06-04 | 3d | 2026-06-02 | 2026-06-04 | 26d | 0d |  | ESTRUTURA METÁLICA |  |  | Sprint 6 |
| 266 | 1.2.7.15.2 | Análise Tecnored | inactive | 1d | 2026-06-10 | 2026-06-10 | 265 | 2026-06-05 | 2026-06-05 | 1d | 2026-06-05 | 2026-06-05 | 26d | 0d |  | ESTRUTURA METÁLICA |  |  | Sprint 7 |
| 267 | 1.2.7.15.3 | Atendimento de comentários | inactive | 2d | 2026-06-11 | 2026-06-12 | 266 | 2026-06-08 | 2026-06-09 | 2d | 2026-06-08 | 2026-06-09 | 26d | 0d |  | ESTRUTURA METÁLICA |  |  | Sprint 7 |
| 268 | 1.2.7.15.4 | Aprovação | inactive | 1d | 2026-06-15 | 2026-06-15 | 267 | 2026-06-10 | 2026-06-10 | 1d | 2026-06-10 | 2026-06-10 | 26d |  |  | ESTRUTURA METÁLICA |  |  | Sprint 8 |
| 269 | 1.2.7.16 | **AG-F0009-0305-MB-T-00006** | inactive | 7d | 2026-06-03 | 2026-06-15 |  | 2026-06-02 | 2026-06-10 | 7d | 2026-06-02 | 2026-06-10 | 26d |  |  | ESTRUTURA METÁLICA |  |  | Sprint 6 |
| 270 | 1.2.7.16.1 | Emissão inicial | inactive | 3d | 2026-06-03 | 2026-06-09 | 176 | 2026-06-02 | 2026-06-04 | 3d | 2026-06-02 | 2026-06-04 | 26d | 0d |  | ESTRUTURA METÁLICA |  |  | Sprint 6 |
| 271 | 1.2.7.16.2 | Análise Tecnored | inactive | 1d | 2026-06-10 | 2026-06-10 | 270 | 2026-06-05 | 2026-06-05 | 1d | 2026-06-05 | 2026-06-05 | 26d | 0d |  | ESTRUTURA METÁLICA |  |  | Sprint 7 |
| 272 | 1.2.7.16.3 | Atendimento de comentários | inactive | 2d | 2026-06-11 | 2026-06-12 | 271 | 2026-06-08 | 2026-06-09 | 2d | 2026-06-08 | 2026-06-09 | 26d | 0d |  | ESTRUTURA METÁLICA |  |  | Sprint 7 |
| 273 | 1.2.7.16.4 | Aprovação | inactive | 1d | 2026-06-15 | 2026-06-15 | 272 | 2026-06-10 | 2026-06-10 | 1d | 2026-06-10 | 2026-06-10 | 26d |  |  | ESTRUTURA METÁLICA |  |  | Sprint 8 |
| 274 | 1.2.7.17 | **LK-F0009-0305-MB-T-00001** |  | 6d | 2026-07-01 | 2026-07-08 |  | 2026-06-02 | 2026-06-10 | 7d | 2026-06-02 | 2026-06-10 | 9d |  |  | ESTRUTURA METÁLICA | Ter 02/06/26 | Qua 10/06/26 | Sprint 10 |
| 275 | 1.2.7.17.1 | Emissão inicial |  | 2d | 2026-07-01 | 2026-07-02 | 232 | 2026-06-02 | 2026-06-04 | 3d | 2026-06-02 | 2026-06-04 | 9d | 0d | start no earlier than 2026-07-01 | ESTRUTURA METÁLICA | Ter 02/06/26 | Qui 04/06/26 | Sprint 10 |
| 276 | 1.2.7.17.2 | Análise Tecnored |  | 1d | 2026-07-03 | 2026-07-03 | 275 | 2026-06-05 | 2026-06-05 | 1d | 2026-06-05 | 2026-06-05 | 9d | 0d |  | ESTRUTURA METÁLICA | Sex 05/06/26 | Sex 05/06/26 | Sprint 10 |
| 277 | 1.2.7.17.3 | Atendimento de comentários |  | 2d | 2026-07-06 | 2026-07-07 | 276 | 2026-06-08 | 2026-06-09 | 2d | 2026-06-08 | 2026-06-09 | 9d | 0d |  | ESTRUTURA METÁLICA | Seg 08/06/26 | Ter 09/06/26 | Sprint 11 |
| 278 | 1.2.7.17.4 | Aprovação |  | 1d | 2026-07-08 | 2026-07-08 | 277 | 2026-06-10 | 2026-06-10 | 1d | 2026-06-10 | 2026-06-10 | 9d |  |  | ESTRUTURA METÁLICA | Qua 10/06/26 | Qua 10/06/26 | Sprint 11 |

| ID | WBS | Task | Type | Duration | Start | Finish | Predecessors | Complete | Remaining | Baseline start | Baseline finish | Baseline duration | Baseline 1 start | Baseline 1 finish | Total slack | Free slack | Constraint | Baseline cost | Disciplina | Sprints | Início_LB_R0 | Término_LB_R0 |
| --- | --- | --- | --- | --- | --- | --- | --- | --- | --- | --- | --- | --- | --- | --- | --- | --- | --- | --- | --- | --- | --- | --- |
| 279 | 1.2.7.18 | **MC-F0009-0305-MB-T-00002** | inactive | 14d | 2026-05-27 | 2026-06-17 |  |  |  | 2026-05-28 | 2026-06-16 | 14d | 2026-05-28 | 2026-06-16 | 24d |  |  |  | ESTRUTURA METÁLICA | Sprint 5 |  |  |
| 280 | 1.2.7.18.1 | Emissão inicial | inactive | 10d | 2026-05-27 | 2026-06-11 | 174 |  |  | 2026-05-28 | 2026-06-10 | 10d | 2026-05-28 | 2026-06-10 | 24d | 0d |  |  | ESTRUTURA METÁLICA | Sprint 5 |  |  |
| 281 | 1.2.7.18.2 | Análise Tecnored | inactive | 1d | 2026-06-12 | 2026-06-12 | 280 |  |  | 2026-06-11 | 2026-06-11 | 1d | 2026-06-11 | 2026-06-11 | 24d | 0d |  |  | ESTRUTURA METÁLICA | Sprint 7 |  |  |
| 282 | 1.2.7.18.3 | Atendimento de comentários | inactive | 2d | 2026-06-15 | 2026-06-16 | 281 |  |  | 2026-06-12 | 2026-06-15 | 2d | 2026-06-12 | 2026-06-15 | 24d | 0d |  |  | ESTRUTURA METÁLICA | Sprint 8 |  |  |
| 283 | 1.2.7.18.4 | Aprovação | inactive | 1d | 2026-06-17 | 2026-06-17 | 282 |  |  | 2026-06-16 | 2026-06-16 | 1d | 2026-06-16 | 2026-06-16 | 24d |  |  |  | ESTRUTURA METÁLICA | Sprint 8 |  |  |
| 284 | 1.2.8 | **Estrutura metálica** |  | 17d | 2026-06-29 A | 2026-07-21 |  | 2% | 16.6d | 2026-06-15 | 2026-07-08 | 18d | 2026-06-15 | 2026-07-08 | 0d |  |  |  | ESTRUTURA METÁLICA | Sprint 10 | Seg 15/06/26 | Qua 08/07/26 |
| 285 | 1.2.8.1 | **CP-F0009-0305-MB-S-00001** | inactive | 33d | 2026-05-12 | 2026-06-29 |  |  |  |  |  |  |  |  | 16d |  |  | -0 |  | Sprint 3 |  |  |
| 286 | 1.2.8.1.1 | Emissão inicial | inactive | 3d | 2026-05-12 | 2026-05-14 | 21FS+5d |  |  |  |  |  |  |  | 42d | 26d |  | -0 |  | Sprint 3 |  |  |
| 287 | 1.2.8.1.2 | Análise Tecnored | inactive | 1d | 2026-06-24 | 2026-06-24 | 286, 9 |  |  |  |  |  |  |  | 16d | 0d |  | -0 |  | Sprint 9 |  |  |
| 288 | 1.2.8.1.3 | Atendimento de comentários | inactive | 2d | 2026-06-25 | 2026-06-26 | 287 |  |  |  |  |  |  |  | 16d | 0d |  | -0 |  | Sprint 9 |  |  |
| 289 | 1.2.8.1.4 | Aprovação | inactive | 1d | 2026-06-29 | 2026-06-29 | 288 |  |  |  |  |  |  |  | 16d |  |  | -0 |  | Sprint 10 |  |  |
| 290 | 1.2.8.2 | **ML-F0009-0305-MB-S-00001** |  | 6d | 2026-07-06 A | 2026-07-13 |  | 38% | 3.75d | 2026-06-17 | 2026-06-25 | 7d | 2026-06-17 | 2026-06-25 | 6d |  |  |  | ESTRUTURA METÁLICA | Sprint 11 | Qua 17/06/26 | Qui 25/06/26 |
| 291 | 1.2.8.2.1 | Emissão inicial |  | 3d | 2026-07-06 A | 2026-07-08 | 306FS-8d | 75% | 0.75d | 2026-06-17 | 2026-06-19 | 3d | 2026-06-17 | 2026-06-19 | 0d |  | start no earlier than 2026-06-23 |  | ESTRUTURA METÁLICA | Sprint 11 | Qua 17/06/26 | Sex 19/06/26 |
| 292 | 1.2.8.2.2 | Análise Tecnored |  | 1d | 2026-07-09 | 2026-07-09 | 291 |  |  | 2026-06-22 | 2026-06-22 | 1d | 2026-06-22 | 2026-06-22 | 0d |  |  |  | ESTRUTURA METÁLICA | Sprint 11 | Seg 22/06/26 | Seg 22/06/26 |
| 293 | 1.2.8.2.3 | Atendimento de comentários |  | 1d | 2026-07-10 | 2026-07-10 | 292 |  |  | 2026-06-23 | 2026-06-24 | 2d | 2026-06-23 | 2026-06-24 | 0d |  |  |  | ESTRUTURA METÁLICA | Sprint 11 | Ter 23/06/26 | Qua 24/06/26 |
| 294 | 1.2.8.2.4 | Aprovação |  | 1d | 2026-07-13 | 2026-07-13 | 293 |  |  | 2026-06-25 | 2026-06-25 | 1d | 2026-06-25 | 2026-06-25 | 6d | 0d |  |  | ESTRUTURA METÁLICA | Sprint 12 | Qui 25/06/26 | Qui 25/06/26 |
| 295 | 1.2.8.3 | **PQ-F0009-0305-MB-S-00001** |  | 6d | 2026-07-09 | 2026-07-16 |  |  |  | 2026-06-30 | 2026-07-07 | 6d | 2026-06-30 | 2026-07-07 | 3d |  |  |  | ESTRUTURA METÁLICA | Sprint 11 | Ter 30/06/26 | Ter 07/07/26 |
| 296 | 1.2.8.3.1 | Emissão inicial |  | 3d | 2026-07-09 | 2026-07-13 | 291 |  |  | 2026-06-30 | 2026-07-01 | 2d | 2026-06-30 | 2026-07-01 | 3d | 0d | finish no earlier than 2026-07-02 |  | ESTRUTURA METÁLICA | Sprint 11 | Ter 30/06/26 | Qua 01/07/26 |
| 297 | 1.2.8.3.2 | Análise Tecnored |  | 1d | 2026-07-14 | 2026-07-14 | 296 |  |  | 2026-07-02 | 2026-07-02 | 1d | 2026-07-02 | 2026-07-02 | 3d | 0d | start no earlier than 2026-06-30 |  | ESTRUTURA METÁLICA | Sprint 12 | Qui 02/07/26 | Qui 02/07/26 |
| 298 | 1.2.8.3.3 | Atendimento de comentários |  | 1d | 2026-07-15 | 2026-07-15 | 297 |  |  | 2026-07-03 | 2026-07-06 | 2d | 2026-07-03 | 2026-07-06 | 3d | 0d | start no earlier than 2026-07-01 |  | ESTRUTURA METÁLICA | Sprint 12 | Sex 03/07/26 | Seg 06/07/26 |
| 299 | 1.2.8.3.4 | Aprovação |  | 1d | 2026-07-16 | 2026-07-16 | 298 |  |  | 2026-07-07 | 2026-07-07 | 1d | 2026-07-07 | 2026-07-07 | 3d |  | start no earlier than 2026-07-02 |  | ESTRUTURA METÁLICA | Sprint 12 | Ter 07/07/26 | Ter 07/07/26 |
| 300 | 1.2.8.4 | **LM-F0009-0305-MB-S-00001** | inactive | 5d | 2026-07-14 | 2026-07-20 |  |  |  | 2026-06-26 | 2026-07-03 | 6d | 2026-06-26 | 2026-07-03 | 1d |  |  |  | ESTRUTURA METÁLICA | Sprint 12 | Sex 26/06/26 | Sex 03/07/26 |
| 301 | 1.2.8.4.1 | Emissão inicial | inactive | 2d | 2026-07-14 | 2026-07-15 | 294 |  |  | 2026-06-26 | 2026-06-29 | 2d | 2026-06-26 | 2026-06-29 | 1d | 0d |  |  | ESTRUTURA METÁLICA | Sprint 12 | Sex 26/06/26 | Seg 29/06/26 |
| 302 | 1.2.8.4.2 | Análise Tecnored | inactive | 1d | 2026-07-16 | 2026-07-16 | 301 |  |  | 2026-06-30 | 2026-06-30 | 1d | 2026-06-30 | 2026-06-30 | 1d | 0d |  |  | ESTRUTURA METÁLICA | Sprint 12 | Ter 30/06/26 | Ter 30/06/26 |
| 303 | 1.2.8.4.3 | Atendimento de comentários | inactive | 1d | 2026-07-17 | 2026-07-17 | 302 |  |  | 2026-07-01 | 2026-07-02 | 2d | 2026-07-01 | 2026-07-02 | 1d | 0d |  |  | ESTRUTURA METÁLICA | Sprint 12 | Qua 01/07/26 | Qui 02/07/26 |
| 304 | 1.2.8.4.4 | Aprovação | inactive | 1d | 2026-07-20 | 2026-07-20 | 303 |  |  | 2026-07-03 | 2026-07-03 | 1d | 2026-07-03 | 2026-07-03 | 1d |  |  |  | ESTRUTURA METÁLICA | Sprint 13 | Sex 03/07/26 | Sex 03/07/26 |

| ID | WBS | Task | Duration | Start | Finish | Predecessors | Baseline start | Baseline finish | Baseline duration | Baseline 1 start | Baseline 1 finish | Total slack | Free slack | Constraint | Disciplina | Início_LB_R0 | Término_LB_R0 | Sprints |
| --- | --- | --- | --- | --- | --- | --- | --- | --- | --- | --- | --- | --- | --- | --- | --- | --- | --- | --- |
| 305 | 1.2.8.5 | **MC-F0009-0305-MB-S-00001** | 6d | 2026-07-01 | 2026-07-08 |  | 2026-06-15 | 2026-06-25 | 9d | 2026-06-15 | 2026-06-25 | 0d |  |  | ESTRUTURA METÁLICA | Seg 15/06/26 | Qui 25/06/26 | Sprint 10 |
| 306 | 1.2.8.5.1 | Emissão inicial | 3d | 2026-07-01 | 2026-07-03 | 159, 164, 169, 154 | 2026-06-15 | 2026-06-19 | 5d | 2026-06-15 | 2026-06-19 | 0d |  | start no earlier than 2026-07-01 | ESTRUTURA METÁLICA | Seg 15/06/26 | Sex 19/06/26 | Sprint 10 |
| 307 | 1.2.8.5.2 | Análise Tecnored | 1d | 2026-07-06 | 2026-07-06 | 306 | 2026-06-22 | 2026-06-22 | 1d | 2026-06-22 | 2026-06-22 | 9d | 0d |  | ESTRUTURA METÁLICA | Seg 22/06/26 | Seg 22/06/26 | Sprint 11 |
| 308 | 1.2.8.5.3 | Atendimento de comentários | 1d | 2026-07-07 | 2026-07-07 | 307 | 2026-06-23 | 2026-06-24 | 2d | 2026-06-23 | 2026-06-24 | 9d | 0d |  | ESTRUTURA METÁLICA | Ter 23/06/26 | Qua 24/06/26 | Sprint 11 |
| 309 | 1.2.8.5.4 | Aprovação | 1d | 2026-07-08 | 2026-07-08 | 308 | 2026-06-25 | 2026-06-25 | 1d | 2026-06-25 | 2026-06-25 | 9d |  |  | ESTRUTURA METÁLICA | Qui 25/06/26 | Qui 25/06/26 | Sprint 11 |
| 310 | 1.2.8.6 | **AG-F0009-0305-MB-S-00001** | 7d | 2026-07-13 | 2026-07-21 |  | 2026-06-25 | 2026-07-08 | 10d | 2026-06-25 | 2026-07-08 | 0d |  |  | ESTRUTURA METÁLICA | Qui 25/06/26 | Qua 08/07/26 | Sprint 12 |
| 311 | 1.2.8.6.1 | Emissão inicial | 4d | 2026-07-13 | 2026-07-16 | 293 | 2026-06-25 | 2026-07-02 | 6d | 2026-06-25 | 2026-07-02 | 0d |  |  | ESTRUTURA METÁLICA | Qui 25/06/26 | Qui 02/07/26 | Sprint 12 |
| 312 | 1.2.8.6.2 | Análise Tecnored | 1d | 2026-07-17 | 2026-07-17 | 311 | 2026-07-03 | 2026-07-03 | 1d | 2026-07-03 | 2026-07-03 | 0d |  |  | ESTRUTURA METÁLICA | Sex 03/07/26 | Sex 03/07/26 | Sprint 12 |
| 313 | 1.2.8.6.3 | Atendimento de comentários | 1d | 2026-07-20 | 2026-07-20 | 312 | 2026-07-06 | 2026-07-07 | 2d | 2026-07-06 | 2026-07-07 | 0d |  |  | ESTRUTURA METÁLICA | Seg 06/07/26 | Ter 07/07/26 | Sprint 13 |
| 314 | 1.2.8.6.4 | Aprovação | 1d | 2026-07-21 | 2026-07-21 | 313 | 2026-07-08 | 2026-07-08 | 1d | 2026-07-08 | 2026-07-08 | 0d |  |  | ESTRUTURA METÁLICA | Qua 08/07/26 | Qua 08/07/26 | Sprint 13 |
| 315 | 1.2.8.7 | **AG-F0009-0305-MB-S-00002** | 7d | 2026-07-13 | 2026-07-21 |  | 2026-06-25 | 2026-07-08 | 10d | 2026-06-25 | 2026-07-08 | 0d |  |  | ESTRUTURA METÁLICA | Qui 25/06/26 | Qua 08/07/26 | Sprint 12 |
| 316 | 1.2.8.7.1 | Emissão inicial | 4d | 2026-07-13 | 2026-07-16 | 293 | 2026-06-25 | 2026-07-02 | 6d | 2026-06-25 | 2026-07-02 | 0d |  |  | ESTRUTURA METÁLICA | Qui 25/06/26 | Qui 02/07/26 | Sprint 12 |
| 317 | 1.2.8.7.2 | Análise Tecnored | 1d | 2026-07-17 | 2026-07-17 | 316 | 2026-07-03 | 2026-07-03 | 1d | 2026-07-03 | 2026-07-03 | 0d |  |  | ESTRUTURA METÁLICA | Sex 03/07/26 | Sex 03/07/26 | Sprint 12 |
| 318 | 1.2.8.7.3 | Atendimento de comentários | 1d | 2026-07-20 | 2026-07-20 | 317 | 2026-07-06 | 2026-07-07 | 2d | 2026-07-06 | 2026-07-07 | 0d |  |  | ESTRUTURA METÁLICA | Seg 06/07/26 | Ter 07/07/26 | Sprint 13 |
| 319 | 1.2.8.7.4 | Aprovação | 1d | 2026-07-21 | 2026-07-21 | 318 | 2026-07-08 | 2026-07-08 | 1d | 2026-07-08 | 2026-07-08 | 0d |  |  | ESTRUTURA METÁLICA | Qua 08/07/26 | Qua 08/07/26 | Sprint 13 |
| 320 | 1.2.8.8 | **AG-F0009-0305-MB-S-00003** | 7d | 2026-07-13 | 2026-07-21 |  | 2026-06-25 | 2026-07-08 | 10d | 2026-06-25 | 2026-07-08 | 0d |  |  | ESTRUTURA METÁLICA | Qui 25/06/26 | Qua 08/07/26 | Sprint 12 |
| 321 | 1.2.8.8.1 | Emissão inicial | 4d | 2026-07-13 | 2026-07-16 | 293 | 2026-06-25 | 2026-07-02 | 6d | 2026-06-25 | 2026-07-02 | 0d |  |  | ESTRUTURA METÁLICA | Qui 25/06/26 | Qui 02/07/26 | Sprint 12 |
| 322 | 1.2.8.8.2 | Análise Tecnored | 1d | 2026-07-17 | 2026-07-17 | 321 | 2026-07-03 | 2026-07-03 | 1d | 2026-07-03 | 2026-07-03 | 0d |  |  | ESTRUTURA METÁLICA | Sex 03/07/26 | Sex 03/07/26 | Sprint 12 |
| 323 | 1.2.8.8.3 | Atendimento de comentários | 1d | 2026-07-20 | 2026-07-20 | 322 | 2026-07-06 | 2026-07-07 | 2d | 2026-07-06 | 2026-07-07 | 0d |  |  | ESTRUTURA METÁLICA | Seg 06/07/26 | Ter 07/07/26 | Sprint 13 |
| 324 | 1.2.8.8.4 | Aprovação | 1d | 2026-07-21 | 2026-07-21 | 323 | 2026-07-08 | 2026-07-08 | 1d | 2026-07-08 | 2026-07-08 | 0d |  |  | ESTRUTURA METÁLICA | Qua 08/07/26 | Qua 08/07/26 | Sprint 13 |
| 325 | 1.2.8.9 | **AG-F0009-0305-MB-S-00004** | 7d | 2026-07-13 | 2026-07-21 |  | 2026-06-25 | 2026-07-08 | 10d | 2026-06-25 | 2026-07-08 | 0d |  |  | ESTRUTURA METÁLICA | Qui 25/06/26 | Qua 08/07/26 | Sprint 12 |
| 326 | 1.2.8.9.1 | Emissão inicial | 4d | 2026-07-13 | 2026-07-16 | 293 | 2026-06-25 | 2026-07-02 | 6d | 2026-06-25 | 2026-07-02 | 0d |  |  | ESTRUTURA METÁLICA | Qui 25/06/26 | Qui 02/07/26 | Sprint 12 |
| 327 | 1.2.8.9.2 | Análise Tecnored | 1d | 2026-07-17 | 2026-07-17 | 326 | 2026-07-03 | 2026-07-03 | 1d | 2026-07-03 | 2026-07-03 | 0d |  |  | ESTRUTURA METÁLICA | Sex 03/07/26 | Sex 03/07/26 | Sprint 12 |
| 328 | 1.2.8.9.3 | Atendimento de comentários | 1d | 2026-07-20 | 2026-07-20 | 327 | 2026-07-06 | 2026-07-07 | 2d | 2026-07-06 | 2026-07-07 | 0d |  |  | ESTRUTURA METÁLICA | Seg 06/07/26 | Ter 07/07/26 | Sprint 13 |
| 329 | 1.2.8.9.4 | Aprovação | 1d | 2026-07-21 | 2026-07-21 | 328 | 2026-07-08 | 2026-07-08 | 1d | 2026-07-08 | 2026-07-08 | 0d |  |  | ESTRUTURA METÁLICA | Qua 08/07/26 | Qua 08/07/26 | Sprint 13 |

| ID | WBS | Task | Duration | Start | Finish | Predecessors | Baseline start | Baseline finish | Baseline duration | Baseline 1 start | Baseline 1 finish | Total slack | Constraint | Disciplina | Início_LB_R0 | Término_LB_R0 | Sprints |
| --- | --- | --- | --- | --- | --- | --- | --- | --- | --- | --- | --- | --- | --- | --- | --- | --- | --- |
| 330 | 1.2.8.10 | **AG-F0009-0305-MB-S-00005** | 7d | 2026-07-13 | 2026-07-21 |  | 2026-06-25 | 2026-07-08 | 10d | 2026-06-25 | 2026-07-08 | 0d |  | ESTRUTURA METÁLICA | Qui 25/06/26 | Qua 08/07/26 | Sprint 12 |
| 331 | 1.2.8.10.1 | Emissão inicial | 4d | 2026-07-13 | 2026-07-16 | 293 | 2026-06-25 | 2026-07-02 | 6d | 2026-06-25 | 2026-07-02 | 0d |  | ESTRUTURA METÁLICA | Qui 25/06/26 | Qui 02/07/26 | Sprint 12 |
| 332 | 1.2.8.10.2 | Análise Tecnored | 1d | 2026-07-17 | 2026-07-17 | 331 | 2026-07-03 | 2026-07-03 | 1d | 2026-07-03 | 2026-07-03 | 0d |  | ESTRUTURA METÁLICA | Sex 03/07/26 | Sex 03/07/26 | Sprint 12 |
| 333 | 1.2.8.10.3 | Atendimento de comentários | 1d | 2026-07-20 | 2026-07-20 | 332 | 2026-07-06 | 2026-07-07 | 2d | 2026-07-06 | 2026-07-07 | 0d | finish no earlier than 2026-07-10 | ESTRUTURA METÁLICA | Seg 06/07/26 | Ter 07/07/26 | Sprint 13 |
| 334 | 1.2.8.10.4 | Aprovação | 1d | 2026-07-21 | 2026-07-21 | 333 | 2026-07-08 | 2026-07-08 | 1d | 2026-07-08 | 2026-07-08 | 0d | start no earlier than 2026-07-13 | ESTRUTURA METÁLICA | Qua 08/07/26 | Qua 08/07/26 | Sprint 13 |
| 335 | 1.2.8.11 | **AG-F0009-0305-MB-S-00006** | 7d | 2026-07-13 | 2026-07-21 |  | 2026-06-25 | 2026-07-08 | 10d | 2026-06-25 | 2026-07-08 | 0d |  | ELÉTRICA | Qui 25/06/26 | Qua 08/07/26 | Sprint 12 |
| 336 | 1.2.8.11.1 | Emissão inicial | 4d | 2026-07-13 | 2026-07-16 | 293 | 2026-06-25 | 2026-07-02 | 6d | 2026-06-25 | 2026-07-02 | 0d |  | ELÉTRICA | Qui 25/06/26 | Qui 02/07/26 | Sprint 12 |
| 337 | 1.2.8.11.2 | Análise Tecnored | 1d | 2026-07-17 | 2026-07-17 | 336 | 2026-07-03 | 2026-07-03 | 1d | 2026-07-03 | 2026-07-03 | 0d |  | ELÉTRICA | Sex 03/07/26 | Sex 03/07/26 | Sprint 12 |
| 338 | 1.2.8.11.3 | Atendimento de comentários | 1d | 2026-07-20 | 2026-07-20 | 337 | 2026-07-06 | 2026-07-07 | 2d | 2026-07-06 | 2026-07-07 | 0d |  | ELÉTRICA | Seg 06/07/26 | Ter 07/07/26 | Sprint 13 |
| 339 | 1.2.8.11.4 | Aprovação | 1d | 2026-07-21 | 2026-07-21 | 338 | 2026-07-08 | 2026-07-08 | 1d | 2026-07-08 | 2026-07-08 | 0d |  | ELÉTRICA | Qua 08/07/26 | Qua 08/07/26 | Sprint 13 |
| 340 | 1.2.8.12 | **AG-F0009-0305-MB-S-00007** | 7d | 2026-07-13 | 2026-07-21 |  | 2026-06-25 | 2026-07-08 | 10d | 2026-06-25 | 2026-07-08 | 0d |  | ELÉTRICA | Qui 25/06/26 | Qua 08/07/26 | Sprint 12 |
| 341 | 1.2.8.12.1 | Emissão inicial | 4d | 2026-07-13 | 2026-07-16 | 293 | 2026-06-25 | 2026-07-02 | 6d | 2026-06-25 | 2026-07-02 | 0d |  | ELÉTRICA | Qui 25/06/26 | Qui 02/07/26 | Sprint 12 |
| 342 | 1.2.8.12.2 | Análise Tecnored | 1d | 2026-07-17 | 2026-07-17 | 341 | 2026-07-03 | 2026-07-03 | 1d | 2026-07-03 | 2026-07-03 | 0d |  | ELÉTRICA | Sex 03/07/26 | Sex 03/07/26 | Sprint 12 |
| 343 | 1.2.8.12.3 | Atendimento de comentários | 1d | 2026-07-20 | 2026-07-20 | 342 | 2026-07-06 | 2026-07-07 | 2d | 2026-07-06 | 2026-07-07 | 0d |  | ELÉTRICA | Seg 06/07/26 | Ter 07/07/26 | Sprint 13 |
| 344 | 1.2.8.12.4 | Aprovação | 1d | 2026-07-21 | 2026-07-21 | 343 | 2026-07-08 | 2026-07-08 | 1d | 2026-07-08 | 2026-07-08 | 0d |  | ELÉTRICA | Qua 08/07/26 | Qua 08/07/26 | Sprint 13 |
| 345 | 1.2.8.13 | **AG-F0009-0305-MB-S-00008** | 7d | 2026-07-13 | 2026-07-21 |  | 2026-06-25 | 2026-07-08 | 10d | 2026-06-25 | 2026-07-08 | 0d |  | ELÉTRICA | Qui 25/06/26 | Qua 08/07/26 | Sprint 12 |
| 346 | 1.2.8.13.1 | Emissão inicial | 4d | 2026-07-13 | 2026-07-16 | 293 | 2026-06-25 | 2026-07-02 | 6d | 2026-06-25 | 2026-07-02 | 0d |  | ELÉTRICA | Qui 25/06/26 | Qui 02/07/26 | Sprint 12 |
| 347 | 1.2.8.13.2 | Análise Tecnored | 1d | 2026-07-17 | 2026-07-17 | 346 | 2026-07-03 | 2026-07-03 | 1d | 2026-07-03 | 2026-07-03 | 0d |  | ELÉTRICA | Sex 03/07/26 | Sex 03/07/26 | Sprint 12 |
| 348 | 1.2.8.13.3 | Atendimento de comentários | 1d | 2026-07-20 | 2026-07-20 | 347 | 2026-07-06 | 2026-07-07 | 2d | 2026-07-06 | 2026-07-07 | 0d |  | ELÉTRICA | Seg 06/07/26 | Ter 07/07/26 | Sprint 13 |
| 349 | 1.2.8.13.4 | Aprovação | 1d | 2026-07-21 | 2026-07-21 | 348 | 2026-07-08 | 2026-07-08 | 1d | 2026-07-08 | 2026-07-08 | 0d |  | ELÉTRICA | Qua 08/07/26 | Qua 08/07/26 | Sprint 13 |
| 350 | 1.2.8.14 | **AG-F0009-0305-MB-S-00009** | 7d | 2026-07-13 | 2026-07-21 |  | 2026-06-25 | 2026-07-08 | 10d | 2026-06-25 | 2026-07-08 | 0d |  | ELÉTRICA | Qui 25/06/26 | Qua 08/07/26 | Sprint 12 |
| 351 | 1.2.8.14.1 | Emissão inicial | 4d | 2026-07-13 | 2026-07-16 | 293 | 2026-06-25 | 2026-07-02 | 6d | 2026-06-25 | 2026-07-02 | 0d |  | ELÉTRICA | Qui 25/06/26 | Qui 02/07/26 | Sprint 12 |
| 352 | 1.2.8.14.2 | Análise Tecnored | 1d | 2026-07-17 | 2026-07-17 | 351 | 2026-07-03 | 2026-07-03 | 1d | 2026-07-03 | 2026-07-03 | 0d |  | ELÉTRICA | Sex 03/07/26 | Sex 03/07/26 | Sprint 12 |
| 353 | 1.2.8.14.3 | Atendimento de comentários | 1d | 2026-07-20 | 2026-07-20 | 352 | 2026-07-06 | 2026-07-07 | 2d | 2026-07-06 | 2026-07-07 | 0d |  | ELÉTRICA | Seg 06/07/26 | Ter 07/07/26 | Sprint 13 |
| 354 | 1.2.8.14.4 | Aprovação | 1d | 2026-07-21 | 2026-07-21 | 353 | 2026-07-08 | 2026-07-08 | 1d | 2026-07-08 | 2026-07-08 | 0d |  | ELÉTRICA | Qua 08/07/26 | Qua 08/07/26 | Sprint 13 |

| ID | WBS | Task | Type | Duration | Start | Finish | Predecessors | Complete | Remaining | Baseline start | Baseline finish | Baseline duration | Baseline 1 start | Baseline 1 finish | Total slack | Free slack | Baseline cost | Disciplina | Início_LB_R0 | Término_LB_R0 | Sprints |
| --- | --- | --- | --- | --- | --- | --- | --- | --- | --- | --- | --- | --- | --- | --- | --- | --- | --- | --- | --- | --- | --- |
| 355 | 1.2.8.15 | **AG-F0009-0305-MB-S-00010** |  | 7d | 2026-07-13 | 2026-07-21 |  |  |  | 2026-06-25 | 2026-07-08 | 10d | 2026-06-25 | 2026-07-08 | 0d |  |  | ELÉTRICA | Qui 25/06/26 | Qua 08/07/26 | Sprint 12 |
| 356 | 1.2.8.15.1 | Emissão inicial |  | 4d | 2026-07-13 | 2026-07-16 | 293 |  |  | 2026-06-25 | 2026-07-02 | 6d | 2026-06-25 | 2026-07-02 | 0d |  |  | ELÉTRICA | Qui 25/06/26 | Qui 02/07/26 | Sprint 12 |
| 357 | 1.2.8.15.2 | Análise Tecnored |  | 1d | 2026-07-17 | 2026-07-17 | 356 |  |  | 2026-07-03 | 2026-07-03 | 1d | 2026-07-03 | 2026-07-03 | 0d |  |  | ELÉTRICA | Sex 03/07/26 | Sex 03/07/26 | Sprint 12 |
| 358 | 1.2.8.15.3 | Atendimento de comentários |  | 1d | 2026-07-20 | 2026-07-20 | 357 |  |  | 2026-07-06 | 2026-07-07 | 2d | 2026-07-06 | 2026-07-07 | 0d |  |  | ELÉTRICA | Seg 06/07/26 | Ter 07/07/26 | Sprint 13 |
| 359 | 1.2.8.15.4 | Aprovação |  | 1d | 2026-07-21 | 2026-07-21 | 358 |  |  | 2026-07-08 | 2026-07-08 | 1d | 2026-07-08 | 2026-07-08 | 0d |  |  | ELÉTRICA | Qua 08/07/26 | Qua 08/07/26 | Sprint 13 |
| 360 | 1.2.8.16 | **PL-F0009-0305-MB-S-00001** |  | 8d | 2026-06-29 | 2026-07-08 |  |  |  | 2026-06-25 | 2026-07-07 | 9d | 2026-06-25 | 2026-07-07 | 9d |  |  | ELÉTRICA | Qui 25/06/26 | Ter 07/07/26 | Sprint 10 |
| 361 | 1.2.8.16.1 | Emissão inicial |  | 5d | 2026-06-29 | 2026-07-03 | 306FF |  |  | 2026-06-25 | 2026-07-01 | 5d | 2026-06-25 | 2026-07-01 | 9d | 0d |  | ELÉTRICA | Qui 25/06/26 | Qua 01/07/26 | Sprint 10 |
| 362 | 1.2.8.16.2 | Análise Tecnored |  | 1d | 2026-07-06 | 2026-07-06 | 361 |  |  | 2026-07-02 | 2026-07-02 | 1d | 2026-07-02 | 2026-07-02 | 9d | 0d |  | ELÉTRICA | Qui 02/07/26 | Qui 02/07/26 | Sprint 11 |
| 363 | 1.2.8.16.3 | Atendimento de comentários |  | 1d | 2026-07-07 | 2026-07-07 | 362 |  |  | 2026-07-03 | 2026-07-06 | 2d | 2026-07-03 | 2026-07-06 | 9d | 0d |  | ELÉTRICA | Sex 03/07/26 | Seg 06/07/26 | Sprint 11 |
| 364 | 1.2.8.16.4 | Aprovação |  | 1d | 2026-07-08 | 2026-07-08 | 363 |  |  | 2026-07-07 | 2026-07-07 | 1d | 2026-07-07 | 2026-07-07 | 9d |  |  | ELÉTRICA | Ter 07/07/26 | Ter 07/07/26 | Sprint 11 |
| 365 | 1.2.9 | **Elétrica** |  | 27d | 2026-05-28 A | 2026-07-07 |  | 28% | 19.44d | 2026-05-21 | 2026-07-08 | 35d | 2026-05-21 | 2026-07-08 | 10d |  |  | ELÉTRICA | Qui 21/05/26 | Qua 08/07/26 | Sprint 5 |
| 366 | 1.2.9.1 | **CP-F0009-0305-MB-E-00001** | inactive | 23d | 2026-05-08 | 2026-06-11 |  |  |  |  |  |  |  |  | 28d |  | -0 |  |  |  | Sprint 2 |
| 367 | 1.2.9.1.1 | Emissão inicial | inactive | 5d | 2026-05-08 | 2026-05-14 | 21FS+3d |  |  |  |  |  |  |  | 42d | 14d | -0 |  |  |  | Sprint 2 |
| 368 | 1.2.9.1.2 | Análise Tecnored | inactive | 1d | 2026-06-08 | 2026-06-08 | 367, 7 |  |  |  |  |  |  |  | 28d | 0d | -0 |  |  |  | Sprint 7 |
| 369 | 1.2.9.1.3 | Atendimento de comentários | inactive | 2d | 2026-06-09 | 2026-06-10 | 368 |  |  |  |  |  |  |  | 28d | 0d | -0 |  |  |  | Sprint 7 |
| 370 | 1.2.9.1.4 | Aprovação | inactive | 1d | 2026-06-11 | 2026-06-11 | 369 |  |  |  |  |  |  |  | 28d |  | -0 |  |  |  | Sprint 7 |
| 371 | 1.2.9.2 | **ML-F0009-0305-MB-E-00001** | inactive | 6d | 2026-06-23 | 2026-06-30 |  |  |  | 2026-06-15 | 2026-06-29 | 11d | 2026-06-15 | 2026-06-29 | 12d |  |  | ELÉTRICA | Seg 15/06/26 | Seg 29/06/26 | Sprint 9 |
| 372 | 1.2.9.2.1 | Emissão inicial | inactive | 4d | 2026-06-23 | 2026-06-26 | 407FS-5d |  |  | 2026-06-15 | 2026-06-23 | 7d | 2026-06-15 | 2026-06-23 | 12d | 0d |  | ELÉTRICA | Seg 15/06/26 | Ter 23/06/26 | Sprint 9 |
| 373 | 1.2.9.2.2 | Análise Tecnored | inactive | 1d | 2026-06-29 | 2026-06-29 | 372 |  |  | 2026-06-24 | 2026-06-24 | 1d | 2026-06-24 | 2026-06-24 | 15d | 0d |  | ELÉTRICA | Qua 24/06/26 | Qua 24/06/26 | Sprint 10 |
| 374 | 1.2.9.2.3 | Atendimento de comentários | inactive | 1d | 2026-06-30 | 2026-06-30 | 373 |  |  | 2026-06-25 | 2026-06-26 | 2d | 2026-06-25 | 2026-06-26 | 15d | 0d |  | ELÉTRICA | Qui 25/06/26 | Sex 26/06/26 | Sprint 10 |
| 375 | 1.2.9.2.4 | Aprovação | inactive | 1d | 2026-06-30 | 2026-06-30 | 374FF |  |  | 2026-06-29 | 2026-06-29 | 1d | 2026-06-29 | 2026-06-29 | 15d |  |  | ELÉTRICA | Seg 29/06/26 | Seg 29/06/26 | Sprint 10 |
| 376 | 1.2.9.3 | **RL-F0009-0305-MB-E-00001** |  | 5d | 2026-06-02 A | 2026-06-10 |  | 70% | 1.5d | 2026-05-26 | 2026-06-03 | 7d | 2026-05-26 | 2026-06-03 | 29d |  |  | ELÉTRICA | Ter 26/05/26 | Qua 03/06/26 | Sprint 6 |
| 377 | 1.2.9.3.1 | Emissão inicial |  | 2d | 2026-06-02 A | 2026-06-03 A | 387FS-1d | 100% |  | 2026-05-26 | 2026-05-28 | 3d | 2026-05-26 | 2026-05-28 |  |  |  | ELÉTRICA | Ter 26/05/26 | Qui 28/05/26 | Sprint 6 |
| 378 | 1.2.9.3.2 | Análise Tecnored |  | 1d | 2026-06-09 A | 2026-06-09 A | 377 | 100% |  | 2026-05-29 | 2026-05-29 | 1d | 2026-05-29 | 2026-05-29 |  |  |  | ELÉTRICA | Sex 29/05/26 | Sex 29/05/26 | Sprint 7 |
| 379 | 1.2.9.3.3 | Atendimento de comentários |  | 1d | 2026-06-10 A | 2026-06-10 | 378 | 50% | 0.5d | 2026-06-01 | 2026-06-02 | 2d | 2026-06-01 | 2026-06-02 | 29d | 0d |  | ELÉTRICA | Seg 01/06/26 | Ter 02/06/26 | Sprint 7 |
| 380 | 1.2.9.3.4 | Aprovação |  | 1d | 2026-06-10 | 2026-06-10 | 379FF |  |  | 2026-06-03 | 2026-06-03 | 1d | 2026-06-03 | 2026-06-03 | 29d |  |  | ELÉTRICA | Qua 03/06/26 | Qua 03/06/26 | Sprint 7 |

| ID | WBS | Task | Type | Duration | Start | Finish | Predecessors | Complete | Remaining | Baseline start | Baseline finish | Baseline duration | Baseline 1 start | Baseline 1 finish | Total slack | Free slack | Disciplina | Início_LB_R0 | Término_LB_R0 | Sprints |
| --- | --- | --- | --- | --- | --- | --- | --- | --- | --- | --- | --- | --- | --- | --- | --- | --- | --- | --- | --- | --- |
| 381 | 1.2.9.4 | **LE-F0009-0305-MB-E-00001** | inactive | 4d | 2026-06-29 | 2026-07-02 |  |  |  | 2026-06-15 | 2026-06-23 | 7d | 2026-06-15 | 2026-06-23 | 13d |  | ELÉTRICA | Seg 15/06/26 | Ter 23/06/26 | Sprint 10 |
| 382 | 1.2.9.4.1 | Emissão inicial | inactive | 2d | 2026-06-29 | 2026-06-30 | 407FS-1d |  |  | 2026-06-15 | 2026-06-17 | 3d | 2026-06-15 | 2026-06-17 | 13d | 0d | ELÉTRICA | Seg 15/06/26 | Qua 17/06/26 | Sprint 10 |
| 383 | 1.2.9.4.2 | Análise Tecnored | inactive | 1d | 2026-07-01 | 2026-07-01 | 382 |  |  | 2026-06-18 | 2026-06-18 | 1d | 2026-06-18 | 2026-06-18 | 13d | 0d | ELÉTRICA | Qui 18/06/26 | Qui 18/06/26 | Sprint 10 |
| 384 | 1.2.9.4.3 | Atendimento de comentários | inactive | 1d | 2026-07-02 | 2026-07-02 | 383 |  |  | 2026-06-19 | 2026-06-22 | 2d | 2026-06-19 | 2026-06-22 | 13d | 0d | ELÉTRICA | Sex 19/06/26 | Seg 22/06/26 | Sprint 10 |
| 385 | 1.2.9.4.4 | Aprovação | inactive | 1d | 2026-07-02 | 2026-07-02 | 384FF |  |  | 2026-06-23 | 2026-06-23 | 1d | 2026-06-23 | 2026-06-23 | 13d |  | ELÉTRICA | Ter 23/06/26 | Ter 23/06/26 | Sprint 10 |
| 386 | 1.2.9.5 | **LR-F0009-0305-MB-E-00001** |  | 5d | 2026-05-28 A | 2026-06-03 |  | 70% | 1.5d | 2026-05-21 | 2026-05-29 | 7d | 2026-05-21 | 2026-05-29 | 32d |  | ELÉTRICA | Qui 21/05/26 | Sex 29/05/26 | Sprint 5 |
| 387 | 1.2.9.5.1 | Emissão inicial |  | 2d | 2026-05-28 A | 2026-05-29 A | 79FS-1d | 100% |  | 2026-05-21 | 2026-05-25 | 3d | 2026-05-21 | 2026-05-25 |  |  | ELÉTRICA | Qui 21/05/26 | Seg 25/05/26 | Sprint 5 |
| 388 | 1.2.9.5.2 | Análise Tecnored |  | 1d | 2026-06-02 A | 2026-06-02 A | 387 | 100% |  | 2026-05-26 | 2026-05-26 | 1d | 2026-05-26 | 2026-05-26 |  |  | ELÉTRICA | Ter 26/05/26 | Ter 26/05/26 | Sprint 6 |
| 389 | 1.2.9.5.3 | Atendimento de comentários |  | 1d | 2026-06-03 A | 2026-06-03 | 388 | 50% | 0.5d | 2026-05-27 | 2026-05-28 | 2d | 2026-05-27 | 2026-05-28 | 32d | 0d | ELÉTRICA | Qua 27/05/26 | Qui 28/05/26 | Sprint 6 |
| 390 | 1.2.9.5.4 | Aprovação |  | 1d | 2026-06-03 | 2026-06-03 | 389FF |  |  | 2026-05-29 | 2026-05-29 | 1d | 2026-05-29 | 2026-05-29 | 32d |  | ELÉTRICA | Sex 29/05/26 | Sex 29/05/26 | Sprint 6 |
| 391 | 1.2.9.6 | **LM-F0009-0305-MB-E-00001** | inactive | 4d | 2026-07-03 | 2026-07-08 |  |  |  | 2026-06-30 | 2026-07-07 | 6d | 2026-06-30 | 2026-07-07 | 6d |  | ELÉTRICA | Ter 30/06/26 | Ter 07/07/26 | Sprint 10 |
| 392 | 1.2.9.6.1 | Emissão inicial | inactive | 2d | 2026-07-03 | 2026-07-06 | 413FS-1d |  |  | 2026-06-30 | 2026-07-01 | 2d | 2026-06-30 | 2026-07-01 | 6d | 0d | ELÉTRICA | Ter 30/06/26 | Qua 01/07/26 | Sprint 10 |
| 393 | 1.2.9.6.2 | Análise Tecnored | inactive | 1d | 2026-07-07 | 2026-07-07 | 392 |  |  | 2026-07-02 | 2026-07-02 | 1d | 2026-07-02 | 2026-07-02 | 9d | 0d | ELÉTRICA | Qui 02/07/26 | Qui 02/07/26 | Sprint 11 |
| 394 | 1.2.9.6.3 | Atendimento de comentários | inactive | 1d | 2026-07-08 | 2026-07-08 | 393 |  |  | 2026-07-03 | 2026-07-06 | 2d | 2026-07-03 | 2026-07-06 | 9d | 0d | ELÉTRICA | Sex 03/07/26 | Seg 06/07/26 | Sprint 11 |
| 395 | 1.2.9.6.4 | Aprovação | inactive | 1d | 2026-07-08 | 2026-07-08 | 394FF |  |  | 2026-07-07 | 2026-07-07 | 1d | 2026-07-07 | 2026-07-07 | 9d |  | ELÉTRICA | Ter 07/07/26 | Ter 07/07/26 | Sprint 11 |
| 396 | 1.2.9.7 | **PQ-F0009-0305-MB-E-00001** | inactive | 3d | 2026-07-03 | 2026-07-07 |  |  |  | 2026-07-02 | 2026-07-08 | 5d | 2026-07-02 | 2026-07-08 | 10d |  | ELÉTRICA | Qui 02/07/26 | Qua 08/07/26 | Sprint 10 |
| 397 | 1.2.9.7.1 | Emissão inicial | inactive | 1d | 2026-07-03 | 2026-07-03 | 392SS |  |  | 2026-07-02 | 2026-07-02 | 1d | 2026-07-02 | 2026-07-02 | 10d | 0d | AUTOMAÇÃO E INSTRUMENTAÇÃO | Qui 02/07/26 | Qui 02/07/26 | Sprint 10 |
| 398 | 1.2.9.7.2 | Análise Tecnored | inactive | 1d | 2026-07-06 | 2026-07-06 | 397 |  |  | 2026-07-03 | 2026-07-03 | 1d | 2026-07-03 | 2026-07-03 | 10d | 0d | AUTOMAÇÃO E INSTRUMENTAÇÃO | Sex 03/07/26 | Sex 03/07/26 | Sprint 11 |
| 399 | 1.2.9.7.3 | Atendimento de comentários | inactive | 1d | 2026-07-07 | 2026-07-07 | 398 |  |  | 2026-07-06 | 2026-07-07 | 2d | 2026-07-06 | 2026-07-07 | 10d | 0d | AUTOMAÇÃO E INSTRUMENTAÇÃO | Seg 06/07/26 | Ter 07/07/26 | Sprint 11 |
| 400 | 1.2.9.7.4 | Aprovação | inactive | 1d | 2026-07-07 | 2026-07-07 | 399FF |  |  | 2026-07-08 | 2026-07-08 | 1d | 2026-07-08 | 2026-07-08 | 10d |  | AUTOMAÇÃO E INSTRUMENTAÇÃO | Qua 08/07/26 | Qua 08/07/26 | Sprint 11 |
| 401 | 1.2.9.8 | **MD-F0009-0305-MB-E-00001** | inactive | 7d | 2026-07-03 | 2026-07-13 |  |  |  | 2026-06-30 | 2026-07-08 | 7d | 2026-06-30 | 2026-07-08 | 6d |  | ELÉTRICA |  |  | Sprint 10 |
| 402 | 1.2.9.8.1 | Emissão inicial | inactive | 3d | 2026-07-03 | 2026-07-07 | 392FS-2d |  |  | 2026-06-30 | 2026-07-02 | 3d | 2026-06-30 | 2026-07-02 | 6d | 0d | ELÉTRICA |  |  | Sprint 10 |
| 403 | 1.2.9.8.2 | Análise Tecnored | inactive | 1d | 2026-07-08 | 2026-07-08 | 402 |  |  | 2026-07-03 | 2026-07-03 | 1d | 2026-07-03 | 2026-07-03 | 6d | 0d | ELÉTRICA |  |  | Sprint 11 |
| 404 | 1.2.9.8.3 | Atendimento de comentários | inactive | 2d | 2026-07-09 | 2026-07-10 | 403 |  |  | 2026-07-06 | 2026-07-07 | 2d | 2026-07-06 | 2026-07-07 | 6d | 0d | ELÉTRICA |  |  | Sprint 11 |
| 405 | 1.2.9.8.4 | Aprovação | inactive | 1d | 2026-07-13 | 2026-07-13 | 404 |  |  | 2026-07-08 | 2026-07-08 | 1d | 2026-07-08 | 2026-07-08 | 6d |  | ELÉTRICA |  |  | Sprint 12 |

| ID | WBS | Task | Type | Duration | Start | Finish | Predecessors | Baseline start | Baseline finish | Baseline duration | Baseline 1 start | Baseline 1 finish | Total slack | Free slack | Constraint | Disciplina | Início_LB_R0 | Término_LB_R0 | Sprints |
| --- | --- | --- | --- | --- | --- | --- | --- | --- | --- | --- | --- | --- | --- | --- | --- | --- | --- | --- | --- |
| 406 | 1.2.9.9 | **MC-F0009-0305-MB-E-00001** |  | 4d | 2026-06-26 | 2026-07-01 |  | 2026-06-08 | 2026-06-18 | 9d | 2026-06-08 | 2026-06-18 | 13d |  |  | ELÉTRICA | Seg 08/06/26 | Qui 18/06/26 | Sprint 9 |
| 407 | 1.2.9.9.1 | Emissão inicial |  | 2d | 2026-06-26 | 2026-06-29 | 427FS-1d | 2026-06-08 | 2026-06-12 | 5d | 2026-06-08 | 2026-06-12 | 13d | 0d | start no earlier than 2026-06-26 | ELÉTRICA | Seg 08/06/26 | Sex 12/06/26 | Sprint 9 |
| 408 | 1.2.9.9.2 | Análise Tecnored |  | 1d | 2026-06-30 | 2026-06-30 | 407 | 2026-06-15 | 2026-06-15 | 1d | 2026-06-15 | 2026-06-15 | 14d | 0d |  | ELÉTRICA | Seg 15/06/26 | Seg 15/06/26 | Sprint 10 |
| 409 | 1.2.9.9.3 | Atendimento de comentários |  | 1d | 2026-07-01 | 2026-07-01 | 408 | 2026-06-16 | 2026-06-17 | 2d | 2026-06-16 | 2026-06-17 | 14d | 0d |  | ELÉTRICA | Ter 16/06/26 | Qua 17/06/26 | Sprint 10 |
| 410 | 1.2.9.9.4 | Aprovação |  | 1d | 2026-07-01 | 2026-07-01 | 409FF | 2026-06-18 | 2026-06-18 | 1d | 2026-06-18 | 2026-06-18 | 14d |  |  | ELÉTRICA | Qui 18/06/26 | Qui 18/06/26 | Sprint 10 |
| 411 | 1.2.9.10 | **AG-F0009-0305-MB-E-00001** |  | 4d | 2026-07-01 | 2026-07-06 |  | 2026-06-24 | 2026-07-02 | 7d | 2026-06-24 | 2026-07-02 | 11d |  |  | AUTOMAÇÃO E INSTRUMENTAÇÃO | Qua 24/06/26 | Qui 02/07/26 | Sprint 10 |
| 412 | 1.2.9.10.1 | Emissão inicial |  | 2d | 2026-07-01 | 2026-07-02 | 372FS-1d | 2026-06-24 | 2026-06-26 | 3d | 2026-06-24 | 2026-06-26 | 11d | 0d | start no earlier than 2026-07-01 | AUTOMAÇÃO E INSTRUMENTAÇÃO | Qua 24/06/26 | Sex 26/06/26 | Sprint 10 |
| 413 | 1.2.9.10.2 | Análise Tecnored |  | 1d | 2026-07-03 | 2026-07-03 | 412 | 2026-06-29 | 2026-06-29 | 1d | 2026-06-29 | 2026-06-29 | 11d | 0d |  | AUTOMAÇÃO E INSTRUMENTAÇÃO | Seg 29/06/26 | Seg 29/06/26 | Sprint 10 |
| 414 | 1.2.9.10.3 | Atendimento de comentários |  | 1d | 2026-07-06 | 2026-07-06 | 413 | 2026-06-30 | 2026-07-01 | 2d | 2026-06-30 | 2026-07-01 | 11d | 0d |  | AUTOMAÇÃO E INSTRUMENTAÇÃO | Ter 30/06/26 | Qua 01/07/26 | Sprint 11 |
| 415 | 1.2.9.10.4 | Aprovação |  | 1d | 2026-07-06 | 2026-07-06 | 414FF | 2026-07-02 | 2026-07-02 | 1d | 2026-07-02 | 2026-07-02 | 11d |  |  | AUTOMAÇÃO E INSTRUMENTAÇÃO | Qui 02/07/26 | Qui 02/07/26 | Sprint 11 |
| 416 | 1.2.9.11 | **DU-F0009-0305-MB-E-00001** | inactive | 4d | 2026-06-18 | 2026-06-23 |  | 2026-05-29 | 2026-06-08 | 7d | 2026-05-29 | 2026-06-08 | 17d |  |  | AUTOMAÇÃO E INSTRUMENTAÇÃO | Sex 29/05/26 | Seg 08/06/26 | Sprint 8 |
| 417 | 1.2.9.11.1 | Emissão inicial | inactive | 2d | 2026-06-18 | 2026-06-19 | 377FS-1d | 2026-05-29 | 2026-06-02 | 3d | 2026-05-29 | 2026-06-02 | 17d | 0d | finish no earlier than 2026-06-19 | AUTOMAÇÃO E INSTRUMENTAÇÃO | Sex 29/05/26 | Ter 02/06/26 | Sprint 8 |
| 418 | 1.2.9.11.2 | Análise Tecnored | inactive | 1d | 2026-06-22 | 2026-06-22 | 417 | 2026-06-03 | 2026-06-03 | 1d | 2026-06-03 | 2026-06-03 | 20d | 0d |  | AUTOMAÇÃO E INSTRUMENTAÇÃO | Qua 03/06/26 | Qua 03/06/26 | Sprint 9 |
| 419 | 1.2.9.11.3 | Atendimento de comentários | inactive | 1d | 2026-06-23 | 2026-06-23 | 418 | 2026-06-04 | 2026-06-05 | 2d | 2026-06-04 | 2026-06-05 | 20d | 0d |  | AUTOMAÇÃO E INSTRUMENTAÇÃO | Qui 04/06/26 | Sex 05/06/26 | Sprint 9 |
| 420 | 1.2.9.11.4 | Aprovação | inactive | 1d | 2026-06-23 | 2026-06-23 | 419FF | 2026-06-08 | 2026-06-08 | 1d | 2026-06-08 | 2026-06-08 | 20d |  |  | AUTOMAÇÃO E INSTRUMENTAÇÃO | Seg 08/06/26 | Seg 08/06/26 | Sprint 9 |
| 421 | 1.2.9.12 | **AG-F0009-0305-MB-E-00002** |  | 4d | 2026-07-02 | 2026-07-07 |  | 2026-06-24 | 2026-07-03 | 8d | 2026-06-24 | 2026-07-03 | 10d |  |  | AUTOMAÇÃO E INSTRUMENTAÇÃO | Qua 24/06/26 | Sex 03/07/26 | Sprint 10 |
| 422 | 1.2.9.12.1 | Emissão inicial |  | 2d | 2026-07-02 | 2026-07-03 | 372FS+1d | 2026-06-24 | 2026-06-29 | 4d | 2026-06-24 | 2026-06-29 | 10d | 0d | start no earlier than 2026-07-02 | AUTOMAÇÃO E INSTRUMENTAÇÃO | Qua 24/06/26 | Seg 29/06/26 | Sprint 10 |
| 423 | 1.2.9.12.2 | Análise Tecnored |  | 1d | 2026-07-06 | 2026-07-06 | 422 | 2026-06-30 | 2026-06-30 | 1d | 2026-06-30 | 2026-06-30 | 10d | 0d |  | AUTOMAÇÃO E INSTRUMENTAÇÃO | Ter 30/06/26 | Ter 30/06/26 | Sprint 11 |
| 424 | 1.2.9.12.3 | Atendimento de comentários |  | 1d | 2026-07-07 | 2026-07-07 | 423 | 2026-07-01 | 2026-07-02 | 2d | 2026-07-01 | 2026-07-02 | 10d | 0d |  | AUTOMAÇÃO E INSTRUMENTAÇÃO | Qua 01/07/26 | Qui 02/07/26 | Sprint 11 |
| 425 | 1.2.9.12.4 | Aprovação |  | 1d | 2026-07-07 | 2026-07-07 | 424FF | 2026-07-03 | 2026-07-03 | 1d | 2026-07-03 | 2026-07-03 | 10d |  |  | AUTOMAÇÃO E INSTRUMENTAÇÃO | Sex 03/07/26 | Sex 03/07/26 | Sprint 11 |
| 426 | 1.2.9.13 | **FD-F0009-0305-MB-E-0001** | inactive | 4d | 2026-06-19 | 2026-06-24 |  | 2026-06-03 | 2026-06-11 | 7d | 2026-06-03 | 2026-06-11 | 17d |  |  | AUTOMAÇÃO E INSTRUMENTAÇÃO | Qua 03/06/26 | Qui 11/06/26 | Sprint 8 |
| 427 | 1.2.9.13.1 | Emissão inicial | inactive | 2d | 2026-06-19 | 2026-06-22 | 417FS-1d | 2026-06-03 | 2026-06-05 | 3d | 2026-06-03 | 2026-06-05 | 17d | 0d |  | AUTOMAÇÃO E INSTRUMENTAÇÃO | Qua 03/06/26 | Sex 05/06/26 | Sprint 8 |
| 428 | 1.2.9.13.2 | Análise Tecnored | inactive | 1d | 2026-06-23 | 2026-06-23 | 427 | 2026-06-08 | 2026-06-08 | 1d | 2026-06-08 | 2026-06-08 | 19d | 0d |  | AUTOMAÇÃO E INSTRUMENTAÇÃO | Seg 08/06/26 | Seg 08/06/26 | Sprint 9 |
| 429 | 1.2.9.13.3 | Atendimento de comentários | inactive | 1d | 2026-06-24 | 2026-06-24 | 428 | 2026-06-09 | 2026-06-10 | 2d | 2026-06-09 | 2026-06-10 | 19d | 0d |  | AUTOMAÇÃO E INSTRUMENTAÇÃO | Ter 09/06/26 | Qua 10/06/26 | Sprint 9 |
| 430 | 1.2.9.13.4 | Aprovação | inactive | 1d | 2026-06-24 | 2026-06-24 | 429FF | 2026-06-11 | 2026-06-11 | 1d | 2026-06-11 | 2026-06-11 | 19d |  |  | AUTOMAÇÃO E INSTRUMENTAÇÃO | Qui 11/06/26 | Qui 11/06/26 | Sprint 9 |

| ID | WBS | Task | Type | Duration | Start | Finish | Predecessors | Complete | Remaining | Baseline start | Baseline finish | Baseline duration | Baseline 1 start | Baseline 1 finish | Total slack | Free slack | Constraint | Baseline cost | Disciplina | Início_LB_R0 | Término_LB_R0 | Sprints |
| --- | --- | --- | --- | --- | --- | --- | --- | --- | --- | --- | --- | --- | --- | --- | --- | --- | --- | --- | --- | --- | --- | --- |
| 431 | 1.2.10 | **Automação e instrumentação** |  | 29d | 2026-06-01 A | 2026-07-13 |  | 60% | 11.46d | 2026-05-20 | 2026-07-08 | 36d | 2026-05-20 | 2026-07-08 | 6d |  |  |  | AUTOMAÇÃO E INSTRUMENTAÇÃO | Qua 20/05/26 | Qua 08/07/26 | Sprint 6 |
| 432 | 1.2.10.1 | **CP-F0009-0305-MB-J-00001** | inactive | 9d | 2026-06-08 | 2026-06-18 |  |  |  |  |  |  |  |  | 23d |  |  | -0 |  |  |  | Sprint 7 |
| 433 | 1.2.10.1.1 | Emissão inicial | inactive | 5d | 2026-06-08 | 2026-06-12 | 21FS+5d, 8 |  |  |  |  |  |  |  | 23d | 0d |  | -0 |  |  |  | Sprint 7 |
| 434 | 1.2.10.1.2 | Análise Tecnored | inactive | 1d | 2026-06-15 | 2026-06-15 | 433 |  |  |  |  |  |  |  | 23d | 0d |  | -0 |  |  |  | Sprint 8 |
| 435 | 1.2.10.1.3 | Atendimento de comentários | inactive | 2d | 2026-06-16 | 2026-06-17 | 434 |  |  |  |  |  |  |  | 23d | 0d |  | -0 |  |  |  | Sprint 8 |
| 436 | 1.2.10.1.4 | Aprovação | inactive | 1d | 2026-06-18 | 2026-06-18 | 435 |  |  |  |  |  |  |  | 23d |  |  | -0 |  |  |  | Sprint 8 |
| 437 | 1.2.10.2 | **LI-F0009-0305-MB-J-00001** |  | 11d | 2026-06-15 A | 2026-06-29 |  | 50% | 5.5d | 2026-05-22 | 2026-06-01 | 7d | 2026-05-22 | 2026-06-01 | 9d | 0d |  |  | AUTOMAÇÃO E INSTRUMENTAÇÃO | Sex 22/05/26 | Seg 01/06/26 | Sprint 8 |
| 438 | 1.2.10.2.1 | Emissão inicial |  | 5d | 2026-06-15 A | 2026-06-20 | 473 | 90% | 0.5d | 2026-05-22 | 2026-05-26 | 3d | 2026-05-22 | 2026-05-26 | 11d | 0d | finish no earlier than 2026-06-20 |  | AUTOMAÇÃO E INSTRUMENTAÇÃO | Sex 22/05/26 | Ter 26/05/26 | Sprint 8 |
| 439 | 1.2.10.2.2 | Análise Tecnored |  | 1d | 2026-06-22 | 2026-06-22 | 438 |  |  | 2026-05-27 | 2026-05-27 | 1d | 2026-05-27 | 2026-05-27 | 11d | 0d |  |  | AUTOMAÇÃO E INSTRUMENTAÇÃO | Qua 27/05/26 | Qua 27/05/26 | Sprint 9 |
| 440 | 1.2.10.2.3 | Atendimento de comentários |  | 2d | 2026-06-23 | 2026-06-24 | 439 |  |  | 2026-05-28 | 2026-05-29 | 2d | 2026-05-28 | 2026-05-29 | 11d | 2d |  |  | AUTOMAÇÃO E INSTRUMENTAÇÃO | Qui 28/05/26 | Sex 29/05/26 | Sprint 9 |
| 441 | 1.2.10.2.4 | Aprovação |  | 1d | 2026-06-29 | 2026-06-29 | 440 |  |  | 2026-06-01 | 2026-06-01 | 1d | 2026-06-01 | 2026-06-01 | 9d |  | finish no earlier than 2026-06-29 |  | AUTOMAÇÃO E INSTRUMENTAÇÃO | Seg 01/06/26 | Seg 01/06/26 | Sprint 10 |
| 442 | 1.2.10.3 | **LE-F0009-0305-MB-J-00001** |  | 10d | 2026-06-24 | 2026-07-07 |  |  |  | 2026-06-23 | 2026-07-01 | 7d | 2026-06-23 | 2026-07-01 | 10d |  |  |  | AUTOMAÇÃO E INSTRUMENTAÇÃO | Ter 23/06/26 | Qua 01/07/26 | Sprint 9 |
| 443 | 1.2.10.3.1 | Emissão inicial |  | 4d | 2026-06-24 | 2026-06-29 |  |  |  | 2026-06-23 | 2026-06-25 | 3d | 2026-06-23 | 2026-06-25 | 12d | 2d | start no earlier than 2026-06-24 |  | AUTOMAÇÃO E INSTRUMENTAÇÃO | Ter 23/06/26 | Qui 25/06/26 | Sprint 9 |
| 444 | 1.2.10.3.2 | Análise Tecnored |  | 1d | 2026-07-02 | 2026-07-02 | 443 |  |  | 2026-06-26 | 2026-06-26 | 1d | 2026-06-26 | 2026-06-26 | 10d | 0d | start no earlier than 2026-07-02 |  | AUTOMAÇÃO E INSTRUMENTAÇÃO | Sex 26/06/26 | Sex 26/06/26 | Sprint 10 |
| 445 | 1.2.10.3.3 | Atendimento de comentários |  | 2d | 2026-07-03 | 2026-07-06 | 444 |  |  | 2026-06-29 | 2026-06-30 | 2d | 2026-06-29 | 2026-06-30 | 10d | 0d | start no earlier than 2026-07-03 |  | AUTOMAÇÃO E INSTRUMENTAÇÃO | Seg 29/06/26 | Ter 30/06/26 | Sprint 10 |
| 446 | 1.2.10.3.4 | Aprovação |  | 1d | 2026-07-07 | 2026-07-07 | 445 |  |  | 2026-07-01 | 2026-07-01 | 1d | 2026-07-01 | 2026-07-01 | 10d |  | start no earlier than 2026-07-07 |  | AUTOMAÇÃO E INSTRUMENTAÇÃO | Qua 01/07/26 | Qua 01/07/26 | Sprint 11 |
| 447 | 1.2.10.4 | **LL-F0009-0305-MB-J-00001** |  | 9d | 2026-06-25 | 2026-07-07 |  |  |  | 2026-06-15 | 2026-06-23 | 7d | 2026-06-15 | 2026-06-23 | 10d |  |  |  | AUTOMAÇÃO E INSTRUMENTAÇÃO | Seg 15/06/26 | Ter 23/06/26 | Sprint 9 |
| 448 | 1.2.10.4.1 | Emissão inicial |  | 4d | 2026-06-25 | 2026-06-30 | 503 |  |  | 2026-06-15 | 2026-06-17 | 3d | 2026-06-15 | 2026-06-17 | 11d | 1d | start no earlier than 2026-06-25 |  | AUTOMAÇÃO E INSTRUMENTAÇÃO | Seg 15/06/26 | Qua 17/06/26 | Sprint 9 |
| 449 | 1.2.10.4.2 | Análise Tecnored |  | 1d | 2026-07-02 | 2026-07-02 | 448 |  |  | 2026-06-18 | 2026-06-18 | 1d | 2026-06-18 | 2026-06-18 | 10d | 0d | start no earlier than 2026-07-02 |  | AUTOMAÇÃO E INSTRUMENTAÇÃO | Qui 18/06/26 | Qui 18/06/26 | Sprint 10 |
| 450 | 1.2.10.4.3 | Atendimento de comentários |  | 2d | 2026-07-03 | 2026-07-06 | 449 |  |  | 2026-06-19 | 2026-06-22 | 2d | 2026-06-19 | 2026-06-22 | 10d | 0d | start no earlier than 2026-07-03 |  | AUTOMAÇÃO E INSTRUMENTAÇÃO | Sex 19/06/26 | Seg 22/06/26 | Sprint 10 |
| 451 | 1.2.10.4.4 | Aprovação |  | 1d | 2026-07-07 | 2026-07-07 | 450 |  |  | 2026-06-23 | 2026-06-23 | 1d | 2026-06-23 | 2026-06-23 | 10d |  | start no earlier than 2026-07-07 |  | AUTOMAÇÃO E INSTRUMENTAÇÃO | Ter 23/06/26 | Ter 23/06/26 | Sprint 11 |
| 452 | 1.2.10.5 | **LZ-F0009-0305-MB-J-00001** | inactive | 8d | 2026-06-26 | 2026-07-07 |  |  |  | 2026-06-15 | 2026-06-23 | 7d | 2026-06-15 | 2026-06-23 | 10d |  |  |  | AUTOMAÇÃO E INSTRUMENTAÇÃO | Seg 15/06/26 | Ter 23/06/26 | Sprint 9 |
| 453 | 1.2.10.5.1 | Emissão inicial | inactive | 4d | 2026-06-26 | 2026-07-01 | 503 |  |  | 2026-06-15 | 2026-06-17 | 3d | 2026-06-15 | 2026-06-17 | 10d | 0d | finish no earlier than 2026-07-01 |  | AUTOMAÇÃO E INSTRUMENTAÇÃO | Seg 15/06/26 | Qua 17/06/26 | Sprint 9 |
| 454 | 1.2.10.5.2 | Análise Tecnored | inactive | 1d | 2026-07-02 | 2026-07-02 | 453 |  |  | 2026-06-18 | 2026-06-18 | 1d | 2026-06-18 | 2026-06-18 | 10d | 0d | start no earlier than 2026-07-02 |  | AUTOMAÇÃO E INSTRUMENTAÇÃO | Qui 18/06/26 | Qui 18/06/26 | Sprint 10 |
| 455 | 1.2.10.5.3 | Atendimento de comentários | inactive | 2d | 2026-07-03 | 2026-07-06 | 454 |  |  | 2026-06-19 | 2026-06-22 | 2d | 2026-06-19 | 2026-06-22 | 10d | 0d | start no earlier than 2026-07-03 |  | AUTOMAÇÃO E INSTRUMENTAÇÃO | Sex 19/06/26 | Seg 22/06/26 | Sprint 10 |
| 456 | 1.2.10.5.4 | Aprovação | inactive | 1d | 2026-07-07 | 2026-07-07 | 455 |  |  | 2026-06-23 | 2026-06-23 | 1d | 2026-06-23 | 2026-06-23 | 10d |  | start no earlier than 2026-07-07 |  | AUTOMAÇÃO E INSTRUMENTAÇÃO | Ter 23/06/26 | Ter 23/06/26 | Sprint 11 |

| ID | WBS | Task | Type | Duration | Start | Finish | Predecessors | Complete | Remaining | Baseline start | Baseline finish | Baseline duration | Baseline 1 start | Baseline 1 finish | Total slack | Free slack | Constraint | Disciplina | Início_LB_R0 | Término_LB_R0 | Sprints |
| --- | --- | --- | --- | --- | --- | --- | --- | --- | --- | --- | --- | --- | --- | --- | --- | --- | --- | --- | --- | --- | --- |
| 457 | 1.2.10.6 | **LE-F0009-0305-MB-J-00002** | inactive | 8d | 2026-06-26 | 2026-07-07 |  |  |  | 2026-06-23 | 2026-07-01 | 7d | 2026-06-23 | 2026-07-01 | 10d |  |  | AUTOMAÇÃO E INSTRUMENTAÇÃO | Ter 23/06/26 | Qua 01/07/26 | Sprint 9 |
| 458 | 1.2.10.6.1 | Emissão inicial | inactive | 4d | 2026-06-26 | 2026-07-01 |  |  |  | 2026-06-23 | 2026-06-25 | 3d | 2026-06-23 | 2026-06-25 | 10d | 0d | finish no earlier than 2026-07-01 | AUTOMAÇÃO E INSTRUMENTAÇÃO | Ter 23/06/26 | Qui 25/06/26 | Sprint 9 |
| 459 | 1.2.10.6.2 | Análise Tecnored | inactive | 1d | 2026-07-02 | 2026-07-02 | 458 |  |  | 2026-06-26 | 2026-06-26 | 1d | 2026-06-26 | 2026-06-26 | 10d | 0d | start no earlier than 2026-07-02 | AUTOMAÇÃO E INSTRUMENTAÇÃO | Sex 26/06/26 | Sex 26/06/26 | Sprint 10 |
| 460 | 1.2.10.6.3 | Atendimento de comentários | inactive | 2d | 2026-07-03 | 2026-07-06 | 459 |  |  | 2026-06-29 | 2026-06-30 | 2d | 2026-06-29 | 2026-06-30 | 10d | 0d | start no earlier than 2026-07-03 | AUTOMAÇÃO E INSTRUMENTAÇÃO | Seg 29/06/26 | Ter 30/06/26 | Sprint 10 |
| 461 | 1.2.10.6.4 | Aprovação | inactive | 1d | 2026-07-07 | 2026-07-07 | 460 |  |  | 2026-07-01 | 2026-07-01 | 1d | 2026-07-01 | 2026-07-01 | 10d |  | start no earlier than 2026-07-07 | AUTOMAÇÃO E INSTRUMENTAÇÃO | Qua 01/07/26 | Qua 01/07/26 | Sprint 11 |
| 462 | 1.2.10.7 | **PQ-F0009-0305-MB-J-00001** |  | 8d | 2026-07-02 | 2026-07-13 |  |  |  | 2026-07-02 | 2026-07-08 | 5d | 2026-07-02 | 2026-07-08 | 6d |  |  | AUTOMAÇÃO E INSTRUMENTAÇÃO | Qui 02/07/26 | Qua 08/07/26 | Sprint 10 |
| 463 | 1.2.10.7.1 | Emissão inicial |  | 5d | 2026-07-02 | 2026-07-08 | 518FS-9d |  |  | 2026-07-02 | 2026-07-02 | 1d | 2026-07-02 | 2026-07-02 | 6d | 0d | start no earlier than 2026-07-02 | AUTOMAÇÃO E INSTRUMENTAÇÃO | Qui 02/07/26 | Qui 02/07/26 | Sprint 10 |
| 464 | 1.2.10.7.2 | Análise Tecnored |  | 1d | 2026-07-09 | 2026-07-09 | 463 |  |  | 2026-07-03 | 2026-07-03 | 1d | 2026-07-03 | 2026-07-03 | 6d | 0d |  | AUTOMAÇÃO E INSTRUMENTAÇÃO | Sex 03/07/26 | Sex 03/07/26 | Sprint 11 |
| 465 | 1.2.10.7.3 | Atendimento de comentários |  | 1d | 2026-07-10 | 2026-07-10 | 464 |  |  | 2026-07-06 | 2026-07-07 | 2d | 2026-07-06 | 2026-07-07 | 6d | 0d |  | AUTOMAÇÃO E INSTRUMENTAÇÃO | Seg 06/07/26 | Ter 07/07/26 | Sprint 11 |
| 466 | 1.2.10.7.4 | Aprovação |  | 1d | 2026-07-13 | 2026-07-13 | 465 |  |  | 2026-07-08 | 2026-07-08 | 1d | 2026-07-08 | 2026-07-08 | 6d |  |  | AUTOMAÇÃO E INSTRUMENTAÇÃO | Qua 08/07/26 | Qua 08/07/26 | Sprint 12 |
| 467 | 1.2.10.8 | **FG-F0009-0305-MB-J-00001** |  | 12d | 2026-06-01 A | 2026-06-18 |  | 80% | 2.4d | 2026-05-20 | 2026-05-27 | 6d | 2026-05-20 | 2026-05-27 | 23d |  |  | AUTOMAÇÃO E INSTRUMENTAÇÃO | Qua 20/05/26 | Qua 27/05/26 | Sprint 6 |
| 468 | 1.2.10.8.1 | Emissão inicial |  | 6d | 2026-06-01 A | 2026-06-12 A | 63FS+10d | 100% |  | 2026-05-20 | 2026-05-21 | 2d | 2026-05-20 | 2026-05-21 |  |  | finish no earlier than 2026-06-12 | AUTOMAÇÃO E INSTRUMENTAÇÃO | Qua 20/05/26 | Qui 21/05/26 | Sprint 6 |
| 469 | 1.2.10.8.2 | Análise Tecnored |  | 1d | 2026-06-15 A | 2026-06-15 A | 468 | 100% |  | 2026-05-22 | 2026-05-22 | 1d | 2026-05-22 | 2026-05-22 |  |  |  | AUTOMAÇÃO E INSTRUMENTAÇÃO | Sex 22/05/26 | Sex 22/05/26 | Sprint 8 |
| 470 | 1.2.10.8.3 | Atendimento de comentários |  | 2d | 2026-06-16 A | 2026-06-17 | 469 | 50% | 1d | 2026-05-25 | 2026-05-26 | 2d | 2026-05-25 | 2026-05-26 | 23d | 0d |  | AUTOMAÇÃO E INSTRUMENTAÇÃO | Seg 25/05/26 | Ter 26/05/26 | Sprint 8 |
| 471 | 1.2.10.8.4 | Aprovação |  | 1d | 2026-06-18 | 2026-06-18 | 470 |  |  | 2026-05-27 | 2026-05-27 | 1d | 2026-05-27 | 2026-05-27 | 23d |  |  | AUTOMAÇÃO E INSTRUMENTAÇÃO | Qua 27/05/26 | Qua 27/05/26 | Sprint 8 |
| 472 | 1.2.10.9 | **FG-F0009-0305-MB-J-00002** |  | 10d | 2026-06-03 A | 2026-06-18 |  | 80% | 2d | 2026-05-20 | 2026-05-27 | 6d | 2026-05-20 | 2026-05-27 | 23d |  |  | AUTOMAÇÃO E INSTRUMENTAÇÃO | Qua 20/05/26 | Qua 27/05/26 | Sprint 6 |
| 473 | 1.2.10.9.1 | Emissão inicial |  | 6d | 2026-06-03 A | 2026-06-12 A | 63FS+10d | 100% |  | 2026-05-20 | 2026-05-21 | 2d | 2026-05-20 | 2026-05-21 |  |  | start no earlier than 2026-06-01 | AUTOMAÇÃO E INSTRUMENTAÇÃO | Qua 20/05/26 | Qui 21/05/26 | Sprint 6 |
| 474 | 1.2.10.9.2 | Análise Tecnored |  | 1d | 2026-06-15 A | 2026-06-15 A | 473 | 100% |  | 2026-05-22 | 2026-05-22 | 1d | 2026-05-22 | 2026-05-22 |  |  |  | AUTOMAÇÃO E INSTRUMENTAÇÃO | Sex 22/05/26 | Sex 22/05/26 | Sprint 8 |
| 475 | 1.2.10.9.3 | Atendimento de comentários |  | 2d | 2026-06-16 A | 2026-06-17 | 474 | 50% | 1d | 2026-05-25 | 2026-05-26 | 2d | 2026-05-25 | 2026-05-26 | 23d | 0d |  | AUTOMAÇÃO E INSTRUMENTAÇÃO | Seg 25/05/26 | Ter 26/05/26 | Sprint 8 |
| 476 | 1.2.10.9.4 | Aprovação |  | 1d | 2026-06-18 | 2026-06-18 | 475 |  |  | 2026-05-27 | 2026-05-27 | 1d | 2026-05-27 | 2026-05-27 | 23d |  |  | AUTOMAÇÃO E INSTRUMENTAÇÃO | Qua 27/05/26 | Qua 27/05/26 | Sprint 8 |
| 477 | 1.2.10.10 | **FG-F0009-0305-MB-J-00003** |  | 10d | 2026-06-03 A | 2026-06-18 |  | 80% | 2d | 2026-05-20 | 2026-05-27 | 6d | 2026-05-20 | 2026-05-27 | 23d |  |  | AUTOMAÇÃO E INSTRUMENTAÇÃO | Qua 20/05/26 | Qua 27/05/26 | Sprint 6 |
| 478 | 1.2.10.10.1 | Emissão inicial |  | 6d | 2026-06-03 A | 2026-06-12 A | 63FS+10d | 100% |  | 2026-05-20 | 2026-05-21 | 2d | 2026-05-20 | 2026-05-21 |  |  | finish no earlier than 2026-06-12 | AUTOMAÇÃO E INSTRUMENTAÇÃO | Qua 20/05/26 | Qui 21/05/26 | Sprint 6 |
| 479 | 1.2.10.10.2 | Análise Tecnored |  | 1d | 2026-06-15 A | 2026-06-15 A | 478 | 100% |  | 2026-05-22 | 2026-05-22 | 1d | 2026-05-22 | 2026-05-22 |  |  |  | AUTOMAÇÃO E INSTRUMENTAÇÃO | Sex 22/05/26 | Sex 22/05/26 | Sprint 8 |
| 480 | 1.2.10.10.3 | Atendimento de comentários |  | 2d | 2026-06-16 A | 2026-06-17 | 479 | 50% | 1d | 2026-05-25 | 2026-05-26 | 2d | 2026-05-25 | 2026-05-26 | 23d | 0d |  | AUTOMAÇÃO E INSTRUMENTAÇÃO | Seg 25/05/26 | Ter 26/05/26 | Sprint 8 |
| 481 | 1.2.10.10.4 | Aprovação |  | 1d | 2026-06-18 | 2026-06-18 | 480 |  |  | 2026-05-27 | 2026-05-27 | 1d | 2026-05-27 | 2026-05-27 | 23d |  |  | AUTOMAÇÃO E INSTRUMENTAÇÃO | Qua 27/05/26 | Qua 27/05/26 | Sprint 8 |

| ID | WBS | Task | Duration | Start | Finish | Predecessors | Complete | Remaining | Baseline start | Baseline finish | Baseline duration | Baseline 1 start | Baseline 1 finish | Total slack | Free slack | Constraint | Disciplina | Início_LB_R0 | Término_LB_R0 | Sprints |
| --- | --- | --- | --- | --- | --- | --- | --- | --- | --- | --- | --- | --- | --- | --- | --- | --- | --- | --- | --- | --- |
| 482 | 1.2.10.11 | **AG-F0009-0305-MB-J-00001** | 10d | 2026-06-22 A | 2026-07-03 |  | 56% | 4.38d | 2026-05-27 | 2026-06-15 | 14d | 2026-05-27 | 2026-06-15 | 12d |  |  | AUTOMAÇÃO E INSTRUMENTAÇÃO | Qua 27/05/26 | Seg 15/06/26 | Sprint 9 |
| 483 | 1.2.10.11.1 | Emissão inicial | 4d | 2026-06-22 A | 2026-06-25 A | 438 | 100% |  | 2026-05-27 | 2026-06-09 | 10d | 2026-05-27 | 2026-06-09 |  |  | start no earlier than 2026-06-24 | AUTOMAÇÃO E INSTRUMENTAÇÃO | Qua 27/05/26 | Ter 09/06/26 | Sprint 9 |
| 484 | 1.2.10.11.2 | Análise Tecnored | 1d | 2026-06-26 A | 2026-06-26 | 483 | 50% | 0.5d | 2026-06-10 | 2026-06-10 | 1d | 2026-06-10 | 2026-06-10 | 14d | 0d |  | AUTOMAÇÃO E INSTRUMENTAÇÃO | Qua 10/06/26 | Qua 10/06/26 | Sprint 9 |
| 485 | 1.2.10.11.3 | Atendimento de comentários | 2d | 2026-06-29 | 2026-06-30 | 484 |  |  | 2026-06-11 | 2026-06-12 | 2d | 2026-06-11 | 2026-06-12 | 14d | 2d |  | AUTOMAÇÃO E INSTRUMENTAÇÃO | Qui 11/06/26 | Sex 12/06/26 | Sprint 10 |
| 486 | 1.2.10.11.4 | Aprovação | 1d | 2026-07-03 | 2026-07-03 | 485 |  |  | 2026-06-15 | 2026-06-15 | 1d | 2026-06-15 | 2026-06-15 | 12d |  | finish no earlier than 2026-07-03 | AUTOMAÇÃO E INSTRUMENTAÇÃO | Seg 15/06/26 | Seg 15/06/26 | Sprint 10 |
| 487 | 1.2.10.12 | **AG-F0009-0305-MB-J-00002** | 10d | 2026-06-19 A | 2026-07-02 |  | 56% | 4.38d | 2026-05-27 | 2026-06-15 | 14d | 2026-05-27 | 2026-06-15 | 13d |  |  | AUTOMAÇÃO E INSTRUMENTAÇÃO | Qua 27/05/26 | Seg 15/06/26 | Sprint 8 |
| 488 | 1.2.10.12.1 | Emissão inicial | 4d | 2026-06-19 A | 2026-06-24 A | 438 | 100% |  | 2026-05-27 | 2026-06-09 | 10d | 2026-05-27 | 2026-06-09 |  |  | finish no earlier than 2026-06-24 | AUTOMAÇÃO E INSTRUMENTAÇÃO | Qua 27/05/26 | Ter 09/06/26 | Sprint 8 |
| 489 | 1.2.10.12.2 | Análise Tecnored | 1d | 2026-06-25 A | 2026-06-25 | 488 | 50% | 0.5d | 2026-06-10 | 2026-06-10 | 1d | 2026-06-10 | 2026-06-10 | 15d | 0d |  | AUTOMAÇÃO E INSTRUMENTAÇÃO | Qua 10/06/26 | Qua 10/06/26 | Sprint 9 |
| 490 | 1.2.10.12.3 | Atendimento de comentários | 2d | 2026-06-26 | 2026-06-29 | 489 |  |  | 2026-06-11 | 2026-06-12 | 2d | 2026-06-11 | 2026-06-12 | 15d | 2d |  | AUTOMAÇÃO E INSTRUMENTAÇÃO | Qui 11/06/26 | Sex 12/06/26 | Sprint 9 |
| 491 | 1.2.10.12.4 | Aprovação | 1d | 2026-07-02 | 2026-07-02 | 490 |  |  | 2026-06-15 | 2026-06-15 | 1d | 2026-06-15 | 2026-06-15 | 13d |  | finish no earlier than 2026-07-02 | AUTOMAÇÃO E INSTRUMENTAÇÃO | Seg 15/06/26 | Seg 15/06/26 | Sprint 10 |
| 492 | 1.2.10.13 | **AG-F0009-0305-MB-J-00003** | 7d | 2026-06-24 A | 2026-07-02 |  | 50% | 3.5d | 2026-05-27 | 2026-06-15 | 14d | 2026-05-27 | 2026-06-15 | 13d |  |  | AUTOMAÇÃO E INSTRUMENTAÇÃO | Qua 27/05/26 | Seg 15/06/26 | Sprint 9 |
| 493 | 1.2.10.13.1 | Emissão inicial | 3d | 2026-06-24 A | 2026-06-26 A | 438 | 100% |  | 2026-05-27 | 2026-06-09 | 10d | 2026-05-27 | 2026-06-09 |  |  | start no earlier than 2026-06-24 | AUTOMAÇÃO E INSTRUMENTAÇÃO | Qua 27/05/26 | Ter 09/06/26 | Sprint 9 |
| 494 | 1.2.10.13.2 | Análise Tecnored | 1d | 2026-06-29 A | 2026-06-29 | 493 | 50% | 0.5d | 2026-06-10 | 2026-06-10 | 1d | 2026-06-10 | 2026-06-10 | 13d | 0d |  | AUTOMAÇÃO E INSTRUMENTAÇÃO | Qua 10/06/26 | Qua 10/06/26 | Sprint 10 |
| 495 | 1.2.10.13.3 | Atendimento de comentários | 2d | 2026-06-30 | 2026-07-01 | 494 |  |  | 2026-06-11 | 2026-06-12 | 2d | 2026-06-11 | 2026-06-12 | 13d | 0d |  | AUTOMAÇÃO E INSTRUMENTAÇÃO | Qui 11/06/26 | Sex 12/06/26 | Sprint 10 |
| 496 | 1.2.10.13.4 | Aprovação | 1d | 2026-07-02 | 2026-07-02 | 495 |  |  | 2026-06-15 | 2026-06-15 | 1d | 2026-06-15 | 2026-06-15 | 13d |  |  | AUTOMAÇÃO E INSTRUMENTAÇÃO | Seg 15/06/26 | Seg 15/06/26 | Sprint 10 |
| 497 | 1.2.10.14 | **AG-F0009-0305-MB-J-00004** | 8d | 2026-06-19 A | 2026-06-30 |  | 56% | 3.5d | 2026-05-27 | 2026-06-15 | 14d | 2026-05-27 | 2026-06-15 | 15d |  |  | AUTOMAÇÃO E INSTRUMENTAÇÃO | Qua 27/05/26 | Seg 15/06/26 | Sprint 8 |
| 498 | 1.2.10.14.1 | Emissão inicial | 4d | 2026-06-19 A | 2026-06-24 A | 438 | 100% |  | 2026-05-27 | 2026-06-09 | 10d | 2026-05-27 | 2026-06-09 |  |  | finish no earlier than 2026-06-24 | AUTOMAÇÃO E INSTRUMENTAÇÃO | Qua 27/05/26 | Ter 09/06/26 | Sprint 8 |
| 499 | 1.2.10.14.2 | Análise Tecnored | 1d | 2026-06-25 A | 2026-06-25 | 498 | 50% | 0.5d | 2026-06-10 | 2026-06-10 | 1d | 2026-06-10 | 2026-06-10 | 15d | 0d |  | AUTOMAÇÃO E INSTRUMENTAÇÃO | Qua 10/06/26 | Qua 10/06/26 | Sprint 9 |
| 500 | 1.2.10.14.3 | Atendimento de comentários | 2d | 2026-06-26 | 2026-06-29 | 499 |  |  | 2026-06-11 | 2026-06-12 | 2d | 2026-06-11 | 2026-06-12 | 15d | 0d |  | AUTOMAÇÃO E INSTRUMENTAÇÃO | Qui 11/06/26 | Sex 12/06/26 | Sprint 9 |
| 501 | 1.2.10.14.4 | Aprovação | 1d | 2026-06-30 | 2026-06-30 | 500 |  |  | 2026-06-15 | 2026-06-15 | 1d | 2026-06-15 | 2026-06-15 | 15d |  |  | AUTOMAÇÃO E INSTRUMENTAÇÃO | Seg 15/06/26 | Seg 15/06/26 | Sprint 10 |
| 502 | 1.2.10.15 | **DI-F0009-0305-MB-J-00001** | 8d | 2026-06-17 A | 2026-06-26 |  | 25% | 6d | 2026-06-10 | 2026-06-18 | 7d | 2026-06-10 | 2026-06-18 | 17d |  |  | AUTOMAÇÃO E INSTRUMENTAÇÃO | Qua 10/06/26 | Qui 18/06/26 | Sprint 8 |
| 503 | 1.2.10.15.1 | Emissão inicial | 4d | 2026-06-17 A | 2026-06-22 |  | 50% | 2d | 2026-06-10 | 2026-06-12 | 3d | 2026-06-10 | 2026-06-12 | 13d | 0d | start no earlier than 2026-06-17 | AUTOMAÇÃO E INSTRUMENTAÇÃO | Qua 10/06/26 | Sex 12/06/26 | Sprint 8 |
| 504 | 1.2.10.15.2 | Análise Tecnored | 1d | 2026-06-23 | 2026-06-23 | 503 |  |  | 2026-06-15 | 2026-06-15 | 1d | 2026-06-15 | 2026-06-15 | 17d | 0d |  | AUTOMAÇÃO E INSTRUMENTAÇÃO | Seg 15/06/26 | Seg 15/06/26 | Sprint 9 |
| 505 | 1.2.10.15.3 | Atendimento de comentários | 2d | 2026-06-24 | 2026-06-25 | 504 |  |  | 2026-06-16 | 2026-06-17 | 2d | 2026-06-16 | 2026-06-17 | 17d | 0d |  | AUTOMAÇÃO E INSTRUMENTAÇÃO | Ter 16/06/26 | Qua 17/06/26 | Sprint 9 |
| 506 | 1.2.10.15.4 | Aprovação | 1d | 2026-06-26 | 2026-06-26 | 505 |  |  | 2026-06-18 | 2026-06-18 | 1d | 2026-06-18 | 2026-06-18 | 17d |  |  | AUTOMAÇÃO E INSTRUMENTAÇÃO | Qui 18/06/26 | Qui 18/06/26 | Sprint 9 |

| ID | WBS | Task | Type | Duration | Start | Finish | Predecessors | Complete | Remaining | Baseline start | Baseline finish | Baseline duration | Baseline 1 start | Baseline 1 finish | Total slack | Free slack | Constraint | Disciplina | Início_LB_R0 | Término_LB_R0 | Sprints |
| --- | --- | --- | --- | --- | --- | --- | --- | --- | --- | --- | --- | --- | --- | --- | --- | --- | --- | --- | --- | --- | --- |
| 507 | 1.2.10.16 | **LI-F0009-0305-MB-J-00002** | inactive | 9d | 2026-06-17 | 2026-06-29 |  |  |  | 2026-06-23 | 2026-07-01 | 7d | 2026-06-23 | 2026-07-01 | 16d |  |  | AUTOMAÇÃO E INSTRUMENTAÇÃO | Ter 23/06/26 | Qua 01/07/26 | Sprint 8 |
| 508 | 1.2.10.16.1 | Emissão inicial | inactive | 5d | 2026-06-17 | 2026-06-23 |  |  |  | 2026-06-23 | 2026-06-25 | 3d | 2026-06-23 | 2026-06-25 | 16d | 0d | start no earlier than 2026-06-17 | AUTOMAÇÃO E INSTRUMENTAÇÃO | Ter 23/06/26 | Qui 25/06/26 | Sprint 8 |
| 509 | 1.2.10.16.2 | Análise Tecnored | inactive | 1d | 2026-06-24 | 2026-06-24 | 508 |  |  | 2026-06-26 | 2026-06-26 | 1d | 2026-06-26 | 2026-06-26 | 16d | 0d |  | AUTOMAÇÃO E INSTRUMENTAÇÃO | Sex 26/06/26 | Sex 26/06/26 | Sprint 9 |
| 510 | 1.2.10.16.3 | Atendimento de comentários | inactive | 2d | 2026-06-25 | 2026-06-26 | 509 |  |  | 2026-06-29 | 2026-06-30 | 2d | 2026-06-29 | 2026-06-30 | 16d | 0d |  | AUTOMAÇÃO E INSTRUMENTAÇÃO | Seg 29/06/26 | Ter 30/06/26 | Sprint 9 |
| 511 | 1.2.10.16.4 | Aprovação | inactive | 1d | 2026-06-29 | 2026-06-29 | 510 |  |  | 2026-07-01 | 2026-07-01 | 1d | 2026-07-01 | 2026-07-01 | 16d |  |  | AUTOMAÇÃO E INSTRUMENTAÇÃO | Qua 01/07/26 | Qua 01/07/26 | Sprint 10 |
| 512 | 1.2.10.17 | **LI-F0009-0305-MB-J-00003** | inactive | 9d | 2026-06-17 | 2026-06-29 |  |  |  | 2026-06-23 | 2026-07-01 | 7d | 2026-06-23 | 2026-07-01 | 13d |  |  | AUTOMAÇÃO E INSTRUMENTAÇÃO | Ter 23/06/26 | Qua 01/07/26 | Sprint 8 |
| 513 | 1.2.10.17.1 | Emissão inicial | inactive | 5d | 2026-06-17 | 2026-06-23 |  |  |  | 2026-06-23 | 2026-06-25 | 3d | 2026-06-23 | 2026-06-25 | 13d | 0d | start no earlier than 2026-06-17 | AUTOMAÇÃO E INSTRUMENTAÇÃO | Ter 23/06/26 | Qui 25/06/26 | Sprint 8 |
| 514 | 1.2.10.17.2 | Análise Tecnored | inactive | 1d | 2026-06-24 | 2026-06-24 | 513 |  |  | 2026-06-26 | 2026-06-26 | 1d | 2026-06-26 | 2026-06-26 | 16d | 0d |  | AUTOMAÇÃO E INSTRUMENTAÇÃO | Sex 26/06/26 | Sex 26/06/26 | Sprint 9 |
| 515 | 1.2.10.17.3 | Atendimento de comentários | inactive | 2d | 2026-06-25 | 2026-06-26 | 514 |  |  | 2026-06-29 | 2026-06-30 | 2d | 2026-06-29 | 2026-06-30 | 16d | 0d |  | AUTOMAÇÃO E INSTRUMENTAÇÃO | Seg 29/06/26 | Ter 30/06/26 | Sprint 9 |
| 516 | 1.2.10.17.4 | Aprovação | inactive | 1d | 2026-06-29 | 2026-06-29 | 515 |  |  | 2026-07-01 | 2026-07-01 | 1d | 2026-07-01 | 2026-07-01 | 16d |  |  | AUTOMAÇÃO E INSTRUMENTAÇÃO | Qua 01/07/26 | Qua 01/07/26 | Sprint 10 |
| 517 | 1.2.10.18 | **LM-F0009-0305-MB-J-00001** |  | 7d | 2026-06-30 | 2026-07-08 |  |  |  | 2026-07-01 | 2026-07-07 | 5d | 2026-07-01 | 2026-07-07 | 9d |  |  | AUTOMAÇÃO E INSTRUMENTAÇÃO | Qua 01/07/26 | Ter 07/07/26 | Sprint 10 |
| 518 | 1.2.10.18.1 | Emissão inicial |  | 4d | 2026-06-30 | 2026-07-03 | 658FS-7d, 653FS-7d, 437 |  |  | 2026-07-01 | 2026-07-01 | 1d | 2026-07-01 | 2026-07-01 | 9d | 0d | start no earlier than 2026-06-26 | AUTOMAÇÃO E INSTRUMENTAÇÃO | Qua 01/07/26 | Qua 01/07/26 | Sprint 10 |
| 519 | 1.2.10.18.2 | Análise Tecnored |  | 1d | 2026-07-06 | 2026-07-06 | 518 |  |  | 2026-07-02 | 2026-07-02 | 1d | 2026-07-02 | 2026-07-02 | 9d | 0d |  | AUTOMAÇÃO E INSTRUMENTAÇÃO | Qui 02/07/26 | Qui 02/07/26 | Sprint 11 |
| 520 | 1.2.10.18.3 | Atendimento de comentários |  | 1d | 2026-07-07 | 2026-07-07 | 519 |  |  | 2026-07-03 | 2026-07-06 | 2d | 2026-07-03 | 2026-07-06 | 9d | 0d |  | AUTOMAÇÃO E INSTRUMENTAÇÃO | Sex 03/07/26 | Seg 06/07/26 | Sprint 11 |
| 521 | 1.2.10.18.4 | Aprovação |  | 1d | 2026-07-08 | 2026-07-08 | 520 |  |  | 2026-07-07 | 2026-07-07 | 1d | 2026-07-07 | 2026-07-07 | 9d |  |  | AUTOMAÇÃO E INSTRUMENTAÇÃO | Ter 07/07/26 | Ter 07/07/26 | Sprint 11 |
| 522 | 1.2.10.19 | **ET-F0009-0305-MB-J-00001** |  | 7d | 2026-07-01 | 2026-07-09 |  |  |  | 2026-06-18 | 2026-06-26 | 7d | 2026-06-18 | 2026-06-26 | 8d |  |  | AUTOMAÇÃO E INSTRUMENTAÇÃO | Qui 18/06/26 | Sex 26/06/26 | Sprint 10 |
| 523 | 1.2.10.19.1 | Emissão inicial |  | 3d | 2026-07-01 | 2026-07-03 | 453SS, 448SS |  |  | 2026-06-18 | 2026-06-22 | 3d | 2026-06-18 | 2026-06-22 | 8d | 0d | start no earlier than 2026-07-01 | AUTOMAÇÃO E INSTRUMENTAÇÃO | Qui 18/06/26 | Seg 22/06/26 | Sprint 10 |
| 524 | 1.2.10.19.2 | Análise Tecnored |  | 1d | 2026-07-06 | 2026-07-06 | 523 |  |  | 2026-06-23 | 2026-06-23 | 1d | 2026-06-23 | 2026-06-23 | 8d | 0d |  | AUTOMAÇÃO E INSTRUMENTAÇÃO | Ter 23/06/26 | Ter 23/06/26 | Sprint 11 |
| 525 | 1.2.10.19.3 | Atendimento de comentários |  | 2d | 2026-07-07 | 2026-07-08 | 524 |  |  | 2026-06-24 | 2026-06-25 | 2d | 2026-06-24 | 2026-06-25 | 8d | 0d |  | AUTOMAÇÃO E INSTRUMENTAÇÃO | Qua 24/06/26 | Qui 25/06/26 | Sprint 11 |
| 526 | 1.2.10.19.4 | Aprovação |  | 1d | 2026-07-09 | 2026-07-09 | 525 |  |  | 2026-06-26 | 2026-06-26 | 1d | 2026-06-26 | 2026-06-26 | 8d |  |  | AUTOMAÇÃO E INSTRUMENTAÇÃO | Sex 26/06/26 | Sex 26/06/26 | Sprint 11 |
| 527 | 1.2.10.20 | **FD-F0009-0305-MB-J-00001** |  | 10d | 2026-06-15 A | 2026-06-26 |  | 75% | 2.5d | 2026-06-18 | 2026-07-07 | 14d | 2026-06-18 | 2026-07-07 | 17d |  |  | AUTOMAÇÃO E INSTRUMENTAÇÃO | Qui 18/06/26 | Ter 07/07/26 | Sprint 8 |
| 528 | 1.2.10.20.1 | Emissão inicial |  | 7d | 2026-06-15 A | 2026-06-23 A |  | 100% |  | 2026-06-18 | 2026-07-01 | 10d | 2026-06-18 | 2026-07-01 |  |  | finish no earlier than 2026-06-23 | AUTOMAÇÃO E INSTRUMENTAÇÃO | Qui 18/06/26 | Qua 01/07/26 | Sprint 8 |
| 529 | 1.2.10.20.2 | Análise Tecnored |  | 1d | 2026-06-24 A | 2026-06-24 | 528 | 50% | 0.5d | 2026-07-02 | 2026-07-02 | 1d | 2026-07-02 | 2026-07-02 | 17d | 0d |  | AUTOMAÇÃO E INSTRUMENTAÇÃO | Qui 02/07/26 | Qui 02/07/26 | Sprint 9 |
| 530 | 1.2.10.20.3 | Atendimento de comentários |  | 1d | 2026-06-25 | 2026-06-25 | 529 |  |  | 2026-07-03 | 2026-07-06 | 2d | 2026-07-03 | 2026-07-06 | 17d | 0d |  | AUTOMAÇÃO E INSTRUMENTAÇÃO | Sex 03/07/26 | Seg 06/07/26 | Sprint 9 |
| 531 | 1.2.10.20.4 | Aprovação |  | 1d | 2026-06-26 | 2026-06-26 | 530 |  |  | 2026-07-07 | 2026-07-07 | 1d | 2026-07-07 | 2026-07-07 | 17d |  |  | AUTOMAÇÃO E INSTRUMENTAÇÃO | Ter 07/07/26 | Ter 07/07/26 | Sprint 9 |

| ID | WBS | Task | Duration | Start | Finish | Predecessors | Complete | Remaining | Baseline start | Baseline finish | Baseline duration | Baseline 1 start | Baseline 1 finish | Total slack | Free slack | Constraint | Disciplina | Início_LB_R0 | Término_LB_R0 | Sprints |
| --- | --- | --- | --- | --- | --- | --- | --- | --- | --- | --- | --- | --- | --- | --- | --- | --- | --- | --- | --- | --- |
| 532 | 1.2.10.21 | **FD-F0009-0305-MB-J-00002** | 10d | 2026-06-16 A | 2026-06-29 |  | 75% | 2.5d | 2026-06-18 | 2026-07-07 | 14d | 2026-06-18 | 2026-07-07 | 16d |  |  | AUTOMAÇÃO E INSTRUMENTAÇÃO | Qui 18/06/26 | Ter 07/07/26 | Sprint 8 |
| 533 | 1.2.10.21.1 | Emissão inicial | 7d | 2026-06-16 A | 2026-06-24 A | 528SS | 100% |  | 2026-06-18 | 2026-07-01 | 10d | 2026-06-18 | 2026-07-01 |  |  |  | AUTOMAÇÃO E INSTRUMENTAÇÃO | Qui 18/06/26 | Qua 01/07/26 | Sprint 8 |
| 534 | 1.2.10.21.2 | Análise Tecnored | 1d | 2026-06-25 A | 2026-06-25 | 533 | 50% | 0.5d | 2026-07-02 | 2026-07-02 | 1d | 2026-07-02 | 2026-07-02 | 16d | 0d |  | AUTOMAÇÃO E INSTRUMENTAÇÃO | Qui 02/07/26 | Qui 02/07/26 | Sprint 9 |
| 535 | 1.2.10.21.3 | Atendimento de comentários | 1d | 2026-06-26 | 2026-06-26 | 534 |  |  | 2026-07-03 | 2026-07-06 | 2d | 2026-07-03 | 2026-07-06 | 16d | 0d |  | AUTOMAÇÃO E INSTRUMENTAÇÃO | Sex 03/07/26 | Seg 06/07/26 | Sprint 9 |
| 536 | 1.2.10.21.4 | Aprovação | 1d | 2026-06-29 | 2026-06-29 | 535 |  |  | 2026-07-07 | 2026-07-07 | 1d | 2026-07-07 | 2026-07-07 | 16d |  |  | AUTOMAÇÃO E INSTRUMENTAÇÃO | Ter 07/07/26 | Ter 07/07/26 | Sprint 10 |
| 537 | 1.2.10.22 | **FD-F0009-0305-MB-J-00003** | 10d | 2026-06-16 A | 2026-06-29 |  | 75% | 2.5d | 2026-06-18 | 2026-07-07 | 14d | 2026-06-18 | 2026-07-07 | 16d |  |  | AUTOMAÇÃO E INSTRUMENTAÇÃO | Qui 18/06/26 | Ter 07/07/26 | Sprint 8 |
| 538 | 1.2.10.22.1 | Emissão inicial | 7d | 2026-06-16 A | 2026-06-24 A | 528SS | 100% |  | 2026-06-18 | 2026-07-01 | 10d | 2026-06-18 | 2026-07-01 |  |  |  | AUTOMAÇÃO E INSTRUMENTAÇÃO | Qui 18/06/26 | Qua 01/07/26 | Sprint 8 |
| 539 | 1.2.10.22.2 | Análise Tecnored | 1d | 2026-06-25 A | 2026-06-25 | 538 | 50% | 0.5d | 2026-07-02 | 2026-07-02 | 1d | 2026-07-02 | 2026-07-02 | 16d | 0d |  | AUTOMAÇÃO E INSTRUMENTAÇÃO | Qui 02/07/26 | Qui 02/07/26 | Sprint 9 |
| 540 | 1.2.10.22.3 | Atendimento de comentários | 1d | 2026-06-26 | 2026-06-26 | 539 |  |  | 2026-07-03 | 2026-07-06 | 2d | 2026-07-03 | 2026-07-06 | 16d | 0d |  | AUTOMAÇÃO E INSTRUMENTAÇÃO | Sex 03/07/26 | Seg 06/07/26 | Sprint 9 |
| 541 | 1.2.10.22.4 | Aprovação | 1d | 2026-06-29 | 2026-06-29 | 540 |  |  | 2026-07-07 | 2026-07-07 | 1d | 2026-07-07 | 2026-07-07 | 16d |  |  | AUTOMAÇÃO E INSTRUMENTAÇÃO | Ter 07/07/26 | Ter 07/07/26 | Sprint 10 |
| 542 | 1.2.10.23 | **FD-F0009-0305-MB-J-00004** | 10d | 2026-06-16 A | 2026-06-29 |  | 75% | 2.5d | 2026-06-18 | 2026-07-07 | 14d | 2026-06-18 | 2026-07-07 | 16d |  |  | AUTOMAÇÃO E INSTRUMENTAÇÃO | Qui 18/06/26 | Ter 07/07/26 | Sprint 8 |
| 543 | 1.2.10.23.1 | Emissão inicial | 7d | 2026-06-16 A | 2026-06-24 A | 528SS | 100% |  | 2026-06-18 | 2026-07-01 | 10d | 2026-06-18 | 2026-07-01 |  |  | start no earlier than 2026-06-16 | AUTOMAÇÃO E INSTRUMENTAÇÃO | Qui 18/06/26 | Qua 01/07/26 | Sprint 8 |
| 544 | 1.2.10.23.2 | Análise Tecnored | 1d | 2026-06-25 A | 2026-06-25 | 543 | 50% | 0.5d | 2026-07-02 | 2026-07-02 | 1d | 2026-07-02 | 2026-07-02 | 16d | 0d |  | AUTOMAÇÃO E INSTRUMENTAÇÃO | Qui 02/07/26 | Qui 02/07/26 | Sprint 9 |
| 545 | 1.2.10.23.3 | Atendimento de comentários | 1d | 2026-06-26 | 2026-06-26 | 544 |  |  | 2026-07-03 | 2026-07-06 | 2d | 2026-07-03 | 2026-07-06 | 16d | 0d |  | AUTOMAÇÃO E INSTRUMENTAÇÃO | Sex 03/07/26 | Seg 06/07/26 | Sprint 9 |
| 546 | 1.2.10.23.4 | Aprovação | 1d | 2026-06-29 | 2026-06-29 | 545 |  |  | 2026-07-07 | 2026-07-07 | 1d | 2026-07-07 | 2026-07-07 | 16d |  |  | AUTOMAÇÃO E INSTRUMENTAÇÃO | Ter 07/07/26 | Ter 07/07/26 | Sprint 10 |
| 547 | 1.2.10.24 | **FD-F0009-0305-MB-J-00005** | 10d | 2026-06-16 A | 2026-06-29 |  | 75% | 2.5d | 2026-06-18 | 2026-07-07 | 14d | 2026-06-18 | 2026-07-07 | 16d |  |  | AUTOMAÇÃO E INSTRUMENTAÇÃO | Qui 18/06/26 | Ter 07/07/26 | Sprint 8 |
| 548 | 1.2.10.24.1 | Emissão inicial | 7d | 2026-06-16 A | 2026-06-24 A | 528SS | 100% |  | 2026-06-18 | 2026-07-01 | 10d | 2026-06-18 | 2026-07-01 |  |  |  | AUTOMAÇÃO E INSTRUMENTAÇÃO | Qui 18/06/26 | Qua 01/07/26 | Sprint 8 |
| 549 | 1.2.10.24.2 | Análise Tecnored | 1d | 2026-06-25 A | 2026-06-25 | 548 | 50% | 0.5d | 2026-07-02 | 2026-07-02 | 1d | 2026-07-02 | 2026-07-02 | 16d | 0d |  | AUTOMAÇÃO E INSTRUMENTAÇÃO | Qui 02/07/26 | Qui 02/07/26 | Sprint 9 |
| 550 | 1.2.10.24.3 | Atendimento de comentários | 1d | 2026-06-26 | 2026-06-26 | 549 |  |  | 2026-07-03 | 2026-07-06 | 2d | 2026-07-03 | 2026-07-06 | 16d | 0d |  | AUTOMAÇÃO E INSTRUMENTAÇÃO | Sex 03/07/26 | Seg 06/07/26 | Sprint 9 |
| 551 | 1.2.10.24.4 | Aprovação | 1d | 2026-06-29 | 2026-06-29 | 550 |  |  | 2026-07-07 | 2026-07-07 | 1d | 2026-07-07 | 2026-07-07 | 16d |  |  | AUTOMAÇÃO E INSTRUMENTAÇÃO | Ter 07/07/26 | Ter 07/07/26 | Sprint 10 |
| 552 | 1.2.10.25 | **FD-F0009-0305-MB-J-00006** | 10d | 2026-06-16 A | 2026-06-29 |  | 75% | 2.5d | 2026-06-18 | 2026-07-07 | 14d | 2026-06-18 | 2026-07-07 | 16d |  |  | AUTOMAÇÃO E INSTRUMENTAÇÃO | Qui 18/06/26 | Ter 07/07/26 | Sprint 8 |
| 553 | 1.2.10.25.1 | Emissão inicial | 7d | 2026-06-16 A | 2026-06-24 A | 528SS | 100% |  | 2026-06-18 | 2026-07-01 | 10d | 2026-06-18 | 2026-07-01 |  |  |  | AUTOMAÇÃO E INSTRUMENTAÇÃO | Qui 18/06/26 | Qua 01/07/26 | Sprint 8 |
| 554 | 1.2.10.25.2 | Análise Tecnored | 1d | 2026-06-25 A | 2026-06-25 | 553 | 50% | 0.5d | 2026-07-02 | 2026-07-02 | 1d | 2026-07-02 | 2026-07-02 | 16d | 0d |  | AUTOMAÇÃO E INSTRUMENTAÇÃO | Qui 02/07/26 | Qui 02/07/26 | Sprint 9 |
| 555 | 1.2.10.25.3 | Atendimento de comentários | 1d | 2026-06-26 | 2026-06-26 | 554 |  |  | 2026-07-03 | 2026-07-06 | 2d | 2026-07-03 | 2026-07-06 | 16d | 0d |  | AUTOMAÇÃO E INSTRUMENTAÇÃO | Sex 03/07/26 | Seg 06/07/26 | Sprint 9 |
| 556 | 1.2.10.25.4 | Aprovação | 1d | 2026-06-29 | 2026-06-29 | 555 |  |  | 2026-07-07 | 2026-07-07 | 1d | 2026-07-07 | 2026-07-07 | 16d |  |  | AUTOMAÇÃO E INSTRUMENTAÇÃO | Ter 07/07/26 | Ter 07/07/26 | Sprint 10 |

| ID | WBS | Task | Duration | Start | Finish | Predecessors | Complete | Remaining | Baseline start | Baseline finish | Baseline duration | Baseline 1 start | Baseline 1 finish | Total slack | Free slack | Constraint | Disciplina | Início_LB_R0 | Término_LB_R0 | Sprints |
| --- | --- | --- | --- | --- | --- | --- | --- | --- | --- | --- | --- | --- | --- | --- | --- | --- | --- | --- | --- | --- |
| 557 | 1.2.10.26 | **FD-F0009-0305-MB-J-00007** | 10d | 2026-06-16 A | 2026-06-29 |  | 75% | 2.5d | 2026-06-18 | 2026-07-07 | 14d | 2026-06-18 | 2026-07-07 | 16d |  |  | AUTOMAÇÃO E INSTRUMENTAÇÃO | Qui 18/06/26 | Ter 07/07/26 | Sprint 8 |
| 558 | 1.2.10.26.1 | Emissão inicial | 7d | 2026-06-16 A | 2026-06-24 A | 528SS | 100% |  | 2026-06-18 | 2026-07-01 | 10d | 2026-06-18 | 2026-07-01 |  |  |  | AUTOMAÇÃO E INSTRUMENTAÇÃO | Qui 18/06/26 | Qua 01/07/26 | Sprint 8 |
| 559 | 1.2.10.26.2 | Análise Tecnored | 1d | 2026-06-25 A | 2026-06-25 | 558 | 50% | 0.5d | 2026-07-02 | 2026-07-02 | 1d | 2026-07-02 | 2026-07-02 | 16d | 0d |  | AUTOMAÇÃO E INSTRUMENTAÇÃO | Qui 02/07/26 | Qui 02/07/26 | Sprint 9 |
| 560 | 1.2.10.26.3 | Atendimento de comentários | 1d | 2026-06-26 | 2026-06-26 | 559 |  |  | 2026-07-03 | 2026-07-06 | 2d | 2026-07-03 | 2026-07-06 | 16d | 0d |  | AUTOMAÇÃO E INSTRUMENTAÇÃO | Sex 03/07/26 | Seg 06/07/26 | Sprint 9 |
| 561 | 1.2.10.26.4 | Aprovação | 1d | 2026-06-29 | 2026-06-29 | 560 |  |  | 2026-07-07 | 2026-07-07 | 1d | 2026-07-07 | 2026-07-07 | 16d |  |  | AUTOMAÇÃO E INSTRUMENTAÇÃO | Ter 07/07/26 | Ter 07/07/26 | Sprint 10 |
| 562 | 1.2.10.27 | **FD-F0009-0305-MB-J-00008** | 10d | 2026-06-16 A | 2026-06-29 |  | 75% | 2.5d | 2026-06-18 | 2026-07-07 | 14d | 2026-06-18 | 2026-07-07 | 16d |  |  | AUTOMAÇÃO E INSTRUMENTAÇÃO | Qui 18/06/26 | Ter 07/07/26 | Sprint 8 |
| 563 | 1.2.10.27.1 | Emissão inicial | 7d | 2026-06-16 A | 2026-06-24 A | 528SS | 100% |  | 2026-06-18 | 2026-07-01 | 10d | 2026-06-18 | 2026-07-01 |  |  | start no earlier than 2026-06-16 | AUTOMAÇÃO E INSTRUMENTAÇÃO | Qui 18/06/26 | Qua 01/07/26 | Sprint 8 |
| 564 | 1.2.10.27.2 | Análise Tecnored | 1d | 2026-06-25 A | 2026-06-25 | 563 | 50% | 0.5d | 2026-07-02 | 2026-07-02 | 1d | 2026-07-02 | 2026-07-02 | 16d | 0d |  | AUTOMAÇÃO E INSTRUMENTAÇÃO | Qui 02/07/26 | Qui 02/07/26 | Sprint 9 |
| 565 | 1.2.10.27.3 | Atendimento de comentários | 1d | 2026-06-26 | 2026-06-26 | 564 |  |  | 2026-07-03 | 2026-07-06 | 2d | 2026-07-03 | 2026-07-06 | 16d | 0d |  | AUTOMAÇÃO E INSTRUMENTAÇÃO | Sex 03/07/26 | Seg 06/07/26 | Sprint 9 |
| 566 | 1.2.10.27.4 | Aprovação | 1d | 2026-06-29 | 2026-06-29 | 565 |  |  | 2026-07-07 | 2026-07-07 | 1d | 2026-07-07 | 2026-07-07 | 16d |  |  | AUTOMAÇÃO E INSTRUMENTAÇÃO | Ter 07/07/26 | Ter 07/07/26 | Sprint 10 |
| 567 | 1.2.10.28 | **FD-F0009-0305-MB-J-00009** | 10d | 2026-06-15 A | 2026-06-26 |  | 72% | 2.85d | 2026-06-18 | 2026-07-07 | 14d | 2026-06-18 | 2026-07-07 | 17d |  |  | AUTOMAÇÃO E INSTRUMENTAÇÃO | Qui 18/06/26 | Ter 07/07/26 | Sprint 8 |
| 568 | 1.2.10.28.1 | Emissão inicial | 7d | 2026-06-15 A | 2026-06-23 A | 528SS | 100% |  | 2026-06-18 | 2026-07-01 | 10d | 2026-06-18 | 2026-07-01 |  |  |  | AUTOMAÇÃO E INSTRUMENTAÇÃO | Qui 18/06/26 | Qua 01/07/26 | Sprint 8 |
| 569 | 1.2.10.28.2 | Análise Tecnored | 1d | 2026-06-24 A | 2026-06-24 | 568 | 15% | 0.85d | 2026-07-02 | 2026-07-02 | 1d | 2026-07-02 | 2026-07-02 | 17d | 0d |  | AUTOMAÇÃO E INSTRUMENTAÇÃO | Qui 02/07/26 | Qui 02/07/26 | Sprint 9 |
| 570 | 1.2.10.28.3 | Atendimento de comentários | 1d | 2026-06-25 | 2026-06-25 | 569 |  |  | 2026-07-03 | 2026-07-06 | 2d | 2026-07-03 | 2026-07-06 | 17d | 0d |  | AUTOMAÇÃO E INSTRUMENTAÇÃO | Sex 03/07/26 | Seg 06/07/26 | Sprint 9 |
| 571 | 1.2.10.28.4 | Aprovação | 1d | 2026-06-26 | 2026-06-26 | 570 |  |  | 2026-07-07 | 2026-07-07 | 1d | 2026-07-07 | 2026-07-07 | 17d |  |  | AUTOMAÇÃO E INSTRUMENTAÇÃO | Ter 07/07/26 | Ter 07/07/26 | Sprint 9 |
| 572 | 1.2.10.29 | **FD-F0009-0305-MB-J-00010** | 10d | 2026-06-15 A | 2026-06-26 |  | 72% | 2.85d | 2026-06-18 | 2026-07-07 | 14d | 2026-06-18 | 2026-07-07 | 17d |  |  | AUTOMAÇÃO E INSTRUMENTAÇÃO | Qui 18/06/26 | Ter 07/07/26 | Sprint 8 |
| 573 | 1.2.10.29.1 | Emissão inicial | 7d | 2026-06-15 A | 2026-06-23 A | 528SS | 100% |  | 2026-06-18 | 2026-07-01 | 10d | 2026-06-18 | 2026-07-01 |  |  |  | AUTOMAÇÃO E INSTRUMENTAÇÃO | Qui 18/06/26 | Qua 01/07/26 | Sprint 8 |
| 574 | 1.2.10.29.2 | Análise Tecnored | 1d | 2026-06-24 A | 2026-06-24 | 573 | 15% | 0.85d | 2026-07-02 | 2026-07-02 | 1d | 2026-07-02 | 2026-07-02 | 17d | 0d |  | AUTOMAÇÃO E INSTRUMENTAÇÃO | Qui 02/07/26 | Qui 02/07/26 | Sprint 9 |
| 575 | 1.2.10.29.3 | Atendimento de comentários | 1d | 2026-06-25 | 2026-06-25 | 574 |  |  | 2026-07-03 | 2026-07-06 | 2d | 2026-07-03 | 2026-07-06 | 17d | 0d |  | AUTOMAÇÃO E INSTRUMENTAÇÃO | Sex 03/07/26 | Seg 06/07/26 | Sprint 9 |
| 576 | 1.2.10.29.4 | Aprovação | 1d | 2026-06-26 | 2026-06-26 | 575 |  |  | 2026-07-07 | 2026-07-07 | 1d | 2026-07-07 | 2026-07-07 | 17d |  |  | AUTOMAÇÃO E INSTRUMENTAÇÃO | Ter 07/07/26 | Ter 07/07/26 | Sprint 9 |
| 577 | 1.2.10.30 | **FD-F0009-0305-MB-J-00011** | 10d | 2026-06-15 A | 2026-06-26 |  | 72% | 2.85d | 2026-06-18 | 2026-07-07 | 14d | 2026-06-18 | 2026-07-07 | 17d |  |  | AUTOMAÇÃO E INSTRUMENTAÇÃO | Qui 18/06/26 | Ter 07/07/26 | Sprint 8 |
| 578 | 1.2.10.30.1 | Emissão inicial | 7d | 2026-06-15 A | 2026-06-23 A | 528SS | 100% |  | 2026-06-18 | 2026-07-01 | 10d | 2026-06-18 | 2026-07-01 |  |  |  | AUTOMAÇÃO E INSTRUMENTAÇÃO | Qui 18/06/26 | Qua 01/07/26 | Sprint 8 |
| 579 | 1.2.10.30.2 | Análise Tecnored | 1d | 2026-06-24 A | 2026-06-24 | 578 | 15% | 0.85d | 2026-07-02 | 2026-07-02 | 1d | 2026-07-02 | 2026-07-02 | 17d | 0d |  | AUTOMAÇÃO E INSTRUMENTAÇÃO | Qui 02/07/26 | Qui 02/07/26 | Sprint 9 |
| 580 | 1.2.10.30.3 | Atendimento de comentários | 1d | 2026-06-25 | 2026-06-25 | 579 |  |  | 2026-07-03 | 2026-07-06 | 2d | 2026-07-03 | 2026-07-06 | 17d | 0d |  | AUTOMAÇÃO E INSTRUMENTAÇÃO | Sex 03/07/26 | Seg 06/07/26 | Sprint 9 |
| 581 | 1.2.10.30.4 | Aprovação | 1d | 2026-06-26 | 2026-06-26 | 580 |  |  | 2026-07-07 | 2026-07-07 | 1d | 2026-07-07 | 2026-07-07 | 17d |  |  | AUTOMAÇÃO E INSTRUMENTAÇÃO | Ter 07/07/26 | Ter 07/07/26 | Sprint 9 |

| ID | WBS | Task | Duration | Start | Finish | Predecessors | Complete | Remaining | Baseline start | Baseline finish | Baseline duration | Baseline 1 start | Baseline 1 finish | Total slack | Free slack | Disciplina | Início_LB_R0 | Término_LB_R0 | Sprints |
| --- | --- | --- | --- | --- | --- | --- | --- | --- | --- | --- | --- | --- | --- | --- | --- | --- | --- | --- | --- |
| 582 | 1.2.10.31 | **FD-F0009-0305-MB-J-00012** | 10d | 2026-06-18 A | 2026-07-01 |  | 72% | 2.85d | 2026-06-18 | 2026-07-07 | 14d | 2026-06-18 | 2026-07-07 | 14d |  | AUTOMAÇÃO E INSTRUMENTAÇÃO | Qui 18/06/26 | Ter 07/07/26 | Sprint 8 |
| 583 | 1.2.10.31.1 | Emissão inicial | 7d | 2026-06-18 A | 2026-06-26 A | 528SS | 100% |  | 2026-06-18 | 2026-07-01 | 10d | 2026-06-18 | 2026-07-01 |  |  | AUTOMAÇÃO E INSTRUMENTAÇÃO | Qui 18/06/26 | Qua 01/07/26 | Sprint 8 |
| 584 | 1.2.10.31.2 | Análise Tecnored | 1d | 2026-06-29 A | 2026-06-29 | 583 | 15% | 0.85d | 2026-07-02 | 2026-07-02 | 1d | 2026-07-02 | 2026-07-02 | 14d | 0d | AUTOMAÇÃO E INSTRUMENTAÇÃO | Qui 02/07/26 | Qui 02/07/26 | Sprint 10 |
| 585 | 1.2.10.31.3 | Atendimento de comentários | 1d | 2026-06-30 | 2026-06-30 | 584 |  |  | 2026-07-03 | 2026-07-06 | 2d | 2026-07-03 | 2026-07-06 | 14d | 0d | AUTOMAÇÃO E INSTRUMENTAÇÃO | Sex 03/07/26 | Seg 06/07/26 | Sprint 10 |
| 586 | 1.2.10.31.4 | Aprovação | 1d | 2026-07-01 | 2026-07-01 | 585 |  |  | 2026-07-07 | 2026-07-07 | 1d | 2026-07-07 | 2026-07-07 | 14d |  | AUTOMAÇÃO E INSTRUMENTAÇÃO | Ter 07/07/26 | Ter 07/07/26 | Sprint 10 |
| 587 | 1.2.10.32 | **FD-F0009-0305-MB-J-00013** | 10d | 2026-06-18 A | 2026-07-01 |  | 72% | 2.85d | 2026-06-18 | 2026-07-07 | 14d | 2026-06-18 | 2026-07-07 | 14d |  | AUTOMAÇÃO E INSTRUMENTAÇÃO | Qui 18/06/26 | Ter 07/07/26 | Sprint 8 |
| 588 | 1.2.10.32.1 | Emissão inicial | 7d | 2026-06-18 A | 2026-06-26 A | 528SS | 100% |  | 2026-06-18 | 2026-07-01 | 10d | 2026-06-18 | 2026-07-01 |  |  | AUTOMAÇÃO E INSTRUMENTAÇÃO | Qui 18/06/26 | Qua 01/07/26 | Sprint 8 |
| 589 | 1.2.10.32.2 | Análise Tecnored | 1d | 2026-06-29 A | 2026-06-29 | 588 | 15% | 0.85d | 2026-07-02 | 2026-07-02 | 1d | 2026-07-02 | 2026-07-02 | 14d | 0d | AUTOMAÇÃO E INSTRUMENTAÇÃO | Qui 02/07/26 | Qui 02/07/26 | Sprint 10 |
| 590 | 1.2.10.32.3 | Atendimento de comentários | 1d | 2026-06-30 | 2026-06-30 | 589 |  |  | 2026-07-03 | 2026-07-06 | 2d | 2026-07-03 | 2026-07-06 | 14d | 0d | AUTOMAÇÃO E INSTRUMENTAÇÃO | Sex 03/07/26 | Seg 06/07/26 | Sprint 10 |
| 591 | 1.2.10.32.4 | Aprovação | 1d | 2026-07-01 | 2026-07-01 | 590 |  |  | 2026-07-07 | 2026-07-07 | 1d | 2026-07-07 | 2026-07-07 | 14d |  | AUTOMAÇÃO E INSTRUMENTAÇÃO | Ter 07/07/26 | Ter 07/07/26 | Sprint 10 |
| 592 | 1.2.10.33 | **FD-F0009-0305-MB-J-00014** | 10d | 2026-06-18 A | 2026-07-01 |  | 72% | 2.85d | 2026-06-18 | 2026-07-07 | 14d | 2026-06-18 | 2026-07-07 | 14d |  | AUTOMAÇÃO E INSTRUMENTAÇÃO | Qui 18/06/26 | Ter 07/07/26 | Sprint 8 |
| 593 | 1.2.10.33.1 | Emissão inicial | 7d | 2026-06-18 A | 2026-06-26 A | 528SS | 100% |  | 2026-06-18 | 2026-07-01 | 10d | 2026-06-18 | 2026-07-01 |  |  | AUTOMAÇÃO E INSTRUMENTAÇÃO | Qui 18/06/26 | Qua 01/07/26 | Sprint 8 |
| 594 | 1.2.10.33.2 | Análise Tecnored | 1d | 2026-06-29 A | 2026-06-29 | 593 | 15% | 0.85d | 2026-07-02 | 2026-07-02 | 1d | 2026-07-02 | 2026-07-02 | 14d | 0d | AUTOMAÇÃO E INSTRUMENTAÇÃO | Qui 02/07/26 | Qui 02/07/26 | Sprint 10 |
| 595 | 1.2.10.33.3 | Atendimento de comentários | 1d | 2026-06-30 | 2026-06-30 | 594 |  |  | 2026-07-03 | 2026-07-06 | 2d | 2026-07-03 | 2026-07-06 | 14d | 0d | AUTOMAÇÃO E INSTRUMENTAÇÃO | Sex 03/07/26 | Seg 06/07/26 | Sprint 10 |
| 596 | 1.2.10.33.4 | Aprovação | 1d | 2026-07-01 | 2026-07-01 | 595 |  |  | 2026-07-07 | 2026-07-07 | 1d | 2026-07-07 | 2026-07-07 | 14d |  | AUTOMAÇÃO E INSTRUMENTAÇÃO | Ter 07/07/26 | Ter 07/07/26 | Sprint 10 |
| 597 | 1.2.10.34 | **FD-F0009-0305-MB-J-00015** | 10d | 2026-06-15 A | 2026-06-26 |  | 72% | 2.85d | 2026-06-18 | 2026-07-07 | 14d | 2026-06-18 | 2026-07-07 | 17d |  | AUTOMAÇÃO E INSTRUMENTAÇÃO | Qui 18/06/26 | Ter 07/07/26 | Sprint 8 |
| 598 | 1.2.10.34.1 | Emissão inicial | 7d | 2026-06-15 A | 2026-06-23 A | 528SS | 100% |  | 2026-06-18 | 2026-07-01 | 10d | 2026-06-18 | 2026-07-01 |  |  | AUTOMAÇÃO E INSTRUMENTAÇÃO | Qui 18/06/26 | Qua 01/07/26 | Sprint 8 |
| 599 | 1.2.10.34.2 | Análise Tecnored | 1d | 2026-06-24 A | 2026-06-24 | 598 | 15% | 0.85d | 2026-07-02 | 2026-07-02 | 1d | 2026-07-02 | 2026-07-02 | 17d | 0d | AUTOMAÇÃO E INSTRUMENTAÇÃO | Qui 02/07/26 | Qui 02/07/26 | Sprint 9 |
| 600 | 1.2.10.34.3 | Atendimento de comentários | 1d | 2026-06-25 | 2026-06-25 | 599 |  |  | 2026-07-03 | 2026-07-06 | 2d | 2026-07-03 | 2026-07-06 | 17d | 0d | AUTOMAÇÃO E INSTRUMENTAÇÃO | Sex 03/07/26 | Seg 06/07/26 | Sprint 9 |
| 601 | 1.2.10.34.4 | Aprovação | 1d | 2026-06-26 | 2026-06-26 | 600 |  |  | 2026-07-07 | 2026-07-07 | 1d | 2026-07-07 | 2026-07-07 | 17d |  | AUTOMAÇÃO E INSTRUMENTAÇÃO | Ter 07/07/26 | Ter 07/07/26 | Sprint 9 |
| 602 | 1.2.10.35 | **FD-F0009-0305-MB-J-00016** | 10d | 2026-06-15 A | 2026-06-26 |  | 72% | 2.85d | 2026-06-18 | 2026-07-07 | 14d | 2026-06-18 | 2026-07-07 | 17d |  | AUTOMAÇÃO E INSTRUMENTAÇÃO | Qui 18/06/26 | Ter 07/07/26 | Sprint 8 |
| 603 | 1.2.10.35.1 | Emissão inicial | 7d | 2026-06-15 A | 2026-06-23 A | 528SS | 100% |  | 2026-06-18 | 2026-07-01 | 10d | 2026-06-18 | 2026-07-01 |  |  | AUTOMAÇÃO E INSTRUMENTAÇÃO | Qui 18/06/26 | Qua 01/07/26 | Sprint 8 |
| 604 | 1.2.10.35.2 | Análise Tecnored | 1d | 2026-06-24 A | 2026-06-24 | 603 | 15% | 0.85d | 2026-07-02 | 2026-07-02 | 1d | 2026-07-02 | 2026-07-02 | 17d | 0d | AUTOMAÇÃO E INSTRUMENTAÇÃO | Qui 02/07/26 | Qui 02/07/26 | Sprint 9 |
| 605 | 1.2.10.35.3 | Atendimento de comentários | 1d | 2026-06-25 | 2026-06-25 | 604 |  |  | 2026-07-03 | 2026-07-06 | 2d | 2026-07-03 | 2026-07-06 | 17d | 0d | AUTOMAÇÃO E INSTRUMENTAÇÃO | Sex 03/07/26 | Seg 06/07/26 | Sprint 9 |
| 606 | 1.2.10.35.4 | Aprovação | 1d | 2026-06-26 | 2026-06-26 | 605 |  |  | 2026-07-07 | 2026-07-07 | 1d | 2026-07-07 | 2026-07-07 | 17d |  | AUTOMAÇÃO E INSTRUMENTAÇÃO | Ter 07/07/26 | Ter 07/07/26 | Sprint 9 |

| ID | WBS | Task | Duration | Start | Finish | Predecessors | Complete | Remaining | Baseline start | Baseline finish | Baseline duration | Baseline 1 start | Baseline 1 finish | Total slack | Free slack | Disciplina | Início_LB_R0 | Término_LB_R0 | Sprints |
| --- | --- | --- | --- | --- | --- | --- | --- | --- | --- | --- | --- | --- | --- | --- | --- | --- | --- | --- | --- |
| 607 | 1.2.10.36 | **FD-F0009-0305-MB-J-00017** | 10d | 2026-06-15 A | 2026-06-26 |  | 72% | 2.85d | 2026-06-18 | 2026-07-07 | 14d | 2026-06-18 | 2026-07-07 | 17d |  | AUTOMAÇÃO E INSTRUMENTAÇÃO | Qui 18/06/26 | Ter 07/07/26 | Sprint 8 |
| 608 | 1.2.10.36.1 | Emissão inicial | 7d | 2026-06-15 A | 2026-06-23 A | 528SS | 100% |  | 2026-06-18 | 2026-07-01 | 10d | 2026-06-18 | 2026-07-01 |  |  | AUTOMAÇÃO E INSTRUMENTAÇÃO | Qui 18/06/26 | Qua 01/07/26 | Sprint 8 |
| 609 | 1.2.10.36.2 | Análise Tecnored | 1d | 2026-06-24 A | 2026-06-24 | 608 | 15% | 0.85d | 2026-07-02 | 2026-07-02 | 1d | 2026-07-02 | 2026-07-02 | 17d | 0d | AUTOMAÇÃO E INSTRUMENTAÇÃO | Qui 02/07/26 | Qui 02/07/26 | Sprint 9 |
| 610 | 1.2.10.36.3 | Atendimento de comentários | 1d | 2026-06-25 | 2026-06-25 | 609 |  |  | 2026-07-03 | 2026-07-06 | 2d | 2026-07-03 | 2026-07-06 | 17d | 0d | AUTOMAÇÃO E INSTRUMENTAÇÃO | Sex 03/07/26 | Seg 06/07/26 | Sprint 9 |
| 611 | 1.2.10.36.4 | Aprovação | 1d | 2026-06-26 | 2026-06-26 | 610 |  |  | 2026-07-07 | 2026-07-07 | 1d | 2026-07-07 | 2026-07-07 | 17d |  | AUTOMAÇÃO E INSTRUMENTAÇÃO | Ter 07/07/26 | Ter 07/07/26 | Sprint 9 |
| 612 | 1.2.10.37 | **FD-F0009-0305-MB-J-00018** | 10d | 2026-06-15 A | 2026-06-26 |  | 72% | 2.85d | 2026-06-18 | 2026-07-07 | 14d | 2026-06-18 | 2026-07-07 | 17d |  | AUTOMAÇÃO E INSTRUMENTAÇÃO | Qui 18/06/26 | Ter 07/07/26 | Sprint 8 |
| 613 | 1.2.10.37.1 | Emissão inicial | 7d | 2026-06-15 A | 2026-06-23 A | 528SS | 100% |  | 2026-06-18 | 2026-07-01 | 10d | 2026-06-18 | 2026-07-01 |  |  | AUTOMAÇÃO E INSTRUMENTAÇÃO | Qui 18/06/26 | Qua 01/07/26 | Sprint 8 |
| 614 | 1.2.10.37.2 | Análise Tecnored | 1d | 2026-06-24 A | 2026-06-24 | 613 | 15% | 0.85d | 2026-07-02 | 2026-07-02 | 1d | 2026-07-02 | 2026-07-02 | 17d | 0d | AUTOMAÇÃO E INSTRUMENTAÇÃO | Qui 02/07/26 | Qui 02/07/26 | Sprint 9 |
| 615 | 1.2.10.37.3 | Atendimento de comentários | 1d | 2026-06-25 | 2026-06-25 | 614 |  |  | 2026-07-03 | 2026-07-06 | 2d | 2026-07-03 | 2026-07-06 | 17d | 0d | AUTOMAÇÃO E INSTRUMENTAÇÃO | Sex 03/07/26 | Seg 06/07/26 | Sprint 9 |
| 616 | 1.2.10.37.4 | Aprovação | 1d | 2026-06-26 | 2026-06-26 | 615 |  |  | 2026-07-07 | 2026-07-07 | 1d | 2026-07-07 | 2026-07-07 | 17d |  | AUTOMAÇÃO E INSTRUMENTAÇÃO | Ter 07/07/26 | Ter 07/07/26 | Sprint 9 |
| 617 | 1.2.10.38 | **FD-F0009-0305-MB-J-00019** | 10d | 2026-06-15 A | 2026-06-26 |  | 72% | 2.85d | 2026-06-18 | 2026-07-07 | 14d | 2026-06-18 | 2026-07-07 | 17d |  | AUTOMAÇÃO E INSTRUMENTAÇÃO | Qui 18/06/26 | Ter 07/07/26 | Sprint 8 |
| 618 | 1.2.10.38.1 | Emissão inicial | 7d | 2026-06-15 A | 2026-06-23 A | 528SS | 100% |  | 2026-06-18 | 2026-07-01 | 10d | 2026-06-18 | 2026-07-01 |  |  | AUTOMAÇÃO E INSTRUMENTAÇÃO | Qui 18/06/26 | Qua 01/07/26 | Sprint 8 |
| 619 | 1.2.10.38.2 | Análise Tecnored | 1d | 2026-06-24 A | 2026-06-24 | 618 | 15% | 0.85d | 2026-07-02 | 2026-07-02 | 1d | 2026-07-02 | 2026-07-02 | 17d | 0d | AUTOMAÇÃO E INSTRUMENTAÇÃO | Qui 02/07/26 | Qui 02/07/26 | Sprint 9 |
| 620 | 1.2.10.38.3 | Atendimento de comentários | 1d | 2026-06-25 | 2026-06-25 | 619 |  |  | 2026-07-03 | 2026-07-06 | 2d | 2026-07-03 | 2026-07-06 | 17d | 0d | AUTOMAÇÃO E INSTRUMENTAÇÃO | Sex 03/07/26 | Seg 06/07/26 | Sprint 9 |
| 621 | 1.2.10.38.4 | Aprovação | 1d | 2026-06-26 | 2026-06-26 | 620 |  |  | 2026-07-07 | 2026-07-07 | 1d | 2026-07-07 | 2026-07-07 | 17d |  | AUTOMAÇÃO E INSTRUMENTAÇÃO | Ter 07/07/26 | Ter 07/07/26 | Sprint 9 |
| 622 | 1.2.10.39 | **FD-F0009-0305-MB-J-00020** | 10d | 2026-06-15 A | 2026-06-26 |  | 72% | 2.85d | 2026-06-18 | 2026-07-07 | 14d | 2026-06-18 | 2026-07-07 | 17d |  | AUTOMAÇÃO E INSTRUMENTAÇÃO | Qui 18/06/26 | Ter 07/07/26 | Sprint 8 |
| 623 | 1.2.10.39.1 | Emissão inicial | 7d | 2026-06-15 A | 2026-06-23 A | 528SS | 100% |  | 2026-06-18 | 2026-07-01 | 10d | 2026-06-18 | 2026-07-01 |  |  | AUTOMAÇÃO E INSTRUMENTAÇÃO | Qui 18/06/26 | Qua 01/07/26 | Sprint 8 |
| 624 | 1.2.10.39.2 | Análise Tecnored | 1d | 2026-06-24 A | 2026-06-24 | 623 | 15% | 0.85d | 2026-07-02 | 2026-07-02 | 1d | 2026-07-02 | 2026-07-02 | 17d | 0d | AUTOMAÇÃO E INSTRUMENTAÇÃO | Qui 02/07/26 | Qui 02/07/26 | Sprint 9 |
| 625 | 1.2.10.39.3 | Atendimento de comentários | 1d | 2026-06-25 | 2026-06-25 | 624 |  |  | 2026-07-03 | 2026-07-06 | 2d | 2026-07-03 | 2026-07-06 | 17d | 0d | AUTOMAÇÃO E INSTRUMENTAÇÃO | Sex 03/07/26 | Seg 06/07/26 | Sprint 9 |
| 626 | 1.2.10.39.4 | Aprovação | 1d | 2026-06-26 | 2026-06-26 | 625 |  |  | 2026-07-07 | 2026-07-07 | 1d | 2026-07-07 | 2026-07-07 | 17d |  | AUTOMAÇÃO E INSTRUMENTAÇÃO | Ter 07/07/26 | Ter 07/07/26 | Sprint 9 |
| 627 | 1.2.10.40 | **FD-F0009-0305-MB-J-00021** | 10d | 2026-06-15 A | 2026-06-26 |  | 72% | 2.85d | 2026-06-18 | 2026-07-07 | 14d | 2026-06-18 | 2026-07-07 | 17d |  | AUTOMAÇÃO E INSTRUMENTAÇÃO | Qui 18/06/26 | Ter 07/07/26 | Sprint 8 |
| 628 | 1.2.10.40.1 | Emissão inicial | 7d | 2026-06-15 A | 2026-06-23 A | 528SS | 100% |  | 2026-06-18 | 2026-07-01 | 10d | 2026-06-18 | 2026-07-01 |  |  | AUTOMAÇÃO E INSTRUMENTAÇÃO | Qui 18/06/26 | Qua 01/07/26 | Sprint 8 |
| 629 | 1.2.10.40.2 | Análise Tecnored | 1d | 2026-06-24 A | 2026-06-24 | 628 | 15% | 0.85d | 2026-07-02 | 2026-07-02 | 1d | 2026-07-02 | 2026-07-02 | 17d | 0d | AUTOMAÇÃO E INSTRUMENTAÇÃO | Qui 02/07/26 | Qui 02/07/26 | Sprint 9 |
| 630 | 1.2.10.40.3 | Atendimento de comentários | 1d | 2026-06-25 | 2026-06-25 | 629 |  |  | 2026-07-03 | 2026-07-06 | 2d | 2026-07-03 | 2026-07-06 | 17d | 0d | AUTOMAÇÃO E INSTRUMENTAÇÃO | Sex 03/07/26 | Seg 06/07/26 | Sprint 9 |
| 631 | 1.2.10.40.4 | Aprovação | 1d | 2026-06-26 | 2026-06-26 | 630 |  |  | 2026-07-07 | 2026-07-07 | 1d | 2026-07-07 | 2026-07-07 | 17d |  | AUTOMAÇÃO E INSTRUMENTAÇÃO | Ter 07/07/26 | Ter 07/07/26 | Sprint 9 |

| ID | WBS | Task | Duration | Start | Finish | Predecessors | Complete | Remaining | Baseline start | Baseline finish | Baseline duration | Baseline 1 start | Baseline 1 finish | Total slack | Free slack | Constraint | Disciplina | Início_LB_R0 | Término_LB_R0 | Sprints |
| --- | --- | --- | --- | --- | --- | --- | --- | --- | --- | --- | --- | --- | --- | --- | --- | --- | --- | --- | --- | --- |
| 632 | 1.2.10.41 | **FD-F0009-0305-MB-J-00022** | 9.85d | 2026-06-19 A | 2026-07-02 |  | 72% | 2.81d | 2026-06-18 | 2026-07-07 | 14d | 2026-06-18 | 2026-07-07 | 13.15d |  |  | AUTOMAÇÃO E INSTRUMENTAÇÃO | Qui 18/06/26 | Ter 07/07/26 | Sprint 8 |
| 633 | 1.2.10.41.1 | Emissão inicial | 7d | 2026-06-19 A | 2026-06-29 A | 528SS | 100% |  | 2026-06-18 | 2026-07-01 | 10d | 2026-06-18 | 2026-07-01 |  |  |  | AUTOMAÇÃO E INSTRUMENTAÇÃO | Qui 18/06/26 | Qua 01/07/26 | Sprint 8 |
| 634 | 1.2.10.41.2 | Análise Tecnored | 1d | 2026-06-24 A | 2026-06-30 | 633 | 15% | 0.85d | 2026-07-02 | 2026-07-02 | 1d | 2026-07-02 | 2026-07-02 | 13.15d | 0d |  | AUTOMAÇÃO E INSTRUMENTAÇÃO | Qui 02/07/26 | Qui 02/07/26 | Sprint 9 |
| 635 | 1.2.10.41.3 | Atendimento de comentários | 1d | 2026-06-30 | 2026-07-01 | 634 |  |  | 2026-07-03 | 2026-07-06 | 2d | 2026-07-03 | 2026-07-06 | 13.15d | 0d |  | AUTOMAÇÃO E INSTRUMENTAÇÃO | Sex 03/07/26 | Seg 06/07/26 | Sprint 10 |
| 636 | 1.2.10.41.4 | Aprovação | 1d | 2026-07-01 | 2026-07-02 | 635 |  |  | 2026-07-07 | 2026-07-07 | 1d | 2026-07-07 | 2026-07-07 | 13.15d |  |  | AUTOMAÇÃO E INSTRUMENTAÇÃO | Ter 07/07/26 | Ter 07/07/26 | Sprint 10 |
| 637 | 1.2.10.42 | **FD-F0009-0305-MB-J-00023** | 9.85d | 2026-06-19 A | 2026-07-02 |  | 72% | 2.81d | 2026-06-18 | 2026-07-07 | 14d | 2026-06-18 | 2026-07-07 | 13.15d |  |  | AUTOMAÇÃO E INSTRUMENTAÇÃO | Qui 18/06/26 | Ter 07/07/26 | Sprint 8 |
| 638 | 1.2.10.42.1 | Emissão inicial | 7d | 2026-06-19 A | 2026-06-29 A | 528SS | 100% |  | 2026-06-18 | 2026-07-01 | 10d | 2026-06-18 | 2026-07-01 |  |  |  | AUTOMAÇÃO E INSTRUMENTAÇÃO | Qui 18/06/26 | Qua 01/07/26 | Sprint 8 |
| 639 | 1.2.10.42.2 | Análise Tecnored | 1d | 2026-06-24 A | 2026-06-30 | 638 | 15% | 0.85d | 2026-07-02 | 2026-07-02 | 1d | 2026-07-02 | 2026-07-02 | 13.15d | 0d |  | AUTOMAÇÃO E INSTRUMENTAÇÃO | Qui 02/07/26 | Qui 02/07/26 | Sprint 9 |
| 640 | 1.2.10.42.3 | Atendimento de comentários | 1d | 2026-06-30 | 2026-07-01 | 639 |  |  | 2026-07-03 | 2026-07-06 | 2d | 2026-07-03 | 2026-07-06 | 13.15d | 0d |  | AUTOMAÇÃO E INSTRUMENTAÇÃO | Sex 03/07/26 | Seg 06/07/26 | Sprint 10 |
| 641 | 1.2.10.42.4 | Aprovação | 1d | 2026-07-01 | 2026-07-02 | 640 |  |  | 2026-07-07 | 2026-07-07 | 1d | 2026-07-07 | 2026-07-07 | 13.15d |  |  | AUTOMAÇÃO E INSTRUMENTAÇÃO | Ter 07/07/26 | Ter 07/07/26 | Sprint 10 |
| 642 | 1.2.10.43 | **FD-F0009-0305-MB-J-00024** | 9.85d | 2026-06-19 A | 2026-07-02 |  | 72% | 2.81d | 2026-06-18 | 2026-07-07 | 14d | 2026-06-18 | 2026-07-07 | 13.15d |  |  | AUTOMAÇÃO E INSTRUMENTAÇÃO | Qui 18/06/26 | Ter 07/07/26 | Sprint 8 |
| 643 | 1.2.10.43.1 | Emissão inicial | 7d | 2026-06-19 A | 2026-06-29 A | 528SS | 100% |  | 2026-06-18 | 2026-07-01 | 10d | 2026-06-18 | 2026-07-01 |  |  |  | AUTOMAÇÃO E INSTRUMENTAÇÃO | Qui 18/06/26 | Qua 01/07/26 | Sprint 8 |
| 644 | 1.2.10.43.2 | Análise Tecnored | 1d | 2026-06-24 A | 2026-06-30 | 643 | 15% | 0.85d | 2026-07-02 | 2026-07-02 | 1d | 2026-07-02 | 2026-07-02 | 13.15d | 0d |  | AUTOMAÇÃO E INSTRUMENTAÇÃO | Qui 02/07/26 | Qui 02/07/26 | Sprint 9 |
| 645 | 1.2.10.43.3 | Atendimento de comentários | 1d | 2026-06-30 | 2026-07-01 | 644 |  |  | 2026-07-03 | 2026-07-06 | 2d | 2026-07-03 | 2026-07-06 | 13.15d | 0d |  | AUTOMAÇÃO E INSTRUMENTAÇÃO | Sex 03/07/26 | Seg 06/07/26 | Sprint 10 |
| 646 | 1.2.10.43.4 | Aprovação | 1d | 2026-07-01 | 2026-07-02 | 645 |  |  | 2026-07-07 | 2026-07-07 | 1d | 2026-07-07 | 2026-07-07 | 13.15d |  |  | AUTOMAÇÃO E INSTRUMENTAÇÃO | Ter 07/07/26 | Ter 07/07/26 | Sprint 10 |
| 647 | 1.2.10.44 | **FD-F0009-0305-MB-J-00025** | 9.85d | 2026-06-19 A | 2026-07-02 |  | 72% | 2.81d | 2026-06-18 | 2026-07-07 | 14d | 2026-06-18 | 2026-07-07 | 13.15d |  |  | AUTOMAÇÃO E INSTRUMENTAÇÃO | Qui 18/06/26 | Ter 07/07/26 | Sprint 8 |
| 648 | 1.2.10.44.1 | Emissão inicial | 7d | 2026-06-19 A | 2026-06-29 A | 528SS | 100% |  | 2026-06-18 | 2026-07-01 | 10d | 2026-06-18 | 2026-07-01 |  |  |  | AUTOMAÇÃO E INSTRUMENTAÇÃO | Qui 18/06/26 | Qua 01/07/26 | Sprint 8 |
| 649 | 1.2.10.44.2 | Análise Tecnored | 1d | 2026-06-24 A | 2026-06-30 | 648 | 15% | 0.85d | 2026-07-02 | 2026-07-02 | 1d | 2026-07-02 | 2026-07-02 | 13.15d | 0d |  | AUTOMAÇÃO E INSTRUMENTAÇÃO | Qui 02/07/26 | Qui 02/07/26 | Sprint 9 |
| 650 | 1.2.10.44.3 | Atendimento de comentários | 1d | 2026-06-30 | 2026-07-01 | 649 |  |  | 2026-07-03 | 2026-07-06 | 2d | 2026-07-03 | 2026-07-06 | 13.15d | 0d |  | AUTOMAÇÃO E INSTRUMENTAÇÃO | Sex 03/07/26 | Seg 06/07/26 | Sprint 10 |
| 651 | 1.2.10.44.4 | Aprovação | 1d | 2026-07-01 | 2026-07-02 | 650 |  |  | 2026-07-07 | 2026-07-07 | 1d | 2026-07-07 | 2026-07-07 | 13.15d |  |  | AUTOMAÇÃO E INSTRUMENTAÇÃO | Ter 07/07/26 | Ter 07/07/26 | Sprint 10 |
| 652 | 1.2.10.45 | **RE-F0009-0305-MB-J-00001** | 8d | 2026-06-30 | 2026-07-09 |  |  |  | 2026-06-26 | 2026-07-06 | 7d | 2026-06-26 | 2026-07-06 | 8d |  |  | AUTOMAÇÃO E INSTRUMENTAÇÃO | Sex 26/06/26 | Seg 06/07/26 | Sprint 10 |
| 653 | 1.2.10.45.1 | Emissão inicial | 4d | 2026-06-30 | 2026-07-03 | 513FS-7d |  |  | 2026-06-26 | 2026-06-30 | 3d | 2026-06-26 | 2026-06-30 | 8d | 0d | finish no earlier than 2026-07-03 | AUTOMAÇÃO E INSTRUMENTAÇÃO | Sex 26/06/26 | Ter 30/06/26 | Sprint 10 |
| 654 | 1.2.10.45.2 | Análise Tecnored | 1d | 2026-07-06 | 2026-07-06 | 653 |  |  | 2026-07-01 | 2026-07-01 | 1d | 2026-07-01 | 2026-07-01 | 8d | 0d |  | AUTOMAÇÃO E INSTRUMENTAÇÃO | Qua 01/07/26 | Qua 01/07/26 | Sprint 11 |
| 655 | 1.2.10.45.3 | Atendimento de comentários | 2d | 2026-07-07 | 2026-07-08 | 654 |  |  | 2026-07-02 | 2026-07-03 | 2d | 2026-07-02 | 2026-07-03 | 8d | 0d |  | AUTOMAÇÃO E INSTRUMENTAÇÃO | Qui 02/07/26 | Sex 03/07/26 | Sprint 11 |
| 656 | 1.2.10.45.4 | Aprovação | 1d | 2026-07-09 | 2026-07-09 | 655 |  |  | 2026-07-06 | 2026-07-06 | 1d | 2026-07-06 | 2026-07-06 | 8d |  |  | AUTOMAÇÃO E INSTRUMENTAÇÃO | Seg 06/07/26 | Seg 06/07/26 | Sprint 11 |

| ID | WBS | Task | Duration | Start | Finish | Predecessors | Complete | Remaining | Baseline start | Baseline finish | Baseline duration | Baseline 1 start | Baseline 1 finish | Total slack | Free slack | Constraint | Disciplina | Início_LB_R0 | Término_LB_R0 | Sprints |
| --- | --- | --- | --- | --- | --- | --- | --- | --- | --- | --- | --- | --- | --- | --- | --- | --- | --- | --- | --- | --- |
| 657 | 1.2.10.46 | **DT-F0009-0305-MB-J-00001** | 8d | 2026-06-30 A | 2026-07-09 |  | 25% | 6d | 2026-06-26 | 2026-07-06 | 7d | 2026-06-26 | 2026-07-06 | 8d |  |  | AUTOMAÇÃO E INSTRUMENTAÇÃO | Sex 26/06/26 | Seg 06/07/26 | Sprint 10 |
| 658 | 1.2.10.46.1 | Emissão inicial | 4d | 2026-06-30 A | 2026-07-03 | 513FS-7d | 50% | 2d | 2026-06-26 | 2026-06-30 | 3d | 2026-06-26 | 2026-06-30 | 8d | 0d | start no earlier than 2026-06-17 | AUTOMAÇÃO E INSTRUMENTAÇÃO | Sex 26/06/26 | Ter 30/06/26 | Sprint 10 |
| 659 | 1.2.10.46.2 | Análise Tecnored | 1d | 2026-07-06 | 2026-07-06 | 658 |  |  | 2026-07-01 | 2026-07-01 | 1d | 2026-07-01 | 2026-07-01 | 8d | 0d |  | AUTOMAÇÃO E INSTRUMENTAÇÃO | Qua 01/07/26 | Qua 01/07/26 | Sprint 11 |
| 660 | 1.2.10.46.3 | Atendimento de comentários | 2d | 2026-07-07 | 2026-07-08 | 659 |  |  | 2026-07-02 | 2026-07-03 | 2d | 2026-07-02 | 2026-07-03 | 8d | 0d |  | AUTOMAÇÃO E INSTRUMENTAÇÃO | Qui 02/07/26 | Sex 03/07/26 | Sprint 11 |
| 661 | 1.2.10.46.4 | Aprovação | 1d | 2026-07-09 | 2026-07-09 | 660 |  |  | 2026-07-06 | 2026-07-06 | 1d | 2026-07-06 | 2026-07-06 | 8d |  |  | AUTOMAÇÃO E INSTRUMENTAÇÃO | Seg 06/07/26 | Seg 06/07/26 | Sprint 11 |
| 662 | 1.2.11 | **Civil** | 14.5d | 2026-06-29 A | 2026-07-17 |  | 4% | 13.94d | 2026-06-22 | 2026-07-08 | 13d | 2026-06-22 | 2026-07-08 | 2.5d |  |  | CIVIL | Seg 22/06/26 | Qua 08/07/26 | Sprint 10 |
| 663 | 1.2.11.1 | **MC-F0009-0305-MB-C-00001** | 12.5d | 2026-06-29 A | 2026-07-15 |  | 6% | 11.72d | 2026-06-22 | 2026-07-07 | 12d | 2026-06-22 | 2026-07-07 | 4.5d |  |  | CIVIL | Seg 22/06/26 | Ter 07/07/26 | Sprint 10 |
| 664 | 1.2.11.1.1 | Emissão inicial | 5d | 2026-06-29 A | 2026-07-10 | 306 | 10% | 4.5d | 2026-06-22 | 2026-07-01 | 8d | 2026-06-22 | 2026-07-01 | 2.5d | 0d | start no earlier than 2026-06-29 | CIVIL | Seg 22/06/26 | Qua 01/07/26 | Sprint 10 |
| 665 | 1.2.11.1.2 | Análise Tecnored | 1d | 2026-07-10 | 2026-07-13 | 664 |  |  | 2026-07-02 | 2026-07-02 | 1d | 2026-07-02 | 2026-07-02 | 4.5d | 0d |  | CIVIL | Qui 02/07/26 | Qui 02/07/26 | Sprint 11 |
| 666 | 1.2.11.1.3 | Atendimento de comentários | 1d | 2026-07-13 | 2026-07-14 | 665 |  |  | 2026-07-03 | 2026-07-06 | 2d | 2026-07-03 | 2026-07-06 | 4.5d | 0d |  | CIVIL | Sex 03/07/26 | Seg 06/07/26 | Sprint 12 |
| 667 | 1.2.11.1.4 | Aprovação | 1d | 2026-07-14 | 2026-07-15 | 666 |  |  | 2026-07-07 | 2026-07-07 | 1d | 2026-07-07 | 2026-07-07 | 4.5d |  |  | CIVIL | Ter 07/07/26 | Ter 07/07/26 | Sprint 12 |
| 668 | 1.2.11.2 | **PQ-F0009-0305-MB-C-00001** | 5d | 2026-07-10 | 2026-07-17 |  |  |  | 2026-07-02 | 2026-07-08 | 5d | 2026-07-02 | 2026-07-08 | 2.5d |  |  | CIVIL | Qui 02/07/26 | Qua 08/07/26 | Sprint 11 |
| 669 | 1.2.11.2.1 | Emissão inicial | 1d | 2026-07-10 | 2026-07-13 | 664 |  |  | 2026-07-02 | 2026-07-02 | 1d | 2026-07-02 | 2026-07-02 | 2.5d | 0d |  | CIVIL | Qui 02/07/26 | Qui 02/07/26 | Sprint 11 |
| 670 | 1.2.11.2.2 | Análise Tecnored | 1d | 2026-07-13 | 2026-07-14 | 669 |  |  | 2026-07-03 | 2026-07-03 | 1d | 2026-07-03 | 2026-07-03 | 2.5d | 0d |  | CIVIL | Sex 03/07/26 | Sex 03/07/26 | Sprint 12 |
| 671 | 1.2.11.2.3 | Atendimento de comentários | 2d | 2026-07-14 | 2026-07-16 | 670 |  |  | 2026-07-06 | 2026-07-07 | 2d | 2026-07-06 | 2026-07-07 | 2.5d | 0d |  | CIVIL | Seg 06/07/26 | Ter 07/07/26 | Sprint 12 |
| 672 | 1.2.11.2.4 | Aprovação | 1d | 2026-07-16 | 2026-07-17 | 671 |  |  | 2026-07-08 | 2026-07-08 | 1d | 2026-07-08 | 2026-07-08 | 2.5d |  |  | CIVIL | Qua 08/07/26 | Qua 08/07/26 | Sprint 12 |
