# CR-F0009-0305-MB-F-00001

Schedule from MS Project, 2026-04-27 to 2026-07-15, status date 2026-05-28, A marks actual dates.

## Calendars

- Padrão: Mon-Fri 09:00-12:00, 13:00-18:00; Sat-Sun off.

## Schedule

| ID | WBS | Task | Type | Duration | Start | Finish | Predecessors | Complete | Remaining | Baseline start | Baseline finish | Baseline duration | Baseline 1 start | Baseline 1 finish | Total slack | Free slack | Constraint | Baseline cost |
| --- | --- | --- | --- | --- | --- | --- | --- | --- | --- | --- | --- | --- | --- | --- | --- | --- | --- | --- |
| 1 | 1 | **F0009 - Programa Marabá** |  | 58d | 2026-04-27 A | 2026-07-15 |  | 4% | 55.74d | 2026-04-27 | 2026-07-08 | 53d | 2026-04-27 | 2026-07-08 | 0d |  |  |  |
| 2 | 1.1 | **Área 0000 -Documento geral** |  | 13d | 2026-05-19 A | 2026-06-05 |  |  | 13d | 2026-05-19 | 2026-05-22 | 3d | 2026-05-19 | 2026-05-22 | 0d |  |  |  |
| 3 | 1.1.1 | **LF-F0009-0305-MB-F-00001** | inactive | 7d | 2026-06-29 | 2026-07-07 |  |  |  |  |  |  |  |  | 6d |  |  | -0 |
| 4 | 1.1.1.1 | Emissão inicial | inactive | 3d | 2026-06-29 | 2026-07-01 | 16FS+45d |  |  |  |  |  |  |  | 6d | 0d |  | -0 |
| 5 | 1.1.1.2 | Análise Tecnored | inactive | 1d | 2026-07-02 | 2026-07-02 | 4 |  |  |  |  |  |  |  | 6d | 0d |  | -0 |
| 6 | 1.1.1.3 | Atendimento de comentários | inactive | 2d | 2026-07-03 | 2026-07-06 | 5 |  |  |  |  |  |  |  | 6d | 0d |  | -0 |
| 7 | 1.1.1.4 | Aprovação | inactive | 1d | 2026-07-07 | 2026-07-07 | 6 |  |  |  |  |  |  |  | 6d |  |  | -0 |
| 8 | 1.1.2 | **Marcos** |  | 13d | 2026-05-19 A | 2026-06-05 |  |  | 13d | 2026-05-19 | 2026-05-22 | 3d | 2026-05-19 | 2026-05-22 | 0d |  |  |  |
| 9 | 1.1.2.1 | Critério de projeto Processo | milestone, manual | 0d | 2026-06-05 | 2026-06-05 |  |  |  | 2026-05-19 | 2026-05-19 | 0d | 2026-05-19 | 2026-05-19 |  |  |  |  |
| 10 | 1.1.2.2 | Critério de projeto Mecânica | milestone, manual | 0d | 2026-05-19 A | 2026-05-19 A |  | 100% |  | 2026-05-19 | 2026-05-19 | 0d | 2026-05-19 | 2026-05-19 |  |  |  |  |
| 11 | 1.1.2.3 | Critério de projeto Tubulação | milestone, manual | 0d | 2026-05-22 A | 2026-05-22 A |  | 100% |  | 2026-05-22 | 2026-05-22 | 0d | 2026-05-22 | 2026-05-22 |  |  |  |  |
| 12 | 1.1.2.4 | Critério de projeto Elétrica | milestone, manual | 0d | 2026-06-05 | 2026-06-05 |  |  |  | 2026-05-22 | 2026-05-22 | 0d | 2026-05-22 | 2026-05-22 |  |  |  |  |
| 13 | 1.1.2.5 | Critério de projeto Automação | milestone, manual | 0d | 2026-06-05 | 2026-06-05 |  |  |  | 2026-05-22 | 2026-05-22 | 0d | 2026-05-22 | 2026-05-22 |  |  |  |  |
| 14 | 1.1.2.6 | Critério de projeto Estrutura Metálica | milestone, manual | 0d | 2026-06-05 | 2026-06-05 |  |  |  | 2026-05-22 | 2026-05-22 | 0d | 2026-05-22 | 2026-05-22 |  |  |  |  |
| 15 | 1.2 | **Área 0305 - Hot Blast Stoves** |  | 58d | 2026-04-27 A | 2026-07-15 |  | 4% | 55.74d | 2026-04-27 | 2026-07-08 | 53d | 2026-04-27 | 2026-07-08 | 0d |  |  |  |
| 16 | 1.2.1 | KOM - Início de projeto | milestone | 0d | 2026-04-27 A | 2026-04-27 A |  | 100% |  | 2026-04-27 | 2026-04-27 | 0d | 2026-04-27 | 2026-04-27 |  |  | start no earlier than 2026-04-27 |  |
| 17 | 1.2.2 | **Pendências** |  | 0d | 2026-04-29 A | 2026-04-29 A |  | 100% |  | 2026-04-29 | 2026-04-29 | 0d | 2026-04-29 | 2026-04-29 |  |  |  |  |
| 18 | 1.2.2.1 | Recebimento de dados de entrada | milestone | 0d | 2026-04-29 A | 2026-04-29 A |  | 100% |  | 2026-04-29 | 2026-04-29 | 0d | 2026-04-29 | 2026-04-29 |  |  |  |  |
| 19 | 1.2.3 | **Planejamento** |  | 25.4d | 2026-04-27 A | 2026-06-01 |  | 89% | 2.82d | 2026-04-27 | 2026-05-19 | 17d | 2026-04-27 | 2026-05-19 | 32.6d |  |  |  |
| 20 | 1.2.3.1 | **LD-F0009-0305-MB-F-00001** |  | 24d | 2026-04-27 A | 2026-05-28 |  | 91% | 2.18d | 2026-04-27 | 2026-05-19 | 17d | 2026-04-27 | 2026-05-19 | 34d |  |  |  |
| 21 | 1.2.3.1.1 | Emissão inicial |  | 3d | 2026-04-27 A | 2026-04-29 A | 16 | 100% |  | 2026-04-27 | 2026-04-29 | 3d | 2026-04-27 | 2026-04-29 |  |  |  |  |
| 22 | 1.2.3.1.2 | Análise Tecnored |  | 1d | 2026-04-30 A | 2026-04-30 A | 21 | 100% |  | 2026-04-30 | 2026-04-30 | 1d | 2026-04-30 | 2026-04-30 |  |  |  |  |
| 23 | 1.2.3.1.3 | Atendimento de comentários |  | 6d | 2026-05-06 A | 2026-05-13 A | 22FS+3d | 100% |  | 2026-05-06 | 2026-05-13 | 6d | 2026-05-06 | 2026-05-13 |  |  |  |  |
| 24 | 1.2.3.1.4 | Aprovação |  | 1d | 2026-05-28 | 2026-05-28 | 23FS+10d |  |  | 2026-05-19 | 2026-05-19 | 1d | 2026-05-19 | 2026-05-19 | 30d |  |  |  |

| ID | WBS | Task | Type | Duration | Start | Finish | Predecessors | Complete | Remaining | Baseline start | Baseline finish | Baseline duration | Baseline 1 start | Baseline 1 finish | Total slack | Free slack |
| --- | --- | --- | --- | --- | --- | --- | --- | --- | --- | --- | --- | --- | --- | --- | --- | --- |
| 25 | 1.2.3.2 | **CR-F0009-0305-MB-F-00001** |  | 22.4d | 2026-04-30 A | 2026-06-01 |  | 86% | 3.2d | 2026-04-30 | 2026-05-19 | 13.4d | 2026-04-30 | 2026-05-19 | 32.6d |  |
| 26 | 1.2.3.2.1 | Emissão inicial |  | 3d | 2026-04-30 A | 2026-05-04 A | 21 | 100% |  | 2026-04-30 | 2026-05-04 | 3d | 2026-04-30 | 2026-05-04 |  |  |
| 27 | 1.2.3.2.2 | Análise Tecnored |  | 1d | 2026-05-05 A | 2026-05-05 A | 26 | 100% |  | 2026-05-05 | 2026-05-05 | 1d | 2026-05-05 | 2026-05-05 |  |  |
| 28 | 1.2.3.2.3 | Atendimento de comentários |  | 2d | 2026-05-13 A | 2026-05-18 A | 27FS+8d | 100% |  | 2026-05-13 | 2026-05-18 | 2d | 2026-05-13 | 2026-05-18 |  |  |
| 29 | 1.2.3.2.4 | Aprovação |  | 1d | 2026-05-29 | 2026-06-01 | 28FS+9d |  |  | 2026-05-18 | 2026-05-19 | 1d | 2026-05-18 | 2026-05-19 | 28.6d |  |
| 30 | 1.2.4 | **Coordenação** |  | 53d | 2026-04-27 A | 2026-07-08 |  | 16% | 44.52d | 2026-04-27 | 2026-07-08 | 53d | 2026-04-27 | 2026-07-08 | 5d |  |
| 31 | 1.2.4.1 | **RM-F0009-0305-MB-G-00001** |  | 7d | 2026-05-28 | 2026-06-05 |  |  |  | 2026-05-25 | 2026-06-02 | 7d | 2026-05-25 | 2026-06-02 | 5d |  |
| 32 | 1.2.4.1.1 | Emissão inicial |  | 3d | 2026-05-28 | 2026-06-01 | 16FS+23d |  |  | 2026-05-25 | 2026-05-27 | 3d | 2026-05-25 | 2026-05-27 | 1d | 0d |
| 33 | 1.2.4.1.2 | Análise Tecnored |  | 1d | 2026-06-02 | 2026-06-02 | 32 |  |  | 2026-05-28 | 2026-05-28 | 1d | 2026-05-28 | 2026-05-28 | 24d | 0d |
| 34 | 1.2.4.1.3 | Atendimento de comentários |  | 2d | 2026-06-03 | 2026-06-04 | 33 |  |  | 2026-05-29 | 2026-06-01 | 2d | 2026-05-29 | 2026-06-01 | 24d | 0d |
| 35 | 1.2.4.1.4 | Aprovação |  | 1d | 2026-06-05 | 2026-06-05 | 34 |  |  | 2026-06-02 | 2026-06-02 | 1d | 2026-06-02 | 2026-06-02 | 24d |  |
| 36 | 1.2.4.2 | **RM-F0009-0305MB-G-00002** |  | 7d | 2026-06-16 | 2026-06-24 |  |  |  | 2026-06-11 | 2026-06-19 | 7d | 2026-06-11 | 2026-06-19 | 5d |  |
| 37 | 1.2.4.2.1 | Emissão inicial |  | 3d | 2026-06-16 | 2026-06-18 | 32FS+10d |  |  | 2026-06-11 | 2026-06-15 | 3d | 2026-06-11 | 2026-06-15 | 1d | 0d |
| 38 | 1.2.4.2.2 | Análise Tecnored |  | 1d | 2026-06-19 | 2026-06-19 | 37 |  |  | 2026-06-16 | 2026-06-16 | 1d | 2026-06-16 | 2026-06-16 | 11d | 0d |
| 39 | 1.2.4.2.3 | Atendimento de comentários |  | 2d | 2026-06-22 | 2026-06-23 | 38 |  |  | 2026-06-17 | 2026-06-18 | 2d | 2026-06-17 | 2026-06-18 | 11d | 0d |
| 40 | 1.2.4.2.4 | Aprovação |  | 1d | 2026-06-24 | 2026-06-24 | 39 |  |  | 2026-06-19 | 2026-06-19 | 1d | 2026-06-19 | 2026-06-19 | 11d |  |
| 41 | 1.2.4.3 | **RL-F0009-0305-MB-G-00001** |  | 4d | 2026-07-02 | 2026-07-08 |  |  |  | 2026-06-30 | 2026-07-08 | 7d | 2026-06-30 | 2026-07-08 | 5d |  |
| 42 | 1.2.4.3.1 | Emissão inicial | milestone | 0d | 2026-07-02 | 2026-07-02 | 37FS+10d |  |  | 2026-06-30 | 2026-07-02 | 3d | 2026-06-30 | 2026-07-02 | 1d | 0d |
| 43 | 1.2.4.3.2 | Análise Tecnored |  | 1d | 2026-07-03 | 2026-07-03 | 42 |  |  | 2026-07-03 | 2026-07-03 | 1d | 2026-07-03 | 2026-07-03 | 1d | 0d |
| 44 | 1.2.4.3.3 | Atendimento de comentários |  | 2d | 2026-07-06 | 2026-07-07 | 43 |  |  | 2026-07-06 | 2026-07-07 | 2d | 2026-07-06 | 2026-07-07 | 1d | 0d |
| 45 | 1.2.4.3.4 | Aprovação |  | 1d | 2026-07-08 | 2026-07-08 | 44 |  |  | 2026-07-08 | 2026-07-08 | 1d | 2026-07-08 | 2026-07-08 | 1d |  |
| 46 | 1.2.4.4 | **LP-F0009-0305-MB-G-00001** |  | 37d | 2026-04-27 A | 2026-06-16 |  | 57% | 15.86d | 2026-04-27 | 2026-06-16 | 37d | 2026-04-27 | 2026-06-16 | 21d |  |
| 47 | 1.2.4.4.1 | Emissão inicial |  | 3d | 2026-04-27 A | 2026-04-29 A | 16 | 100% |  | 2026-04-27 | 2026-04-29 | 3d | 2026-04-27 | 2026-04-29 |  |  |
| 48 | 1.2.4.4.2 | Análise Tecnored |  | 1d | 2026-04-30 A | 2026-04-30 A | 47 | 100% |  | 2026-04-30 | 2026-04-30 | 1d | 2026-04-30 | 2026-04-30 |  |  |
| 49 | 1.2.4.4.3 | Atendimento de comentários |  | 2d | 2026-06-12 | 2026-06-15 | 48FS+30d |  |  | 2026-06-12 | 2026-06-15 | 2d | 2026-06-12 | 2026-06-15 | 17d | 0d |
| 50 | 1.2.4.4.4 | Aprovação |  | 1d | 2026-06-16 | 2026-06-16 | 49 |  |  | 2026-06-16 | 2026-06-16 | 1d | 2026-06-16 | 2026-06-16 | 17d |  |

| ID | WBS | Task | Type | Duration | Start | Finish | Predecessors | Complete | Remaining | Baseline start | Baseline finish | Baseline duration | Baseline 1 start | Baseline 1 finish | Total slack | Free slack | Baseline cost |
| --- | --- | --- | --- | --- | --- | --- | --- | --- | --- | --- | --- | --- | --- | --- | --- | --- | --- |
| 51 | 1.2.5 | **Processo** |  | 10d | 2026-05-19 A | 2026-06-01 |  | 80% | 2d | 2026-05-19 | 2026-06-25 | 28d | 2026-05-19 | 2026-06-25 | 32d |  |  |
| 52 | 1.2.5.1 | **CP-F0009-0305-MB-P-00001** | inactive | 23d | 2026-05-11 | 2026-06-10 |  |  |  |  |  |  |  |  | 25d |  | -0 |
| 53 | 1.2.5.1.1 | Emissão inicial | inactive | 5d | 2026-05-11 | 2026-05-15 | 26FS+4d |  |  |  |  |  |  |  | 39d | 14d | -0 |
| 54 | 1.2.5.1.2 | Análise Tecnored | inactive | 1d | 2026-06-05 | 2026-06-05 | 53, 9 |  |  |  |  |  |  |  | 25d | 0d | -0 |
| 55 | 1.2.5.1.3 | Atendimento de comentários | inactive | 2d | 2026-06-08 | 2026-06-09 | 54 |  |  |  |  |  |  |  | 25d | 0d | -0 |
| 56 | 1.2.5.1.4 | Aprovação | inactive | 1d | 2026-06-10 | 2026-06-10 | 55 |  |  |  |  |  |  |  | 25d |  | -0 |
| 57 | 1.2.5.2 | **MD-F0009-0305-MB-P-00001** | inactive | 7d | 2026-06-17 | 2026-06-25 |  |  |  | 2026-06-17 | 2026-06-25 | 7d | 2026-06-17 | 2026-06-25 | 14d |  |  |
| 58 | 1.2.5.2.1 | Emissão inicial | inactive | 3d | 2026-06-17 | 2026-06-19 | 63FS+20d |  |  | 2026-06-17 | 2026-06-19 | 3d | 2026-06-17 | 2026-06-19 | 14d | 0d |  |
| 59 | 1.2.5.2.2 | Análise Tecnored | inactive | 1d | 2026-06-22 | 2026-06-22 | 58 |  |  | 2026-06-22 | 2026-06-22 | 1d | 2026-06-22 | 2026-06-22 | 14d | 0d |  |
| 60 | 1.2.5.2.3 | Atendimento de comentários | inactive | 2d | 2026-06-23 | 2026-06-24 | 59 |  |  | 2026-06-23 | 2026-06-24 | 2d | 2026-06-23 | 2026-06-24 | 14d | 0d |  |
| 61 | 1.2.5.2.4 | Aprovação | inactive | 1d | 2026-06-25 | 2026-06-25 | 60 |  |  | 2026-06-25 | 2026-06-25 | 1d | 2026-06-25 | 2026-06-25 | 14d |  |  |
| 62 | 1.2.5.3 | **FG-F0009-0305-MB-P-00001** |  | 10d | 2026-05-19 A | 2026-06-01 |  | 80% | 2d | 2026-05-19 | 2026-05-25 | 5d | 2026-05-19 | 2026-05-25 | 32d |  |  |
| 63 | 1.2.5.3.1 | Emissão inicial |  | 1d | 2026-05-19 A | 2026-05-19 A | 53FS+8d, 9 | 100% |  | 2026-05-19 | 2026-05-19 | 1d | 2026-05-19 | 2026-05-19 |  |  |  |
| 64 | 1.2.5.3.2 | Análise Tecnored |  | 1d | 2026-05-20 A | 2026-05-20 A | 63 | 100% |  | 2026-05-20 | 2026-05-20 | 1d | 2026-05-20 | 2026-05-20 |  |  |  |
| 65 | 1.2.5.3.3 | Atendimento de comentários |  | 2d | 2026-05-21 A | 2026-05-22 A | 64 | 100% |  | 2026-05-21 | 2026-05-22 | 2d | 2026-05-21 | 2026-05-22 |  |  |  |
| 66 | 1.2.5.3.4 | Aprovação |  | 1d | 2026-06-01 | 2026-06-01 | 65FS+5d |  |  | 2026-05-25 | 2026-05-25 | 1d | 2026-05-25 | 2026-05-25 | 28d |  |  |
| 67 | 1.2.6 | **Mecânica** |  | 37d | 2026-05-19 A | 2026-07-08 |  | 4% | 35.36d | 2026-05-19 | 2026-07-08 | 37d | 2026-05-19 | 2026-07-08 | 5d |  |  |
| 68 | 1.2.6.1 | **CP-F0009-0305-MB-M-00001** | inactive | 11d | 2026-05-08 | 2026-05-22 |  |  |  |  |  |  |  |  | 35d |  | -0 |
| 69 | 1.2.6.1.1 | Emissão inicial | inactive | 5d | 2026-05-08 | 2026-05-14 | 26FS+3d |  |  |  |  |  |  |  | 35d | 2d | -0 |
| 70 | 1.2.6.1.2 | Análise Tecnored | inactive | 1d | 2026-05-19 | 2026-05-19 | 69, 10 |  |  |  |  |  |  |  | 38d | 0d | -0 |
| 71 | 1.2.6.1.3 | Atendimento de comentários | inactive | 2d | 2026-05-20 | 2026-05-21 | 70 |  |  |  |  |  |  |  | 38d | 0d | -0 |
| 72 | 1.2.6.1.4 | Aprovação | inactive | 1d | 2026-05-22 | 2026-05-22 | 71 |  |  |  |  |  |  |  | 38d |  | -0 |
| 73 | 1.2.6.2 | **MD-F0009-0305-MB-M-00001** | inactive | 6d | 2026-06-02 | 2026-06-09 |  |  |  | 2026-05-26 | 2026-06-02 | 6d | 2026-05-26 | 2026-06-02 | 23d |  |  |
| 74 | 1.2.6.2.1 | Emissão inicial | inactive | 2d | 2026-06-02 | 2026-06-03 | 69, 81, 10 |  |  | 2026-05-26 | 2026-05-27 | 2d | 2026-05-26 | 2026-05-27 | 23d | 0d |  |
| 75 | 1.2.6.2.2 | Análise Tecnored | inactive | 1d | 2026-06-04 | 2026-06-04 | 74 |  |  | 2026-05-28 | 2026-05-28 | 1d | 2026-05-28 | 2026-05-28 | 26d | 0d |  |
| 76 | 1.2.6.2.3 | Atendimento de comentários | inactive | 2d | 2026-06-05 | 2026-06-08 | 75 |  |  | 2026-05-29 | 2026-06-01 | 2d | 2026-05-29 | 2026-06-01 | 26d | 0d |  |
| 77 | 1.2.6.2.4 | Aprovação | inactive | 1d | 2026-06-09 | 2026-06-09 | 76 |  |  | 2026-06-02 | 2026-06-02 | 1d | 2026-06-02 | 2026-06-02 | 26d |  |  |

| ID | WBS | Task | Duration | Start | Finish | Predecessors | Complete | Remaining | Baseline start | Baseline finish | Baseline duration | Baseline 1 start | Baseline 1 finish | Total slack | Free slack |
| --- | --- | --- | --- | --- | --- | --- | --- | --- | --- | --- | --- | --- | --- | --- | --- |
| 78 | 1.2.6.3 | **LE-F0009-0305-MB-M-00001** | 6d | 2026-05-26 A | 2026-06-02 |  | 33% | 4d | 2026-05-19 | 2026-05-26 | 6d | 2026-05-19 | 2026-05-26 | 31d |  |
| 79 | 1.2.6.3.1 | Emissão inicial | 2d | 2026-05-26 A | 2026-05-27 A | 69, 10FS+5d | 100% |  | 2026-05-19 | 2026-05-20 | 2d | 2026-05-19 | 2026-05-20 |  |  |
| 80 | 1.2.6.3.2 | Análise Tecnored | 1d | 2026-05-28 | 2026-05-28 | 79 |  |  | 2026-05-21 | 2026-05-21 | 1d | 2026-05-21 | 2026-05-21 | 21d | 0d |
| 81 | 1.2.6.3.3 | Atendimento de comentários | 2d | 2026-05-29 | 2026-06-01 | 80 |  |  | 2026-05-22 | 2026-05-25 | 2d | 2026-05-22 | 2026-05-25 | 21d | 0d |
| 82 | 1.2.6.3.4 | Aprovação | 1d | 2026-06-02 | 2026-06-02 | 81 |  |  | 2026-05-26 | 2026-05-26 | 1d | 2026-05-26 | 2026-05-26 | 27d |  |
| 83 | 1.2.6.4 | **PQ-F0009-0305-MB-M-00001** | 7d | 2026-06-02 | 2026-06-10 |  |  |  | 2026-05-28 | 2026-06-05 | 7d | 2026-05-28 | 2026-06-05 | 25d |  |
| 84 | 1.2.6.4.1 | Emissão inicial | 3d | 2026-06-02 | 2026-06-04 | 74 |  |  | 2026-05-28 | 2026-06-01 | 3d | 2026-05-28 | 2026-06-01 | 21d | 0d |
| 85 | 1.2.6.4.2 | Análise Tecnored | 1d | 2026-06-05 | 2026-06-05 | 84 |  |  | 2026-06-02 | 2026-06-02 | 1d | 2026-06-02 | 2026-06-02 | 21d | 0d |
| 86 | 1.2.6.4.3 | Atendimento de comentários | 2d | 2026-06-08 | 2026-06-09 | 85 |  |  | 2026-06-03 | 2026-06-04 | 2d | 2026-06-03 | 2026-06-04 | 21d | 0d |
| 87 | 1.2.6.4.4 | Aprovação | 1d | 2026-06-10 | 2026-06-10 | 86 |  |  | 2026-06-05 | 2026-06-05 | 1d | 2026-06-05 | 2026-06-05 | 21d |  |
| 88 | 1.2.6.5 | **AG-F0009-0305-MB-L-00001** | 13d | 2026-06-22 | 2026-07-08 |  |  |  | 2026-06-22 | 2026-07-08 | 13d | 2026-06-22 | 2026-07-08 | 5d |  |
| 89 | 1.2.6.5.1 | Emissão inicial | 9d | 2026-06-22 | 2026-07-02 | 276 |  |  | 2026-06-22 | 2026-07-02 | 9d | 2026-06-22 | 2026-07-02 | 1d | 0d |
| 90 | 1.2.6.5.2 | Análise Tecnored | 1d | 2026-07-03 | 2026-07-03 | 89 |  |  | 2026-07-03 | 2026-07-03 | 1d | 2026-07-03 | 2026-07-03 | 1d | 0d |
| 91 | 1.2.6.5.3 | Atendimento de comentários | 2d | 2026-07-06 | 2026-07-07 | 90 |  |  | 2026-07-06 | 2026-07-07 | 2d | 2026-07-06 | 2026-07-07 | 1d | 0d |
| 92 | 1.2.6.5.4 | Aprovação | 1d | 2026-07-08 | 2026-07-08 | 91 |  |  | 2026-07-08 | 2026-07-08 | 1d | 2026-07-08 | 2026-07-08 | 1d |  |
| 93 | 1.2.6.6 | **AG-F0009-0305-MB-L-00002** | 13d | 2026-06-22 | 2026-07-08 |  |  |  | 2026-06-22 | 2026-07-08 | 13d | 2026-06-22 | 2026-07-08 | 5d |  |
| 94 | 1.2.6.6.1 | Emissão inicial | 9d | 2026-06-22 | 2026-07-02 | 276 |  |  | 2026-06-22 | 2026-07-02 | 9d | 2026-06-22 | 2026-07-02 | 1d | 0d |
| 95 | 1.2.6.6.2 | Análise Tecnored | 1d | 2026-07-03 | 2026-07-03 | 94 |  |  | 2026-07-03 | 2026-07-03 | 1d | 2026-07-03 | 2026-07-03 | 1d | 0d |
| 96 | 1.2.6.6.3 | Atendimento de comentários | 2d | 2026-07-06 | 2026-07-07 | 95 |  |  | 2026-07-06 | 2026-07-07 | 2d | 2026-07-06 | 2026-07-07 | 1d | 0d |
| 97 | 1.2.6.6.4 | Aprovação | 1d | 2026-07-08 | 2026-07-08 | 96 |  |  | 2026-07-08 | 2026-07-08 | 1d | 2026-07-08 | 2026-07-08 | 1d |  |
| 98 | 1.2.6.7 | **AG-F0009-0305-MB-L-00003** | 13d | 2026-06-22 | 2026-07-08 |  |  |  | 2026-06-22 | 2026-07-08 | 13d | 2026-06-22 | 2026-07-08 | 5d |  |
| 99 | 1.2.6.7.1 | Emissão inicial | 9d | 2026-06-22 | 2026-07-02 | 276 |  |  | 2026-06-22 | 2026-07-02 | 9d | 2026-06-22 | 2026-07-02 | 1d | 0d |
| 100 | 1.2.6.7.2 | Análise Tecnored | 1d | 2026-07-03 | 2026-07-03 | 99 |  |  | 2026-07-03 | 2026-07-03 | 1d | 2026-07-03 | 2026-07-03 | 1d | 0d |
| 101 | 1.2.6.7.3 | Atendimento de comentários | 2d | 2026-07-06 | 2026-07-07 | 100 |  |  | 2026-07-06 | 2026-07-07 | 2d | 2026-07-06 | 2026-07-07 | 1d | 0d |
| 102 | 1.2.6.7.4 | Aprovação | 1d | 2026-07-08 | 2026-07-08 | 101 |  |  | 2026-07-08 | 2026-07-08 | 1d | 2026-07-08 | 2026-07-08 | 1d |  |

| ID | WBS | Task | Duration | Start | Finish | Predecessors | Baseline start | Baseline finish | Baseline duration | Baseline 1 start | Baseline 1 finish | Total slack | Free slack |
| --- | --- | --- | --- | --- | --- | --- | --- | --- | --- | --- | --- | --- | --- |
| 103 | 1.2.6.8 | **AG-F0009-0305-MB-L-00004** | 13d | 2026-06-22 | 2026-07-08 |  | 2026-06-22 | 2026-07-08 | 13d | 2026-06-22 | 2026-07-08 | 5d |  |
| 104 | 1.2.6.8.1 | Emissão inicial | 9d | 2026-06-22 | 2026-07-02 | 276 | 2026-06-22 | 2026-07-02 | 9d | 2026-06-22 | 2026-07-02 | 1d | 0d |
| 105 | 1.2.6.8.2 | Análise Tecnored | 1d | 2026-07-03 | 2026-07-03 | 104 | 2026-07-03 | 2026-07-03 | 1d | 2026-07-03 | 2026-07-03 | 1d | 0d |
| 106 | 1.2.6.8.3 | Atendimento de comentários | 2d | 2026-07-06 | 2026-07-07 | 105 | 2026-07-06 | 2026-07-07 | 2d | 2026-07-06 | 2026-07-07 | 1d | 0d |
| 107 | 1.2.6.8.4 | Aprovação | 1d | 2026-07-08 | 2026-07-08 | 106 | 2026-07-08 | 2026-07-08 | 1d | 2026-07-08 | 2026-07-08 | 1d |  |
| 108 | 1.2.6.9 | **AG-F0009-0305-MB-L-00005** | 13d | 2026-06-22 | 2026-07-08 |  | 2026-06-22 | 2026-07-08 | 13d | 2026-06-22 | 2026-07-08 | 5d |  |
| 109 | 1.2.6.9.1 | Emissão inicial | 9d | 2026-06-22 | 2026-07-02 | 276 | 2026-06-22 | 2026-07-02 | 9d | 2026-06-22 | 2026-07-02 | 1d | 0d |
| 110 | 1.2.6.9.2 | Análise Tecnored | 1d | 2026-07-03 | 2026-07-03 | 109 | 2026-07-03 | 2026-07-03 | 1d | 2026-07-03 | 2026-07-03 | 1d | 0d |
| 111 | 1.2.6.9.3 | Atendimento de comentários | 2d | 2026-07-06 | 2026-07-07 | 110 | 2026-07-06 | 2026-07-07 | 2d | 2026-07-06 | 2026-07-07 | 1d | 0d |
| 112 | 1.2.6.9.4 | Aprovação | 1d | 2026-07-08 | 2026-07-08 | 111 | 2026-07-08 | 2026-07-08 | 1d | 2026-07-08 | 2026-07-08 | 1d |  |
| 113 | 1.2.6.10 | **AG-F0009-0305-MB-L-00006** | 13d | 2026-06-22 | 2026-07-08 |  | 2026-06-22 | 2026-07-08 | 13d | 2026-06-22 | 2026-07-08 | 5d |  |
| 114 | 1.2.6.10.1 | Emissão inicial | 9d | 2026-06-22 | 2026-07-02 | 276 | 2026-06-22 | 2026-07-02 | 9d | 2026-06-22 | 2026-07-02 | 1d | 0d |
| 115 | 1.2.6.10.2 | Análise Tecnored | 1d | 2026-07-03 | 2026-07-03 | 114 | 2026-07-03 | 2026-07-03 | 1d | 2026-07-03 | 2026-07-03 | 1d | 0d |
| 116 | 1.2.6.10.3 | Atendimento de comentários | 2d | 2026-07-06 | 2026-07-07 | 115 | 2026-07-06 | 2026-07-07 | 2d | 2026-07-06 | 2026-07-07 | 1d | 0d |
| 117 | 1.2.6.10.4 | Aprovação | 1d | 2026-07-08 | 2026-07-08 | 116 | 2026-07-08 | 2026-07-08 | 1d | 2026-07-08 | 2026-07-08 | 1d |  |
| 118 | 1.2.6.11 | **AG-F0009-0305-MB-L-00007** | 13d | 2026-06-22 | 2026-07-08 |  | 2026-06-22 | 2026-07-08 | 13d | 2026-06-22 | 2026-07-08 | 5d |  |
| 119 | 1.2.6.11.1 | Emissão inicial | 9d | 2026-06-22 | 2026-07-02 | 276 | 2026-06-22 | 2026-07-02 | 9d | 2026-06-22 | 2026-07-02 | 1d | 0d |
| 120 | 1.2.6.11.2 | Análise Tecnored | 1d | 2026-07-03 | 2026-07-03 | 119 | 2026-07-03 | 2026-07-03 | 1d | 2026-07-03 | 2026-07-03 | 1d | 0d |
| 121 | 1.2.6.11.3 | Atendimento de comentários | 2d | 2026-07-06 | 2026-07-07 | 120 | 2026-07-06 | 2026-07-07 | 2d | 2026-07-06 | 2026-07-07 | 1d | 0d |
| 122 | 1.2.6.11.4 | Aprovação | 1d | 2026-07-08 | 2026-07-08 | 121 | 2026-07-08 | 2026-07-08 | 1d | 2026-07-08 | 2026-07-08 | 1d |  |
| 123 | 1.2.6.12 | **AG-F0009-0305-MB-L-00008** | 13d | 2026-06-22 | 2026-07-08 |  | 2026-06-22 | 2026-07-08 | 13d | 2026-06-22 | 2026-07-08 | 5d |  |
| 124 | 1.2.6.12.1 | Emissão inicial | 9d | 2026-06-22 | 2026-07-02 | 276 | 2026-06-22 | 2026-07-02 | 9d | 2026-06-22 | 2026-07-02 | 1d | 0d |
| 125 | 1.2.6.12.2 | Análise Tecnored | 1d | 2026-07-03 | 2026-07-03 | 124 | 2026-07-03 | 2026-07-03 | 1d | 2026-07-03 | 2026-07-03 | 1d | 0d |
| 126 | 1.2.6.12.3 | Atendimento de comentários | 2d | 2026-07-06 | 2026-07-07 | 125 | 2026-07-06 | 2026-07-07 | 2d | 2026-07-06 | 2026-07-07 | 1d | 0d |
| 127 | 1.2.6.12.4 | Aprovação | 1d | 2026-07-08 | 2026-07-08 | 126 | 2026-07-08 | 2026-07-08 | 1d | 2026-07-08 | 2026-07-08 | 1d |  |

| ID | WBS | Task | Duration | Start | Finish | Predecessors | Baseline start | Baseline finish | Baseline duration | Baseline 1 start | Baseline 1 finish | Total slack | Free slack |
| --- | --- | --- | --- | --- | --- | --- | --- | --- | --- | --- | --- | --- | --- |
| 128 | 1.2.6.13 | **AG-F0009-0305-MB-L-00009** | 13d | 2026-06-22 | 2026-07-08 |  | 2026-06-22 | 2026-07-08 | 13d | 2026-06-22 | 2026-07-08 | 5d |  |
| 129 | 1.2.6.13.1 | Emissão inicial | 9d | 2026-06-22 | 2026-07-02 | 276 | 2026-06-22 | 2026-07-02 | 9d | 2026-06-22 | 2026-07-02 | 1d | 0d |
| 130 | 1.2.6.13.2 | Análise Tecnored | 1d | 2026-07-03 | 2026-07-03 | 129 | 2026-07-03 | 2026-07-03 | 1d | 2026-07-03 | 2026-07-03 | 1d | 0d |
| 131 | 1.2.6.13.3 | Atendimento de comentários | 2d | 2026-07-06 | 2026-07-07 | 130 | 2026-07-06 | 2026-07-07 | 2d | 2026-07-06 | 2026-07-07 | 1d | 0d |
| 132 | 1.2.6.13.4 | Aprovação | 1d | 2026-07-08 | 2026-07-08 | 131 | 2026-07-08 | 2026-07-08 | 1d | 2026-07-08 | 2026-07-08 | 1d |  |
| 133 | 1.2.6.14 | **PL-F0009-0305-MB-M-00001** | 12d | 2026-06-01 | 2026-06-16 |  | 2026-05-29 | 2026-06-15 | 12d | 2026-05-29 | 2026-06-15 | 21d |  |
| 134 | 1.2.6.14.1 | Emissão inicial | 8d | 2026-06-01 | 2026-06-10 | 160 | 2026-05-29 | 2026-06-09 | 8d | 2026-05-29 | 2026-06-09 | 17d | 0d |
| 135 | 1.2.6.14.2 | Análise Tecnored | 1d | 2026-06-11 | 2026-06-11 | 134 | 2026-06-10 | 2026-06-10 | 1d | 2026-06-10 | 2026-06-10 | 17d | 0d |
| 136 | 1.2.6.14.3 | Atendimento de comentários | 2d | 2026-06-12 | 2026-06-15 | 135 | 2026-06-11 | 2026-06-12 | 2d | 2026-06-11 | 2026-06-12 | 17d | 0d |
| 137 | 1.2.6.14.4 | Aprovação | 1d | 2026-06-16 | 2026-06-16 | 136 | 2026-06-15 | 2026-06-15 | 1d | 2026-06-15 | 2026-06-15 | 17d |  |
| 138 | 1.2.6.15 | **PL-F0009-0305-MB-M-00002** | 12d | 2026-06-01 | 2026-06-16 |  | 2026-05-29 | 2026-06-15 | 12d | 2026-05-29 | 2026-06-15 | 21d |  |
| 139 | 1.2.6.15.1 | Emissão inicial | 8d | 2026-06-01 | 2026-06-10 | 160 | 2026-05-29 | 2026-06-09 | 8d | 2026-05-29 | 2026-06-09 | 17d | 0d |
| 140 | 1.2.6.15.2 | Análise Tecnored | 1d | 2026-06-11 | 2026-06-11 | 139 | 2026-06-10 | 2026-06-10 | 1d | 2026-06-10 | 2026-06-10 | 17d | 0d |
| 141 | 1.2.6.15.3 | Atendimento de comentários | 2d | 2026-06-12 | 2026-06-15 | 140 | 2026-06-11 | 2026-06-12 | 2d | 2026-06-11 | 2026-06-12 | 17d | 0d |
| 142 | 1.2.6.15.4 | Aprovação | 1d | 2026-06-16 | 2026-06-16 | 141 | 2026-06-15 | 2026-06-15 | 1d | 2026-06-15 | 2026-06-15 | 17d |  |
| 143 | 1.2.6.16 | **PL-F0009-0305-MB-M-00003** | 12d | 2026-06-01 | 2026-06-16 |  | 2026-05-29 | 2026-06-15 | 12d | 2026-05-29 | 2026-06-15 | 21d |  |
| 144 | 1.2.6.16.1 | Emissão inicial | 8d | 2026-06-01 | 2026-06-10 | 160 | 2026-05-29 | 2026-06-09 | 8d | 2026-05-29 | 2026-06-09 | 17d | 0d |
| 145 | 1.2.6.16.2 | Análise Tecnored | 1d | 2026-06-11 | 2026-06-11 | 144 | 2026-06-10 | 2026-06-10 | 1d | 2026-06-10 | 2026-06-10 | 17d | 0d |
| 146 | 1.2.6.16.3 | Atendimento de comentários | 2d | 2026-06-12 | 2026-06-15 | 145 | 2026-06-11 | 2026-06-12 | 2d | 2026-06-11 | 2026-06-12 | 17d | 0d |
| 147 | 1.2.6.16.4 | Aprovação | 1d | 2026-06-16 | 2026-06-16 | 146 | 2026-06-15 | 2026-06-15 | 1d | 2026-06-15 | 2026-06-15 | 17d |  |
| 148 | 1.2.6.17 | **PL-F0009-0305-MB-M-00004** | 12d | 2026-06-01 | 2026-06-16 |  | 2026-05-29 | 2026-06-15 | 12d | 2026-05-29 | 2026-06-15 | 21d |  |
| 149 | 1.2.6.17.1 | Emissão inicial | 8d | 2026-06-01 | 2026-06-10 | 160 | 2026-05-29 | 2026-06-09 | 8d | 2026-05-29 | 2026-06-09 | 17d | 0d |
| 150 | 1.2.6.17.2 | Análise Tecnored | 1d | 2026-06-11 | 2026-06-11 | 149 | 2026-06-10 | 2026-06-10 | 1d | 2026-06-10 | 2026-06-10 | 17d | 0d |
| 151 | 1.2.6.17.3 | Atendimento de comentários | 2d | 2026-06-12 | 2026-06-15 | 150 | 2026-06-11 | 2026-06-12 | 2d | 2026-06-11 | 2026-06-12 | 17d | 0d |
| 152 | 1.2.6.17.4 | Aprovação | 1d | 2026-06-16 | 2026-06-16 | 151 | 2026-06-15 | 2026-06-15 | 1d | 2026-06-15 | 2026-06-15 | 17d |  |

| ID | WBS | Task | Duration | Start | Finish | Predecessors | Complete | Remaining | Baseline start | Baseline finish | Baseline duration | Baseline 1 start | Baseline 1 finish | Total slack | Free slack |
| --- | --- | --- | --- | --- | --- | --- | --- | --- | --- | --- | --- | --- | --- | --- | --- |
| 153 | 1.2.6.18 | **MC-F0009-0305-MB-M-00001** | 14d | 2026-06-01 | 2026-06-18 |  |  |  | 2026-05-29 | 2026-06-17 | 14d | 2026-05-29 | 2026-06-17 | 4d |  |
| 154 | 1.2.6.18.1 | Emissão inicial | 10d | 2026-06-01 | 2026-06-12 | 160 |  |  | 2026-05-29 | 2026-06-11 | 10d | 2026-05-29 | 2026-06-11 | 4d | 0d |
| 155 | 1.2.6.18.2 | Análise Tecnored | 1d | 2026-06-15 | 2026-06-15 | 154 |  |  | 2026-06-12 | 2026-06-12 | 1d | 2026-06-12 | 2026-06-12 | 4d | 0d |
| 156 | 1.2.6.18.3 | Atendimento de comentários | 2d | 2026-06-16 | 2026-06-17 | 155 |  |  | 2026-06-15 | 2026-06-16 | 2d | 2026-06-15 | 2026-06-16 | 15d | 0d |
| 157 | 1.2.6.18.4 | Aprovação | 1d | 2026-06-18 | 2026-06-18 | 156 |  |  | 2026-06-17 | 2026-06-17 | 1d | 2026-06-17 | 2026-06-17 | 15d |  |
| 158 | 1.2.6.19 | **ML-F0009-0305-MB-M-00001** | 12d | 2026-05-19 A | 2026-06-03 |  | 67% | 4d | 2026-05-19 | 2026-06-02 | 11d | 2026-05-19 | 2026-06-02 | 30d |  |
| 159 | 1.2.6.19.1 | Emissão inicial | 8d | 2026-05-19 A | 2026-05-28 A | 69, 10 | 100% |  | 2026-05-19 | 2026-05-27 | 7d | 2026-05-19 | 2026-05-27 |  |  |
| 160 | 1.2.6.19.2 | Análise Tecnored | 1d | 2026-05-29 | 2026-05-29 | 159 |  |  | 2026-05-28 | 2026-05-28 | 1d | 2026-05-28 | 2026-05-28 | 4d | 0d |
| 161 | 1.2.6.19.3 | Atendimento de comentários | 2d | 2026-06-01 | 2026-06-02 | 160 |  |  | 2026-05-29 | 2026-06-01 | 2d | 2026-05-29 | 2026-06-01 | 13d | 0d |
| 162 | 1.2.6.19.4 | Aprovação | 1d | 2026-06-03 | 2026-06-03 | 161 |  |  | 2026-06-02 | 2026-06-02 | 1d | 2026-06-02 | 2026-06-02 | 26d |  |
| 163 | 1.2.6.20 | **FD-F0009-0305-MB-M-00001** | 7d | 2026-06-15 | 2026-06-23 |  |  |  | 2026-06-12 | 2026-06-22 | 7d | 2026-06-12 | 2026-06-22 | 16d |  |
| 164 | 1.2.6.20.1 | Emissão inicial | 3d | 2026-06-15 | 2026-06-17 | 154 |  |  | 2026-06-12 | 2026-06-16 | 3d | 2026-06-12 | 2026-06-16 | 12d | 0d |
| 165 | 1.2.6.20.2 | Análise Tecnored | 1d | 2026-06-18 | 2026-06-18 | 164 |  |  | 2026-06-17 | 2026-06-17 | 1d | 2026-06-17 | 2026-06-17 | 12d | 0d |
| 166 | 1.2.6.20.3 | Atendimento de comentários | 2d | 2026-06-19 | 2026-06-22 | 165 |  |  | 2026-06-18 | 2026-06-19 | 2d | 2026-06-18 | 2026-06-19 | 12d | 0d |
| 167 | 1.2.6.20.4 | Aprovação | 1d | 2026-06-23 | 2026-06-23 | 166 |  |  | 2026-06-22 | 2026-06-22 | 1d | 2026-06-22 | 2026-06-22 | 12d |  |
| 168 | 1.2.6.21 | **FD-F0009-0305-MB-M-00002** | 7d | 2026-06-15 | 2026-06-23 |  |  |  | 2026-06-12 | 2026-06-22 | 7d | 2026-06-12 | 2026-06-22 | 16d |  |
| 169 | 1.2.6.21.1 | Emissão inicial | 3d | 2026-06-15 | 2026-06-17 | 154 |  |  | 2026-06-12 | 2026-06-16 | 3d | 2026-06-12 | 2026-06-16 | 12d | 0d |
| 170 | 1.2.6.21.2 | Análise Tecnored | 1d | 2026-06-18 | 2026-06-18 | 169 |  |  | 2026-06-17 | 2026-06-17 | 1d | 2026-06-17 | 2026-06-17 | 12d | 0d |
| 171 | 1.2.6.21.3 | Atendimento de comentários | 2d | 2026-06-19 | 2026-06-22 | 170 |  |  | 2026-06-18 | 2026-06-19 | 2d | 2026-06-18 | 2026-06-19 | 12d | 0d |
| 172 | 1.2.6.21.4 | Aprovação | 1d | 2026-06-23 | 2026-06-23 | 171 |  |  | 2026-06-22 | 2026-06-22 | 1d | 2026-06-22 | 2026-06-22 | 12d |  |
| 173 | 1.2.6.22 | **FD-F0009-0305-MB-M-00003** | 7d | 2026-06-15 | 2026-06-23 |  |  |  | 2026-06-12 | 2026-06-22 | 7d | 2026-06-12 | 2026-06-22 | 16d |  |
| 174 | 1.2.6.22.1 | Emissão inicial | 3d | 2026-06-15 | 2026-06-17 | 154 |  |  | 2026-06-12 | 2026-06-16 | 3d | 2026-06-12 | 2026-06-16 | 12d | 0d |
| 175 | 1.2.6.22.2 | Análise Tecnored | 1d | 2026-06-18 | 2026-06-18 | 174 |  |  | 2026-06-17 | 2026-06-17 | 1d | 2026-06-17 | 2026-06-17 | 12d | 0d |
| 176 | 1.2.6.22.3 | Atendimento de comentários | 2d | 2026-06-19 | 2026-06-22 | 175 |  |  | 2026-06-18 | 2026-06-19 | 2d | 2026-06-18 | 2026-06-19 | 12d | 0d |
| 177 | 1.2.6.22.4 | Aprovação | 1d | 2026-06-23 | 2026-06-23 | 176 |  |  | 2026-06-22 | 2026-06-22 | 1d | 2026-06-22 | 2026-06-22 | 12d |  |

| ID | WBS | Task | Type | Duration | Start | Finish | Predecessors | Baseline start | Baseline finish | Baseline duration | Baseline 1 start | Baseline 1 finish | Total slack | Free slack | Baseline cost |
| --- | --- | --- | --- | --- | --- | --- | --- | --- | --- | --- | --- | --- | --- | --- | --- |
| 178 | 1.2.7 | **Tubulação/Utilidades** |  | 28d | 2026-06-08 | 2026-07-15 |  | 2026-05-20 | 2026-07-08 | 36d | 2026-05-20 | 2026-07-08 | 0d |  |  |
| 179 | 1.2.7.1 | **CP-F0009-0305-MB-T-00001** | inactive | 14d | 2026-05-08 | 2026-05-27 |  |  |  |  |  |  | 35d |  | -0 |
| 180 | 1.2.7.1.1 | Emissão inicial | inactive | 5d | 2026-05-08 | 2026-05-14 | 26FS+3d |  |  |  |  |  | 40d | 5d | -0 |
| 181 | 1.2.7.1.2 | Análise Tecnored | inactive | 1d | 2026-05-22 | 2026-05-22 | 180, 11 |  |  |  |  |  | 35d | 0d | -0 |
| 182 | 1.2.7.1.3 | Atendimento de comentários | inactive | 2d | 2026-05-25 | 2026-05-26 | 181 |  |  |  |  |  | 35d | 0d | -0 |
| 183 | 1.2.7.1.4 | Aprovação | inactive | 1d | 2026-05-27 | 2026-05-27 | 182 |  |  |  |  |  | 35d |  | -0 |
| 184 | 1.2.7.2 | **MD-F0009-0305-MB-U-00001** | inactive | 7d | 2026-07-07 | 2026-07-15 |  | 2026-06-18 | 2026-06-26 | 7d | 2026-06-18 | 2026-06-26 | -3d | 0d |  |
| 185 | 1.2.7.2.1 | Emissão inicial | inactive | 3d | 2026-07-07 | 2026-07-09 | 229FS+5d | 2026-06-18 | 2026-06-22 | 3d | 2026-06-18 | 2026-06-22 | -3d | 0d |  |
| 186 | 1.2.7.2.2 | Análise Tecnored | inactive | 1d | 2026-07-10 | 2026-07-10 | 185 | 2026-06-23 | 2026-06-23 | 1d | 2026-06-23 | 2026-06-23 | 0d |  |  |
| 187 | 1.2.7.2.3 | Atendimento de comentários | inactive | 2d | 2026-07-13 | 2026-07-14 | 186 | 2026-06-24 | 2026-06-25 | 2d | 2026-06-24 | 2026-06-25 | 0d |  |  |
| 188 | 1.2.7.2.4 | Aprovação | inactive | 1d | 2026-07-15 | 2026-07-15 | 187 | 2026-06-26 | 2026-06-26 | 1d | 2026-06-26 | 2026-06-26 | 0d |  |  |
| 189 | 1.2.7.3 | **ML-F0009-0305-MB-T-00001** |  | 7d | 2026-06-10 | 2026-06-18 |  | 2026-05-28 | 2026-06-05 | 7d | 2026-05-28 | 2026-06-05 | 5d |  |  |
| 190 | 1.2.7.3.1 | Emissão inicial |  | 3d | 2026-06-10 | 2026-06-12 | 159, 220 | 2026-05-28 | 2026-06-01 | 3d | 2026-05-28 | 2026-06-01 | 5d | 0d |  |
| 191 | 1.2.7.3.2 | Análise Tecnored |  | 1d | 2026-06-15 | 2026-06-15 | 190 | 2026-06-02 | 2026-06-02 | 1d | 2026-06-02 | 2026-06-02 | 5d | 0d |  |
| 192 | 1.2.7.3.3 | Atendimento de comentários |  | 2d | 2026-06-16 | 2026-06-17 | 191 | 2026-06-03 | 2026-06-04 | 2d | 2026-06-03 | 2026-06-04 | 5d | 0d |  |
| 193 | 1.2.7.3.4 | Aprovação |  | 1d | 2026-06-18 | 2026-06-18 | 192 | 2026-06-05 | 2026-06-05 | 1d | 2026-06-05 | 2026-06-05 | 5d | 0d |  |
| 194 | 1.2.7.4 | **ET-F0009-0305-MB-T-00001** | inactive | 7d | 2026-06-17 | 2026-06-25 |  | 2026-06-30 | 2026-07-08 | 7d | 2026-06-30 | 2026-07-08 | 14d |  |  |
| 195 | 1.2.7.4.1 | Emissão inicial | inactive | 3d | 2026-06-17 | 2026-06-19 | 200FS+2d | 2026-06-30 | 2026-07-02 | 3d | 2026-06-30 | 2026-07-02 | 14d | 0d |  |
| 196 | 1.2.7.4.2 | Análise Tecnored | inactive | 1d | 2026-06-22 | 2026-06-22 | 195 | 2026-07-03 | 2026-07-03 | 1d | 2026-07-03 | 2026-07-03 | 14d | 0d |  |
| 197 | 1.2.7.4.3 | Atendimento de comentários | inactive | 2d | 2026-06-23 | 2026-06-24 | 196 | 2026-07-06 | 2026-07-07 | 2d | 2026-07-06 | 2026-07-07 | 14d | 0d |  |
| 198 | 1.2.7.4.4 | Aprovação | inactive | 1d | 2026-06-25 | 2026-06-25 | 197 | 2026-07-08 | 2026-07-08 | 1d | 2026-07-08 | 2026-07-08 | 14d |  |  |
| 199 | 1.2.7.5 | **FD-F0009-0305-MB-T-00001** |  | 7d | 2026-06-10 | 2026-06-18 |  | 2026-06-23 | 2026-07-01 | 7d | 2026-06-23 | 2026-07-01 | 12d |  |  |
| 200 | 1.2.7.5.1 | Emissão inicial |  | 3d | 2026-06-10 | 2026-06-12 | 220 | 2026-06-23 | 2026-06-25 | 3d | 2026-06-23 | 2026-06-25 | 12d | 0d |  |
| 201 | 1.2.7.5.2 | Análise Tecnored |  | 1d | 2026-06-15 | 2026-06-15 | 200 | 2026-06-26 | 2026-06-26 | 1d | 2026-06-26 | 2026-06-26 | 19d | 0d |  |
| 202 | 1.2.7.5.3 | Atendimento de comentários |  | 2d | 2026-06-16 | 2026-06-17 | 201 | 2026-06-29 | 2026-06-30 | 2d | 2026-06-29 | 2026-06-30 | 19d | 0d |  |
| 203 | 1.2.7.5.4 | Aprovação |  | 1d | 2026-06-18 | 2026-06-18 | 202 | 2026-07-01 | 2026-07-01 | 1d | 2026-07-01 | 2026-07-01 | 19d |  |  |

| ID | WBS | Task | Type | Duration | Start | Finish | Predecessors | Baseline start | Baseline finish | Baseline duration | Baseline 1 start | Baseline 1 finish | Total slack | Free slack |
| --- | --- | --- | --- | --- | --- | --- | --- | --- | --- | --- | --- | --- | --- | --- |
| 204 | 1.2.7.6 | **FD-F0009-0305-MB-T-00002** | inactive | 7d | 2026-06-17 | 2026-06-25 |  | 2026-06-23 | 2026-07-01 | 7d | 2026-06-23 | 2026-07-01 | 14d |  |
| 205 | 1.2.7.6.1 | Emissão inicial | inactive | 3d | 2026-06-17 | 2026-06-19 | 215 | 2026-06-23 | 2026-06-25 | 3d | 2026-06-23 | 2026-06-25 | 14d | 0d |
| 206 | 1.2.7.6.2 | Análise Tecnored | inactive | 1d | 2026-06-22 | 2026-06-22 | 205 | 2026-06-26 | 2026-06-26 | 1d | 2026-06-26 | 2026-06-26 | 14d | 0d |
| 207 | 1.2.7.6.3 | Atendimento de comentários | inactive | 2d | 2026-06-23 | 2026-06-24 | 206 | 2026-06-29 | 2026-06-30 | 2d | 2026-06-29 | 2026-06-30 | 14d | 0d |
| 208 | 1.2.7.6.4 | Aprovação | inactive | 1d | 2026-06-25 | 2026-06-25 | 207 | 2026-07-01 | 2026-07-01 | 1d | 2026-07-01 | 2026-07-01 | 14d |  |
| 209 | 1.2.7.7 | **PQ-F0009-0305-MB-T-00001** |  | 7d | 2026-07-07 | 2026-07-15 |  | 2026-06-23 | 2026-07-01 | 7d | 2026-06-23 | 2026-07-01 | 0d |  |
| 210 | 1.2.7.7.1 | Emissão inicial |  | 3d | 2026-07-07 | 2026-07-09 | 185 | 2026-06-23 | 2026-06-25 | 3d | 2026-06-23 | 2026-06-25 | 0d |  |
| 211 | 1.2.7.7.2 | Análise Tecnored |  | 1d | 2026-07-10 | 2026-07-10 | 210 | 2026-06-26 | 2026-06-26 | 1d | 2026-06-26 | 2026-06-26 | 0d |  |
| 212 | 1.2.7.7.3 | Atendimento de comentários |  | 2d | 2026-07-13 | 2026-07-14 | 211 | 2026-06-29 | 2026-06-30 | 2d | 2026-06-29 | 2026-06-30 | 0d |  |
| 213 | 1.2.7.7.4 | Aprovação |  | 1d | 2026-07-15 | 2026-07-15 | 212 | 2026-07-01 | 2026-07-01 | 1d | 2026-07-01 | 2026-07-01 | 0d |  |
| 214 | 1.2.7.8 | **MC-F0009-0305-MB-T-00001** |  | 9d | 2026-06-10 | 2026-06-22 |  | 2026-06-18 | 2026-06-26 | 7d | 2026-06-18 | 2026-06-26 | 12d |  |
| 215 | 1.2.7.8.1 | Emissão inicial |  | 5d | 2026-06-10 | 2026-06-16 | 200SS | 2026-06-18 | 2026-06-22 | 3d | 2026-06-18 | 2026-06-22 | 12d | 0d |
| 216 | 1.2.7.8.2 | Análise Tecnored |  | 1d | 2026-06-17 | 2026-06-17 | 215 | 2026-06-23 | 2026-06-23 | 1d | 2026-06-23 | 2026-06-23 | 12d | 0d |
| 217 | 1.2.7.8.3 | Atendimento de comentários |  | 2d | 2026-06-18 | 2026-06-19 | 216 | 2026-06-24 | 2026-06-25 | 2d | 2026-06-24 | 2026-06-25 | 12d | 0d |
| 218 | 1.2.7.8.4 | Aprovação |  | 1d | 2026-06-22 | 2026-06-22 | 217 | 2026-06-26 | 2026-06-26 | 1d | 2026-06-26 | 2026-06-26 | 17d |  |
| 219 | 1.2.7.9 | **FG-F0009-0305-MB-T-00001** |  | 6d | 2026-06-08 | 2026-06-15 |  | 2026-05-20 | 2026-05-27 | 6d | 2026-05-20 | 2026-05-27 | 5d |  |
| 220 | 1.2.7.9.1 | Emissão inicial |  | 2d | 2026-06-08 | 2026-06-09 | 63FS+13d | 2026-05-20 | 2026-05-21 | 2d | 2026-05-20 | 2026-05-21 | 5d | 0d |
| 221 | 1.2.7.9.2 | Análise Tecnored |  | 1d | 2026-06-10 | 2026-06-10 | 220 | 2026-05-22 | 2026-05-22 | 1d | 2026-05-22 | 2026-05-22 | 22d | 0d |
| 222 | 1.2.7.9.3 | Atendimento de comentários |  | 2d | 2026-06-11 | 2026-06-12 | 221 | 2026-05-25 | 2026-05-26 | 2d | 2026-05-25 | 2026-05-26 | 22d | 0d |
| 223 | 1.2.7.9.4 | Aprovação |  | 1d | 2026-06-15 | 2026-06-15 | 222 | 2026-05-27 | 2026-05-27 | 1d | 2026-05-27 | 2026-05-27 | 22d |  |
| 224 | 1.2.7.10 | **FG-F0009-0305-MB-T-00002** | inactive | 6d | 2026-06-03 | 2026-06-10 |  | 2026-05-20 | 2026-05-27 | 6d | 2026-05-20 | 2026-05-27 | 25d |  |
| 225 | 1.2.7.10.1 | Emissão inicial | inactive | 2d | 2026-06-03 | 2026-06-04 | 63FS+10d | 2026-05-20 | 2026-05-21 | 2d | 2026-05-20 | 2026-05-21 | 25d | 0d |
| 226 | 1.2.7.10.2 | Análise Tecnored | inactive | 1d | 2026-06-05 | 2026-06-05 | 225 | 2026-05-22 | 2026-05-22 | 1d | 2026-05-22 | 2026-05-22 | 25d | 0d |
| 227 | 1.2.7.10.3 | Atendimento de comentários | inactive | 2d | 2026-06-08 | 2026-06-09 | 226 | 2026-05-25 | 2026-05-26 | 2d | 2026-05-25 | 2026-05-26 | 25d | 0d |
| 228 | 1.2.7.10.4 | Aprovação | inactive | 1d | 2026-06-10 | 2026-06-10 | 227 | 2026-05-27 | 2026-05-27 | 1d | 2026-05-27 | 2026-05-27 | 25d |  |

| ID | WBS | Task | Type | Duration | Start | Finish | Predecessors | Baseline start | Baseline finish | Baseline duration | Baseline 1 start | Baseline 1 finish | Total slack | Free slack |
| --- | --- | --- | --- | --- | --- | --- | --- | --- | --- | --- | --- | --- | --- | --- |
| 229 | 1.2.7.11 | **AG-F0009-0305-MB-T-00001** |  | 7d | 2026-06-19 | 2026-06-29 |  | 2026-06-02 | 2026-06-10 | 7d | 2026-06-02 | 2026-06-10 | 5d | 0d |
| 230 | 1.2.7.11.1 | Emissão inicial |  | 3d | 2026-06-19 | 2026-06-23 | 193 | 2026-06-02 | 2026-06-04 | 3d | 2026-06-02 | 2026-06-04 | 5d | 0d |
| 231 | 1.2.7.11.2 | Análise Tecnored |  | 1d | 2026-06-24 | 2026-06-24 | 230 | 2026-06-05 | 2026-06-05 | 1d | 2026-06-05 | 2026-06-05 | 5d | 0d |
| 232 | 1.2.7.11.3 | Atendimento de comentários |  | 2d | 2026-06-25 | 2026-06-26 | 231 | 2026-06-08 | 2026-06-09 | 2d | 2026-06-08 | 2026-06-09 | 5d | 0d |
| 233 | 1.2.7.11.4 | Aprovação |  | 1d | 2026-06-29 | 2026-06-29 | 232 | 2026-06-10 | 2026-06-10 | 1d | 2026-06-10 | 2026-06-10 | 5d |  |
| 234 | 1.2.7.12 | **AG-F0009-0305-MB-T-00002** |  | 7d | 2026-06-19 | 2026-06-29 |  | 2026-06-02 | 2026-06-10 | 7d | 2026-06-02 | 2026-06-10 | 12d |  |
| 235 | 1.2.7.12.1 | Emissão inicial |  | 3d | 2026-06-19 | 2026-06-23 | 193 | 2026-06-02 | 2026-06-04 | 3d | 2026-06-02 | 2026-06-04 | 12d | 0d |
| 236 | 1.2.7.12.2 | Análise Tecnored |  | 1d | 2026-06-24 | 2026-06-24 | 235 | 2026-06-05 | 2026-06-05 | 1d | 2026-06-05 | 2026-06-05 | 12d | 0d |
| 237 | 1.2.7.12.3 | Atendimento de comentários |  | 2d | 2026-06-25 | 2026-06-26 | 236 | 2026-06-08 | 2026-06-09 | 2d | 2026-06-08 | 2026-06-09 | 12d | 0d |
| 238 | 1.2.7.12.4 | Aprovação |  | 1d | 2026-06-29 | 2026-06-29 | 237 | 2026-06-10 | 2026-06-10 | 1d | 2026-06-10 | 2026-06-10 | 12d |  |
| 239 | 1.2.7.13 | **AG-F0009-0305-MB-T-00003** |  | 7d | 2026-06-19 | 2026-06-29 |  | 2026-06-02 | 2026-06-10 | 7d | 2026-06-02 | 2026-06-10 | 12d |  |
| 240 | 1.2.7.13.1 | Emissão inicial |  | 3d | 2026-06-19 | 2026-06-23 | 193 | 2026-06-02 | 2026-06-04 | 3d | 2026-06-02 | 2026-06-04 | 12d | 0d |
| 241 | 1.2.7.13.2 | Análise Tecnored |  | 1d | 2026-06-24 | 2026-06-24 | 240 | 2026-06-05 | 2026-06-05 | 1d | 2026-06-05 | 2026-06-05 | 12d | 0d |
| 242 | 1.2.7.13.3 | Atendimento de comentários |  | 2d | 2026-06-25 | 2026-06-26 | 241 | 2026-06-08 | 2026-06-09 | 2d | 2026-06-08 | 2026-06-09 | 12d | 0d |
| 243 | 1.2.7.13.4 | Aprovação |  | 1d | 2026-06-29 | 2026-06-29 | 242 | 2026-06-10 | 2026-06-10 | 1d | 2026-06-10 | 2026-06-10 | 12d |  |
| 244 | 1.2.7.14 | **AG-F0009-0305-MB-T-00004** | inactive | 7d | 2026-06-03 | 2026-06-11 |  | 2026-06-02 | 2026-06-10 | 7d | 2026-06-02 | 2026-06-10 | 24d |  |
| 245 | 1.2.7.14.1 | Emissão inicial | inactive | 3d | 2026-06-03 | 2026-06-05 | 161 | 2026-06-02 | 2026-06-04 | 3d | 2026-06-02 | 2026-06-04 | 24d | 0d |
| 246 | 1.2.7.14.2 | Análise Tecnored | inactive | 1d | 2026-06-08 | 2026-06-08 | 245 | 2026-06-05 | 2026-06-05 | 1d | 2026-06-05 | 2026-06-05 | 24d | 0d |
| 247 | 1.2.7.14.3 | Atendimento de comentários | inactive | 2d | 2026-06-09 | 2026-06-10 | 246 | 2026-06-08 | 2026-06-09 | 2d | 2026-06-08 | 2026-06-09 | 24d | 0d |
| 248 | 1.2.7.14.4 | Aprovação | inactive | 1d | 2026-06-11 | 2026-06-11 | 247 | 2026-06-10 | 2026-06-10 | 1d | 2026-06-10 | 2026-06-10 | 24d |  |
| 249 | 1.2.7.15 | **AG-F0009-0305-MB-T-00005** | inactive | 7d | 2026-06-03 | 2026-06-11 |  | 2026-06-02 | 2026-06-10 | 7d | 2026-06-02 | 2026-06-10 | 24d |  |
| 250 | 1.2.7.15.1 | Emissão inicial | inactive | 3d | 2026-06-03 | 2026-06-05 | 161 | 2026-06-02 | 2026-06-04 | 3d | 2026-06-02 | 2026-06-04 | 24d | 0d |
| 251 | 1.2.7.15.2 | Análise Tecnored | inactive | 1d | 2026-06-08 | 2026-06-08 | 250 | 2026-06-05 | 2026-06-05 | 1d | 2026-06-05 | 2026-06-05 | 24d | 0d |
| 252 | 1.2.7.15.3 | Atendimento de comentários | inactive | 2d | 2026-06-09 | 2026-06-10 | 251 | 2026-06-08 | 2026-06-09 | 2d | 2026-06-08 | 2026-06-09 | 24d | 0d |
| 253 | 1.2.7.15.4 | Aprovação | inactive | 1d | 2026-06-11 | 2026-06-11 | 252 | 2026-06-10 | 2026-06-10 | 1d | 2026-06-10 | 2026-06-10 | 24d |  |

| ID | WBS | Task | Type | Duration | Start | Finish | Predecessors | Baseline start | Baseline finish | Baseline duration | Baseline 1 start | Baseline 1 finish | Total slack | Free slack | Baseline cost |
| --- | --- | --- | --- | --- | --- | --- | --- | --- | --- | --- | --- | --- | --- | --- | --- |
| 254 | 1.2.7.16 | **AG-F0009-0305-MB-T-00006** | inactive | 7d | 2026-06-03 | 2026-06-11 |  | 2026-06-02 | 2026-06-10 | 7d | 2026-06-02 | 2026-06-10 | 24d |  |  |
| 255 | 1.2.7.16.1 | Emissão inicial | inactive | 3d | 2026-06-03 | 2026-06-05 | 161 | 2026-06-02 | 2026-06-04 | 3d | 2026-06-02 | 2026-06-04 | 24d | 0d |  |
| 256 | 1.2.7.16.2 | Análise Tecnored | inactive | 1d | 2026-06-08 | 2026-06-08 | 255 | 2026-06-05 | 2026-06-05 | 1d | 2026-06-05 | 2026-06-05 | 24d | 0d |  |
| 257 | 1.2.7.16.3 | Atendimento de comentários | inactive | 2d | 2026-06-09 | 2026-06-10 | 256 | 2026-06-08 | 2026-06-09 | 2d | 2026-06-08 | 2026-06-09 | 24d | 0d |  |
| 258 | 1.2.7.16.4 | Aprovação | inactive | 1d | 2026-06-11 | 2026-06-11 | 257 | 2026-06-10 | 2026-06-10 | 1d | 2026-06-10 | 2026-06-10 | 24d |  |  |
| 259 | 1.2.7.17 | **LK-F0009-0305-MB-T-00001** |  | 6d | 2026-06-22 | 2026-06-29 |  | 2026-06-02 | 2026-06-10 | 7d | 2026-06-02 | 2026-06-10 | 12d |  |  |
| 260 | 1.2.7.17.1 | Emissão inicial |  | 2d | 2026-06-22 | 2026-06-23 | 217 | 2026-06-02 | 2026-06-04 | 3d | 2026-06-02 | 2026-06-04 | 12d | 0d |  |
| 261 | 1.2.7.17.2 | Análise Tecnored |  | 1d | 2026-06-24 | 2026-06-24 | 260 | 2026-06-05 | 2026-06-05 | 1d | 2026-06-05 | 2026-06-05 | 12d | 0d |  |
| 262 | 1.2.7.17.3 | Atendimento de comentários |  | 2d | 2026-06-25 | 2026-06-26 | 261 | 2026-06-08 | 2026-06-09 | 2d | 2026-06-08 | 2026-06-09 | 12d | 0d |  |
| 263 | 1.2.7.17.4 | Aprovação |  | 1d | 2026-06-29 | 2026-06-29 | 262 | 2026-06-10 | 2026-06-10 | 1d | 2026-06-10 | 2026-06-10 | 12d |  |  |
| 264 | 1.2.7.18 | **MC-F0009-0305-MB-T-00002** | inactive | 14d | 2026-05-29 | 2026-06-17 |  | 2026-05-28 | 2026-06-16 | 14d | 2026-05-28 | 2026-06-16 | 20d |  |  |
| 265 | 1.2.7.18.1 | Emissão inicial | inactive | 10d | 2026-05-29 | 2026-06-11 | 159 | 2026-05-28 | 2026-06-10 | 10d | 2026-05-28 | 2026-06-10 | 20d | 0d |  |
| 266 | 1.2.7.18.2 | Análise Tecnored | inactive | 1d | 2026-06-12 | 2026-06-12 | 265 | 2026-06-11 | 2026-06-11 | 1d | 2026-06-11 | 2026-06-11 | 20d | 0d |  |
| 267 | 1.2.7.18.3 | Atendimento de comentários | inactive | 2d | 2026-06-15 | 2026-06-16 | 266 | 2026-06-12 | 2026-06-15 | 2d | 2026-06-12 | 2026-06-15 | 20d | 0d |  |
| 268 | 1.2.7.18.4 | Aprovação | inactive | 1d | 2026-06-17 | 2026-06-17 | 267 | 2026-06-16 | 2026-06-16 | 1d | 2026-06-16 | 2026-06-16 | 20d |  |  |
| 269 | 1.2.8 | **Estrutura metálica** |  | 17d | 2026-06-16 | 2026-07-08 |  | 2026-06-15 | 2026-07-08 | 18d | 2026-06-15 | 2026-07-08 | 4d |  |  |
| 270 | 1.2.8.1 | **CP-F0009-0305-MB-S-00001** | inactive | 22d | 2026-05-12 | 2026-06-10 |  |  |  |  |  |  | 25d |  | -0 |
| 271 | 1.2.8.1.1 | Emissão inicial | inactive | 3d | 2026-05-12 | 2026-05-14 | 26FS+5d |  |  |  |  |  | 40d | 15d | -0 |
| 272 | 1.2.8.1.2 | Análise Tecnored | inactive | 1d | 2026-06-05 | 2026-06-05 | 271, 14 |  |  |  |  |  | 25d | 0d | -0 |
| 273 | 1.2.8.1.3 | Atendimento de comentários | inactive | 2d | 2026-06-08 | 2026-06-09 | 272 |  |  |  |  |  | 25d | 0d | -0 |
| 274 | 1.2.8.1.4 | Aprovação | inactive | 1d | 2026-06-10 | 2026-06-10 | 273 |  |  |  |  |  | 25d |  | -0 |
| 275 | 1.2.8.2 | **ML-F0009-0305-MB-S-00001** |  | 7d | 2026-06-17 | 2026-06-25 |  | 2026-06-17 | 2026-06-25 | 7d | 2026-06-17 | 2026-06-25 | 5d |  |  |
| 276 | 1.2.8.2.1 | Emissão inicial |  | 3d | 2026-06-17 | 2026-06-19 | 291FS-4d | 2026-06-17 | 2026-06-19 | 3d | 2026-06-17 | 2026-06-19 | 1d | 0d |  |
| 277 | 1.2.8.2.2 | Análise Tecnored |  | 1d | 2026-06-22 | 2026-06-22 | 276 | 2026-06-22 | 2026-06-22 | 1d | 2026-06-22 | 2026-06-22 | 1d | 0d |  |
| 278 | 1.2.8.2.3 | Atendimento de comentários |  | 2d | 2026-06-23 | 2026-06-24 | 277 | 2026-06-23 | 2026-06-24 | 2d | 2026-06-23 | 2026-06-24 | 1d | 0d |  |
| 279 | 1.2.8.2.4 | Aprovação |  | 1d | 2026-06-25 | 2026-06-25 | 278 | 2026-06-25 | 2026-06-25 | 1d | 2026-06-25 | 2026-06-25 | 2d | 0d |  |

| ID | WBS | Task | Duration | Start | Finish | Predecessors | Baseline start | Baseline finish | Baseline duration | Baseline 1 start | Baseline 1 finish | Total slack | Free slack |
| --- | --- | --- | --- | --- | --- | --- | --- | --- | --- | --- | --- | --- | --- |
| 280 | 1.2.8.3 | **PQ-F0009-0305-MB-S-00001** | 6d | 2026-06-30 | 2026-07-07 |  | 2026-06-30 | 2026-07-07 | 6d | 2026-06-30 | 2026-07-07 | 6d |  |
| 281 | 1.2.8.3.1 | Emissão inicial | 2d | 2026-06-30 | 2026-07-01 | 286 | 2026-06-30 | 2026-07-01 | 2d | 2026-06-30 | 2026-07-01 | 2d | 0d |
| 282 | 1.2.8.3.2 | Análise Tecnored | 1d | 2026-07-02 | 2026-07-02 | 281 | 2026-07-02 | 2026-07-02 | 1d | 2026-07-02 | 2026-07-02 | 2d | 0d |
| 283 | 1.2.8.3.3 | Atendimento de comentários | 2d | 2026-07-03 | 2026-07-06 | 282 | 2026-07-03 | 2026-07-06 | 2d | 2026-07-03 | 2026-07-06 | 2d | 0d |
| 284 | 1.2.8.3.4 | Aprovação | 1d | 2026-07-07 | 2026-07-07 | 283 | 2026-07-07 | 2026-07-07 | 1d | 2026-07-07 | 2026-07-07 | 2d |  |
| 285 | 1.2.8.4 | **LM-F0009-0305-MB-S-00001** | 6d | 2026-06-26 | 2026-07-03 |  | 2026-06-26 | 2026-07-03 | 6d | 2026-06-26 | 2026-07-03 | 6d |  |
| 286 | 1.2.8.4.1 | Emissão inicial | 2d | 2026-06-26 | 2026-06-29 | 279 | 2026-06-26 | 2026-06-29 | 2d | 2026-06-26 | 2026-06-29 | 2d | 0d |
| 287 | 1.2.8.4.2 | Análise Tecnored | 1d | 2026-06-30 | 2026-06-30 | 286 | 2026-06-30 | 2026-06-30 | 1d | 2026-06-30 | 2026-06-30 | 4d | 0d |
| 288 | 1.2.8.4.3 | Atendimento de comentários | 2d | 2026-07-01 | 2026-07-02 | 287 | 2026-07-01 | 2026-07-02 | 2d | 2026-07-01 | 2026-07-02 | 4d | 0d |
| 289 | 1.2.8.4.4 | Aprovação | 1d | 2026-07-03 | 2026-07-03 | 288 | 2026-07-03 | 2026-07-03 | 1d | 2026-07-03 | 2026-07-03 | 4d |  |
| 290 | 1.2.8.5 | **MC-F0009-0305-MB-S-00001** | 9d | 2026-06-16 | 2026-06-26 |  | 2026-06-15 | 2026-06-25 | 9d | 2026-06-15 | 2026-06-25 | 4d |  |
| 291 | 1.2.8.5.1 | Emissão inicial | 5d | 2026-06-16 | 2026-06-22 | 155 | 2026-06-15 | 2026-06-19 | 5d | 2026-06-15 | 2026-06-19 | 4d | 0d |
| 292 | 1.2.8.5.2 | Análise Tecnored | 1d | 2026-06-23 | 2026-06-23 | 291 | 2026-06-22 | 2026-06-22 | 1d | 2026-06-22 | 2026-06-22 | 9d | 0d |
| 293 | 1.2.8.5.3 | Atendimento de comentários | 2d | 2026-06-24 | 2026-06-25 | 292 | 2026-06-23 | 2026-06-24 | 2d | 2026-06-23 | 2026-06-24 | 9d | 0d |
| 294 | 1.2.8.5.4 | Aprovação | 1d | 2026-06-26 | 2026-06-26 | 293 | 2026-06-25 | 2026-06-25 | 1d | 2026-06-25 | 2026-06-25 | 9d |  |
| 295 | 1.2.8.6 | **AG-F0009-0305-MB-S-00001** | 10d | 2026-06-25 | 2026-07-08 |  | 2026-06-25 | 2026-07-08 | 10d | 2026-06-25 | 2026-07-08 | 5d |  |
| 296 | 1.2.8.6.1 | Emissão inicial | 6d | 2026-06-25 | 2026-07-02 | 278 | 2026-06-25 | 2026-07-02 | 6d | 2026-06-25 | 2026-07-02 | 1d | 0d |
| 297 | 1.2.8.6.2 | Análise Tecnored | 1d | 2026-07-03 | 2026-07-03 | 296 | 2026-07-03 | 2026-07-03 | 1d | 2026-07-03 | 2026-07-03 | 1d | 0d |
| 298 | 1.2.8.6.3 | Atendimento de comentários | 2d | 2026-07-06 | 2026-07-07 | 297 | 2026-07-06 | 2026-07-07 | 2d | 2026-07-06 | 2026-07-07 | 1d | 0d |
| 299 | 1.2.8.6.4 | Aprovação | 1d | 2026-07-08 | 2026-07-08 | 298 | 2026-07-08 | 2026-07-08 | 1d | 2026-07-08 | 2026-07-08 | 1d |  |
| 300 | 1.2.8.7 | **AG-F0009-0305-MB-S-00002** | 10d | 2026-06-25 | 2026-07-08 |  | 2026-06-25 | 2026-07-08 | 10d | 2026-06-25 | 2026-07-08 | 5d |  |
| 301 | 1.2.8.7.1 | Emissão inicial | 6d | 2026-06-25 | 2026-07-02 | 278 | 2026-06-25 | 2026-07-02 | 6d | 2026-06-25 | 2026-07-02 | 1d | 0d |
| 302 | 1.2.8.7.2 | Análise Tecnored | 1d | 2026-07-03 | 2026-07-03 | 301 | 2026-07-03 | 2026-07-03 | 1d | 2026-07-03 | 2026-07-03 | 1d | 0d |
| 303 | 1.2.8.7.3 | Atendimento de comentários | 2d | 2026-07-06 | 2026-07-07 | 302 | 2026-07-06 | 2026-07-07 | 2d | 2026-07-06 | 2026-07-07 | 1d | 0d |
| 304 | 1.2.8.7.4 | Aprovação | 1d | 2026-07-08 | 2026-07-08 | 303 | 2026-07-08 | 2026-07-08 | 1d | 2026-07-08 | 2026-07-08 | 1d |  |

| ID | WBS | Task | Duration | Start | Finish | Predecessors | Baseline start | Baseline finish | Baseline duration | Baseline 1 start | Baseline 1 finish | Total slack | Free slack |
| --- | --- | --- | --- | --- | --- | --- | --- | --- | --- | --- | --- | --- | --- |
| 305 | 1.2.8.8 | **AG-F0009-0305-MB-S-00003** | 10d | 2026-06-25 | 2026-07-08 |  | 2026-06-25 | 2026-07-08 | 10d | 2026-06-25 | 2026-07-08 | 5d |  |
| 306 | 1.2.8.8.1 | Emissão inicial | 6d | 2026-06-25 | 2026-07-02 | 278 | 2026-06-25 | 2026-07-02 | 6d | 2026-06-25 | 2026-07-02 | 1d | 0d |
| 307 | 1.2.8.8.2 | Análise Tecnored | 1d | 2026-07-03 | 2026-07-03 | 306 | 2026-07-03 | 2026-07-03 | 1d | 2026-07-03 | 2026-07-03 | 1d | 0d |
| 308 | 1.2.8.8.3 | Atendimento de comentários | 2d | 2026-07-06 | 2026-07-07 | 307 | 2026-07-06 | 2026-07-07 | 2d | 2026-07-06 | 2026-07-07 | 1d | 0d |
| 309 | 1.2.8.8.4 | Aprovação | 1d | 2026-07-08 | 2026-07-08 | 308 | 2026-07-08 | 2026-07-08 | 1d | 2026-07-08 | 2026-07-08 | 1d |  |
| 310 | 1.2.8.9 | **AG-F0009-0305-MB-S-00004** | 10d | 2026-06-25 | 2026-07-08 |  | 2026-06-25 | 2026-07-08 | 10d | 2026-06-25 | 2026-07-08 | 5d |  |
| 311 | 1.2.8.9.1 | Emissão inicial | 6d | 2026-06-25 | 2026-07-02 | 278 | 2026-06-25 | 2026-07-02 | 6d | 2026-06-25 | 2026-07-02 | 1d | 0d |
| 312 | 1.2.8.9.2 | Análise Tecnored | 1d | 2026-07-03 | 2026-07-03 | 311 | 2026-07-03 | 2026-07-03 | 1d | 2026-07-03 | 2026-07-03 | 1d | 0d |
| 313 | 1.2.8.9.3 | Atendimento de comentários | 2d | 2026-07-06 | 2026-07-07 | 312 | 2026-07-06 | 2026-07-07 | 2d | 2026-07-06 | 2026-07-07 | 1d | 0d |
| 314 | 1.2.8.9.4 | Aprovação | 1d | 2026-07-08 | 2026-07-08 | 313 | 2026-07-08 | 2026-07-08 | 1d | 2026-07-08 | 2026-07-08 | 1d |  |
| 315 | 1.2.8.10 | **AG-F0009-0305-MB-S-00005** | 10d | 2026-06-25 | 2026-07-08 |  | 2026-06-25 | 2026-07-08 | 10d | 2026-06-25 | 2026-07-08 | 5d |  |
| 316 | 1.2.8.10.1 | Emissão inicial | 6d | 2026-06-25 | 2026-07-02 | 278 | 2026-06-25 | 2026-07-02 | 6d | 2026-06-25 | 2026-07-02 | 1d | 0d |
| 317 | 1.2.8.10.2 | Análise Tecnored | 1d | 2026-07-03 | 2026-07-03 | 316 | 2026-07-03 | 2026-07-03 | 1d | 2026-07-03 | 2026-07-03 | 1d | 0d |
| 318 | 1.2.8.10.3 | Atendimento de comentários | 2d | 2026-07-06 | 2026-07-07 | 317 | 2026-07-06 | 2026-07-07 | 2d | 2026-07-06 | 2026-07-07 | 1d | 0d |
| 319 | 1.2.8.10.4 | Aprovação | 1d | 2026-07-08 | 2026-07-08 | 318 | 2026-07-08 | 2026-07-08 | 1d | 2026-07-08 | 2026-07-08 | 1d |  |
| 320 | 1.2.8.11 | **AG-F0009-0305-MB-S-00006** | 10d | 2026-06-25 | 2026-07-08 |  | 2026-06-25 | 2026-07-08 | 10d | 2026-06-25 | 2026-07-08 | 5d |  |
| 321 | 1.2.8.11.1 | Emissão inicial | 6d | 2026-06-25 | 2026-07-02 | 278 | 2026-06-25 | 2026-07-02 | 6d | 2026-06-25 | 2026-07-02 | 1d | 0d |
| 322 | 1.2.8.11.2 | Análise Tecnored | 1d | 2026-07-03 | 2026-07-03 | 321 | 2026-07-03 | 2026-07-03 | 1d | 2026-07-03 | 2026-07-03 | 1d | 0d |
| 323 | 1.2.8.11.3 | Atendimento de comentários | 2d | 2026-07-06 | 2026-07-07 | 322 | 2026-07-06 | 2026-07-07 | 2d | 2026-07-06 | 2026-07-07 | 1d | 0d |
| 324 | 1.2.8.11.4 | Aprovação | 1d | 2026-07-08 | 2026-07-08 | 323 | 2026-07-08 | 2026-07-08 | 1d | 2026-07-08 | 2026-07-08 | 1d |  |
| 325 | 1.2.8.12 | **AG-F0009-0305-MB-S-00007** | 10d | 2026-06-25 | 2026-07-08 |  | 2026-06-25 | 2026-07-08 | 10d | 2026-06-25 | 2026-07-08 | 5d |  |
| 326 | 1.2.8.12.1 | Emissão inicial | 6d | 2026-06-25 | 2026-07-02 | 278 | 2026-06-25 | 2026-07-02 | 6d | 2026-06-25 | 2026-07-02 | 1d | 0d |
| 327 | 1.2.8.12.2 | Análise Tecnored | 1d | 2026-07-03 | 2026-07-03 | 326 | 2026-07-03 | 2026-07-03 | 1d | 2026-07-03 | 2026-07-03 | 1d | 0d |
| 328 | 1.2.8.12.3 | Atendimento de comentários | 2d | 2026-07-06 | 2026-07-07 | 327 | 2026-07-06 | 2026-07-07 | 2d | 2026-07-06 | 2026-07-07 | 1d | 0d |
| 329 | 1.2.8.12.4 | Aprovação | 1d | 2026-07-08 | 2026-07-08 | 328 | 2026-07-08 | 2026-07-08 | 1d | 2026-07-08 | 2026-07-08 | 1d |  |

| ID | WBS | Task | Type | Duration | Start | Finish | Predecessors | Baseline start | Baseline finish | Baseline duration | Baseline 1 start | Baseline 1 finish | Total slack | Free slack | Baseline cost |
| --- | --- | --- | --- | --- | --- | --- | --- | --- | --- | --- | --- | --- | --- | --- | --- |
| 330 | 1.2.8.13 | **AG-F0009-0305-MB-S-00008** |  | 10d | 2026-06-25 | 2026-07-08 |  | 2026-06-25 | 2026-07-08 | 10d | 2026-06-25 | 2026-07-08 | 5d |  |  |
| 331 | 1.2.8.13.1 | Emissão inicial |  | 6d | 2026-06-25 | 2026-07-02 | 278 | 2026-06-25 | 2026-07-02 | 6d | 2026-06-25 | 2026-07-02 | 1d | 0d |  |
| 332 | 1.2.8.13.2 | Análise Tecnored |  | 1d | 2026-07-03 | 2026-07-03 | 331 | 2026-07-03 | 2026-07-03 | 1d | 2026-07-03 | 2026-07-03 | 1d | 0d |  |
| 333 | 1.2.8.13.3 | Atendimento de comentários |  | 2d | 2026-07-06 | 2026-07-07 | 332 | 2026-07-06 | 2026-07-07 | 2d | 2026-07-06 | 2026-07-07 | 1d | 0d |  |
| 334 | 1.2.8.13.4 | Aprovação |  | 1d | 2026-07-08 | 2026-07-08 | 333 | 2026-07-08 | 2026-07-08 | 1d | 2026-07-08 | 2026-07-08 | 1d |  |  |
| 335 | 1.2.8.14 | **AG-F0009-0305-MB-S-00009** |  | 10d | 2026-06-25 | 2026-07-08 |  | 2026-06-25 | 2026-07-08 | 10d | 2026-06-25 | 2026-07-08 | 5d |  |  |
| 336 | 1.2.8.14.1 | Emissão inicial |  | 6d | 2026-06-25 | 2026-07-02 | 278 | 2026-06-25 | 2026-07-02 | 6d | 2026-06-25 | 2026-07-02 | 1d | 0d |  |
| 337 | 1.2.8.14.2 | Análise Tecnored |  | 1d | 2026-07-03 | 2026-07-03 | 336 | 2026-07-03 | 2026-07-03 | 1d | 2026-07-03 | 2026-07-03 | 1d | 0d |  |
| 338 | 1.2.8.14.3 | Atendimento de comentários |  | 2d | 2026-07-06 | 2026-07-07 | 337 | 2026-07-06 | 2026-07-07 | 2d | 2026-07-06 | 2026-07-07 | 1d | 0d |  |
| 339 | 1.2.8.14.4 | Aprovação |  | 1d | 2026-07-08 | 2026-07-08 | 338 | 2026-07-08 | 2026-07-08 | 1d | 2026-07-08 | 2026-07-08 | 1d |  |  |
| 340 | 1.2.8.15 | **AG-F0009-0305-MB-S-00010** |  | 10d | 2026-06-25 | 2026-07-08 |  | 2026-06-25 | 2026-07-08 | 10d | 2026-06-25 | 2026-07-08 | 5d |  |  |
| 341 | 1.2.8.15.1 | Emissão inicial |  | 6d | 2026-06-25 | 2026-07-02 | 278 | 2026-06-25 | 2026-07-02 | 6d | 2026-06-25 | 2026-07-02 | 1d | 0d |  |
| 342 | 1.2.8.15.2 | Análise Tecnored |  | 1d | 2026-07-03 | 2026-07-03 | 341 | 2026-07-03 | 2026-07-03 | 1d | 2026-07-03 | 2026-07-03 | 1d | 0d |  |
| 343 | 1.2.8.15.3 | Atendimento de comentários |  | 2d | 2026-07-06 | 2026-07-07 | 342 | 2026-07-06 | 2026-07-07 | 2d | 2026-07-06 | 2026-07-07 | 1d | 0d |  |
| 344 | 1.2.8.15.4 | Aprovação |  | 1d | 2026-07-08 | 2026-07-08 | 343 | 2026-07-08 | 2026-07-08 | 1d | 2026-07-08 | 2026-07-08 | 1d |  |  |
| 345 | 1.2.8.16 | **PL-F0009-0305-MB-S-00001** |  | 9d | 2026-06-25 | 2026-07-07 |  | 2026-06-25 | 2026-07-07 | 9d | 2026-06-25 | 2026-07-07 | 6d |  |  |
| 346 | 1.2.8.16.1 | Emissão inicial |  | 5d | 2026-06-25 | 2026-07-01 | 278 | 2026-06-25 | 2026-07-01 | 5d | 2026-06-25 | 2026-07-01 | 2d | 0d |  |
| 347 | 1.2.8.16.2 | Análise Tecnored |  | 1d | 2026-07-02 | 2026-07-02 | 346 | 2026-07-02 | 2026-07-02 | 1d | 2026-07-02 | 2026-07-02 | 2d | 0d |  |
| 348 | 1.2.8.16.3 | Atendimento de comentários |  | 2d | 2026-07-03 | 2026-07-06 | 347 | 2026-07-03 | 2026-07-06 | 2d | 2026-07-03 | 2026-07-06 | 2d | 0d |  |
| 349 | 1.2.8.16.4 | Aprovação |  | 1d | 2026-07-07 | 2026-07-07 | 348 | 2026-07-07 | 2026-07-07 | 1d | 2026-07-07 | 2026-07-07 | 2d |  |  |
| 350 | 1.2.9 | **Elétrica** |  | 30d | 2026-05-28 | 2026-07-08 |  | 2026-05-21 | 2026-07-08 | 35d | 2026-05-21 | 2026-07-08 | 5d |  |  |
| 351 | 1.2.9.1 | **CP-F0009-0305-MB-E-00001** | inactive | 24d | 2026-05-08 | 2026-06-10 |  |  |  |  |  |  | 25d |  | -0 |
| 352 | 1.2.9.1.1 | Emissão inicial | inactive | 5d | 2026-05-08 | 2026-05-14 | 26FS+3d |  |  |  |  |  | 40d | 15d | -0 |
| 353 | 1.2.9.1.2 | Análise Tecnored | inactive | 1d | 2026-06-05 | 2026-06-05 | 352, 12 |  |  |  |  |  | 25d | 0d | -0 |
| 354 | 1.2.9.1.3 | Atendimento de comentários | inactive | 2d | 2026-06-08 | 2026-06-09 | 353 |  |  |  |  |  | 25d | 0d | -0 |
| 355 | 1.2.9.1.4 | Aprovação | inactive | 1d | 2026-06-10 | 2026-06-10 | 354 |  |  |  |  |  | 25d |  | -0 |

| ID | WBS | Task | Duration | Start | Finish | Predecessors | Baseline start | Baseline finish | Baseline duration | Baseline 1 start | Baseline 1 finish | Total slack | Free slack |
| --- | --- | --- | --- | --- | --- | --- | --- | --- | --- | --- | --- | --- | --- |
| 356 | 1.2.9.2 | **ML-F0009-0305-MB-E-00001** | 11d | 2026-06-15 | 2026-06-29 |  | 2026-06-15 | 2026-06-29 | 11d | 2026-06-15 | 2026-06-29 | 5d |  |
| 357 | 1.2.9.2.1 | Emissão inicial | 7d | 2026-06-15 | 2026-06-23 | 392FS-5d | 2026-06-15 | 2026-06-23 | 7d | 2026-06-15 | 2026-06-23 | 1d | 0d |
| 358 | 1.2.9.2.2 | Análise Tecnored | 1d | 2026-06-24 | 2026-06-24 | 357 | 2026-06-24 | 2026-06-24 | 1d | 2026-06-24 | 2026-06-24 | 8d | 0d |
| 359 | 1.2.9.2.3 | Atendimento de comentários | 2d | 2026-06-25 | 2026-06-26 | 358 | 2026-06-25 | 2026-06-26 | 2d | 2026-06-25 | 2026-06-26 | 8d | 0d |
| 360 | 1.2.9.2.4 | Aprovação | 1d | 2026-06-29 | 2026-06-29 | 359 | 2026-06-29 | 2026-06-29 | 1d | 2026-06-29 | 2026-06-29 | 8d |  |
| 361 | 1.2.9.3 | **RL-F0009-0305-MB-E-00001** | 7d | 2026-06-02 | 2026-06-10 |  | 2026-05-26 | 2026-06-03 | 7d | 2026-05-26 | 2026-06-03 | 5d |  |
| 362 | 1.2.9.3.1 | Emissão inicial | 3d | 2026-06-02 | 2026-06-04 | 372 | 2026-05-26 | 2026-05-28 | 3d | 2026-05-26 | 2026-05-28 | 1d | 0d |
| 363 | 1.2.9.3.2 | Análise Tecnored | 1d | 2026-06-05 | 2026-06-05 | 362 | 2026-05-29 | 2026-05-29 | 1d | 2026-05-29 | 2026-05-29 | 21d | 0d |
| 364 | 1.2.9.3.3 | Atendimento de comentários | 2d | 2026-06-08 | 2026-06-09 | 363 | 2026-06-01 | 2026-06-02 | 2d | 2026-06-01 | 2026-06-02 | 21d | 0d |
| 365 | 1.2.9.3.4 | Aprovação | 1d | 2026-06-10 | 2026-06-10 | 364 | 2026-06-03 | 2026-06-03 | 1d | 2026-06-03 | 2026-06-03 | 21d |  |
| 366 | 1.2.9.4 | **LE-F0009-0305-MB-E-00001** | 7d | 2026-06-22 | 2026-06-30 |  | 2026-06-15 | 2026-06-23 | 7d | 2026-06-15 | 2026-06-23 | 11d |  |
| 367 | 1.2.9.4.1 | Emissão inicial | 3d | 2026-06-22 | 2026-06-24 | 392 | 2026-06-15 | 2026-06-17 | 3d | 2026-06-15 | 2026-06-17 | 7d | 0d |
| 368 | 1.2.9.4.2 | Análise Tecnored | 1d | 2026-06-25 | 2026-06-25 | 367 | 2026-06-18 | 2026-06-18 | 1d | 2026-06-18 | 2026-06-18 | 7d | 0d |
| 369 | 1.2.9.4.3 | Atendimento de comentários | 2d | 2026-06-26 | 2026-06-29 | 368 | 2026-06-19 | 2026-06-22 | 2d | 2026-06-19 | 2026-06-22 | 7d | 0d |
| 370 | 1.2.9.4.4 | Aprovação | 1d | 2026-06-30 | 2026-06-30 | 369 | 2026-06-23 | 2026-06-23 | 1d | 2026-06-23 | 2026-06-23 | 7d |  |
| 371 | 1.2.9.5 | **LR-F0009-0305-MB-E-00001** | 7d | 2026-05-28 | 2026-06-05 |  | 2026-05-21 | 2026-05-29 | 7d | 2026-05-21 | 2026-05-29 | 5d |  |
| 372 | 1.2.9.5.1 | Emissão inicial | 3d | 2026-05-28 | 2026-06-01 | 79 | 2026-05-21 | 2026-05-25 | 3d | 2026-05-21 | 2026-05-25 | 1d | 0d |
| 373 | 1.2.9.5.2 | Análise Tecnored | 1d | 2026-06-02 | 2026-06-02 | 372 | 2026-05-26 | 2026-05-26 | 1d | 2026-05-26 | 2026-05-26 | 24d | 0d |
| 374 | 1.2.9.5.3 | Atendimento de comentários | 2d | 2026-06-03 | 2026-06-04 | 373 | 2026-05-27 | 2026-05-28 | 2d | 2026-05-27 | 2026-05-28 | 24d | 0d |
| 375 | 1.2.9.5.4 | Aprovação | 1d | 2026-06-05 | 2026-06-05 | 374 | 2026-05-29 | 2026-05-29 | 1d | 2026-05-29 | 2026-05-29 | 24d |  |
| 376 | 1.2.9.6 | **LM-F0009-0305-MB-E-00001** | 6d | 2026-06-30 | 2026-07-07 |  | 2026-06-30 | 2026-07-07 | 6d | 2026-06-30 | 2026-07-07 | 5d |  |
| 377 | 1.2.9.6.1 | Emissão inicial | 2d | 2026-06-30 | 2026-07-01 | 398 | 2026-06-30 | 2026-07-01 | 2d | 2026-06-30 | 2026-07-01 | 1d | 0d |
| 378 | 1.2.9.6.2 | Análise Tecnored | 1d | 2026-07-02 | 2026-07-02 | 377 | 2026-07-02 | 2026-07-02 | 1d | 2026-07-02 | 2026-07-02 | 2d | 0d |
| 379 | 1.2.9.6.3 | Atendimento de comentários | 2d | 2026-07-03 | 2026-07-06 | 378 | 2026-07-03 | 2026-07-06 | 2d | 2026-07-03 | 2026-07-06 | 2d | 0d |
| 380 | 1.2.9.6.4 | Aprovação | 1d | 2026-07-07 | 2026-07-07 | 379 | 2026-07-07 | 2026-07-07 | 1d | 2026-07-07 | 2026-07-07 | 2d |  |

| ID | WBS | Task | Type | Duration | Start | Finish | Predecessors | Baseline start | Baseline finish | Baseline duration | Baseline 1 start | Baseline 1 finish | Total slack | Free slack |
| --- | --- | --- | --- | --- | --- | --- | --- | --- | --- | --- | --- | --- | --- | --- |
| 381 | 1.2.9.7 | **PQ-F0009-0305-MB-E-00001** |  | 5d | 2026-07-02 | 2026-07-08 |  | 2026-07-02 | 2026-07-08 | 5d | 2026-07-02 | 2026-07-08 | 5d |  |
| 382 | 1.2.9.7.1 | Emissão inicial |  | 1d | 2026-07-02 | 2026-07-02 | 377 | 2026-07-02 | 2026-07-02 | 1d | 2026-07-02 | 2026-07-02 | 1d | 0d |
| 383 | 1.2.9.7.2 | Análise Tecnored |  | 1d | 2026-07-03 | 2026-07-03 | 382 | 2026-07-03 | 2026-07-03 | 1d | 2026-07-03 | 2026-07-03 | 1d | 0d |
| 384 | 1.2.9.7.3 | Atendimento de comentários |  | 2d | 2026-07-06 | 2026-07-07 | 383 | 2026-07-06 | 2026-07-07 | 2d | 2026-07-06 | 2026-07-07 | 1d | 0d |
| 385 | 1.2.9.7.4 | Aprovação |  | 1d | 2026-07-08 | 2026-07-08 | 384 | 2026-07-08 | 2026-07-08 | 1d | 2026-07-08 | 2026-07-08 | 1d |  |
| 386 | 1.2.9.8 | **MD-F0009-0305-MB-E-00001** | inactive | 7d | 2026-06-30 | 2026-07-08 |  | 2026-06-30 | 2026-07-08 | 7d | 2026-06-30 | 2026-07-08 | 5d |  |
| 387 | 1.2.9.8.1 | Emissão inicial | inactive | 3d | 2026-06-30 | 2026-07-02 | 377FS-2d | 2026-06-30 | 2026-07-02 | 3d | 2026-06-30 | 2026-07-02 | 5d | 0d |
| 388 | 1.2.9.8.2 | Análise Tecnored | inactive | 1d | 2026-07-03 | 2026-07-03 | 387 | 2026-07-03 | 2026-07-03 | 1d | 2026-07-03 | 2026-07-03 | 5d | 0d |
| 389 | 1.2.9.8.3 | Atendimento de comentários | inactive | 2d | 2026-07-06 | 2026-07-07 | 388 | 2026-07-06 | 2026-07-07 | 2d | 2026-07-06 | 2026-07-07 | 5d | 0d |
| 390 | 1.2.9.8.4 | Aprovação | inactive | 1d | 2026-07-08 | 2026-07-08 | 389 | 2026-07-08 | 2026-07-08 | 1d | 2026-07-08 | 2026-07-08 | 5d |  |
| 391 | 1.2.9.9 | **MC-F0009-0305-MB-E-00001** |  | 9d | 2026-06-15 | 2026-06-25 |  | 2026-06-08 | 2026-06-18 | 9d | 2026-06-08 | 2026-06-18 | 5d |  |
| 392 | 1.2.9.9.1 | Emissão inicial |  | 5d | 2026-06-15 | 2026-06-19 | 412 | 2026-06-08 | 2026-06-12 | 5d | 2026-06-08 | 2026-06-12 | 1d | 0d |
| 393 | 1.2.9.9.2 | Análise Tecnored |  | 1d | 2026-06-22 | 2026-06-22 | 392 | 2026-06-15 | 2026-06-15 | 1d | 2026-06-15 | 2026-06-15 | 10d | 0d |
| 394 | 1.2.9.9.3 | Atendimento de comentários |  | 2d | 2026-06-23 | 2026-06-24 | 393 | 2026-06-16 | 2026-06-17 | 2d | 2026-06-16 | 2026-06-17 | 10d | 0d |
| 395 | 1.2.9.9.4 | Aprovação |  | 1d | 2026-06-25 | 2026-06-25 | 394 | 2026-06-18 | 2026-06-18 | 1d | 2026-06-18 | 2026-06-18 | 10d |  |
| 396 | 1.2.9.10 | **AG-F0009-0305-MB-E-00001** |  | 7d | 2026-06-24 | 2026-07-02 |  | 2026-06-24 | 2026-07-02 | 7d | 2026-06-24 | 2026-07-02 | 5d |  |
| 397 | 1.2.9.10.1 | Emissão inicial |  | 3d | 2026-06-24 | 2026-06-26 | 357 | 2026-06-24 | 2026-06-26 | 3d | 2026-06-24 | 2026-06-26 | 1d | 0d |
| 398 | 1.2.9.10.2 | Análise Tecnored |  | 1d | 2026-06-29 | 2026-06-29 | 397 | 2026-06-29 | 2026-06-29 | 1d | 2026-06-29 | 2026-06-29 | 1d | 0d |
| 399 | 1.2.9.10.3 | Atendimento de comentários |  | 2d | 2026-06-30 | 2026-07-01 | 398 | 2026-06-30 | 2026-07-01 | 2d | 2026-06-30 | 2026-07-01 | 5d | 0d |
| 400 | 1.2.9.10.4 | Aprovação |  | 1d | 2026-07-02 | 2026-07-02 | 399 | 2026-07-02 | 2026-07-02 | 1d | 2026-07-02 | 2026-07-02 | 5d |  |
| 401 | 1.2.9.11 | **DU-F0009-0305-MB-E-00001** |  | 7d | 2026-06-05 | 2026-06-15 |  | 2026-05-29 | 2026-06-08 | 7d | 2026-05-29 | 2026-06-08 | 5d |  |
| 402 | 1.2.9.11.1 | Emissão inicial |  | 3d | 2026-06-05 | 2026-06-09 | 362 | 2026-05-29 | 2026-06-02 | 3d | 2026-05-29 | 2026-06-02 | 1d | 0d |
| 403 | 1.2.9.11.2 | Análise Tecnored |  | 1d | 2026-06-10 | 2026-06-10 | 402 | 2026-06-03 | 2026-06-03 | 1d | 2026-06-03 | 2026-06-03 | 18d | 0d |
| 404 | 1.2.9.11.3 | Atendimento de comentários |  | 2d | 2026-06-11 | 2026-06-12 | 403 | 2026-06-04 | 2026-06-05 | 2d | 2026-06-04 | 2026-06-05 | 18d | 0d |
| 405 | 1.2.9.11.4 | Aprovação |  | 1d | 2026-06-15 | 2026-06-15 | 404 | 2026-06-08 | 2026-06-08 | 1d | 2026-06-08 | 2026-06-08 | 18d |  |

| ID | WBS | Task | Type | Duration | Start | Finish | Predecessors | Baseline start | Baseline finish | Baseline duration | Baseline 1 start | Baseline 1 finish | Total slack | Free slack | Baseline cost |
| --- | --- | --- | --- | --- | --- | --- | --- | --- | --- | --- | --- | --- | --- | --- | --- |
| 406 | 1.2.9.12 | **AG-F0009-0305-MB-E-00002** |  | 8d | 2026-06-24 | 2026-07-03 |  | 2026-06-24 | 2026-07-03 | 8d | 2026-06-24 | 2026-07-03 | 8d |  |  |
| 407 | 1.2.9.12.1 | Emissão inicial |  | 4d | 2026-06-24 | 2026-06-29 | 357 | 2026-06-24 | 2026-06-29 | 4d | 2026-06-24 | 2026-06-29 | 4d | 0d |  |
| 408 | 1.2.9.12.2 | Análise Tecnored |  | 1d | 2026-06-30 | 2026-06-30 | 407 | 2026-06-30 | 2026-06-30 | 1d | 2026-06-30 | 2026-06-30 | 4d | 0d |  |
| 409 | 1.2.9.12.3 | Atendimento de comentários |  | 2d | 2026-07-01 | 2026-07-02 | 408 | 2026-07-01 | 2026-07-02 | 2d | 2026-07-01 | 2026-07-02 | 4d | 0d |  |
| 410 | 1.2.9.12.4 | Aprovação |  | 1d | 2026-07-03 | 2026-07-03 | 409 | 2026-07-03 | 2026-07-03 | 1d | 2026-07-03 | 2026-07-03 | 4d |  |  |
| 411 | 1.2.9.13 | **FD-F0009-0305-MB-E-00013** |  | 7d | 2026-06-10 | 2026-06-18 |  | 2026-06-03 | 2026-06-11 | 7d | 2026-06-03 | 2026-06-11 | 5d |  |  |
| 412 | 1.2.9.13.1 | Emissão inicial |  | 3d | 2026-06-10 | 2026-06-12 | 402 | 2026-06-03 | 2026-06-05 | 3d | 2026-06-03 | 2026-06-05 | 1d | 0d |  |
| 413 | 1.2.9.13.2 | Análise Tecnored |  | 1d | 2026-06-15 | 2026-06-15 | 412 | 2026-06-08 | 2026-06-08 | 1d | 2026-06-08 | 2026-06-08 | 15d | 0d |  |
| 414 | 1.2.9.13.3 | Atendimento de comentários |  | 2d | 2026-06-16 | 2026-06-17 | 413 | 2026-06-09 | 2026-06-10 | 2d | 2026-06-09 | 2026-06-10 | 15d | 0d |  |
| 415 | 1.2.9.13.4 | Aprovação |  | 1d | 2026-06-18 | 2026-06-18 | 414 | 2026-06-11 | 2026-06-11 | 1d | 2026-06-11 | 2026-06-11 | 15d |  |  |
| 416 | 1.2.10 | **Automação e instrumentação** |  | 26d | 2026-06-03 | 2026-07-08 |  | 2026-05-20 | 2026-07-08 | 36d | 2026-05-20 | 2026-07-08 | 5d |  |  |
| 417 | 1.2.10.1 | **CP-F0009-0305-MB-J-00001** | inactive | 9d | 2026-06-05 | 2026-06-17 |  |  |  |  |  |  | 20d |  | -0 |
| 418 | 1.2.10.1.1 | Emissão inicial | inactive | 5d | 2026-06-05 | 2026-06-11 | 26FS+5d, 13 |  |  |  |  |  | 20d | 0d | -0 |
| 419 | 1.2.10.1.2 | Análise Tecnored | inactive | 1d | 2026-06-12 | 2026-06-12 | 418 |  |  |  |  |  | 20d | 0d | -0 |
| 420 | 1.2.10.1.3 | Atendimento de comentários | inactive | 2d | 2026-06-15 | 2026-06-16 | 419 |  |  |  |  |  | 20d | 0d | -0 |
| 421 | 1.2.10.1.4 | Aprovação | inactive | 1d | 2026-06-17 | 2026-06-17 | 420 |  |  |  |  |  | 20d |  | -0 |
| 422 | 1.2.10.2 | **LI-F0009-0305-MB-J-00001** |  | 6d | 2026-06-05 | 2026-06-12 |  | 2026-05-22 | 2026-06-01 | 7d | 2026-05-22 | 2026-06-01 | 5d |  |  |
| 423 | 1.2.10.2.1 | Emissão inicial |  | 2d | 2026-06-05 | 2026-06-08 | 453 | 2026-05-22 | 2026-05-26 | 3d | 2026-05-22 | 2026-05-26 | 1d | 0d |  |
| 424 | 1.2.10.2.2 | Análise Tecnored |  | 1d | 2026-06-09 | 2026-06-09 | 423 | 2026-05-27 | 2026-05-27 | 1d | 2026-05-27 | 2026-05-27 | 19d | 0d |  |
| 425 | 1.2.10.2.3 | Atendimento de comentários |  | 2d | 2026-06-10 | 2026-06-11 | 424 | 2026-05-28 | 2026-05-29 | 2d | 2026-05-28 | 2026-05-29 | 19d | 0d |  |
| 426 | 1.2.10.2.4 | Aprovação |  | 1d | 2026-06-12 | 2026-06-12 | 425 | 2026-06-01 | 2026-06-01 | 1d | 2026-06-01 | 2026-06-01 | 19d |  |  |
| 427 | 1.2.10.3 | **LE-F0009-0305-MB-J-00001** |  | 6d | 2026-06-29 | 2026-07-06 |  | 2026-06-23 | 2026-07-01 | 7d | 2026-06-23 | 2026-07-01 | 7d |  |  |
| 428 | 1.2.10.3.1 | Emissão inicial |  | 2d | 2026-06-29 | 2026-06-30 | 503 | 2026-06-23 | 2026-06-25 | 3d | 2026-06-23 | 2026-06-25 | 3d | 0d |  |
| 429 | 1.2.10.3.2 | Análise Tecnored |  | 1d | 2026-07-01 | 2026-07-01 | 428 | 2026-06-26 | 2026-06-26 | 1d | 2026-06-26 | 2026-06-26 | 3d | 0d |  |
| 430 | 1.2.10.3.3 | Atendimento de comentários |  | 2d | 2026-07-02 | 2026-07-03 | 429 | 2026-06-29 | 2026-06-30 | 2d | 2026-06-29 | 2026-06-30 | 3d | 0d |  |
| 431 | 1.2.10.3.4 | Aprovação |  | 1d | 2026-07-06 | 2026-07-06 | 430 | 2026-07-01 | 2026-07-01 | 1d | 2026-07-01 | 2026-07-01 | 3d |  |  |

| ID | WBS | Task | Duration | Start | Finish | Predecessors | Baseline start | Baseline finish | Baseline duration | Baseline 1 start | Baseline 1 finish | Total slack | Free slack |
| --- | --- | --- | --- | --- | --- | --- | --- | --- | --- | --- | --- | --- | --- |
| 432 | 1.2.10.4 | **LZ-F0009-0305-MB-J-00001** | 6d | 2026-06-22 | 2026-06-29 |  | 2026-06-15 | 2026-06-23 | 7d | 2026-06-15 | 2026-06-23 | 5d |  |
| 433 | 1.2.10.4.1 | Emissão inicial | 2d | 2026-06-22 | 2026-06-23 | 483 | 2026-06-15 | 2026-06-17 | 3d | 2026-06-15 | 2026-06-17 | 1d | 0d |
| 434 | 1.2.10.4.2 | Análise Tecnored | 1d | 2026-06-24 | 2026-06-24 | 433 | 2026-06-18 | 2026-06-18 | 1d | 2026-06-18 | 2026-06-18 | 8d | 0d |
| 435 | 1.2.10.4.3 | Atendimento de comentários | 2d | 2026-06-25 | 2026-06-26 | 434 | 2026-06-19 | 2026-06-22 | 2d | 2026-06-19 | 2026-06-22 | 8d | 0d |
| 436 | 1.2.10.4.4 | Aprovação | 1d | 2026-06-29 | 2026-06-29 | 435 | 2026-06-23 | 2026-06-23 | 1d | 2026-06-23 | 2026-06-23 | 8d |  |
| 437 | 1.2.10.5 | **LE-F0009-0305-MB-J-00002** | 6d | 2026-06-29 | 2026-07-06 |  | 2026-06-23 | 2026-07-01 | 7d | 2026-06-23 | 2026-07-01 | 7d |  |
| 438 | 1.2.10.5.1 | Emissão inicial | 2d | 2026-06-29 | 2026-06-30 | 503 | 2026-06-23 | 2026-06-25 | 3d | 2026-06-23 | 2026-06-25 | 3d | 0d |
| 439 | 1.2.10.5.2 | Análise Tecnored | 1d | 2026-07-01 | 2026-07-01 | 438 | 2026-06-26 | 2026-06-26 | 1d | 2026-06-26 | 2026-06-26 | 3d | 0d |
| 440 | 1.2.10.5.3 | Atendimento de comentários | 2d | 2026-07-02 | 2026-07-03 | 439 | 2026-06-29 | 2026-06-30 | 2d | 2026-06-29 | 2026-06-30 | 3d | 0d |
| 441 | 1.2.10.5.4 | Aprovação | 1d | 2026-07-06 | 2026-07-06 | 440 | 2026-07-01 | 2026-07-01 | 1d | 2026-07-01 | 2026-07-01 | 3d |  |
| 442 | 1.2.10.6 | **PQ-F0009-0305-MB-J-00001** | 5d | 2026-06-30 | 2026-07-06 |  | 2026-07-02 | 2026-07-08 | 5d | 2026-07-02 | 2026-07-08 | 7d |  |
| 443 | 1.2.10.6.1 | Emissão inicial | 1d | 2026-06-30 | 2026-06-30 | 498FS-2d | 2026-07-02 | 2026-07-02 | 1d | 2026-07-02 | 2026-07-02 | 3d | 0d |
| 444 | 1.2.10.6.2 | Análise Tecnored | 1d | 2026-07-01 | 2026-07-01 | 443 | 2026-07-03 | 2026-07-03 | 1d | 2026-07-03 | 2026-07-03 | 3d | 0d |
| 445 | 1.2.10.6.3 | Atendimento de comentários | 2d | 2026-07-02 | 2026-07-03 | 444 | 2026-07-06 | 2026-07-07 | 2d | 2026-07-06 | 2026-07-07 | 3d | 0d |
| 446 | 1.2.10.6.4 | Aprovação | 1d | 2026-07-06 | 2026-07-06 | 445 | 2026-07-08 | 2026-07-08 | 1d | 2026-07-08 | 2026-07-08 | 3d |  |
| 447 | 1.2.10.7 | **FG-F0009-0305-MB-J-00001** | 6d | 2026-06-03 | 2026-06-10 |  | 2026-05-20 | 2026-05-27 | 6d | 2026-05-20 | 2026-05-27 | 25d |  |
| 448 | 1.2.10.7.1 | Emissão inicial | 2d | 2026-06-03 | 2026-06-04 | 63FS+10d | 2026-05-20 | 2026-05-21 | 2d | 2026-05-20 | 2026-05-21 | 21d | 0d |
| 449 | 1.2.10.7.2 | Análise Tecnored | 1d | 2026-06-05 | 2026-06-05 | 448 | 2026-05-22 | 2026-05-22 | 1d | 2026-05-22 | 2026-05-22 | 21d | 0d |
| 450 | 1.2.10.7.3 | Atendimento de comentários | 2d | 2026-06-08 | 2026-06-09 | 449 | 2026-05-25 | 2026-05-26 | 2d | 2026-05-25 | 2026-05-26 | 21d | 0d |
| 451 | 1.2.10.7.4 | Aprovação | 1d | 2026-06-10 | 2026-06-10 | 450 | 2026-05-27 | 2026-05-27 | 1d | 2026-05-27 | 2026-05-27 | 21d |  |
| 452 | 1.2.10.8 | **FG-F0009-0305-MB-J-00002** | 6d | 2026-06-03 | 2026-06-10 |  | 2026-05-20 | 2026-05-27 | 6d | 2026-05-20 | 2026-05-27 | 5d |  |
| 453 | 1.2.10.8.1 | Emissão inicial | 2d | 2026-06-03 | 2026-06-04 | 63FS+10d | 2026-05-20 | 2026-05-21 | 2d | 2026-05-20 | 2026-05-21 | 1d | 0d |
| 454 | 1.2.10.8.2 | Análise Tecnored | 1d | 2026-06-05 | 2026-06-05 | 453 | 2026-05-22 | 2026-05-22 | 1d | 2026-05-22 | 2026-05-22 | 21d | 0d |
| 455 | 1.2.10.8.3 | Atendimento de comentários | 2d | 2026-06-08 | 2026-06-09 | 454 | 2026-05-25 | 2026-05-26 | 2d | 2026-05-25 | 2026-05-26 | 21d | 0d |
| 456 | 1.2.10.8.4 | Aprovação | 1d | 2026-06-10 | 2026-06-10 | 455 | 2026-05-27 | 2026-05-27 | 1d | 2026-05-27 | 2026-05-27 | 21d |  |

| ID | WBS | Task | Duration | Start | Finish | Predecessors | Baseline start | Baseline finish | Baseline duration | Baseline 1 start | Baseline 1 finish | Total slack | Free slack |
| --- | --- | --- | --- | --- | --- | --- | --- | --- | --- | --- | --- | --- | --- |
| 457 | 1.2.10.9 | **FG-F0009-0305-MB-J-00003** | 6d | 2026-06-03 | 2026-06-10 |  | 2026-05-20 | 2026-05-27 | 6d | 2026-05-20 | 2026-05-27 | 25d |  |
| 458 | 1.2.10.9.1 | Emissão inicial | 2d | 2026-06-03 | 2026-06-04 | 63FS+10d | 2026-05-20 | 2026-05-21 | 2d | 2026-05-20 | 2026-05-21 | 21d | 0d |
| 459 | 1.2.10.9.2 | Análise Tecnored | 1d | 2026-06-05 | 2026-06-05 | 458 | 2026-05-22 | 2026-05-22 | 1d | 2026-05-22 | 2026-05-22 | 21d | 0d |
| 460 | 1.2.10.9.3 | Atendimento de comentários | 2d | 2026-06-08 | 2026-06-09 | 459 | 2026-05-25 | 2026-05-26 | 2d | 2026-05-25 | 2026-05-26 | 21d | 0d |
| 461 | 1.2.10.9.4 | Aprovação | 1d | 2026-06-10 | 2026-06-10 | 460 | 2026-05-27 | 2026-05-27 | 1d | 2026-05-27 | 2026-05-27 | 21d |  |
| 462 | 1.2.10.10 | **AG-F0009-0305-MB-J-00001** | 11d | 2026-06-09 | 2026-06-23 |  | 2026-05-27 | 2026-06-15 | 14d | 2026-05-27 | 2026-06-15 | 16d |  |
| 463 | 1.2.10.10.1 | Emissão inicial | 7d | 2026-06-09 | 2026-06-17 | 423 | 2026-05-27 | 2026-06-09 | 10d | 2026-05-27 | 2026-06-09 | 12d | 0d |
| 464 | 1.2.10.10.2 | Análise Tecnored | 1d | 2026-06-18 | 2026-06-18 | 463 | 2026-06-10 | 2026-06-10 | 1d | 2026-06-10 | 2026-06-10 | 12d | 0d |
| 465 | 1.2.10.10.3 | Atendimento de comentários | 2d | 2026-06-19 | 2026-06-22 | 464 | 2026-06-11 | 2026-06-12 | 2d | 2026-06-11 | 2026-06-12 | 12d | 0d |
| 466 | 1.2.10.10.4 | Aprovação | 1d | 2026-06-23 | 2026-06-23 | 465 | 2026-06-15 | 2026-06-15 | 1d | 2026-06-15 | 2026-06-15 | 12d |  |
| 467 | 1.2.10.11 | **AG-F0009-0305-MB-J-00002** | 11d | 2026-06-09 | 2026-06-23 |  | 2026-05-27 | 2026-06-15 | 14d | 2026-05-27 | 2026-06-15 | 16d |  |
| 468 | 1.2.10.11.1 | Emissão inicial | 7d | 2026-06-09 | 2026-06-17 | 423 | 2026-05-27 | 2026-06-09 | 10d | 2026-05-27 | 2026-06-09 | 12d | 0d |
| 469 | 1.2.10.11.2 | Análise Tecnored | 1d | 2026-06-18 | 2026-06-18 | 468 | 2026-06-10 | 2026-06-10 | 1d | 2026-06-10 | 2026-06-10 | 12d | 0d |
| 470 | 1.2.10.11.3 | Atendimento de comentários | 2d | 2026-06-19 | 2026-06-22 | 469 | 2026-06-11 | 2026-06-12 | 2d | 2026-06-11 | 2026-06-12 | 12d | 0d |
| 471 | 1.2.10.11.4 | Aprovação | 1d | 2026-06-23 | 2026-06-23 | 470 | 2026-06-15 | 2026-06-15 | 1d | 2026-06-15 | 2026-06-15 | 12d |  |
| 472 | 1.2.10.12 | **AG-F0009-0305-MB-J-00003** | 11d | 2026-06-09 | 2026-06-23 |  | 2026-05-27 | 2026-06-15 | 14d | 2026-05-27 | 2026-06-15 | 5d |  |
| 473 | 1.2.10.12.1 | Emissão inicial | 7d | 2026-06-09 | 2026-06-17 | 423 | 2026-05-27 | 2026-06-09 | 10d | 2026-05-27 | 2026-06-09 | 1d | 0d |
| 474 | 1.2.10.12.2 | Análise Tecnored | 1d | 2026-06-18 | 2026-06-18 | 473 | 2026-06-10 | 2026-06-10 | 1d | 2026-06-10 | 2026-06-10 | 12d | 0d |
| 475 | 1.2.10.12.3 | Atendimento de comentários | 2d | 2026-06-19 | 2026-06-22 | 474 | 2026-06-11 | 2026-06-12 | 2d | 2026-06-11 | 2026-06-12 | 12d | 0d |
| 476 | 1.2.10.12.4 | Aprovação | 1d | 2026-06-23 | 2026-06-23 | 475 | 2026-06-15 | 2026-06-15 | 1d | 2026-06-15 | 2026-06-15 | 12d |  |
| 477 | 1.2.10.13 | **AG-F0009-0305-MB-J-00004** | 11d | 2026-06-09 | 2026-06-23 |  | 2026-05-27 | 2026-06-15 | 14d | 2026-05-27 | 2026-06-15 | 16d |  |
| 478 | 1.2.10.13.1 | Emissão inicial | 7d | 2026-06-09 | 2026-06-17 | 423 | 2026-05-27 | 2026-06-09 | 10d | 2026-05-27 | 2026-06-09 | 12d | 0d |
| 479 | 1.2.10.13.2 | Análise Tecnored | 1d | 2026-06-18 | 2026-06-18 | 478 | 2026-06-10 | 2026-06-10 | 1d | 2026-06-10 | 2026-06-10 | 12d | 0d |
| 480 | 1.2.10.13.3 | Atendimento de comentários | 2d | 2026-06-19 | 2026-06-22 | 479 | 2026-06-11 | 2026-06-12 | 2d | 2026-06-11 | 2026-06-12 | 12d | 0d |
| 481 | 1.2.10.13.4 | Aprovação | 1d | 2026-06-23 | 2026-06-23 | 480 | 2026-06-15 | 2026-06-15 | 1d | 2026-06-15 | 2026-06-15 | 12d |  |

| ID | WBS | Task | Duration | Start | Finish | Predecessors | Baseline start | Baseline finish | Baseline duration | Baseline 1 start | Baseline 1 finish | Total slack | Free slack |
| --- | --- | --- | --- | --- | --- | --- | --- | --- | --- | --- | --- | --- | --- |
| 482 | 1.2.10.14 | **DI-F0009-0305-MB-J-00001** | 6d | 2026-06-18 | 2026-06-25 |  | 2026-06-10 | 2026-06-18 | 7d | 2026-06-10 | 2026-06-18 | 5d |  |
| 483 | 1.2.10.14.1 | Emissão inicial | 2d | 2026-06-18 | 2026-06-19 | 473 | 2026-06-10 | 2026-06-12 | 3d | 2026-06-10 | 2026-06-12 | 1d | 0d |
| 484 | 1.2.10.14.2 | Análise Tecnored | 1d | 2026-06-22 | 2026-06-22 | 483 | 2026-06-15 | 2026-06-15 | 1d | 2026-06-15 | 2026-06-15 | 10d | 0d |
| 485 | 1.2.10.14.3 | Atendimento de comentários | 2d | 2026-06-23 | 2026-06-24 | 484 | 2026-06-16 | 2026-06-17 | 2d | 2026-06-16 | 2026-06-17 | 10d | 0d |
| 486 | 1.2.10.14.4 | Aprovação | 1d | 2026-06-25 | 2026-06-25 | 485 | 2026-06-18 | 2026-06-18 | 1d | 2026-06-18 | 2026-06-18 | 10d |  |
| 487 | 1.2.10.15 | **LI-F0009-0305-MB-J-00002** | 6d | 2026-06-29 | 2026-07-06 |  | 2026-06-23 | 2026-07-01 | 7d | 2026-06-23 | 2026-07-01 | 7d |  |
| 488 | 1.2.10.15.1 | Emissão inicial | 2d | 2026-06-29 | 2026-06-30 | 503 | 2026-06-23 | 2026-06-25 | 3d | 2026-06-23 | 2026-06-25 | 3d | 0d |
| 489 | 1.2.10.15.2 | Análise Tecnored | 1d | 2026-07-01 | 2026-07-01 | 488 | 2026-06-26 | 2026-06-26 | 1d | 2026-06-26 | 2026-06-26 | 3d | 0d |
| 490 | 1.2.10.15.3 | Atendimento de comentários | 2d | 2026-07-02 | 2026-07-03 | 489 | 2026-06-29 | 2026-06-30 | 2d | 2026-06-29 | 2026-06-30 | 3d | 0d |
| 491 | 1.2.10.15.4 | Aprovação | 1d | 2026-07-06 | 2026-07-06 | 490 | 2026-07-01 | 2026-07-01 | 1d | 2026-07-01 | 2026-07-01 | 3d |  |
| 492 | 1.2.10.16 | **LI-F0009-0305-MB-J-00003** | 6d | 2026-06-29 | 2026-07-06 |  | 2026-06-23 | 2026-07-01 | 7d | 2026-06-23 | 2026-07-01 | 5d |  |
| 493 | 1.2.10.16.1 | Emissão inicial | 2d | 2026-06-29 | 2026-06-30 | 503 | 2026-06-23 | 2026-06-25 | 3d | 2026-06-23 | 2026-06-25 | 1d | 0d |
| 494 | 1.2.10.16.2 | Análise Tecnored | 1d | 2026-07-01 | 2026-07-01 | 493 | 2026-06-26 | 2026-06-26 | 1d | 2026-06-26 | 2026-06-26 | 3d | 0d |
| 495 | 1.2.10.16.3 | Atendimento de comentários | 2d | 2026-07-02 | 2026-07-03 | 494 | 2026-06-29 | 2026-06-30 | 2d | 2026-06-29 | 2026-06-30 | 3d | 0d |
| 496 | 1.2.10.16.4 | Aprovação | 1d | 2026-07-06 | 2026-07-06 | 495 | 2026-07-01 | 2026-07-01 | 1d | 2026-07-01 | 2026-07-01 | 3d |  |
| 497 | 1.2.10.17 | **LM-F0009-0305-MB-J-00001** | 5d | 2026-07-01 | 2026-07-07 |  | 2026-07-01 | 2026-07-07 | 5d | 2026-07-01 | 2026-07-07 | 6d |  |
| 498 | 1.2.10.17.1 | Emissão inicial | 1d | 2026-07-01 | 2026-07-01 | 588FS-2d | 2026-07-01 | 2026-07-01 | 1d | 2026-07-01 | 2026-07-01 | 2d | 0d |
| 499 | 1.2.10.17.2 | Análise Tecnored | 1d | 2026-07-02 | 2026-07-02 | 498 | 2026-07-02 | 2026-07-02 | 1d | 2026-07-02 | 2026-07-02 | 2d | 0d |
| 500 | 1.2.10.17.3 | Atendimento de comentários | 2d | 2026-07-03 | 2026-07-06 | 499 | 2026-07-03 | 2026-07-06 | 2d | 2026-07-03 | 2026-07-06 | 2d | 0d |
| 501 | 1.2.10.17.4 | Aprovação | 1d | 2026-07-07 | 2026-07-07 | 500 | 2026-07-07 | 2026-07-07 | 1d | 2026-07-07 | 2026-07-07 | 2d |  |
| 502 | 1.2.10.18 | **ET-F0009-0305-MB-J-00001** | 7d | 2026-06-24 | 2026-07-02 |  | 2026-06-18 | 2026-06-26 | 7d | 2026-06-18 | 2026-06-26 | 5d |  |
| 503 | 1.2.10.18.1 | Emissão inicial | 3d | 2026-06-24 | 2026-06-26 | 433 | 2026-06-18 | 2026-06-22 | 3d | 2026-06-18 | 2026-06-22 | 1d | 0d |
| 504 | 1.2.10.18.2 | Análise Tecnored | 1d | 2026-06-29 | 2026-06-29 | 503 | 2026-06-23 | 2026-06-23 | 1d | 2026-06-23 | 2026-06-23 | 5d | 0d |
| 505 | 1.2.10.18.3 | Atendimento de comentários | 2d | 2026-06-30 | 2026-07-01 | 504 | 2026-06-24 | 2026-06-25 | 2d | 2026-06-24 | 2026-06-25 | 5d | 0d |
| 506 | 1.2.10.18.4 | Aprovação | 1d | 2026-07-02 | 2026-07-02 | 505 | 2026-06-26 | 2026-06-26 | 1d | 2026-06-26 | 2026-06-26 | 5d |  |

| ID | WBS | Task | Duration | Start | Finish | Predecessors | Baseline start | Baseline finish | Baseline duration | Baseline 1 start | Baseline 1 finish | Total slack | Free slack |
| --- | --- | --- | --- | --- | --- | --- | --- | --- | --- | --- | --- | --- | --- |
| 507 | 1.2.10.19 | **FD-F0009-0305-MB-J-00001** | 11d | 2026-06-24 | 2026-07-08 |  | 2026-06-18 | 2026-07-07 | 14d | 2026-06-18 | 2026-07-07 | 5d |  |
| 508 | 1.2.10.19.1 | Emissão inicial | 7d | 2026-06-24 | 2026-07-02 | 433 | 2026-06-18 | 2026-07-01 | 10d | 2026-06-18 | 2026-07-01 | 1d | 0d |
| 509 | 1.2.10.19.2 | Análise Tecnored | 1d | 2026-07-03 | 2026-07-03 | 508 | 2026-07-02 | 2026-07-02 | 1d | 2026-07-02 | 2026-07-02 | 1d | 0d |
| 510 | 1.2.10.19.3 | Atendimento de comentários | 2d | 2026-07-06 | 2026-07-07 | 509 | 2026-07-03 | 2026-07-06 | 2d | 2026-07-03 | 2026-07-06 | 1d | 0d |
| 511 | 1.2.10.19.4 | Aprovação | 1d | 2026-07-08 | 2026-07-08 | 510 | 2026-07-07 | 2026-07-07 | 1d | 2026-07-07 | 2026-07-07 | 1d |  |
| 512 | 1.2.10.20 | **FD-F0009-0305-MB-J-00002** | 11d | 2026-06-24 | 2026-07-08 |  | 2026-06-18 | 2026-07-07 | 14d | 2026-06-18 | 2026-07-07 | 5d |  |
| 513 | 1.2.10.20.1 | Emissão inicial | 7d | 2026-06-24 | 2026-07-02 | 433 | 2026-06-18 | 2026-07-01 | 10d | 2026-06-18 | 2026-07-01 | 1d | 0d |
| 514 | 1.2.10.20.2 | Análise Tecnored | 1d | 2026-07-03 | 2026-07-03 | 513 | 2026-07-02 | 2026-07-02 | 1d | 2026-07-02 | 2026-07-02 | 1d | 0d |
| 515 | 1.2.10.20.3 | Atendimento de comentários | 2d | 2026-07-06 | 2026-07-07 | 514 | 2026-07-03 | 2026-07-06 | 2d | 2026-07-03 | 2026-07-06 | 1d | 0d |
| 516 | 1.2.10.20.4 | Aprovação | 1d | 2026-07-08 | 2026-07-08 | 515 | 2026-07-07 | 2026-07-07 | 1d | 2026-07-07 | 2026-07-07 | 1d |  |
| 517 | 1.2.10.21 | **FD-F0009-0305-MB-J-00003** | 11d | 2026-06-24 | 2026-07-08 |  | 2026-06-18 | 2026-07-07 | 14d | 2026-06-18 | 2026-07-07 | 5d |  |
| 518 | 1.2.10.21.1 | Emissão inicial | 7d | 2026-06-24 | 2026-07-02 | 433 | 2026-06-18 | 2026-07-01 | 10d | 2026-06-18 | 2026-07-01 | 1d | 0d |
| 519 | 1.2.10.21.2 | Análise Tecnored | 1d | 2026-07-03 | 2026-07-03 | 518 | 2026-07-02 | 2026-07-02 | 1d | 2026-07-02 | 2026-07-02 | 1d | 0d |
| 520 | 1.2.10.21.3 | Atendimento de comentários | 2d | 2026-07-06 | 2026-07-07 | 519 | 2026-07-03 | 2026-07-06 | 2d | 2026-07-03 | 2026-07-06 | 1d | 0d |
| 521 | 1.2.10.21.4 | Aprovação | 1d | 2026-07-08 | 2026-07-08 | 520 | 2026-07-07 | 2026-07-07 | 1d | 2026-07-07 | 2026-07-07 | 1d |  |
| 522 | 1.2.10.22 | **FD-F0009-0305-MB-J-00004** | 11d | 2026-06-24 | 2026-07-08 |  | 2026-06-18 | 2026-07-07 | 14d | 2026-06-18 | 2026-07-07 | 5d |  |
| 523 | 1.2.10.22.1 | Emissão inicial | 7d | 2026-06-24 | 2026-07-02 | 433 | 2026-06-18 | 2026-07-01 | 10d | 2026-06-18 | 2026-07-01 | 1d | 0d |
| 524 | 1.2.10.22.2 | Análise Tecnored | 1d | 2026-07-03 | 2026-07-03 | 523 | 2026-07-02 | 2026-07-02 | 1d | 2026-07-02 | 2026-07-02 | 1d | 0d |
| 525 | 1.2.10.22.3 | Atendimento de comentários | 2d | 2026-07-06 | 2026-07-07 | 524 | 2026-07-03 | 2026-07-06 | 2d | 2026-07-03 | 2026-07-06 | 1d | 0d |
| 526 | 1.2.10.22.4 | Aprovação | 1d | 2026-07-08 | 2026-07-08 | 525 | 2026-07-07 | 2026-07-07 | 1d | 2026-07-07 | 2026-07-07 | 1d |  |
| 527 | 1.2.10.23 | **FD-F0009-0305-MB-J-00005** | 11d | 2026-06-24 | 2026-07-08 |  | 2026-06-18 | 2026-07-07 | 14d | 2026-06-18 | 2026-07-07 | 5d |  |
| 528 | 1.2.10.23.1 | Emissão inicial | 7d | 2026-06-24 | 2026-07-02 | 433 | 2026-06-18 | 2026-07-01 | 10d | 2026-06-18 | 2026-07-01 | 1d | 0d |
| 529 | 1.2.10.23.2 | Análise Tecnored | 1d | 2026-07-03 | 2026-07-03 | 528 | 2026-07-02 | 2026-07-02 | 1d | 2026-07-02 | 2026-07-02 | 1d | 0d |
| 530 | 1.2.10.23.3 | Atendimento de comentários | 2d | 2026-07-06 | 2026-07-07 | 529 | 2026-07-03 | 2026-07-06 | 2d | 2026-07-03 | 2026-07-06 | 1d | 0d |
| 531 | 1.2.10.23.4 | Aprovação | 1d | 2026-07-08 | 2026-07-08 | 530 | 2026-07-07 | 2026-07-07 | 1d | 2026-07-07 | 2026-07-07 | 1d |  |

| ID | WBS | Task | Duration | Start | Finish | Predecessors | Baseline start | Baseline finish | Baseline duration | Baseline 1 start | Baseline 1 finish | Total slack | Free slack |
| --- | --- | --- | --- | --- | --- | --- | --- | --- | --- | --- | --- | --- | --- |
| 532 | 1.2.10.24 | **FD-F0009-0305-MB-J-00006** | 11d | 2026-06-24 | 2026-07-08 |  | 2026-06-18 | 2026-07-07 | 14d | 2026-06-18 | 2026-07-07 | 5d |  |
| 533 | 1.2.10.24.1 | Emissão inicial | 7d | 2026-06-24 | 2026-07-02 | 433 | 2026-06-18 | 2026-07-01 | 10d | 2026-06-18 | 2026-07-01 | 1d | 0d |
| 534 | 1.2.10.24.2 | Análise Tecnored | 1d | 2026-07-03 | 2026-07-03 | 533 | 2026-07-02 | 2026-07-02 | 1d | 2026-07-02 | 2026-07-02 | 1d | 0d |
| 535 | 1.2.10.24.3 | Atendimento de comentários | 2d | 2026-07-06 | 2026-07-07 | 534 | 2026-07-03 | 2026-07-06 | 2d | 2026-07-03 | 2026-07-06 | 1d | 0d |
| 536 | 1.2.10.24.4 | Aprovação | 1d | 2026-07-08 | 2026-07-08 | 535 | 2026-07-07 | 2026-07-07 | 1d | 2026-07-07 | 2026-07-07 | 1d |  |
| 537 | 1.2.10.25 | **FD-F0009-0305-MB-J-00007** | 11d | 2026-06-24 | 2026-07-08 |  | 2026-06-18 | 2026-07-07 | 14d | 2026-06-18 | 2026-07-07 | 5d |  |
| 538 | 1.2.10.25.1 | Emissão inicial | 7d | 2026-06-24 | 2026-07-02 | 433 | 2026-06-18 | 2026-07-01 | 10d | 2026-06-18 | 2026-07-01 | 1d | 0d |
| 539 | 1.2.10.25.2 | Análise Tecnored | 1d | 2026-07-03 | 2026-07-03 | 538 | 2026-07-02 | 2026-07-02 | 1d | 2026-07-02 | 2026-07-02 | 1d | 0d |
| 540 | 1.2.10.25.3 | Atendimento de comentários | 2d | 2026-07-06 | 2026-07-07 | 539 | 2026-07-03 | 2026-07-06 | 2d | 2026-07-03 | 2026-07-06 | 1d | 0d |
| 541 | 1.2.10.25.4 | Aprovação | 1d | 2026-07-08 | 2026-07-08 | 540 | 2026-07-07 | 2026-07-07 | 1d | 2026-07-07 | 2026-07-07 | 1d |  |
| 542 | 1.2.10.26 | **FD-F0009-0305-MB-J-00008** | 11d | 2026-06-24 | 2026-07-08 |  | 2026-06-18 | 2026-07-07 | 14d | 2026-06-18 | 2026-07-07 | 5d |  |
| 543 | 1.2.10.26.1 | Emissão inicial | 7d | 2026-06-24 | 2026-07-02 | 433 | 2026-06-18 | 2026-07-01 | 10d | 2026-06-18 | 2026-07-01 | 1d | 0d |
| 544 | 1.2.10.26.2 | Análise Tecnored | 1d | 2026-07-03 | 2026-07-03 | 543 | 2026-07-02 | 2026-07-02 | 1d | 2026-07-02 | 2026-07-02 | 1d | 0d |
| 545 | 1.2.10.26.3 | Atendimento de comentários | 2d | 2026-07-06 | 2026-07-07 | 544 | 2026-07-03 | 2026-07-06 | 2d | 2026-07-03 | 2026-07-06 | 1d | 0d |
| 546 | 1.2.10.26.4 | Aprovação | 1d | 2026-07-08 | 2026-07-08 | 545 | 2026-07-07 | 2026-07-07 | 1d | 2026-07-07 | 2026-07-07 | 1d |  |
| 547 | 1.2.10.27 | **FD-F0009-0305-MB-J-00009** | 11d | 2026-06-24 | 2026-07-08 |  | 2026-06-18 | 2026-07-07 | 14d | 2026-06-18 | 2026-07-07 | 5d |  |
| 548 | 1.2.10.27.1 | Emissão inicial | 7d | 2026-06-24 | 2026-07-02 | 433 | 2026-06-18 | 2026-07-01 | 10d | 2026-06-18 | 2026-07-01 | 1d | 0d |
| 549 | 1.2.10.27.2 | Análise Tecnored | 1d | 2026-07-03 | 2026-07-03 | 548 | 2026-07-02 | 2026-07-02 | 1d | 2026-07-02 | 2026-07-02 | 1d | 0d |
| 550 | 1.2.10.27.3 | Atendimento de comentários | 2d | 2026-07-06 | 2026-07-07 | 549 | 2026-07-03 | 2026-07-06 | 2d | 2026-07-03 | 2026-07-06 | 1d | 0d |
| 551 | 1.2.10.27.4 | Aprovação | 1d | 2026-07-08 | 2026-07-08 | 550 | 2026-07-07 | 2026-07-07 | 1d | 2026-07-07 | 2026-07-07 | 1d |  |
| 552 | 1.2.10.28 | **FD-F0009-0305-MB-J-00010** | 11d | 2026-06-24 | 2026-07-08 |  | 2026-06-18 | 2026-07-07 | 14d | 2026-06-18 | 2026-07-07 | 5d |  |
| 553 | 1.2.10.28.1 | Emissão inicial | 7d | 2026-06-24 | 2026-07-02 | 433 | 2026-06-18 | 2026-07-01 | 10d | 2026-06-18 | 2026-07-01 | 1d | 0d |
| 554 | 1.2.10.28.2 | Análise Tecnored | 1d | 2026-07-03 | 2026-07-03 | 553 | 2026-07-02 | 2026-07-02 | 1d | 2026-07-02 | 2026-07-02 | 1d | 0d |
| 555 | 1.2.10.28.3 | Atendimento de comentários | 2d | 2026-07-06 | 2026-07-07 | 554 | 2026-07-03 | 2026-07-06 | 2d | 2026-07-03 | 2026-07-06 | 1d | 0d |
| 556 | 1.2.10.28.4 | Aprovação | 1d | 2026-07-08 | 2026-07-08 | 555 | 2026-07-07 | 2026-07-07 | 1d | 2026-07-07 | 2026-07-07 | 1d |  |

| ID | WBS | Task | Duration | Start | Finish | Predecessors | Baseline start | Baseline finish | Baseline duration | Baseline 1 start | Baseline 1 finish | Total slack | Free slack |
| --- | --- | --- | --- | --- | --- | --- | --- | --- | --- | --- | --- | --- | --- |
| 557 | 1.2.10.29 | **FD-F0009-0305-MB-J-00011** | 11d | 2026-06-24 | 2026-07-08 |  | 2026-06-18 | 2026-07-07 | 14d | 2026-06-18 | 2026-07-07 | 5d |  |
| 558 | 1.2.10.29.1 | Emissão inicial | 7d | 2026-06-24 | 2026-07-02 | 433 | 2026-06-18 | 2026-07-01 | 10d | 2026-06-18 | 2026-07-01 | 1d | 0d |
| 559 | 1.2.10.29.2 | Análise Tecnored | 1d | 2026-07-03 | 2026-07-03 | 558 | 2026-07-02 | 2026-07-02 | 1d | 2026-07-02 | 2026-07-02 | 1d | 0d |
| 560 | 1.2.10.29.3 | Atendimento de comentários | 2d | 2026-07-06 | 2026-07-07 | 559 | 2026-07-03 | 2026-07-06 | 2d | 2026-07-03 | 2026-07-06 | 1d | 0d |
| 561 | 1.2.10.29.4 | Aprovação | 1d | 2026-07-08 | 2026-07-08 | 560 | 2026-07-07 | 2026-07-07 | 1d | 2026-07-07 | 2026-07-07 | 1d |  |
| 562 | 1.2.10.30 | **FD-F0009-0305-MB-J-00012** | 11d | 2026-06-24 | 2026-07-08 |  | 2026-06-18 | 2026-07-07 | 14d | 2026-06-18 | 2026-07-07 | 5d |  |
| 563 | 1.2.10.30.1 | Emissão inicial | 7d | 2026-06-24 | 2026-07-02 | 433 | 2026-06-18 | 2026-07-01 | 10d | 2026-06-18 | 2026-07-01 | 1d | 0d |
| 564 | 1.2.10.30.2 | Análise Tecnored | 1d | 2026-07-03 | 2026-07-03 | 563 | 2026-07-02 | 2026-07-02 | 1d | 2026-07-02 | 2026-07-02 | 1d | 0d |
| 565 | 1.2.10.30.3 | Atendimento de comentários | 2d | 2026-07-06 | 2026-07-07 | 564 | 2026-07-03 | 2026-07-06 | 2d | 2026-07-03 | 2026-07-06 | 1d | 0d |
| 566 | 1.2.10.30.4 | Aprovação | 1d | 2026-07-08 | 2026-07-08 | 565 | 2026-07-07 | 2026-07-07 | 1d | 2026-07-07 | 2026-07-07 | 1d |  |
| 567 | 1.2.10.31 | **FD-F0009-0305-MB-J-00013** | 11d | 2026-06-24 | 2026-07-08 |  | 2026-06-18 | 2026-07-07 | 14d | 2026-06-18 | 2026-07-07 | 5d |  |
| 568 | 1.2.10.31.1 | Emissão inicial | 7d | 2026-06-24 | 2026-07-02 | 433 | 2026-06-18 | 2026-07-01 | 10d | 2026-06-18 | 2026-07-01 | 1d | 0d |
| 569 | 1.2.10.31.2 | Análise Tecnored | 1d | 2026-07-03 | 2026-07-03 | 568 | 2026-07-02 | 2026-07-02 | 1d | 2026-07-02 | 2026-07-02 | 1d | 0d |
| 570 | 1.2.10.31.3 | Atendimento de comentários | 2d | 2026-07-06 | 2026-07-07 | 569 | 2026-07-03 | 2026-07-06 | 2d | 2026-07-03 | 2026-07-06 | 1d | 0d |
| 571 | 1.2.10.31.4 | Aprovação | 1d | 2026-07-08 | 2026-07-08 | 570 | 2026-07-07 | 2026-07-07 | 1d | 2026-07-07 | 2026-07-07 | 1d |  |
| 572 | 1.2.10.32 | **FD-F0009-0305-MB-J-00014** | 11d | 2026-06-24 | 2026-07-08 |  | 2026-06-18 | 2026-07-07 | 14d | 2026-06-18 | 2026-07-07 | 5d |  |
| 573 | 1.2.10.32.1 | Emissão inicial | 7d | 2026-06-24 | 2026-07-02 | 433 | 2026-06-18 | 2026-07-01 | 10d | 2026-06-18 | 2026-07-01 | 1d | 0d |
| 574 | 1.2.10.32.2 | Análise Tecnored | 1d | 2026-07-03 | 2026-07-03 | 573 | 2026-07-02 | 2026-07-02 | 1d | 2026-07-02 | 2026-07-02 | 1d | 0d |
| 575 | 1.2.10.32.3 | Atendimento de comentários | 2d | 2026-07-06 | 2026-07-07 | 574 | 2026-07-03 | 2026-07-06 | 2d | 2026-07-03 | 2026-07-06 | 1d | 0d |
| 576 | 1.2.10.32.4 | Aprovação | 1d | 2026-07-08 | 2026-07-08 | 575 | 2026-07-07 | 2026-07-07 | 1d | 2026-07-07 | 2026-07-07 | 1d |  |
| 577 | 1.2.10.33 | **FD-F0009-0305-MB-J-00015** | 11d | 2026-06-24 | 2026-07-08 |  | 2026-06-18 | 2026-07-07 | 14d | 2026-06-18 | 2026-07-07 | 5d |  |
| 578 | 1.2.10.33.1 | Emissão inicial | 7d | 2026-06-24 | 2026-07-02 | 433 | 2026-06-18 | 2026-07-01 | 10d | 2026-06-18 | 2026-07-01 | 1d | 0d |
| 579 | 1.2.10.33.2 | Análise Tecnored | 1d | 2026-07-03 | 2026-07-03 | 578 | 2026-07-02 | 2026-07-02 | 1d | 2026-07-02 | 2026-07-02 | 1d | 0d |
| 580 | 1.2.10.33.3 | Atendimento de comentários | 2d | 2026-07-06 | 2026-07-07 | 579 | 2026-07-03 | 2026-07-06 | 2d | 2026-07-03 | 2026-07-06 | 1d | 0d |
| 581 | 1.2.10.33.4 | Aprovação | 1d | 2026-07-08 | 2026-07-08 | 580 | 2026-07-07 | 2026-07-07 | 1d | 2026-07-07 | 2026-07-07 | 1d |  |

| ID | WBS | Task | Duration | Start | Finish | Predecessors | Baseline start | Baseline finish | Baseline duration | Baseline 1 start | Baseline 1 finish | Total slack | Free slack |
| --- | --- | --- | --- | --- | --- | --- | --- | --- | --- | --- | --- | --- | --- |
| 582 | 1.2.10.34 | **FD-F0009-0305-MB-J-00016** | 11d | 2026-06-24 | 2026-07-08 |  | 2026-06-18 | 2026-07-07 | 14d | 2026-06-18 | 2026-07-07 | 5d |  |
| 583 | 1.2.10.34.1 | Emissão inicial | 7d | 2026-06-24 | 2026-07-02 | 433 | 2026-06-18 | 2026-07-01 | 10d | 2026-06-18 | 2026-07-01 | 1d | 0d |
| 584 | 1.2.10.34.2 | Análise Tecnored | 1d | 2026-07-03 | 2026-07-03 | 583 | 2026-07-02 | 2026-07-02 | 1d | 2026-07-02 | 2026-07-02 | 1d | 0d |
| 585 | 1.2.10.34.3 | Atendimento de comentários | 2d | 2026-07-06 | 2026-07-07 | 584 | 2026-07-03 | 2026-07-06 | 2d | 2026-07-03 | 2026-07-06 | 1d | 0d |
| 586 | 1.2.10.34.4 | Aprovação | 1d | 2026-07-08 | 2026-07-08 | 585 | 2026-07-07 | 2026-07-07 | 1d | 2026-07-07 | 2026-07-07 | 1d |  |
| 587 | 1.2.10.35 | **DT-F0009-0305-MB-J-00001** | 6d | 2026-07-01 | 2026-07-08 |  | 2026-06-26 | 2026-07-06 | 7d | 2026-06-26 | 2026-07-06 | 5d |  |
| 588 | 1.2.10.35.1 | Emissão inicial | 2d | 2026-07-01 | 2026-07-02 | 493 | 2026-06-26 | 2026-06-30 | 3d | 2026-06-26 | 2026-06-30 | 1d | 0d |
| 589 | 1.2.10.35.2 | Análise Tecnored | 1d | 2026-07-03 | 2026-07-03 | 588 | 2026-07-01 | 2026-07-01 | 1d | 2026-07-01 | 2026-07-01 | 1d | 0d |
| 590 | 1.2.10.35.3 | Atendimento de comentários | 2d | 2026-07-06 | 2026-07-07 | 589 | 2026-07-02 | 2026-07-03 | 2d | 2026-07-02 | 2026-07-03 | 1d | 0d |
| 591 | 1.2.10.35.4 | Aprovação | 1d | 2026-07-08 | 2026-07-08 | 590 | 2026-07-06 | 2026-07-06 | 1d | 2026-07-06 | 2026-07-06 | 1d |  |
| 592 | 1.2.11 | **Civil** | 13d | 2026-06-23 | 2026-07-09 |  | 2026-06-22 | 2026-07-08 | 13d | 2026-06-22 | 2026-07-08 | 4d |  |
| 593 | 1.2.11.1 | **MC-F0009-0305-MB-C-00001** | 12d | 2026-06-23 | 2026-07-08 |  | 2026-06-22 | 2026-07-07 | 12d | 2026-06-22 | 2026-07-07 | 4d |  |
| 594 | 1.2.11.1.1 | Emissão inicial | 8d | 2026-06-23 | 2026-07-02 | 291 | 2026-06-22 | 2026-07-01 | 8d | 2026-06-22 | 2026-07-01 | 4d | 0d |
| 595 | 1.2.11.1.2 | Análise Tecnored | 1d | 2026-07-03 | 2026-07-03 | 594 | 2026-07-02 | 2026-07-02 | 1d | 2026-07-02 | 2026-07-02 | 1d | 0d |
| 596 | 1.2.11.1.3 | Atendimento de comentários | 2d | 2026-07-06 | 2026-07-07 | 595 | 2026-07-03 | 2026-07-06 | 2d | 2026-07-03 | 2026-07-06 | 1d | 0d |
| 597 | 1.2.11.1.4 | Aprovação | 1d | 2026-07-08 | 2026-07-08 | 596 | 2026-07-07 | 2026-07-07 | 1d | 2026-07-07 | 2026-07-07 | 1d |  |
| 598 | 1.2.11.2 | **PQ-F0009-0305-MB-C-00001** | 5d | 2026-07-03 | 2026-07-09 |  | 2026-07-02 | 2026-07-08 | 5d | 2026-07-02 | 2026-07-08 | 4d |  |
| 599 | 1.2.11.2.1 | Emissão inicial | 1d | 2026-07-03 | 2026-07-03 | 594 | 2026-07-02 | 2026-07-02 | 1d | 2026-07-02 | 2026-07-02 | 4d | 0d |
| 600 | 1.2.11.2.2 | Análise Tecnored | 1d | 2026-07-06 | 2026-07-06 | 599 | 2026-07-03 | 2026-07-03 | 1d | 2026-07-03 | 2026-07-03 | 4d | 0d |
| 601 | 1.2.11.2.3 | Atendimento de comentários | 2d | 2026-07-07 | 2026-07-08 | 600 | 2026-07-06 | 2026-07-07 | 2d | 2026-07-06 | 2026-07-07 | 4d | 0d |
| 602 | 1.2.11.2.4 | Aprovação | 1d | 2026-07-09 | 2026-07-09 | 601 | 2026-07-08 | 2026-07-08 | 1d | 2026-07-08 | 2026-07-08 | 4d |  |
