# CR-F0009-0305-MB-F-00001

Schedule from MS Project, 2026-04-27 to 2026-07-15, status date 2026-05-29, A marks actual dates.

## Calendars

- Padrão: Mon-Fri 09:00-12:00, 13:00-18:00; Sat-Sun off. Exceptions (off unless hours are given): 2026-06-04 to 2026-06-05 (FERIADO).

## Schedule

| ID | WBS | Task | Type | Duration | Start | Finish | Predecessors | Complete | Remaining | Baseline start | Baseline finish | Baseline duration | Total slack | Free slack | Constraint | DISCIPLINA |
| --- | --- | --- | --- | --- | --- | --- | --- | --- | --- | --- | --- | --- | --- | --- | --- | --- |
| 1 | 1 | **F0009 - Programa Marabá** |  | 51d | 2026-04-27 A | 2026-07-08 |  | 4% | 49.16d | 2026-04-27 | 2026-07-08 | 53d |  |  |  | GERAL |
| 2 | 1.1 | **Área 0306 - Sopradores** |  | 52d | 2026-04-27 A | 2026-07-09 |  | 4% | 50.12d | 2026-04-27 | 2026-07-08 | 53d | 0d |  |  | GERAL |
| 3 | 1.1.1 | KOM - Início de projeto | milestone | 0d | 2026-04-27 A | 2026-04-27 A |  | 100% |  | 2026-04-27 | 2026-04-27 | 0d |  |  | start no earlier than 2026-04-27 | GERAL |
| 4 | 1.1.2 | **Marcos** |  | 12d | 2026-05-19 A | 2026-06-05 |  |  | 12d | 2026-05-19 | 2026-06-05 | 13d | 0d |  |  | MARCOS |
| 5 | 1.1.2.1 | Critério de Projeto de Processo | milestone, manual | 0d | 2026-06-05 | 2026-06-05 |  |  |  | 2026-06-05 | 2026-06-05 | 0d |  |  |  | MARCOS |
| 6 | 1.1.2.2 | Critério de Projeto de Mecânica | milestone, manual | 0d | 2026-05-19 A | 2026-05-19 A |  | 100% |  | 2026-05-19 | 2026-05-19 | 0d |  |  |  | MARCOS |
| 7 | 1.1.2.3 | Critério de Projeto de Elétrica | milestone, manual | 0d | 2026-06-05 | 2026-06-05 |  |  |  | 2026-06-05 | 2026-06-05 | 0d |  |  |  | MARCOS |
| 8 | 1.1.2.4 | Critério de Projeto de Automação | milestone, manual | 0d | 2026-06-05 A | 2026-06-05 |  | 75% | 0d | 2026-06-05 | 2026-06-05 | 0d |  |  |  | MARCOS |
| 9 | 1.1.2.5 | Critério de Projeto de Tubulação | milestone, manual | 0d | 2026-05-22 A | 2026-05-22 A |  | 100% |  | 2026-05-22 | 2026-05-22 | 0d |  |  |  | MARCOS |
| 10 | 1.1.2.6 | Critério de Projeto de Estrutura metálica | milestone, manual | 0d | 2026-06-05 | 2026-06-05 |  |  |  | 2026-06-05 | 2026-06-05 | 0d |  |  |  | MARCOS |
| 11 | 1.1.3 | **Pendências** |  | 0d | 2026-04-29 A | 2026-04-29 A |  | 100% |  | 2026-04-29 | 2026-04-29 | 0d |  |  |  | PENDÊNCIAS |
| 12 | 1.1.3.1 | Recebimento de dados de entrada | milestone | 0d | 2026-04-29 A | 2026-04-29 A |  | 100% |  | 2026-04-29 | 2026-04-29 | 0d |  |  |  | PENDÊNCIAS |
| 13 | 1.1.4 | **Planejamento** |  | 25.4d | 2026-04-27 A | 2026-06-01 |  | 86% | 3.63d | 2026-04-27 | 2026-06-01 | 25.4d | 26.6d |  |  | PLANEJAMENTO |
| 14 | 1.1.4.1 | **LD-F0009-0306-MB-F-00001** |  | 25.4d | 2026-04-27 A | 2026-06-01 |  | 86% | 3.63d | 2026-04-27 | 2026-06-01 | 25.4d | 26.6d |  |  | PLANEJAMENTO |
| 15 | 1.1.4.1.1 | Emissão inicial |  | 3d | 2026-04-27 A | 2026-04-29 A | 3 | 100% |  | 2026-04-27 | 2026-04-29 | 3d |  |  |  | PLANEJAMENTO |
| 16 | 1.1.4.1.2 | Análise Tecnored |  | 1d | 2026-04-30 A | 2026-04-30 A | 15 | 100% |  | 2026-04-30 | 2026-04-30 | 1d |  |  |  | PLANEJAMENTO |
| 17 | 1.1.4.1.3 | Atendimento de comentários |  | 2d | 2026-05-01 A | 2026-05-12 A | 16FS+7d | 100% |  | 2026-05-01 | 2026-05-12 | 2d |  |  |  | PLANEJAMENTO |
| 18 | 1.1.4.1.4 | Aprovação |  | 1d | 2026-05-29 | 2026-06-01 | 17FS+13d |  |  | 2026-05-29 | 2026-06-01 | 1d | 26.6d |  |  | PLANEJAMENTO |
| 19 | 1.1.4.2 | **CR-F0009-0306-MB-F-00001** |  | 21.4d | 2026-04-30 A | 2026-05-29 |  | 86% | 3.06d | 2026-04-30 | 2026-05-29 | 21.4d | 27.6d |  |  | PLANEJAMENTO |
| 20 | 1.1.4.2.1 | Emissão inicial |  | 3d | 2026-04-30 A | 2026-05-04 A | 15 | 100% |  | 2026-04-30 | 2026-05-04 | 3d |  |  |  | PLANEJAMENTO |
| 21 | 1.1.4.2.2 | Análise Tecnored |  | 1d | 2026-05-05 A | 2026-05-05 A | 20 | 100% |  | 2026-05-05 | 2026-05-05 | 1d |  |  |  | PLANEJAMENTO |
| 22 | 1.1.4.2.3 | Atendimento de comentários |  | 2d | 2026-05-06 A | 2026-05-15 A | 21FS+7d | 100% |  | 2026-05-06 | 2026-05-15 | 2d |  |  |  | PLANEJAMENTO |
| 23 | 1.1.4.2.4 | Aprovação |  | 1d | 2026-05-28 | 2026-05-29 | 22FS+9d |  |  | 2026-05-28 | 2026-05-29 | 1d | 27.6d |  |  | PLANEJAMENTO |
| 24 | 1.1.5 | **Coordenação** |  | 52d | 2026-04-27 A | 2026-07-09 |  | 11% | 46.22d | 2026-04-27 | 2026-07-07 | 52d | 0d |  |  | COORDENAÇÃO |
| 25 | 1.1.5.1 | **RM-F0009-0306-MB-G-00001** |  | 7d | 2026-06-01 | 2026-06-11 |  |  |  | 2026-06-01 | 2026-06-09 | 7d | 0d |  |  | COORDENAÇÃO |
| 26 | 1.1.5.1.1 | Emissão inicial |  | 3d | 2026-06-01 | 2026-06-03 | 3FS+25d |  |  | 2026-06-01 | 2026-06-03 | 3d | 0d |  |  | COORDENAÇÃO |
| 27 | 1.1.5.1.2 | Análise Tecnored |  | 1d | 2026-06-08 | 2026-06-08 | 26 |  |  | 2026-06-04 | 2026-06-04 | 1d | 20d | 0d |  | COORDENAÇÃO |
| 28 | 1.1.5.1.3 | Atendimento de comentários |  | 2d | 2026-06-09 | 2026-06-10 | 27 |  |  | 2026-06-05 | 2026-06-08 | 2d | 20d | 0d |  | COORDENAÇÃO |
| 29 | 1.1.5.1.4 | Aprovação |  | 1d | 2026-06-11 | 2026-06-11 | 28 |  |  | 2026-06-09 | 2026-06-09 | 1d | 20d |  |  | COORDENAÇÃO |

| ID | WBS | Task | Type | Duration | Start | Finish | Predecessors | Complete | Remaining | Baseline start | Baseline finish | Baseline duration | Total slack | Free slack | Baseline cost | DISCIPLINA |
| --- | --- | --- | --- | --- | --- | --- | --- | --- | --- | --- | --- | --- | --- | --- | --- | --- |
| 30 | 1.1.5.2 | **RM-F0009-0306-MB-G-00002** |  | 7d | 2026-06-22 | 2026-06-30 |  |  |  | 2026-06-18 | 2026-06-26 | 7d | 0d |  |  | COORDENAÇÃO |
| 31 | 1.1.5.2.1 | Emissão inicial |  | 3d | 2026-06-22 | 2026-06-24 | 26FS+10d |  |  | 2026-06-18 | 2026-06-22 | 3d | 0d |  |  | COORDENAÇÃO |
| 32 | 1.1.5.2.2 | Análise Tecnored |  | 1d | 2026-06-25 | 2026-06-25 | 31 |  |  | 2026-06-23 | 2026-06-23 | 1d | 7d | 0d |  | COORDENAÇÃO |
| 33 | 1.1.5.2.3 | Atendimento de comentários |  | 2d | 2026-06-26 | 2026-06-29 | 32 |  |  | 2026-06-24 | 2026-06-25 | 2d | 7d | 0d |  | COORDENAÇÃO |
| 34 | 1.1.5.2.4 | Aprovação |  | 1d | 2026-06-30 | 2026-06-30 | 33 |  |  | 2026-06-26 | 2026-06-26 | 1d | 7d |  |  | COORDENAÇÃO |
| 35 | 1.1.5.3 | **RL-F0009-0306-MB-G-00001** |  | 6d | 2026-07-02 | 2026-07-09 |  |  |  | 2026-06-30 | 2026-07-07 | 6d | 0d |  |  | COORDENAÇÃO |
| 36 | 1.1.5.3.1 | Emissão inicial |  | 2d | 2026-07-02 | 2026-07-03 | 31FS+5d |  |  | 2026-06-30 | 2026-07-01 | 2d | 0d |  |  | COORDENAÇÃO |
| 37 | 1.1.5.3.2 | Análise Tecnored |  | 1d | 2026-07-06 | 2026-07-06 | 36 |  |  | 2026-07-02 | 2026-07-02 | 1d | 0d |  |  | COORDENAÇÃO |
| 38 | 1.1.5.3.3 | Atendimento de comentários |  | 2d | 2026-07-07 | 2026-07-08 | 37 |  |  | 2026-07-03 | 2026-07-06 | 2d | 0d |  |  | COORDENAÇÃO |
| 39 | 1.1.5.3.4 | Aprovação |  | 1d | 2026-07-09 | 2026-07-09 | 38 |  |  | 2026-07-07 | 2026-07-07 | 1d | 0d |  |  | COORDENAÇÃO |
| 40 | 1.1.5.4 | **LP-F0009-0306-MB-G-00001** |  | 47d | 2026-04-27 A | 2026-07-02 |  | 43% | 26.86d | 2026-04-27 | 2026-06-30 | 47d | 5d |  |  | COORDENAÇÃO |
| 41 | 1.1.5.4.1 | Emissão inicial |  | 3d | 2026-04-27 A | 2026-04-29 A | 3 | 100% |  | 2026-04-27 | 2026-04-29 | 3d |  |  |  | COORDENAÇÃO |
| 42 | 1.1.5.4.2 | Análise Tecnored |  | 1d | 2026-06-15 | 2026-06-15 | 41FS+30d |  |  | 2026-06-11 | 2026-06-11 | 1d | 5d | 0d |  | COORDENAÇÃO |
| 43 | 1.1.5.4.3 | Atendimento de comentários |  | 2d | 2026-06-30 | 2026-07-01 | 42FS+10d |  |  | 2026-06-26 | 2026-06-29 | 2d | 5d | 0d |  | COORDENAÇÃO |
| 44 | 1.1.5.4.4 | Aprovação |  | 1d | 2026-07-02 | 2026-07-02 | 43 |  |  | 2026-06-30 | 2026-06-30 | 1d | 5d |  |  | COORDENAÇÃO |
| 45 | 1.1.6 | **Processo** |  | 4d | 2026-06-05 A | 2026-06-11 |  | 80% | 0.8d | 2026-06-05 | 2026-06-11 | 5d | 20d |  |  | PROCESSOS |
| 46 | 1.1.6.1 | **CP-F0009-0306-MB-P-00001** | inactive | 26d | 2026-05-05 | 2026-06-11 |  |  |  |  |  |  | 20d |  | -0 |  |
| 47 | 1.1.6.1.1 | Emissão inicial | inactive | 7d | 2026-05-05 | 2026-05-13 | 20 |  |  |  |  |  | 35d | 15d | -0 |  |
| 48 | 1.1.6.1.2 | Análise Tecnored | inactive | 1d | 2026-06-08 | 2026-06-08 | 47, 5 |  |  |  |  |  | 20d | 0d | -0 |  |
| 49 | 1.1.6.1.3 | Atendimento de comentários | inactive | 2d | 2026-06-09 | 2026-06-10 | 48 |  |  |  |  |  | 20d | 0d | -0 |  |
| 50 | 1.1.6.1.4 | Aprovação | inactive | 1d | 2026-06-11 | 2026-06-11 | 49 |  |  |  |  |  | 20d |  | -0 |  |
| 51 | 1.1.6.2 | **MD-F0009-0306-MB-P-00001** | inactive | 7d | 2026-06-22 | 2026-06-30 |  |  |  |  |  |  | 7d |  | -0 |  |
| 52 | 1.1.6.2.1 | Emissão inicial | inactive | 3d | 2026-06-22 | 2026-06-24 | 57FS+10d |  |  |  |  |  | 7d | 0d | -0 |  |
| 53 | 1.1.6.2.2 | Análise Tecnored | inactive | 1d | 2026-06-25 | 2026-06-25 | 52 |  |  |  |  |  | 7d | 0d | -0 |  |
| 54 | 1.1.6.2.3 | Atendimento de comentários | inactive | 2d | 2026-06-26 | 2026-06-29 | 53 |  |  |  |  |  | 7d | 0d | -0 |  |
| 55 | 1.1.6.2.4 | Aprovação | inactive | 1d | 2026-06-30 | 2026-06-30 | 54 |  |  |  |  |  | 7d |  | -0 |  |

| ID | WBS | Task | Type | Duration | Start | Finish | Predecessors | Complete | Remaining | Baseline start | Baseline finish | Baseline duration | Total slack | Free slack | Baseline cost | DISCIPLINA |
| --- | --- | --- | --- | --- | --- | --- | --- | --- | --- | --- | --- | --- | --- | --- | --- | --- |
| 56 | 1.1.6.3 | **FG-F0009-0306-MB-P-00001** |  | 4d | 2026-06-05 A | 2026-06-11 |  | 80% | 0.8d | 2026-06-05 | 2026-06-11 | 5d | 20d |  |  | PROCESSOS |
| 57 | 1.1.6.3.1 | Emissão inicial |  | 1d | 2026-06-05 A | 2026-06-05 A | 47, 5 | 100% |  | 2026-06-05 | 2026-06-05 | 1d |  |  |  | PROCESSOS |
| 58 | 1.1.6.3.2 | Análise Tecnored |  | 1d | 2026-06-08 A | 2026-06-08 A | 57 | 100% |  | 2026-06-08 | 2026-06-08 | 1d |  |  |  | PROCESSOS |
| 59 | 1.1.6.3.3 | Atendimento de comentários |  | 2d | 2026-06-09 A | 2026-06-10 A | 58 | 100% |  | 2026-06-09 | 2026-06-10 | 2d |  |  |  | PROCESSOS |
| 60 | 1.1.6.3.4 | Aprovação |  | 1d | 2026-06-11 | 2026-06-11 | 59 |  |  | 2026-06-11 | 2026-06-11 | 1d | 20d |  |  | PROCESSOS |
| 61 | 1.1.7 | **Mecânica** |  | 26d | 2026-05-26 A | 2026-07-02 |  | 7% | 24.27d | 2026-05-26 | 2026-06-30 | 26d | 5d |  |  | MECÂNICA |
| 62 | 1.1.7.1 | **CP-F0009-0306-MB-M-00001** | inactive | 14d | 2026-05-05 | 2026-05-22 |  |  |  |  |  |  | -1d | 0d | -0 |  |
| 63 | 1.1.7.1.1 | Emissão inicial | inactive | 7d | 2026-05-05 | 2026-05-13 | 20 |  |  |  |  |  | -1d | 0d | -0 |  |
| 64 | 1.1.7.1.2 | Análise Tecnored | inactive | 1d | 2026-05-19 | 2026-05-19 | 63, 6 |  |  |  |  |  | 32d | 0d | -0 |  |
| 65 | 1.1.7.1.3 | Atendimento de comentários | inactive | 2d | 2026-05-20 | 2026-05-21 | 64 |  |  |  |  |  | 32d | 0d | -0 |  |
| 66 | 1.1.7.1.4 | Aprovação | inactive | 1d | 2026-05-22 | 2026-05-22 | 65 |  |  |  |  |  | 32d |  | -0 |  |
| 67 | 1.1.7.2 | **MD-F0009-0306-MB-M-00001** | inactive | 7d | 2026-06-02 | 2026-06-12 |  |  |  |  |  |  | -14d | 0d | -0 |  |
| 68 | 1.1.7.2.1 | Emissão inicial | inactive | 3d | 2026-06-02 | 2026-06-08 | 63, 75, 6 |  |  |  |  |  | -14d | 0d | -0 |  |
| 69 | 1.1.7.2.2 | Análise Tecnored | inactive | 1d | 2026-06-09 | 2026-06-09 | 68 |  |  |  |  |  | 19d | 0d | -0 |  |
| 70 | 1.1.7.2.3 | Atendimento de comentários | inactive | 2d | 2026-06-10 | 2026-06-11 | 69 |  |  |  |  |  | 19d | 0d | -0 |  |
| 71 | 1.1.7.2.4 | Aprovação | inactive | 1d | 2026-06-12 | 2026-06-12 | 70 |  |  |  |  |  | 19d |  | -0 |  |
| 72 | 1.1.7.3 | **LE-F0009-0306-MB-M-00001** |  | 6d | 2026-05-26 A | 2026-06-02 |  | 33% | 4d | 2026-05-26 | 2026-06-02 | 6d | 25d |  |  | MECÂNICA |
| 73 | 1.1.7.3.1 | Emissão inicial |  | 2d | 2026-05-26 A | 2026-05-27 A | 63, 6FS+5d | 100% |  | 2026-05-26 | 2026-05-27 | 2d |  |  |  | MECÂNICA |
| 74 | 1.1.7.3.2 | Análise Tecnored |  | 1d | 2026-05-28 | 2026-05-28 | 73 |  |  | 2026-05-28 | 2026-05-28 | 1d | -11d | 0d |  | MECÂNICA |
| 75 | 1.1.7.3.3 | Atendimento de comentários |  | 2d | 2026-05-29 | 2026-06-01 | 74 |  |  | 2026-05-29 | 2026-06-01 | 2d | -11d | 0d |  | MECÂNICA |
| 76 | 1.1.7.3.4 | Aprovação |  | 1d | 2026-06-02 | 2026-06-02 | 75 |  |  | 2026-06-02 | 2026-06-02 | 1d | 25d |  |  | MECÂNICA |
| 77 | 1.1.7.4 | **PQ-F0009-0306-MB-M-00001** |  | 7d | 2026-06-02 | 2026-06-12 |  |  |  | 2026-06-02 | 2026-06-10 | 7d | 19d |  |  | MECÂNICA |
| 78 | 1.1.7.4.1 | Emissão inicial |  | 3d | 2026-06-02 | 2026-06-08 | 68FS+30d |  |  | 2026-06-02 | 2026-06-04 | 3d | 19d | 0d |  | MECÂNICA |
| 79 | 1.1.7.4.2 | Análise Tecnored |  | 1d | 2026-06-09 | 2026-06-09 | 78 |  |  | 2026-06-05 | 2026-06-05 | 1d | 19d | 0d |  | MECÂNICA |
| 80 | 1.1.7.4.3 | Atendimento de comentários |  | 2d | 2026-06-10 | 2026-06-11 | 79 |  |  | 2026-06-08 | 2026-06-09 | 2d | 19d | 0d |  | MECÂNICA |
| 81 | 1.1.7.4.4 | Aprovação |  | 1d | 2026-06-12 | 2026-06-12 | 80 |  |  | 2026-06-10 | 2026-06-10 | 1d | 19d |  |  | MECÂNICA |

| ID | WBS | Task | Duration | Start | Finish | Predecessors | Baseline start | Baseline finish | Baseline duration | Total slack | Free slack | DISCIPLINA |
| --- | --- | --- | --- | --- | --- | --- | --- | --- | --- | --- | --- | --- |
| 82 | 1.1.7.5 | **AG-F0009-0306-MB-L-00001** | 9d | 2026-06-22 | 2026-07-02 |  | 2026-06-18 | 2026-06-30 | 9d | 5d |  | MECÂNICA |
| 83 | 1.1.7.5.1 | Emissão inicial | 5d | 2026-06-22 | 2026-06-26 | 230 | 2026-06-18 | 2026-06-24 | 5d | 5d | 0d | MECÂNICA |
| 84 | 1.1.7.5.2 | Análise Tecnored | 1d | 2026-06-29 | 2026-06-29 | 83 | 2026-06-25 | 2026-06-25 | 1d | 5d | 0d | MECÂNICA |
| 85 | 1.1.7.5.3 | Atendimento de comentários | 2d | 2026-06-30 | 2026-07-01 | 84 | 2026-06-26 | 2026-06-29 | 2d | 5d | 0d | MECÂNICA |
| 86 | 1.1.7.5.4 | Aprovação | 1d | 2026-07-02 | 2026-07-02 | 85 | 2026-06-30 | 2026-06-30 | 1d | 5d |  | MECÂNICA |
| 87 | 1.1.7.6 | **AG-F0009-0306-MB-L-00002** | 9d | 2026-06-22 | 2026-07-02 |  | 2026-06-18 | 2026-06-30 | 9d | 5d |  | MECÂNICA |
| 88 | 1.1.7.6.1 | Emissão inicial | 5d | 2026-06-22 | 2026-06-26 | 230 | 2026-06-18 | 2026-06-24 | 5d | 5d | 0d | MECÂNICA |
| 89 | 1.1.7.6.2 | Análise Tecnored | 1d | 2026-06-29 | 2026-06-29 | 88 | 2026-06-25 | 2026-06-25 | 1d | 5d | 0d | MECÂNICA |
| 90 | 1.1.7.6.3 | Atendimento de comentários | 2d | 2026-06-30 | 2026-07-01 | 89 | 2026-06-26 | 2026-06-29 | 2d | 5d | 0d | MECÂNICA |
| 91 | 1.1.7.6.4 | Aprovação | 1d | 2026-07-02 | 2026-07-02 | 90 | 2026-06-30 | 2026-06-30 | 1d | 5d |  | MECÂNICA |
| 92 | 1.1.7.7 | **AG-F0009-0306-MB-L-00003** | 9d | 2026-06-22 | 2026-07-02 |  | 2026-06-18 | 2026-06-30 | 9d | 5d |  | MECÂNICA |
| 93 | 1.1.7.7.1 | Emissão inicial | 5d | 2026-06-22 | 2026-06-26 | 230 | 2026-06-18 | 2026-06-24 | 5d | 5d | 0d | MECÂNICA |
| 94 | 1.1.7.7.2 | Análise Tecnored | 1d | 2026-06-29 | 2026-06-29 | 93 | 2026-06-25 | 2026-06-25 | 1d | 5d | 0d | MECÂNICA |
| 95 | 1.1.7.7.3 | Atendimento de comentários | 2d | 2026-06-30 | 2026-07-01 | 94 | 2026-06-26 | 2026-06-29 | 2d | 5d | 0d | MECÂNICA |
| 96 | 1.1.7.7.4 | Aprovação | 1d | 2026-07-02 | 2026-07-02 | 95 | 2026-06-30 | 2026-06-30 | 1d | 5d |  | MECÂNICA |
| 97 | 1.1.7.8 | **AG-F0009-0306-MB-L-00004** | 9d | 2026-06-22 | 2026-07-02 |  | 2026-06-18 | 2026-06-30 | 9d | 5d |  | MECÂNICA |
| 98 | 1.1.7.8.1 | Emissão inicial | 5d | 2026-06-22 | 2026-06-26 | 230 | 2026-06-18 | 2026-06-24 | 5d | 5d | 0d | MECÂNICA |
| 99 | 1.1.7.8.2 | Análise Tecnored | 1d | 2026-06-29 | 2026-06-29 | 98 | 2026-06-25 | 2026-06-25 | 1d | 5d | 0d | MECÂNICA |
| 100 | 1.1.7.8.3 | Atendimento de comentários | 2d | 2026-06-30 | 2026-07-01 | 99 | 2026-06-26 | 2026-06-29 | 2d | 5d | 0d | MECÂNICA |
| 101 | 1.1.7.8.4 | Aprovação | 1d | 2026-07-02 | 2026-07-02 | 100 | 2026-06-30 | 2026-06-30 | 1d | 5d |  | MECÂNICA |
| 102 | 1.1.7.9 | **PL-F0009-0306-MB-M-00001** | 12d | 2026-06-03 | 2026-06-22 |  | 2026-06-03 | 2026-06-18 | 12d | 13d |  | MECÂNICA |
| 103 | 1.1.7.9.1 | Emissão inicial | 8d | 2026-06-03 | 2026-06-16 | 119 | 2026-06-03 | 2026-06-12 | 8d | 13d | 0d | MECÂNICA |
| 104 | 1.1.7.9.2 | Análise Tecnored | 1d | 2026-06-17 | 2026-06-17 | 103 | 2026-06-15 | 2026-06-15 | 1d | 13d | 0d | MECÂNICA |
| 105 | 1.1.7.9.3 | Atendimento de comentários | 2d | 2026-06-18 | 2026-06-19 | 104 | 2026-06-16 | 2026-06-17 | 2d | 13d | 0d | MECÂNICA |
| 106 | 1.1.7.9.4 | Aprovação | 1d | 2026-06-22 | 2026-06-22 | 105 | 2026-06-18 | 2026-06-18 | 1d | 13d |  | MECÂNICA |

| ID | WBS | Task | Duration | Start | Finish | Predecessors | Complete | Remaining | Baseline start | Baseline finish | Baseline duration | Total slack | Free slack | DISCIPLINA |
| --- | --- | --- | --- | --- | --- | --- | --- | --- | --- | --- | --- | --- | --- | --- |
| 107 | 1.1.7.10 | **PL-F0009-0306-MB-M-00002** | 12d | 2026-06-03 | 2026-06-22 |  |  |  | 2026-06-03 | 2026-06-18 | 12d | 13d |  | MECÂNICA |
| 108 | 1.1.7.10.1 | Emissão inicial | 8d | 2026-06-03 | 2026-06-16 | 119 |  |  | 2026-06-03 | 2026-06-12 | 8d | 13d | 0d | MECÂNICA |
| 109 | 1.1.7.10.2 | Análise Tecnored | 1d | 2026-06-17 | 2026-06-17 | 108 |  |  | 2026-06-15 | 2026-06-15 | 1d | 13d | 0d | MECÂNICA |
| 110 | 1.1.7.10.3 | Atendimento de comentários | 2d | 2026-06-18 | 2026-06-19 | 109 |  |  | 2026-06-16 | 2026-06-17 | 2d | 13d | 0d | MECÂNICA |
| 111 | 1.1.7.10.4 | Aprovação | 1d | 2026-06-22 | 2026-06-22 | 110 |  |  | 2026-06-18 | 2026-06-18 | 1d | 13d |  | MECÂNICA |
| 112 | 1.1.7.11 | **MC-F0009-0306-MB-M-00001** | 9d | 2026-06-03 | 2026-06-17 |  |  |  | 2026-06-03 | 2026-06-15 | 9d | 0d |  | MECÂNICA |
| 113 | 1.1.7.11.1 | Emissão inicial | 5d | 2026-06-03 | 2026-06-11 | 119 |  |  | 2026-06-03 | 2026-06-09 | 5d | 0d |  | MECÂNICA |
| 114 | 1.1.7.11.2 | Análise Tecnored | 1d | 2026-06-12 | 2026-06-12 | 113 |  |  | 2026-06-10 | 2026-06-10 | 1d | 0d |  | MECÂNICA |
| 115 | 1.1.7.11.3 | Atendimento de comentários | 2d | 2026-06-15 | 2026-06-16 | 114 |  |  | 2026-06-11 | 2026-06-12 | 2d | 16d | 0d | MECÂNICA |
| 116 | 1.1.7.11.4 | Aprovação | 1d | 2026-06-17 | 2026-06-17 | 115 |  |  | 2026-06-15 | 2026-06-15 | 1d | 16d |  | MECÂNICA |
| 117 | 1.1.7.12 | **ML-F0009-0306-MB-M-00001** | 9d | 2026-05-26 A | 2026-06-09 |  | 56% | 4d | 2026-05-26 | 2026-06-05 | 9d | 22d |  | MECÂNICA |
| 118 | 1.1.7.12.1 | Emissão inicial | 5d | 2026-05-26 A | 2026-06-01 A | 63, 6FS+5d | 100% |  | 2026-05-26 | 2026-06-01 | 5d |  |  | MECÂNICA |
| 119 | 1.1.7.12.2 | Análise Tecnored | 1d | 2026-06-02 | 2026-06-02 | 118 |  |  | 2026-06-02 | 2026-06-02 | 1d | 0d |  | MECÂNICA |
| 120 | 1.1.7.12.3 | Atendimento de comentários | 2d | 2026-06-03 | 2026-06-08 | 119 |  |  | 2026-06-03 | 2026-06-04 | 2d | 5d | 0d | MECÂNICA |
| 121 | 1.1.7.12.4 | Aprovação | 1d | 2026-06-09 | 2026-06-09 | 120 |  |  | 2026-06-05 | 2026-06-05 | 1d | 22d |  | MECÂNICA |
| 122 | 1.1.7.13 | **FD-F0009-0306-MB-M-00001** | 7d | 2026-06-12 | 2026-06-22 |  |  |  | 2026-06-10 | 2026-06-18 | 7d | 13d |  | MECÂNICA |
| 123 | 1.1.7.13.1 | Emissão inicial | 3d | 2026-06-12 | 2026-06-16 | 113 |  |  | 2026-06-10 | 2026-06-12 | 3d | 13d | 0d | MECÂNICA |
| 124 | 1.1.7.13.2 | Análise Tecnored | 1d | 2026-06-17 | 2026-06-17 | 123 |  |  | 2026-06-15 | 2026-06-15 | 1d | 13d | 0d | MECÂNICA |
| 125 | 1.1.7.13.3 | Atendimento de comentários | 2d | 2026-06-18 | 2026-06-19 | 124 |  |  | 2026-06-16 | 2026-06-17 | 2d | 13d | 0d | MECÂNICA |
| 126 | 1.1.7.13.4 | Aprovação | 1d | 2026-06-22 | 2026-06-22 | 125 |  |  | 2026-06-18 | 2026-06-18 | 1d | 13d |  | MECÂNICA |
| 127 | 1.1.7.14 | **FD-F0009-0306-MB-M-00002** | 7d | 2026-06-12 | 2026-06-22 |  |  |  | 2026-06-10 | 2026-06-18 | 7d | 13d |  | MECÂNICA |
| 128 | 1.1.7.14.1 | Emissão inicial | 3d | 2026-06-12 | 2026-06-16 | 113 |  |  | 2026-06-10 | 2026-06-12 | 3d | 13d | 0d | MECÂNICA |
| 129 | 1.1.7.14.2 | Análise Tecnored | 1d | 2026-06-17 | 2026-06-17 | 128 |  |  | 2026-06-15 | 2026-06-15 | 1d | 13d | 0d | MECÂNICA |
| 130 | 1.1.7.14.3 | Atendimento de comentários | 2d | 2026-06-18 | 2026-06-19 | 129 |  |  | 2026-06-16 | 2026-06-17 | 2d | 13d | 0d | MECÂNICA |
| 131 | 1.1.7.14.4 | Aprovação | 1d | 2026-06-22 | 2026-06-22 | 130 |  |  | 2026-06-18 | 2026-06-18 | 1d | 13d |  | MECÂNICA |

| ID | WBS | Task | Type | Duration | Start | Finish | Predecessors | Baseline start | Baseline finish | Baseline duration | Total slack | Free slack | Baseline cost | DISCIPLINA |
| --- | --- | --- | --- | --- | --- | --- | --- | --- | --- | --- | --- | --- | --- | --- |
| 132 | 1.1.8 | **Tubulação/Utilidades** |  | 18d | 2026-06-11 | 2026-07-06 |  | 2026-06-02 | 2026-06-29 | 20d | 3d |  |  | TUBULAÇÃO / UTILIDADES |
| 133 | 1.1.8.1 | **CP-F0009-0306-MB-T-00001** | inactive | 17d | 2026-05-05 | 2026-05-27 |  |  |  |  | 29d |  | -0 |  |
| 134 | 1.1.8.1.1 | Emissão inicial | inactive | 7d | 2026-05-05 | 2026-05-13 | 20 |  |  |  | 35d | 6d | -0 |  |
| 135 | 1.1.8.1.2 | Análise Tecnored | inactive | 1d | 2026-05-22 | 2026-05-22 | 134, 9 |  |  |  | 29d | 0d | -0 |  |
| 136 | 1.1.8.1.3 | Atendimento de comentários | inactive | 2d | 2026-05-25 | 2026-05-26 | 135 |  |  |  | 29d | 0d | -0 |  |
| 137 | 1.1.8.1.4 | Aprovação | inactive | 1d | 2026-05-27 | 2026-05-27 | 136 |  |  |  | 29d |  | -0 |  |
| 138 | 1.1.8.2 | **MD-F0009-0306-MB-U-00001** | inactive | 7d | 2026-07-07 | 2026-07-15 |  | 2026-06-16 | 2026-06-24 | 7d | -4d | 0d |  |  |
| 139 | 1.1.8.2.1 | Emissão inicial | inactive | 3d | 2026-07-07 | 2026-07-09 | 183 | 2026-06-16 | 2026-06-18 | 3d | -4d | 0d |  |  |
| 140 | 1.1.8.2.2 | Análise Tecnored | inactive | 1d | 2026-07-10 | 2026-07-10 | 139 | 2026-06-19 | 2026-06-19 | 1d | -4d | 0d |  |  |
| 141 | 1.1.8.2.3 | Atendimento de comentários | inactive | 2d | 2026-07-13 | 2026-07-14 | 140 | 2026-06-22 | 2026-06-23 | 2d | -4d | 0d |  |  |
| 142 | 1.1.8.2.4 | Aprovação | inactive | 1d | 2026-07-15 | 2026-07-15 | 141 | 2026-06-24 | 2026-06-24 | 1d | -4d | 0d |  |  |
| 143 | 1.1.8.3 | **ML-F0009-0306-MB-T-00001** |  | 7d | 2026-06-17 | 2026-06-25 |  | 2026-06-02 | 2026-06-10 | 7d | 3d |  |  | TUBULAÇÃO / UTILIDADES |
| 144 | 1.1.8.3.1 | Emissão inicial |  | 3d | 2026-06-17 | 2026-06-19 | 118FS+9d | 2026-06-02 | 2026-06-04 | 3d | 3d | 0d |  | TUBULAÇÃO / UTILIDADES |
| 145 | 1.1.8.3.2 | Análise Tecnored |  | 1d | 2026-06-22 | 2026-06-22 | 144 | 2026-06-05 | 2026-06-05 | 1d | 3d | 0d |  | TUBULAÇÃO / UTILIDADES |
| 146 | 1.1.8.3.3 | Atendimento de comentários |  | 2d | 2026-06-23 | 2026-06-24 | 145 | 2026-06-08 | 2026-06-09 | 2d | 3d | 0d |  | TUBULAÇÃO / UTILIDADES |
| 147 | 1.1.8.3.4 | Aprovação |  | 1d | 2026-06-25 | 2026-06-25 | 146 | 2026-06-10 | 2026-06-10 | 1d | 3d | 0d |  | TUBULAÇÃO / UTILIDADES |
| 148 | 1.1.8.4 | **ET-F0009-0306-MB-T-00001** | inactive | 7d | 2026-06-25 | 2026-07-03 |  | 2026-06-10 | 2026-06-18 | 7d | 4d |  |  |  |
| 149 | 1.1.8.4.1 | Emissão inicial | inactive | 3d | 2026-06-25 | 2026-06-29 | 154 | 2026-06-10 | 2026-06-12 | 3d | 4d | 0d |  |  |
| 150 | 1.1.8.4.2 | Análise Tecnored | inactive | 1d | 2026-06-30 | 2026-06-30 | 149 | 2026-06-15 | 2026-06-15 | 1d | 4d | 0d |  |  |
| 151 | 1.1.8.4.3 | Atendimento de comentários | inactive | 2d | 2026-07-01 | 2026-07-02 | 150 | 2026-06-16 | 2026-06-17 | 2d | 4d | 0d |  |  |
| 152 | 1.1.8.4.4 | Aprovação | inactive | 1d | 2026-07-03 | 2026-07-03 | 151 | 2026-06-18 | 2026-06-18 | 1d | 4d |  |  |  |
| 153 | 1.1.8.5 | **FD-F0009-0306-MB-T-00001** |  | 7d | 2026-06-22 | 2026-06-30 |  | 2026-06-05 | 2026-06-15 | 7d | 7d |  |  | TUBULAÇÃO / UTILIDADES |
| 154 | 1.1.8.5.1 | Emissão inicial |  | 3d | 2026-06-22 | 2026-06-24 | 169, 57FS+3d | 2026-06-05 | 2026-06-09 | 3d | 7d | 0d |  | TUBULAÇÃO / UTILIDADES |
| 155 | 1.1.8.5.2 | Análise Tecnored |  | 1d | 2026-06-25 | 2026-06-25 | 154 | 2026-06-10 | 2026-06-10 | 1d | 7d | 0d |  | TUBULAÇÃO / UTILIDADES |
| 156 | 1.1.8.5.3 | Atendimento de comentários |  | 2d | 2026-06-26 | 2026-06-29 | 155 | 2026-06-11 | 2026-06-12 | 2d | 7d | 0d |  | TUBULAÇÃO / UTILIDADES |
| 157 | 1.1.8.5.4 | Aprovação |  | 1d | 2026-06-30 | 2026-06-30 | 156 | 2026-06-15 | 2026-06-15 | 1d | 7d |  |  | TUBULAÇÃO / UTILIDADES |

| ID | WBS | Task | Type | Duration | Start | Finish | Predecessors | Baseline start | Baseline finish | Baseline duration | Total slack | Free slack | DISCIPLINA |
| --- | --- | --- | --- | --- | --- | --- | --- | --- | --- | --- | --- | --- | --- |
| 158 | 1.1.8.6 | **FD-F0009-0306-MB-T-00002** | inactive | 7d | 2026-06-22 | 2026-06-30 |  | 2026-06-05 | 2026-06-15 | 7d | 7d |  |  |
| 159 | 1.1.8.6.1 | Emissão inicial | inactive | 3d | 2026-06-22 | 2026-06-24 | 169 | 2026-06-05 | 2026-06-09 | 3d | 7d | 0d |  |
| 160 | 1.1.8.6.2 | Análise Tecnored | inactive | 1d | 2026-06-25 | 2026-06-25 | 159 | 2026-06-10 | 2026-06-10 | 1d | 7d | 0d |  |
| 161 | 1.1.8.6.3 | Atendimento de comentários | inactive | 2d | 2026-06-26 | 2026-06-29 | 160 | 2026-06-11 | 2026-06-12 | 2d | 7d | 0d |  |
| 162 | 1.1.8.6.4 | Aprovação | inactive | 1d | 2026-06-30 | 2026-06-30 | 161 | 2026-06-15 | 2026-06-15 | 1d | 7d |  |  |
| 163 | 1.1.8.7 | **PQ-F0009-0306-MB-T-00001** |  | 7d | 2026-06-23 | 2026-07-01 |  | 2026-06-19 | 2026-06-29 | 7d | 6d |  | TUBULAÇÃO / UTILIDADES |
| 164 | 1.1.8.7.1 | Emissão inicial |  | 3d | 2026-06-23 | 2026-06-25 | 170 | 2026-06-19 | 2026-06-23 | 3d | 6d | 0d | TUBULAÇÃO / UTILIDADES |
| 165 | 1.1.8.7.2 | Análise Tecnored |  | 1d | 2026-06-26 | 2026-06-26 | 164 | 2026-06-24 | 2026-06-24 | 1d | 6d | 0d | TUBULAÇÃO / UTILIDADES |
| 166 | 1.1.8.7.3 | Atendimento de comentários |  | 2d | 2026-06-29 | 2026-06-30 | 165 | 2026-06-25 | 2026-06-26 | 2d | 6d | 0d | TUBULAÇÃO / UTILIDADES |
| 167 | 1.1.8.7.4 | Aprovação |  | 1d | 2026-07-01 | 2026-07-01 | 166 | 2026-06-29 | 2026-06-29 | 1d | 6d |  | TUBULAÇÃO / UTILIDADES |
| 168 | 1.1.8.8 | **MC-F0009-0306-MB-T-00001** |  | 7d | 2026-06-17 | 2026-06-25 |  | 2026-06-02 | 2026-06-10 | 7d | 3d |  | TUBULAÇÃO / UTILIDADES |
| 169 | 1.1.8.8.1 | Emissão inicial |  | 3d | 2026-06-17 | 2026-06-19 | 118, 175 | 2026-06-02 | 2026-06-04 | 3d | 3d | 0d | TUBULAÇÃO / UTILIDADES |
| 170 | 1.1.8.8.2 | Análise Tecnored |  | 1d | 2026-06-22 | 2026-06-22 | 169 | 2026-06-05 | 2026-06-05 | 1d | 3d | 0d | TUBULAÇÃO / UTILIDADES |
| 171 | 1.1.8.8.3 | Atendimento de comentários |  | 2d | 2026-06-23 | 2026-06-24 | 170 | 2026-06-08 | 2026-06-09 | 2d | 3d | 0d | TUBULAÇÃO / UTILIDADES |
| 172 | 1.1.8.8.4 | Aprovação |  | 1d | 2026-06-25 | 2026-06-25 | 171 | 2026-06-10 | 2026-06-10 | 1d | 3d | 0d | TUBULAÇÃO / UTILIDADES |
| 173 | 1.1.8.9 | **FG-F0009-0306-MB-T-00001** |  | 7d | 2026-06-11 | 2026-06-19 |  | 2026-06-08 | 2026-06-25 | 14d | 3d |  | TUBULAÇÃO / UTILIDADES |
| 174 | 1.1.8.9.1 | Emissão inicial |  | 3d | 2026-06-11 | 2026-06-15 | 57FS+3d | 2026-06-08 | 2026-06-19 | 10d | 3d | 0d | TUBULAÇÃO / UTILIDADES |
| 175 | 1.1.8.9.2 | Análise Tecnored |  | 1d | 2026-06-16 | 2026-06-16 | 174 | 2026-06-22 | 2026-06-22 | 1d | 3d | 0d | TUBULAÇÃO / UTILIDADES |
| 176 | 1.1.8.9.3 | Atendimento de comentários |  | 2d | 2026-06-17 | 2026-06-18 | 175 | 2026-06-23 | 2026-06-24 | 2d | 14d | 0d | TUBULAÇÃO / UTILIDADES |
| 177 | 1.1.8.9.4 | Aprovação |  | 1d | 2026-06-19 | 2026-06-19 | 176 | 2026-06-25 | 2026-06-25 | 1d | 14d |  | TUBULAÇÃO / UTILIDADES |
| 178 | 1.1.8.10 | **FG-F0009-0306-MB-T-00002** | inactive | 14d | 2026-06-08 | 2026-06-25 |  | 2026-06-08 | 2026-06-25 | 14d | 10d |  |  |
| 179 | 1.1.8.10.1 | Emissão inicial | inactive | 10d | 2026-06-08 | 2026-06-19 | 57 | 2026-06-08 | 2026-06-19 | 10d | 10d | 0d |  |
| 180 | 1.1.8.10.2 | Análise Tecnored | inactive | 1d | 2026-06-22 | 2026-06-22 | 179 | 2026-06-22 | 2026-06-22 | 1d | 10d | 0d |  |
| 181 | 1.1.8.10.3 | Atendimento de comentários | inactive | 2d | 2026-06-23 | 2026-06-24 | 180 | 2026-06-23 | 2026-06-24 | 2d | 10d | 0d |  |
| 182 | 1.1.8.10.4 | Aprovação | inactive | 1d | 2026-06-25 | 2026-06-25 | 181 | 2026-06-25 | 2026-06-25 | 1d | 10d |  |  |

| ID | WBS | Task | Type | Duration | Start | Finish | Predecessors | Baseline start | Baseline finish | Baseline duration | Total slack | Free slack | DISCIPLINA |
| --- | --- | --- | --- | --- | --- | --- | --- | --- | --- | --- | --- | --- | --- |
| 183 | 1.1.8.11 | **AG-F0009-0306-MB-T-00001** |  | 7d | 2026-06-26 | 2026-07-06 |  | 2026-06-05 | 2026-06-15 | 7d | 3d | 0d | TUBULAÇÃO / UTILIDADES |
| 184 | 1.1.8.11.1 | Emissão inicial |  | 3d | 2026-06-26 | 2026-06-30 | 147 | 2026-06-05 | 2026-06-09 | 3d | 3d | 0d | TUBULAÇÃO / UTILIDADES |
| 185 | 1.1.8.11.2 | Análise Tecnored |  | 1d | 2026-07-01 | 2026-07-01 | 184 | 2026-06-10 | 2026-06-10 | 1d | 3d | 0d | TUBULAÇÃO / UTILIDADES |
| 186 | 1.1.8.11.3 | Atendimento de comentários |  | 2d | 2026-07-02 | 2026-07-03 | 185 | 2026-06-11 | 2026-06-12 | 2d | 3d | 0d | TUBULAÇÃO / UTILIDADES |
| 187 | 1.1.8.11.4 | Aprovação |  | 1d | 2026-07-06 | 2026-07-06 | 186 | 2026-06-15 | 2026-06-15 | 1d | 3d |  | TUBULAÇÃO / UTILIDADES |
| 188 | 1.1.8.12 | **AG-F0009-0306-MB-T-00002** |  | 7d | 2026-06-26 | 2026-07-06 |  | 2026-06-05 | 2026-06-15 | 7d | 3d |  | TUBULAÇÃO / UTILIDADES |
| 189 | 1.1.8.12.1 | Emissão inicial |  | 3d | 2026-06-26 | 2026-06-30 | 147 | 2026-06-05 | 2026-06-09 | 3d | 3d | 0d | TUBULAÇÃO / UTILIDADES |
| 190 | 1.1.8.12.2 | Análise Tecnored |  | 1d | 2026-07-01 | 2026-07-01 | 189 | 2026-06-10 | 2026-06-10 | 1d | 3d | 0d | TUBULAÇÃO / UTILIDADES |
| 191 | 1.1.8.12.3 | Atendimento de comentários |  | 2d | 2026-07-02 | 2026-07-03 | 190 | 2026-06-11 | 2026-06-12 | 2d | 3d | 0d | TUBULAÇÃO / UTILIDADES |
| 192 | 1.1.8.12.4 | Aprovação |  | 1d | 2026-07-06 | 2026-07-06 | 191 | 2026-06-15 | 2026-06-15 | 1d | 3d |  | TUBULAÇÃO / UTILIDADES |
| 193 | 1.1.8.13 | **AG-F0009-0306-MB-T-00003** |  | 7d | 2026-06-26 | 2026-07-06 |  | 2026-06-05 | 2026-06-15 | 7d | 3d |  | TUBULAÇÃO / UTILIDADES |
| 194 | 1.1.8.13.1 | Emissão inicial |  | 3d | 2026-06-26 | 2026-06-30 | 147 | 2026-06-05 | 2026-06-09 | 3d | 3d | 0d | TUBULAÇÃO / UTILIDADES |
| 195 | 1.1.8.13.2 | Análise Tecnored |  | 1d | 2026-07-01 | 2026-07-01 | 194 | 2026-06-10 | 2026-06-10 | 1d | 3d | 0d | TUBULAÇÃO / UTILIDADES |
| 196 | 1.1.8.13.3 | Atendimento de comentários |  | 2d | 2026-07-02 | 2026-07-03 | 195 | 2026-06-11 | 2026-06-12 | 2d | 3d | 0d | TUBULAÇÃO / UTILIDADES |
| 197 | 1.1.8.13.4 | Aprovação |  | 1d | 2026-07-06 | 2026-07-06 | 196 | 2026-06-15 | 2026-06-15 | 1d | 3d |  | TUBULAÇÃO / UTILIDADES |
| 198 | 1.1.8.14 | **AG-F0009-0306-MB-T-00004** | inactive | 7d | 2026-06-09 | 2026-06-17 |  | 2026-06-05 | 2026-06-15 | 7d | 16d |  |  |
| 199 | 1.1.8.14.1 | Emissão inicial | inactive | 3d | 2026-06-09 | 2026-06-11 | 120 | 2026-06-05 | 2026-06-09 | 3d | 16d | 0d |  |
| 200 | 1.1.8.14.2 | Análise Tecnored | inactive | 1d | 2026-06-12 | 2026-06-12 | 199 | 2026-06-10 | 2026-06-10 | 1d | 16d | 0d |  |
| 201 | 1.1.8.14.3 | Atendimento de comentários | inactive | 2d | 2026-06-15 | 2026-06-16 | 200 | 2026-06-11 | 2026-06-12 | 2d | 16d | 0d |  |
| 202 | 1.1.8.14.4 | Aprovação | inactive | 1d | 2026-06-17 | 2026-06-17 | 201 | 2026-06-15 | 2026-06-15 | 1d | 16d |  |  |
| 203 | 1.1.8.15 | **AG-F0009-0306-MB-T-00005** | inactive | 7d | 2026-06-09 | 2026-06-17 |  | 2026-06-05 | 2026-06-15 | 7d | 16d |  |  |
| 204 | 1.1.8.15.1 | Emissão inicial | inactive | 3d | 2026-06-09 | 2026-06-11 | 120 | 2026-06-05 | 2026-06-09 | 3d | 16d | 0d |  |
| 205 | 1.1.8.15.2 | Análise Tecnored | inactive | 1d | 2026-06-12 | 2026-06-12 | 204 | 2026-06-10 | 2026-06-10 | 1d | 16d | 0d |  |
| 206 | 1.1.8.15.3 | Atendimento de comentários | inactive | 2d | 2026-06-15 | 2026-06-16 | 205 | 2026-06-11 | 2026-06-12 | 2d | 16d | 0d |  |
| 207 | 1.1.8.15.4 | Aprovação | inactive | 1d | 2026-06-17 | 2026-06-17 | 206 | 2026-06-15 | 2026-06-15 | 1d | 16d |  |  |

| ID | WBS | Task | Type | Duration | Start | Finish | Predecessors | Baseline start | Baseline finish | Baseline duration | Total slack | Free slack | Baseline cost | DISCIPLINA |
| --- | --- | --- | --- | --- | --- | --- | --- | --- | --- | --- | --- | --- | --- | --- |
| 208 | 1.1.8.16 | **AG-F0009-0306-MB-T-00006** | inactive | 7d | 2026-06-09 | 2026-06-17 |  | 2026-06-05 | 2026-06-15 | 7d | 16d |  |  |  |
| 209 | 1.1.8.16.1 | Emissão inicial | inactive | 3d | 2026-06-09 | 2026-06-11 | 120 | 2026-06-05 | 2026-06-09 | 3d | 16d | 0d |  |  |
| 210 | 1.1.8.16.2 | Análise Tecnored | inactive | 1d | 2026-06-12 | 2026-06-12 | 209 | 2026-06-10 | 2026-06-10 | 1d | 16d | 0d |  |  |
| 211 | 1.1.8.16.3 | Atendimento de comentários | inactive | 2d | 2026-06-15 | 2026-06-16 | 210 | 2026-06-11 | 2026-06-12 | 2d | 16d | 0d |  |  |
| 212 | 1.1.8.16.4 | Aprovação | inactive | 1d | 2026-06-17 | 2026-06-17 | 211 | 2026-06-15 | 2026-06-15 | 1d | 16d |  |  |  |
| 213 | 1.1.8.17 | **LK-F0009-0306-MB-T-00001** |  | 7d | 2026-06-26 | 2026-07-06 |  | 2026-06-05 | 2026-06-15 | 7d | 3d |  |  | TUBULAÇÃO / UTILIDADES |
| 214 | 1.1.8.17.1 | Emissão inicial |  | 3d | 2026-06-26 | 2026-06-30 | 172 | 2026-06-05 | 2026-06-09 | 3d | 3d | 0d |  | TUBULAÇÃO / UTILIDADES |
| 215 | 1.1.8.17.2 | Análise Tecnored |  | 1d | 2026-07-01 | 2026-07-01 | 214 | 2026-06-10 | 2026-06-10 | 1d | 3d | 0d |  | TUBULAÇÃO / UTILIDADES |
| 216 | 1.1.8.17.3 | Atendimento de comentários |  | 2d | 2026-07-02 | 2026-07-03 | 215 | 2026-06-11 | 2026-06-12 | 2d | 3d | 0d |  | TUBULAÇÃO / UTILIDADES |
| 217 | 1.1.8.17.4 | Aprovação |  | 1d | 2026-07-06 | 2026-07-06 | 216 | 2026-06-15 | 2026-06-15 | 1d | 3d |  |  | TUBULAÇÃO / UTILIDADES |
| 218 | 1.1.8.18 | **MC-F0009-0306-MB-T-00002** | inactive | 14d | 2026-06-02 | 2026-06-23 |  | 2026-06-02 | 2026-06-19 | 14d | 12d |  |  |  |
| 219 | 1.1.8.18.1 | Emissão inicial | inactive | 10d | 2026-06-02 | 2026-06-17 | 118 | 2026-06-02 | 2026-06-15 | 10d | 12d | 0d |  |  |
| 220 | 1.1.8.18.2 | Análise Tecnored | inactive | 1d | 2026-06-18 | 2026-06-18 | 219 | 2026-06-16 | 2026-06-16 | 1d | 12d | 0d |  |  |
| 221 | 1.1.8.18.3 | Atendimento de comentários | inactive | 2d | 2026-06-19 | 2026-06-22 | 220 | 2026-06-17 | 2026-06-18 | 2d | 12d | 0d |  |  |
| 222 | 1.1.8.18.4 | Aprovação | inactive | 1d | 2026-06-23 | 2026-06-23 | 221 | 2026-06-19 | 2026-06-19 | 1d | 12d |  |  |  |
| 223 | 1.1.9 | **Estrutura metálica** |  | 19d | 2026-06-15 | 2026-07-09 |  | 2026-06-11 | 2026-07-07 | 19d | 0d |  |  | ESTRUTURA METÁLICA |
| 224 | 1.1.9.1 | **CP-F0009-0306-MB-S-00001** | inactive | 12d | 2026-06-08 | 2026-06-23 |  |  |  |  | 12d |  | -0 |  |
| 225 | 1.1.9.1.1 | Emissão inicial | inactive | 8d | 2026-06-08 | 2026-06-17 | 20, 10 |  |  |  | 12d | 0d | -0 |  |
| 226 | 1.1.9.1.2 | Análise Tecnored | inactive | 1d | 2026-06-18 | 2026-06-18 | 225 |  |  |  | 12d | 0d | -0 |  |
| 227 | 1.1.9.1.3 | Atendimento de comentários | inactive | 2d | 2026-06-19 | 2026-06-22 | 226 |  |  |  | 12d | 0d | -0 |  |
| 228 | 1.1.9.1.4 | Aprovação | inactive | 1d | 2026-06-23 | 2026-06-23 | 227 |  |  |  | 12d |  | -0 |  |
| 229 | 1.1.9.2 | **ML-F0009-0306-MB-S-00001** |  | 9d | 2026-06-15 | 2026-06-25 |  | 2026-06-11 | 2026-06-23 | 9d | 0d |  |  | ESTRUTURA METÁLICA |
| 230 | 1.1.9.2.1 | Emissão inicial |  | 5d | 2026-06-15 | 2026-06-19 | 245FS-3d | 2026-06-11 | 2026-06-17 | 5d | 0d |  |  | ESTRUTURA METÁLICA |
| 231 | 1.1.9.2.2 | Análise Tecnored |  | 1d | 2026-06-22 | 2026-06-22 | 230 | 2026-06-18 | 2026-06-18 | 1d | 0d |  |  | ESTRUTURA METÁLICA |
| 232 | 1.1.9.2.3 | Atendimento de comentários |  | 2d | 2026-06-23 | 2026-06-24 | 231 | 2026-06-19 | 2026-06-22 | 2d | 0d |  |  | ESTRUTURA METÁLICA |
| 233 | 1.1.9.2.4 | Aprovação |  | 1d | 2026-06-25 | 2026-06-25 | 232 | 2026-06-23 | 2026-06-23 | 1d | 0d |  |  | ESTRUTURA METÁLICA |

| ID | WBS | Task | Duration | Start | Finish | Predecessors | Baseline start | Baseline finish | Baseline duration | Total slack | Free slack | DISCIPLINA |
| --- | --- | --- | --- | --- | --- | --- | --- | --- | --- | --- | --- | --- |
| 234 | 1.1.9.3 | **PQ-F0009-0306-MB-S-00001** | 7d | 2026-07-01 | 2026-07-09 |  | 2026-06-29 | 2026-07-07 | 7d | 0d |  | ESTRUTURA METÁLICA |
| 235 | 1.1.9.3.1 | Emissão inicial | 3d | 2026-07-01 | 2026-07-03 | 240 | 2026-06-29 | 2026-07-01 | 3d | 0d |  | ESTRUTURA METÁLICA |
| 236 | 1.1.9.3.2 | Análise Tecnored | 1d | 2026-07-06 | 2026-07-06 | 235 | 2026-07-02 | 2026-07-02 | 1d | 0d |  | ESTRUTURA METÁLICA |
| 237 | 1.1.9.3.3 | Atendimento de comentários | 2d | 2026-07-07 | 2026-07-08 | 236 | 2026-07-03 | 2026-07-06 | 2d | 0d |  | ESTRUTURA METÁLICA |
| 238 | 1.1.9.3.4 | Aprovação | 1d | 2026-07-09 | 2026-07-09 | 237 | 2026-07-07 | 2026-07-07 | 1d | 0d |  | ESTRUTURA METÁLICA |
| 239 | 1.1.9.4 | **LM-F0009-0306-MB-S-00001** | 7d | 2026-06-26 | 2026-07-06 |  | 2026-06-24 | 2026-07-02 | 7d | 0d |  | ESTRUTURA METÁLICA |
| 240 | 1.1.9.4.1 | Emissão inicial | 3d | 2026-06-26 | 2026-06-30 | 233 | 2026-06-24 | 2026-06-26 | 3d | 0d |  | ESTRUTURA METÁLICA |
| 241 | 1.1.9.4.2 | Análise Tecnored | 1d | 2026-07-01 | 2026-07-01 | 240 | 2026-06-29 | 2026-06-29 | 1d | 3d | 0d | ESTRUTURA METÁLICA |
| 242 | 1.1.9.4.3 | Atendimento de comentários | 2d | 2026-07-02 | 2026-07-03 | 241 | 2026-06-30 | 2026-07-01 | 2d | 3d | 0d | ESTRUTURA METÁLICA |
| 243 | 1.1.9.4.4 | Aprovação | 1d | 2026-07-06 | 2026-07-06 | 242 | 2026-07-02 | 2026-07-02 | 1d | 3d |  | ESTRUTURA METÁLICA |
| 244 | 1.1.9.5 | **MC-F0009-0306-MB-S-00001** | 7d | 2026-06-15 | 2026-06-23 |  | 2026-06-11 | 2026-06-19 | 7d | 0d |  | ESTRUTURA METÁLICA |
| 245 | 1.1.9.5.1 | Emissão inicial | 3d | 2026-06-15 | 2026-06-17 | 114 | 2026-06-11 | 2026-06-15 | 3d | 0d |  | ESTRUTURA METÁLICA |
| 246 | 1.1.9.5.2 | Análise Tecnored | 1d | 2026-06-18 | 2026-06-18 | 245 | 2026-06-16 | 2026-06-16 | 1d | 12d | 0d | ESTRUTURA METÁLICA |
| 247 | 1.1.9.5.3 | Atendimento de comentários | 2d | 2026-06-19 | 2026-06-22 | 246 | 2026-06-17 | 2026-06-18 | 2d | 12d | 0d | ESTRUTURA METÁLICA |
| 248 | 1.1.9.5.4 | Aprovação | 1d | 2026-06-23 | 2026-06-23 | 247 | 2026-06-19 | 2026-06-19 | 1d | 12d |  | ESTRUTURA METÁLICA |
| 249 | 1.1.9.6 | **AG-F0009-0306-MB-S-00001** | 9d | 2026-06-25 | 2026-07-07 |  | 2026-06-23 | 2026-07-03 | 9d | 2d |  | ESTRUTURA METÁLICA |
| 250 | 1.1.9.6.1 | Emissão inicial | 5d | 2026-06-25 | 2026-07-01 | 232 | 2026-06-23 | 2026-06-29 | 5d | 2d | 0d | ESTRUTURA METÁLICA |
| 251 | 1.1.9.6.2 | Análise Tecnored | 1d | 2026-07-02 | 2026-07-02 | 250 | 2026-06-30 | 2026-06-30 | 1d | 2d | 0d | ESTRUTURA METÁLICA |
| 252 | 1.1.9.6.3 | Atendimento de comentários | 2d | 2026-07-03 | 2026-07-06 | 251 | 2026-07-01 | 2026-07-02 | 2d | 2d | 0d | ESTRUTURA METÁLICA |
| 253 | 1.1.9.6.4 | Aprovação | 1d | 2026-07-07 | 2026-07-07 | 252 | 2026-07-03 | 2026-07-03 | 1d | 2d |  | ESTRUTURA METÁLICA |
| 254 | 1.1.9.7 | **AG-F0009-0306-MB-S-00002** | 9d | 2026-06-25 | 2026-07-07 |  | 2026-06-23 | 2026-07-03 | 9d | 2d |  | ESTRUTURA METÁLICA |
| 255 | 1.1.9.7.1 | Emissão inicial | 5d | 2026-06-25 | 2026-07-01 | 232 | 2026-06-23 | 2026-06-29 | 5d | 2d | 0d | ESTRUTURA METÁLICA |
| 256 | 1.1.9.7.2 | Análise Tecnored | 1d | 2026-07-02 | 2026-07-02 | 255 | 2026-06-30 | 2026-06-30 | 1d | 2d | 0d | ESTRUTURA METÁLICA |
| 257 | 1.1.9.7.3 | Atendimento de comentários | 2d | 2026-07-03 | 2026-07-06 | 256 | 2026-07-01 | 2026-07-02 | 2d | 2d | 0d | ESTRUTURA METÁLICA |
| 258 | 1.1.9.7.4 | Aprovação | 1d | 2026-07-07 | 2026-07-07 | 257 | 2026-07-03 | 2026-07-03 | 1d | 2d |  | ESTRUTURA METÁLICA |

| ID | WBS | Task | Type | Duration | Start | Finish | Predecessors | Complete | Remaining | Baseline start | Baseline finish | Baseline duration | Total slack | Free slack | Baseline cost | DISCIPLINA |
| --- | --- | --- | --- | --- | --- | --- | --- | --- | --- | --- | --- | --- | --- | --- | --- | --- |
| 259 | 1.1.9.8 | **AG-F0009-0306-MB-S-00003** |  | 9d | 2026-06-25 | 2026-07-07 |  |  |  | 2026-06-23 | 2026-07-03 | 9d | 2d |  |  | ESTRUTURA METÁLICA |
| 260 | 1.1.9.8.1 | Emissão inicial |  | 5d | 2026-06-25 | 2026-07-01 | 232 |  |  | 2026-06-23 | 2026-06-29 | 5d | 2d | 0d |  | ESTRUTURA METÁLICA |
| 261 | 1.1.9.8.2 | Análise Tecnored |  | 1d | 2026-07-02 | 2026-07-02 | 260 |  |  | 2026-06-30 | 2026-06-30 | 1d | 2d | 0d |  | ESTRUTURA METÁLICA |
| 262 | 1.1.9.8.3 | Atendimento de comentários |  | 2d | 2026-07-03 | 2026-07-06 | 261 |  |  | 2026-07-01 | 2026-07-02 | 2d | 2d | 0d |  | ESTRUTURA METÁLICA |
| 263 | 1.1.9.8.4 | Aprovação |  | 1d | 2026-07-07 | 2026-07-07 | 262 |  |  | 2026-07-03 | 2026-07-03 | 1d | 2d |  |  | ESTRUTURA METÁLICA |
| 264 | 1.1.9.9 | **AG-F0009-0306-MB-S-00004** |  | 9d | 2026-06-25 | 2026-07-07 |  |  |  | 2026-06-23 | 2026-07-03 | 9d | 2d |  |  | ESTRUTURA METÁLICA |
| 265 | 1.1.9.9.1 | Emissão inicial |  | 5d | 2026-06-25 | 2026-07-01 | 232 |  |  | 2026-06-23 | 2026-06-29 | 5d | 2d | 0d |  | ESTRUTURA METÁLICA |
| 266 | 1.1.9.9.2 | Análise Tecnored |  | 1d | 2026-07-02 | 2026-07-02 | 265 |  |  | 2026-06-30 | 2026-06-30 | 1d | 2d | 0d |  | ESTRUTURA METÁLICA |
| 267 | 1.1.9.9.3 | Atendimento de comentários |  | 2d | 2026-07-03 | 2026-07-06 | 266 |  |  | 2026-07-01 | 2026-07-02 | 2d | 2d | 0d |  | ESTRUTURA METÁLICA |
| 268 | 1.1.9.9.4 | Aprovação |  | 1d | 2026-07-07 | 2026-07-07 | 267 |  |  | 2026-07-03 | 2026-07-03 | 1d | 2d |  |  | ESTRUTURA METÁLICA |
| 269 | 1.1.9.10 | **AG-F0009-0306-MB-S-00005** |  | 9d | 2026-06-25 | 2026-07-07 |  |  |  | 2026-06-23 | 2026-07-03 | 9d | 2d |  |  | ESTRUTURA METÁLICA |
| 270 | 1.1.9.10.1 | Emissão inicial |  | 5d | 2026-06-25 | 2026-07-01 | 232 |  |  | 2026-06-23 | 2026-06-29 | 5d | 2d | 0d |  | ESTRUTURA METÁLICA |
| 271 | 1.1.9.10.2 | Análise Tecnored |  | 1d | 2026-07-02 | 2026-07-02 | 270 |  |  | 2026-06-30 | 2026-06-30 | 1d | 2d | 0d |  | ESTRUTURA METÁLICA |
| 272 | 1.1.9.10.3 | Atendimento de comentários |  | 2d | 2026-07-03 | 2026-07-06 | 271 |  |  | 2026-07-01 | 2026-07-02 | 2d | 2d | 0d |  | ESTRUTURA METÁLICA |
| 273 | 1.1.9.10.4 | Aprovação |  | 1d | 2026-07-07 | 2026-07-07 | 272 |  |  | 2026-07-03 | 2026-07-03 | 1d | 2d |  |  | ESTRUTURA METÁLICA |
| 274 | 1.1.9.11 | **PL-F0009-0306-MB-S-00001** |  | 9d | 2026-06-25 | 2026-07-07 |  |  |  | 2026-06-23 | 2026-07-03 | 9d | 2d |  |  | ESTRUTURA METÁLICA |
| 275 | 1.1.9.11.1 | Emissão inicial |  | 5d | 2026-06-25 | 2026-07-01 | 232 |  |  | 2026-06-23 | 2026-06-29 | 5d | 2d | 0d |  | ESTRUTURA METÁLICA |
| 276 | 1.1.9.11.2 | Análise Tecnored |  | 1d | 2026-07-02 | 2026-07-02 | 275 |  |  | 2026-06-30 | 2026-06-30 | 1d | 2d | 0d |  | ESTRUTURA METÁLICA |
| 277 | 1.1.9.11.3 | Atendimento de comentários |  | 2d | 2026-07-03 | 2026-07-06 | 276 |  |  | 2026-07-01 | 2026-07-02 | 2d | 2d | 0d |  | ESTRUTURA METÁLICA |
| 278 | 1.1.9.11.4 | Aprovação |  | 1d | 2026-07-07 | 2026-07-07 | 277 |  |  | 2026-07-03 | 2026-07-03 | 1d | 2d |  |  | ESTRUTURA METÁLICA |
| 279 | 1.1.10 | **Elétrica** |  | 28d | 2026-05-28 A | 2026-07-08 |  | 2% | 27.48d | 2026-05-28 | 2026-07-07 | 29d | 1d |  |  | ELÉTRICA |
| 280 | 1.1.10.1 | **CP-F0009-0306-MB-E-00001** | inactive | 26d | 2026-05-05 | 2026-06-11 |  |  |  |  |  |  | 20d |  | -0 |  |
| 281 | 1.1.10.1.1 | Emissão inicial | inactive | 7d | 2026-05-05 | 2026-05-13 | 20 |  |  |  |  |  | 35d | 15d | -0 |  |
| 282 | 1.1.10.1.2 | Análise Tecnored | inactive | 1d | 2026-06-08 | 2026-06-08 | 281, 7 |  |  |  |  |  | 20d | 0d | -0 |  |
| 283 | 1.1.10.1.3 | Atendimento de comentários | inactive | 2d | 2026-06-09 | 2026-06-10 | 282 |  |  |  |  |  | 20d | 0d | -0 |  |
| 284 | 1.1.10.1.4 | Aprovação | inactive | 1d | 2026-06-11 | 2026-06-11 | 283 |  |  |  |  |  | 20d |  | -0 |  |

| ID | WBS | Task | Duration | Start | Finish | Predecessors | Complete | Remaining | Baseline start | Baseline finish | Baseline duration | Total slack | Free slack | DISCIPLINA |
| --- | --- | --- | --- | --- | --- | --- | --- | --- | --- | --- | --- | --- | --- | --- |
| 285 | 1.1.10.2 | **ML-F0009-0306-MB-E-00001** | 9d | 2026-06-09 | 2026-06-19 |  |  |  | 2026-06-12 | 2026-06-24 | 9d | 5d |  | ELÉTRICA |
| 286 | 1.1.10.2.1 | Emissão inicial | 5d | 2026-06-09 | 2026-06-15 | 120 |  |  | 2026-06-12 | 2026-06-18 | 5d | 5d | 0d | ELÉTRICA |
| 287 | 1.1.10.2.2 | Análise Tecnored | 1d | 2026-06-16 | 2026-06-16 | 286 |  |  | 2026-06-19 | 2026-06-19 | 1d | 14d | 0d | ELÉTRICA |
| 288 | 1.1.10.2.3 | Atendimento de comentários | 2d | 2026-06-17 | 2026-06-18 | 287 |  |  | 2026-06-22 | 2026-06-23 | 2d | 14d | 0d | ELÉTRICA |
| 289 | 1.1.10.2.4 | Aprovação | 1d | 2026-06-19 | 2026-06-19 | 288 |  |  | 2026-06-24 | 2026-06-24 | 1d | 14d |  | ELÉTRICA |
| 290 | 1.1.10.3 | **RL-F0009-0306-MB-E-00001** | 7d | 2026-06-02 | 2026-06-12 |  |  |  | 2026-06-02 | 2026-06-10 | 7d | 1d |  | ELÉTRICA |
| 291 | 1.1.10.3.1 | Emissão inicial | 3d | 2026-06-02 | 2026-06-08 | 301 |  |  | 2026-06-02 | 2026-06-04 | 3d | 1d | 0d | ELÉTRICA |
| 292 | 1.1.10.3.2 | Análise Tecnored | 1d | 2026-06-09 | 2026-06-09 | 291 |  |  | 2026-06-05 | 2026-06-05 | 1d | 19d | 0d | ELÉTRICA |
| 293 | 1.1.10.3.3 | Atendimento de comentários | 2d | 2026-06-10 | 2026-06-11 | 292 |  |  | 2026-06-08 | 2026-06-09 | 2d | 19d | 0d | ELÉTRICA |
| 294 | 1.1.10.3.4 | Aprovação | 1d | 2026-06-12 | 2026-06-12 | 293 |  |  | 2026-06-10 | 2026-06-10 | 1d | 19d |  | ELÉTRICA |
| 295 | 1.1.10.4 | **LE-F0009-0306-MB-E-00001** | 7d | 2026-06-26 | 2026-07-06 |  |  |  | 2026-06-24 | 2026-07-02 | 7d | 3d |  | ELÉTRICA |
| 296 | 1.1.10.4.1 | Emissão inicial | 3d | 2026-06-26 | 2026-06-30 | 321, 326 |  |  | 2026-06-24 | 2026-06-26 | 3d | 3d | 0d | ELÉTRICA |
| 297 | 1.1.10.4.2 | Análise Tecnored | 1d | 2026-07-01 | 2026-07-01 | 296 |  |  | 2026-06-29 | 2026-06-29 | 1d | 3d | 0d | ELÉTRICA |
| 298 | 1.1.10.4.3 | Atendimento de comentários | 2d | 2026-07-02 | 2026-07-03 | 297 |  |  | 2026-06-30 | 2026-07-01 | 2d | 3d | 0d | ELÉTRICA |
| 299 | 1.1.10.4.4 | Aprovação | 1d | 2026-07-06 | 2026-07-06 | 298 |  |  | 2026-07-02 | 2026-07-02 | 1d | 3d |  | ELÉTRICA |
| 300 | 1.1.10.5 | **LR-F0009-0306-MB-E-00001** | 7d | 2026-05-28 A | 2026-06-09 |  | 43% | 4d | 2026-05-28 | 2026-06-05 | 7d | 22d |  | ELÉTRICA |
| 301 | 1.1.10.5.1 | Emissão inicial | 3d | 2026-05-28 A | 2026-06-01 A | 73 | 100% |  | 2026-05-28 | 2026-06-01 | 3d |  |  | ELÉTRICA |
| 302 | 1.1.10.5.2 | Análise Tecnored | 1d | 2026-06-02 | 2026-06-02 | 301 |  |  | 2026-06-02 | 2026-06-02 | 1d | 22d | 0d | ELÉTRICA |
| 303 | 1.1.10.5.3 | Atendimento de comentários | 2d | 2026-06-03 | 2026-06-08 | 302 |  |  | 2026-06-03 | 2026-06-04 | 2d | 22d | 0d | ELÉTRICA |
| 304 | 1.1.10.5.4 | Aprovação | 1d | 2026-06-09 | 2026-06-09 | 303 |  |  | 2026-06-05 | 2026-06-05 | 1d | 22d |  | ELÉTRICA |
| 305 | 1.1.10.6 | **LM-F0009-0306-MB-E-00001** | 5d | 2026-06-23 | 2026-06-29 |  |  |  | 2026-06-26 | 2026-07-02 | 5d | 5d |  | ELÉTRICA |
| 306 | 1.1.10.6.1 | Emissão inicial | 1d | 2026-06-23 | 2026-06-23 | 332 |  |  | 2026-06-26 | 2026-06-26 | 1d | 5d | 0d | ELÉTRICA |
| 307 | 1.1.10.6.2 | Análise Tecnored | 1d | 2026-06-24 | 2026-06-24 | 306 |  |  | 2026-06-29 | 2026-06-29 | 1d | 8d | 0d | ELÉTRICA |
| 308 | 1.1.10.6.3 | Atendimento de comentários | 2d | 2026-06-25 | 2026-06-26 | 307 |  |  | 2026-06-30 | 2026-07-01 | 2d | 8d | 0d | ELÉTRICA |
| 309 | 1.1.10.6.4 | Aprovação | 1d | 2026-06-29 | 2026-06-29 | 308 |  |  | 2026-07-02 | 2026-07-02 | 1d | 8d |  | ELÉTRICA |

| ID | WBS | Task | Type | Duration | Start | Finish | Predecessors | Baseline start | Baseline finish | Baseline duration | Total slack | Free slack | Baseline cost | DISCIPLINA |
| --- | --- | --- | --- | --- | --- | --- | --- | --- | --- | --- | --- | --- | --- | --- |
| 310 | 1.1.10.7 | **PQ-F0009-0306-MB-E-00001** |  | 7d | 2026-06-24 | 2026-07-02 |  | 2026-06-29 | 2026-07-07 | 7d | 5d |  |  | ELÉTRICA |
| 311 | 1.1.10.7.1 | Emissão inicial |  | 3d | 2026-06-24 | 2026-06-26 | 306 | 2026-06-29 | 2026-07-01 | 3d | 5d | 0d |  | ELÉTRICA |
| 312 | 1.1.10.7.2 | Análise Tecnored |  | 1d | 2026-06-29 | 2026-06-29 | 311 | 2026-07-02 | 2026-07-02 | 1d | 5d | 0d |  | ELÉTRICA |
| 313 | 1.1.10.7.3 | Atendimento de comentários |  | 2d | 2026-06-30 | 2026-07-01 | 312 | 2026-07-03 | 2026-07-06 | 2d | 5d | 0d |  | ELÉTRICA |
| 314 | 1.1.10.7.4 | Aprovação |  | 1d | 2026-07-02 | 2026-07-02 | 313 | 2026-07-07 | 2026-07-07 | 1d | 5d |  |  | ELÉTRICA |
| 315 | 1.1.10.8 | **MD-F0009-0306-MB-E-00001** | inactive | 6d | 2026-06-24 | 2026-07-01 |  |  |  |  | 6d |  | -0 |  |
| 316 | 1.1.10.8.1 | Emissão inicial | inactive | 2d | 2026-06-24 | 2026-06-25 | 306 |  |  |  | 6d | 0d | -0 |  |
| 317 | 1.1.10.8.2 | Análise Tecnored | inactive | 1d | 2026-06-26 | 2026-06-26 | 316 |  |  |  | 6d | 0d | -0 |  |
| 318 | 1.1.10.8.3 | Atendimento de comentários | inactive | 2d | 2026-06-29 | 2026-06-30 | 317 |  |  |  | 6d | 0d | -0 |  |
| 319 | 1.1.10.8.4 | Aprovação | inactive | 1d | 2026-07-01 | 2026-07-01 | 318 |  |  |  | 6d |  | -0 |  |
| 320 | 1.1.10.9 | **MC-F0009-0306-MB-E-00001** |  | 9d | 2026-06-19 | 2026-07-01 |  | 2026-06-17 | 2026-06-26 | 8d | 3d |  |  | ELÉTRICA |
| 321 | 1.1.10.9.1 | Emissão inicial |  | 5d | 2026-06-19 | 2026-06-25 | 386 | 2026-06-17 | 2026-06-22 | 4d | 3d | 0d |  | ELÉTRICA |
| 322 | 1.1.10.9.2 | Análise Tecnored |  | 1d | 2026-06-26 | 2026-06-26 | 321 | 2026-06-23 | 2026-06-23 | 1d | 6d | 0d |  | ELÉTRICA |
| 323 | 1.1.10.9.3 | Atendimento de comentários |  | 2d | 2026-06-29 | 2026-06-30 | 322 | 2026-06-24 | 2026-06-25 | 2d | 6d | 0d |  | ELÉTRICA |
| 324 | 1.1.10.9.4 | Aprovação |  | 1d | 2026-07-01 | 2026-07-01 | 323 | 2026-06-26 | 2026-06-26 | 1d | 6d |  |  | ELÉTRICA |
| 325 | 1.1.10.10 | **MC-F0009-0306-MB-E-00002** |  | 9d | 2026-06-19 | 2026-07-01 |  | 2026-06-17 | 2026-06-29 | 9d | 1d |  |  | ELÉTRICA |
| 326 | 1.1.10.10.1 | Emissão inicial |  | 5d | 2026-06-19 | 2026-06-25 | 386 | 2026-06-17 | 2026-06-23 | 5d | 1d | 0d |  | ELÉTRICA |
| 327 | 1.1.10.10.2 | Análise Tecnored |  | 1d | 2026-06-26 | 2026-06-26 | 326 | 2026-06-24 | 2026-06-24 | 1d | 6d | 0d |  | ELÉTRICA |
| 328 | 1.1.10.10.3 | Atendimento de comentários |  | 2d | 2026-06-29 | 2026-06-30 | 327 | 2026-06-25 | 2026-06-26 | 2d | 6d | 0d |  | ELÉTRICA |
| 329 | 1.1.10.10.4 | Aprovação |  | 1d | 2026-07-01 | 2026-07-01 | 328 | 2026-06-29 | 2026-06-29 | 1d | 6d |  |  | ELÉTRICA |
| 330 | 1.1.10.11 | **AG-F0009-0306-MB-E-00001** |  | 8d | 2026-06-16 | 2026-06-25 |  | 2026-06-19 | 2026-06-30 | 8d | 5d |  |  | ELÉTRICA |
| 331 | 1.1.10.11.1 | Emissão inicial |  | 4d | 2026-06-16 | 2026-06-19 | 286 | 2026-06-19 | 2026-06-24 | 4d | 5d | 0d |  | ELÉTRICA |
| 332 | 1.1.10.11.2 | Análise Tecnored |  | 1d | 2026-06-22 | 2026-06-22 | 331 | 2026-06-25 | 2026-06-25 | 1d | 5d | 0d |  | ELÉTRICA |
| 333 | 1.1.10.11.3 | Atendimento de comentários |  | 2d | 2026-06-23 | 2026-06-24 | 332 | 2026-06-26 | 2026-06-29 | 2d | 10d | 0d |  | ELÉTRICA |
| 334 | 1.1.10.11.4 | Aprovação |  | 1d | 2026-06-25 | 2026-06-25 | 333 | 2026-06-30 | 2026-06-30 | 1d | 10d |  |  | ELÉTRICA |

| ID | WBS | Task | Duration | Start | Finish | Predecessors | Baseline start | Baseline finish | Baseline duration | Total slack | Free slack | DISCIPLINA |
| --- | --- | --- | --- | --- | --- | --- | --- | --- | --- | --- | --- | --- |
| 335 | 1.1.10.12 | **DU-F0009-0306-MB-E-00001** | 7d | 2026-06-09 | 2026-06-17 |  | 2026-06-05 | 2026-06-15 | 7d | 1d |  | ELÉTRICA |
| 336 | 1.1.10.12.1 | Emissão inicial | 3d | 2026-06-09 | 2026-06-11 | 291 | 2026-06-05 | 2026-06-09 | 3d | 1d | 0d | ELÉTRICA |
| 337 | 1.1.10.12.2 | Análise Tecnored | 1d | 2026-06-12 | 2026-06-12 | 336 | 2026-06-10 | 2026-06-10 | 1d | 16d | 0d | ELÉTRICA |
| 338 | 1.1.10.12.3 | Atendimento de comentários | 2d | 2026-06-15 | 2026-06-16 | 337 | 2026-06-11 | 2026-06-12 | 2d | 16d | 0d | ELÉTRICA |
| 339 | 1.1.10.12.4 | Aprovação | 1d | 2026-06-17 | 2026-06-17 | 338 | 2026-06-15 | 2026-06-15 | 1d | 16d |  | ELÉTRICA |
| 340 | 1.1.10.13 | **DU-F0009-0306-MB-E-00002** | 6d | 2026-06-26 | 2026-07-03 |  | 2026-06-24 | 2026-07-01 | 6d | 4d |  | ELÉTRICA |
| 341 | 1.1.10.13.1 | Emissão inicial | 2d | 2026-06-26 | 2026-06-29 | 326 | 2026-06-24 | 2026-06-25 | 2d | 4d | 0d | ELÉTRICA |
| 342 | 1.1.10.13.2 | Análise Tecnored | 1d | 2026-06-30 | 2026-06-30 | 341 | 2026-06-26 | 2026-06-26 | 1d | 4d | 0d | ELÉTRICA |
| 343 | 1.1.10.13.3 | Atendimento de comentários | 2d | 2026-07-01 | 2026-07-02 | 342 | 2026-06-29 | 2026-06-30 | 2d | 4d | 0d | ELÉTRICA |
| 344 | 1.1.10.13.4 | Aprovação | 1d | 2026-07-03 | 2026-07-03 | 343 | 2026-07-01 | 2026-07-01 | 1d | 4d |  | ELÉTRICA |
| 345 | 1.1.10.14 | **DU-F0009-0306-MB-E-00003** | 9d | 2026-06-26 | 2026-07-08 |  | 2026-06-24 | 2026-07-06 | 9d | 1d |  | ELÉTRICA |
| 346 | 1.1.10.14.1 | Emissão inicial | 5d | 2026-06-26 | 2026-07-02 | 326 | 2026-06-24 | 2026-06-30 | 5d | 1d | 0d | ELÉTRICA |
| 347 | 1.1.10.14.2 | Análise Tecnored | 1d | 2026-07-03 | 2026-07-03 | 346 | 2026-07-01 | 2026-07-01 | 1d | 1d | 0d | ELÉTRICA |
| 348 | 1.1.10.14.3 | Atendimento de comentários | 2d | 2026-07-06 | 2026-07-07 | 347 | 2026-07-02 | 2026-07-03 | 2d | 1d | 0d | ELÉTRICA |
| 349 | 1.1.10.14.4 | Aprovação | 1d | 2026-07-08 | 2026-07-08 | 348 | 2026-07-06 | 2026-07-06 | 1d | 1d |  | ELÉTRICA |
| 350 | 1.1.10.15 | **DU-F0009-0306-MB-E-00004** | 17d | 2026-06-09 | 2026-07-01 |  | 2026-06-05 | 2026-06-29 | 17d | 6d |  | ELÉTRICA |
| 351 | 1.1.10.15.1 | Emissão inicial | 5d | 2026-06-09 | 2026-06-15 | 291 | 2026-06-05 | 2026-06-11 | 5d | 18d |  | ELÉTRICA |
| 352 | 1.1.10.15.2 | Análise Tecnored | 1d | 2026-06-26 | 2026-06-26 | 326 | 2026-06-24 | 2026-06-24 | 1d | 6d | 0d | ELÉTRICA |
| 353 | 1.1.10.15.3 | Atendimento de comentários | 2d | 2026-06-29 | 2026-06-30 | 352 | 2026-06-25 | 2026-06-26 | 2d | 6d | 0d | ELÉTRICA |
| 354 | 1.1.10.15.4 | Aprovação | 1d | 2026-07-01 | 2026-07-01 | 353 | 2026-06-29 | 2026-06-29 | 1d | 6d |  | ELÉTRICA |
| 355 | 1.1.10.16 | **AG-F0009-0306-MB-E-00002** | 8d | 2026-06-16 | 2026-06-25 |  | 2026-06-19 | 2026-06-30 | 8d | 10d |  | ELÉTRICA |
| 356 | 1.1.10.16.1 | Emissão inicial | 4d | 2026-06-16 | 2026-06-19 | 286 | 2026-06-19 | 2026-06-24 | 4d | 10d | 0d | ELÉTRICA |
| 357 | 1.1.10.16.2 | Análise Tecnored | 1d | 2026-06-22 | 2026-06-22 | 356 | 2026-06-25 | 2026-06-25 | 1d | 10d | 0d | ELÉTRICA |
| 358 | 1.1.10.16.3 | Atendimento de comentários | 2d | 2026-06-23 | 2026-06-24 | 357 | 2026-06-26 | 2026-06-29 | 2d | 10d | 0d | ELÉTRICA |
| 359 | 1.1.10.16.4 | Aprovação | 1d | 2026-06-25 | 2026-06-25 | 358 | 2026-06-30 | 2026-06-30 | 1d | 10d |  | ELÉTRICA |

| ID | WBS | Task | Duration | Start | Finish | Predecessors | Baseline start | Baseline finish | Baseline duration | Total slack | Free slack | DISCIPLINA |
| --- | --- | --- | --- | --- | --- | --- | --- | --- | --- | --- | --- | --- |
| 360 | 1.1.10.17 | **AG-F0009-0306-MB-E-00003** | 8d | 2026-06-16 | 2026-06-25 |  | 2026-06-19 | 2026-06-30 | 8d | 10d |  | ELÉTRICA |
| 361 | 1.1.10.17.1 | Emissão inicial | 4d | 2026-06-16 | 2026-06-19 | 286 | 2026-06-19 | 2026-06-24 | 4d | 10d | 0d | ELÉTRICA |
| 362 | 1.1.10.17.2 | Análise Tecnored | 1d | 2026-06-22 | 2026-06-22 | 361 | 2026-06-25 | 2026-06-25 | 1d | 10d | 0d | ELÉTRICA |
| 363 | 1.1.10.17.3 | Atendimento de comentários | 2d | 2026-06-23 | 2026-06-24 | 362 | 2026-06-26 | 2026-06-29 | 2d | 10d | 0d | ELÉTRICA |
| 364 | 1.1.10.17.4 | Aprovação | 1d | 2026-06-25 | 2026-06-25 | 363 | 2026-06-30 | 2026-06-30 | 1d | 10d |  | ELÉTRICA |
| 365 | 1.1.10.18 | **FD-F0009-0306-MB-E-00001** | 9d | 2026-06-12 | 2026-06-24 |  | 2026-06-10 | 2026-06-22 | 9d | 11d |  | ELÉTRICA |
| 366 | 1.1.10.18.1 | Emissão inicial | 5d | 2026-06-12 | 2026-06-18 | 336 | 2026-06-10 | 2026-06-16 | 5d | 11d | 0d | ELÉTRICA |
| 367 | 1.1.10.18.2 | Análise Tecnored | 1d | 2026-06-19 | 2026-06-19 | 366 | 2026-06-17 | 2026-06-17 | 1d | 11d | 0d | ELÉTRICA |
| 368 | 1.1.10.18.3 | Atendimento de comentários | 2d | 2026-06-22 | 2026-06-23 | 367 | 2026-06-18 | 2026-06-19 | 2d | 11d | 0d | ELÉTRICA |
| 369 | 1.1.10.18.4 | Aprovação | 1d | 2026-06-24 | 2026-06-24 | 368 | 2026-06-22 | 2026-06-22 | 1d | 11d |  | ELÉTRICA |
| 370 | 1.1.10.19 | **FD-F0009-0306-MB-E-00002** | 9d | 2026-06-12 | 2026-06-24 |  | 2026-06-10 | 2026-06-22 | 9d | 11d |  | ELÉTRICA |
| 371 | 1.1.10.19.1 | Emissão inicial | 5d | 2026-06-12 | 2026-06-18 | 336 | 2026-06-10 | 2026-06-16 | 5d | 11d | 0d | ELÉTRICA |
| 372 | 1.1.10.19.2 | Análise Tecnored | 1d | 2026-06-19 | 2026-06-19 | 371 | 2026-06-17 | 2026-06-17 | 1d | 11d | 0d | ELÉTRICA |
| 373 | 1.1.10.19.3 | Atendimento de comentários | 2d | 2026-06-22 | 2026-06-23 | 372 | 2026-06-18 | 2026-06-19 | 2d | 11d | 0d | ELÉTRICA |
| 374 | 1.1.10.19.4 | Aprovação | 1d | 2026-06-24 | 2026-06-24 | 373 | 2026-06-22 | 2026-06-22 | 1d | 11d |  | ELÉTRICA |
| 375 | 1.1.10.20 | **FD-F0009-0306-MB-E-00003** | 9d | 2026-06-12 | 2026-06-24 |  | 2026-06-10 | 2026-06-22 | 9d | 11d |  | ELÉTRICA |
| 376 | 1.1.10.20.1 | Emissão inicial | 5d | 2026-06-12 | 2026-06-18 | 336 | 2026-06-10 | 2026-06-16 | 5d | 11d | 0d | ELÉTRICA |
| 377 | 1.1.10.20.2 | Análise Tecnored | 1d | 2026-06-19 | 2026-06-19 | 376 | 2026-06-17 | 2026-06-17 | 1d | 11d | 0d | ELÉTRICA |
| 378 | 1.1.10.20.3 | Atendimento de comentários | 2d | 2026-06-22 | 2026-06-23 | 377 | 2026-06-18 | 2026-06-19 | 2d | 11d | 0d | ELÉTRICA |
| 379 | 1.1.10.20.4 | Aprovação | 1d | 2026-06-24 | 2026-06-24 | 378 | 2026-06-22 | 2026-06-22 | 1d | 11d |  | ELÉTRICA |
| 380 | 1.1.10.21 | **FD-F0009-0306-MB-E-00004** | 9d | 2026-06-12 | 2026-06-24 |  | 2026-06-10 | 2026-06-22 | 9d | 11d |  | ELÉTRICA |
| 381 | 1.1.10.21.1 | Emissão inicial | 5d | 2026-06-12 | 2026-06-18 | 336 | 2026-06-10 | 2026-06-16 | 5d | 11d | 0d | ELÉTRICA |
| 382 | 1.1.10.21.2 | Análise Tecnored | 1d | 2026-06-19 | 2026-06-19 | 381 | 2026-06-17 | 2026-06-17 | 1d | 11d | 0d | ELÉTRICA |
| 383 | 1.1.10.21.3 | Atendimento de comentários | 2d | 2026-06-22 | 2026-06-23 | 382 | 2026-06-18 | 2026-06-19 | 2d | 11d | 0d | ELÉTRICA |
| 384 | 1.1.10.21.4 | Aprovação | 1d | 2026-06-24 | 2026-06-24 | 383 | 2026-06-22 | 2026-06-22 | 1d | 11d |  | ELÉTRICA |

| ID | WBS | Task | Type | Duration | Start | Finish | Predecessors | Baseline start | Baseline finish | Baseline duration | Total slack | Free slack | Baseline cost | DISCIPLINA |
| --- | --- | --- | --- | --- | --- | --- | --- | --- | --- | --- | --- | --- | --- | --- |
| 385 | 1.1.10.22 | **FD-F0009-0306-MB-E-00005** |  | 9d | 2026-06-12 | 2026-06-24 |  | 2026-06-10 | 2026-06-22 | 9d | 1d |  |  | ELÉTRICA |
| 386 | 1.1.10.22.1 | Emissão inicial |  | 5d | 2026-06-12 | 2026-06-18 | 336 | 2026-06-10 | 2026-06-16 | 5d | 1d | 0d |  | ELÉTRICA |
| 387 | 1.1.10.22.2 | Análise Tecnored |  | 1d | 2026-06-19 | 2026-06-19 | 386 | 2026-06-17 | 2026-06-17 | 1d | 11d | 0d |  | ELÉTRICA |
| 388 | 1.1.10.22.3 | Atendimento de comentários |  | 2d | 2026-06-22 | 2026-06-23 | 387 | 2026-06-18 | 2026-06-19 | 2d | 11d | 0d |  | ELÉTRICA |
| 389 | 1.1.10.22.4 | Aprovação |  | 1d | 2026-06-24 | 2026-06-24 | 388 | 2026-06-22 | 2026-06-22 | 1d | 11d |  |  | ELÉTRICA |
| 390 | 1.1.11 | **Automação e instrumentação** |  | 27d | 2026-05-29 | 2026-07-08 |  | 2026-06-02 | 2026-07-08 | 27d | 1d |  |  | AUTOMAÇÃO E INSTRUMENTAÇÃO |
| 391 | 1.1.11.1 | **CP-F0009-0306-MB-J-00001** | inactive | 26d | 2026-05-05 | 2026-06-11 |  |  |  |  | 20d |  | -0 |  |
| 392 | 1.1.11.1.1 | Emissão inicial | inactive | 7d | 2026-05-05 | 2026-05-13 | 20 |  |  |  | 35d | 15d | -0 |  |
| 393 | 1.1.11.1.2 | Análise Tecnored | inactive | 1d | 2026-06-08 | 2026-06-08 | 392, 8 |  |  |  | 20d | 0d | -0 |  |
| 394 | 1.1.11.1.3 | Atendimento de comentários | inactive | 2d | 2026-06-09 | 2026-06-10 | 393 |  |  |  | 20d | 0d | -0 |  |
| 395 | 1.1.11.1.4 | Aprovação | inactive | 1d | 2026-06-11 | 2026-06-11 | 394 |  |  |  | 20d |  | -0 |  |
| 396 | 1.1.11.2 | **LI-F0009-0306-MB-J-00001** |  | 7d | 2026-06-03 | 2026-06-15 |  | 2026-06-05 | 2026-06-15 | 7d | 1d |  |  | AUTOMAÇÃO E INSTRUMENTAÇÃO |
| 397 | 1.1.11.2.1 | Emissão inicial |  | 3d | 2026-06-03 | 2026-06-09 | 427 | 2026-06-05 | 2026-06-09 | 3d | 1d | 0d |  | AUTOMAÇÃO E INSTRUMENTAÇÃO |
| 398 | 1.1.11.2.2 | Análise Tecnored |  | 1d | 2026-06-10 | 2026-06-10 | 397 | 2026-06-10 | 2026-06-10 | 1d | 18d | 0d |  | AUTOMAÇÃO E INSTRUMENTAÇÃO |
| 399 | 1.1.11.2.3 | Atendimento de comentários |  | 2d | 2026-06-11 | 2026-06-12 | 398 | 2026-06-11 | 2026-06-12 | 2d | 18d | 0d |  | AUTOMAÇÃO E INSTRUMENTAÇÃO |
| 400 | 1.1.11.2.4 | Aprovação |  | 1d | 2026-06-15 | 2026-06-15 | 399 | 2026-06-15 | 2026-06-15 | 1d | 18d |  |  | AUTOMAÇÃO E INSTRUMENTAÇÃO |
| 401 | 1.1.11.3 | **LE-F0009-0306-MB-J-00001** |  | 6d | 2026-06-26 | 2026-07-03 |  | 2026-06-26 | 2026-07-03 | 6d | 4d |  |  | AUTOMAÇÃO E INSTRUMENTAÇÃO |
| 402 | 1.1.11.3.1 | Emissão inicial |  | 2d | 2026-06-26 | 2026-06-29 | 477 | 2026-06-26 | 2026-06-29 | 2d | 4d | 0d |  | AUTOMAÇÃO E INSTRUMENTAÇÃO |
| 403 | 1.1.11.3.2 | Análise Tecnored |  | 1d | 2026-06-30 | 2026-06-30 | 402 | 2026-06-30 | 2026-06-30 | 1d | 4d | 0d |  | AUTOMAÇÃO E INSTRUMENTAÇÃO |
| 404 | 1.1.11.3.3 | Atendimento de comentários |  | 2d | 2026-07-01 | 2026-07-02 | 403 | 2026-07-01 | 2026-07-02 | 2d | 4d | 0d |  | AUTOMAÇÃO E INSTRUMENTAÇÃO |
| 405 | 1.1.11.3.4 | Aprovação |  | 1d | 2026-07-03 | 2026-07-03 | 404 | 2026-07-03 | 2026-07-03 | 1d | 4d |  |  | AUTOMAÇÃO E INSTRUMENTAÇÃO |
| 406 | 1.1.11.4 | **LZ-F0009-0306-MB-J-00001** |  | 6d | 2026-06-22 | 2026-06-29 |  | 2026-06-22 | 2026-06-29 | 6d | 1d |  |  | AUTOMAÇÃO E INSTRUMENTAÇÃO |
| 407 | 1.1.11.4.1 | Emissão inicial |  | 2d | 2026-06-22 | 2026-06-23 | 457FS-5d | 2026-06-22 | 2026-06-23 | 2d | 1d | 0d |  | AUTOMAÇÃO E INSTRUMENTAÇÃO |
| 408 | 1.1.11.4.2 | Análise Tecnored |  | 1d | 2026-06-24 | 2026-06-24 | 407 | 2026-06-24 | 2026-06-24 | 1d | 8d | 0d |  | AUTOMAÇÃO E INSTRUMENTAÇÃO |
| 409 | 1.1.11.4.3 | Atendimento de comentários |  | 2d | 2026-06-25 | 2026-06-26 | 408 | 2026-06-25 | 2026-06-26 | 2d | 8d | 0d |  | AUTOMAÇÃO E INSTRUMENTAÇÃO |
| 410 | 1.1.11.4.4 | Aprovação |  | 1d | 2026-06-29 | 2026-06-29 | 409 | 2026-06-29 | 2026-06-29 | 1d | 8d |  |  | AUTOMAÇÃO E INSTRUMENTAÇÃO |

| ID | WBS | Task | Duration | Start | Finish | Predecessors | Baseline start | Baseline finish | Baseline duration | Total slack | Free slack | DISCIPLINA |
| --- | --- | --- | --- | --- | --- | --- | --- | --- | --- | --- | --- | --- |
| 411 | 1.1.11.5 | **LE-F0009-0306-MB-J-00002** | 7d | 2026-06-22 | 2026-06-30 |  | 2026-06-22 | 2026-06-30 | 7d | 7d |  | AUTOMAÇÃO E INSTRUMENTAÇÃO |
| 412 | 1.1.11.5.1 | Emissão inicial | 3d | 2026-06-22 | 2026-06-24 | 477FS-4d | 2026-06-22 | 2026-06-24 | 3d | 7d | 0d | AUTOMAÇÃO E INSTRUMENTAÇÃO |
| 413 | 1.1.11.5.2 | Análise Tecnored | 1d | 2026-06-25 | 2026-06-25 | 412 | 2026-06-25 | 2026-06-25 | 1d | 7d | 0d | AUTOMAÇÃO E INSTRUMENTAÇÃO |
| 414 | 1.1.11.5.3 | Atendimento de comentários | 2d | 2026-06-26 | 2026-06-29 | 413 | 2026-06-26 | 2026-06-29 | 2d | 7d | 0d | AUTOMAÇÃO E INSTRUMENTAÇÃO |
| 415 | 1.1.11.5.4 | Aprovação | 1d | 2026-06-30 | 2026-06-30 | 414 | 2026-06-30 | 2026-06-30 | 1d | 7d |  | AUTOMAÇÃO E INSTRUMENTAÇÃO |
| 416 | 1.1.11.6 | **PQ-F0009-0306-MB-J-00001** | 5d | 2026-06-23 | 2026-06-29 |  | 2026-06-23 | 2026-06-29 | 5d | 8d |  | AUTOMAÇÃO E INSTRUMENTAÇÃO |
| 417 | 1.1.11.6.1 | Emissão inicial | 1d | 2026-06-23 | 2026-06-23 | 472FS-5d | 2026-06-23 | 2026-06-23 | 1d | 8d | 0d | AUTOMAÇÃO E INSTRUMENTAÇÃO |
| 418 | 1.1.11.6.2 | Análise Tecnored | 1d | 2026-06-24 | 2026-06-24 | 417 | 2026-06-24 | 2026-06-24 | 1d | 8d | 0d | AUTOMAÇÃO E INSTRUMENTAÇÃO |
| 419 | 1.1.11.6.3 | Atendimento de comentários | 2d | 2026-06-25 | 2026-06-26 | 418 | 2026-06-25 | 2026-06-26 | 2d | 8d | 0d | AUTOMAÇÃO E INSTRUMENTAÇÃO |
| 420 | 1.1.11.6.4 | Aprovação | 1d | 2026-06-29 | 2026-06-29 | 419 | 2026-06-29 | 2026-06-29 | 1d | 8d |  | AUTOMAÇÃO E INSTRUMENTAÇÃO |
| 421 | 1.1.11.7 | **FG-F0009-0306-MB-J-00001** | 9d | 2026-05-29 | 2026-06-12 |  | 2026-06-02 | 2026-06-12 | 9d | 19d |  | AUTOMAÇÃO E INSTRUMENTAÇÃO |
| 422 | 1.1.11.7.1 | Emissão inicial | 5d | 2026-05-29 | 2026-06-08 | 57FS-4d | 2026-06-02 | 2026-06-08 | 5d | 19d | 0d | AUTOMAÇÃO E INSTRUMENTAÇÃO |
| 423 | 1.1.11.7.2 | Análise Tecnored | 1d | 2026-06-09 | 2026-06-09 | 422 | 2026-06-09 | 2026-06-09 | 1d | 19d | 0d | AUTOMAÇÃO E INSTRUMENTAÇÃO |
| 424 | 1.1.11.7.3 | Atendimento de comentários | 2d | 2026-06-10 | 2026-06-11 | 423 | 2026-06-10 | 2026-06-11 | 2d | 19d | 0d | AUTOMAÇÃO E INSTRUMENTAÇÃO |
| 425 | 1.1.11.7.4 | Aprovação | 1d | 2026-06-12 | 2026-06-12 | 424 | 2026-06-12 | 2026-06-12 | 1d | 19d |  | AUTOMAÇÃO E INSTRUMENTAÇÃO |
| 426 | 1.1.11.8 | **FG-F0009-0306-MB-J-00002** | 7d | 2026-05-29 | 2026-06-10 |  | 2026-06-02 | 2026-06-10 | 7d | 1d |  | AUTOMAÇÃO E INSTRUMENTAÇÃO |
| 427 | 1.1.11.8.1 | Emissão inicial | 3d | 2026-05-29 | 2026-06-02 | 57FS-4d | 2026-06-02 | 2026-06-04 | 3d | 1d | 0d | AUTOMAÇÃO E INSTRUMENTAÇÃO |
| 428 | 1.1.11.8.2 | Análise Tecnored | 1d | 2026-06-03 | 2026-06-03 | 427 | 2026-06-05 | 2026-06-05 | 1d | 21d | 0d | AUTOMAÇÃO E INSTRUMENTAÇÃO |
| 429 | 1.1.11.8.3 | Atendimento de comentários | 2d | 2026-06-08 | 2026-06-09 | 428 | 2026-06-08 | 2026-06-09 | 2d | 21d | 0d | AUTOMAÇÃO E INSTRUMENTAÇÃO |
| 430 | 1.1.11.8.4 | Aprovação | 1d | 2026-06-10 | 2026-06-10 | 429 | 2026-06-10 | 2026-06-10 | 1d | 21d |  | AUTOMAÇÃO E INSTRUMENTAÇÃO |
| 431 | 1.1.11.9 | **FG-F0009-0306-MB-J-00003** | 9d | 2026-05-29 | 2026-06-12 |  | 2026-06-02 | 2026-06-12 | 9d | 19d |  | AUTOMAÇÃO E INSTRUMENTAÇÃO |
| 432 | 1.1.11.9.1 | Emissão inicial | 5d | 2026-05-29 | 2026-06-08 | 57FS-4d | 2026-06-02 | 2026-06-08 | 5d | 19d | 0d | AUTOMAÇÃO E INSTRUMENTAÇÃO |
| 433 | 1.1.11.9.2 | Análise Tecnored | 1d | 2026-06-09 | 2026-06-09 | 432 | 2026-06-09 | 2026-06-09 | 1d | 19d | 0d | AUTOMAÇÃO E INSTRUMENTAÇÃO |
| 434 | 1.1.11.9.3 | Atendimento de comentários | 2d | 2026-06-10 | 2026-06-11 | 433 | 2026-06-10 | 2026-06-11 | 2d | 19d | 0d | AUTOMAÇÃO E INSTRUMENTAÇÃO |
| 435 | 1.1.11.9.4 | Aprovação | 1d | 2026-06-12 | 2026-06-12 | 434 | 2026-06-12 | 2026-06-12 | 1d | 19d |  | AUTOMAÇÃO E INSTRUMENTAÇÃO |

| ID | WBS | Task | Duration | Start | Finish | Predecessors | Baseline start | Baseline finish | Baseline duration | Total slack | Free slack | DISCIPLINA |
| --- | --- | --- | --- | --- | --- | --- | --- | --- | --- | --- | --- | --- |
| 436 | 1.1.11.10 | **AG-F0009-0306-MB-J-00001** | 14d | 2026-06-10 | 2026-06-29 |  | 2026-06-10 | 2026-06-29 | 14d | 8d |  | AUTOMAÇÃO E INSTRUMENTAÇÃO |
| 437 | 1.1.11.10.1 | Emissão inicial | 10d | 2026-06-10 | 2026-06-23 | 397 | 2026-06-10 | 2026-06-23 | 10d | 8d | 0d | AUTOMAÇÃO E INSTRUMENTAÇÃO |
| 438 | 1.1.11.10.2 | Análise Tecnored | 1d | 2026-06-24 | 2026-06-24 | 437 | 2026-06-24 | 2026-06-24 | 1d | 8d | 0d | AUTOMAÇÃO E INSTRUMENTAÇÃO |
| 439 | 1.1.11.10.3 | Atendimento de comentários | 2d | 2026-06-25 | 2026-06-26 | 438 | 2026-06-25 | 2026-06-26 | 2d | 8d | 0d | AUTOMAÇÃO E INSTRUMENTAÇÃO |
| 440 | 1.1.11.10.4 | Aprovação | 1d | 2026-06-29 | 2026-06-29 | 439 | 2026-06-29 | 2026-06-29 | 1d | 8d |  | AUTOMAÇÃO E INSTRUMENTAÇÃO |
| 441 | 1.1.11.11 | **AG-F0009-0306-MB-J-00002** | 14d | 2026-06-10 | 2026-06-29 |  | 2026-06-10 | 2026-06-29 | 14d | 8d |  | AUTOMAÇÃO E INSTRUMENTAÇÃO |
| 442 | 1.1.11.11.1 | Emissão inicial | 10d | 2026-06-10 | 2026-06-23 | 397 | 2026-06-10 | 2026-06-23 | 10d | 8d | 0d | AUTOMAÇÃO E INSTRUMENTAÇÃO |
| 443 | 1.1.11.11.2 | Análise Tecnored | 1d | 2026-06-24 | 2026-06-24 | 442 | 2026-06-24 | 2026-06-24 | 1d | 8d | 0d | AUTOMAÇÃO E INSTRUMENTAÇÃO |
| 444 | 1.1.11.11.3 | Atendimento de comentários | 2d | 2026-06-25 | 2026-06-26 | 443 | 2026-06-25 | 2026-06-26 | 2d | 8d | 0d | AUTOMAÇÃO E INSTRUMENTAÇÃO |
| 445 | 1.1.11.11.4 | Aprovação | 1d | 2026-06-29 | 2026-06-29 | 444 | 2026-06-29 | 2026-06-29 | 1d | 8d |  | AUTOMAÇÃO E INSTRUMENTAÇÃO |
| 446 | 1.1.11.12 | **AG-F0009-0306-MB-J-00003** | 14d | 2026-06-10 | 2026-06-29 |  | 2026-06-10 | 2026-06-29 | 14d | 1d |  | AUTOMAÇÃO E INSTRUMENTAÇÃO |
| 447 | 1.1.11.12.1 | Emissão inicial | 10d | 2026-06-10 | 2026-06-23 | 397 | 2026-06-10 | 2026-06-23 | 10d | 1d | 0d | AUTOMAÇÃO E INSTRUMENTAÇÃO |
| 448 | 1.1.11.12.2 | Análise Tecnored | 1d | 2026-06-24 | 2026-06-24 | 447 | 2026-06-24 | 2026-06-24 | 1d | 8d | 0d | AUTOMAÇÃO E INSTRUMENTAÇÃO |
| 449 | 1.1.11.12.3 | Atendimento de comentários | 2d | 2026-06-25 | 2026-06-26 | 448 | 2026-06-25 | 2026-06-26 | 2d | 8d | 0d | AUTOMAÇÃO E INSTRUMENTAÇÃO |
| 450 | 1.1.11.12.4 | Aprovação | 1d | 2026-06-29 | 2026-06-29 | 449 | 2026-06-29 | 2026-06-29 | 1d | 8d |  | AUTOMAÇÃO E INSTRUMENTAÇÃO |
| 451 | 1.1.11.13 | **AG-F0009-0306-MB-J-00004** | 14d | 2026-06-10 | 2026-06-29 |  | 2026-06-10 | 2026-06-29 | 14d | 8d |  | AUTOMAÇÃO E INSTRUMENTAÇÃO |
| 452 | 1.1.11.13.1 | Emissão inicial | 10d | 2026-06-10 | 2026-06-23 | 397 | 2026-06-10 | 2026-06-23 | 10d | 8d | 0d | AUTOMAÇÃO E INSTRUMENTAÇÃO |
| 453 | 1.1.11.13.2 | Análise Tecnored | 1d | 2026-06-24 | 2026-06-24 | 452 | 2026-06-24 | 2026-06-24 | 1d | 8d | 0d | AUTOMAÇÃO E INSTRUMENTAÇÃO |
| 454 | 1.1.11.13.3 | Atendimento de comentários | 2d | 2026-06-25 | 2026-06-26 | 453 | 2026-06-25 | 2026-06-26 | 2d | 8d | 0d | AUTOMAÇÃO E INSTRUMENTAÇÃO |
| 455 | 1.1.11.13.4 | Aprovação | 1d | 2026-06-29 | 2026-06-29 | 454 | 2026-06-29 | 2026-06-29 | 1d | 8d |  | AUTOMAÇÃO E INSTRUMENTAÇÃO |
| 456 | 1.1.11.14 | **DI-F0009-0306-MB-J-00001** | 7d | 2026-06-24 | 2026-07-02 |  | 2026-06-24 | 2026-07-02 | 7d | 1d |  | AUTOMAÇÃO E INSTRUMENTAÇÃO |
| 457 | 1.1.11.14.1 | Emissão inicial | 3d | 2026-06-24 | 2026-06-26 | 447 | 2026-06-24 | 2026-06-26 | 3d | 1d | 0d | AUTOMAÇÃO E INSTRUMENTAÇÃO |
| 458 | 1.1.11.14.2 | Análise Tecnored | 1d | 2026-06-29 | 2026-06-29 | 457 | 2026-06-29 | 2026-06-29 | 1d | 5d | 0d | AUTOMAÇÃO E INSTRUMENTAÇÃO |
| 459 | 1.1.11.14.3 | Atendimento de comentários | 2d | 2026-06-30 | 2026-07-01 | 458 | 2026-06-30 | 2026-07-01 | 2d | 5d | 0d | AUTOMAÇÃO E INSTRUMENTAÇÃO |
| 460 | 1.1.11.14.4 | Aprovação | 1d | 2026-07-02 | 2026-07-02 | 459 | 2026-07-02 | 2026-07-02 | 1d | 5d |  | AUTOMAÇÃO E INSTRUMENTAÇÃO |

| ID | WBS | Task | Duration | Start | Finish | Predecessors | Baseline start | Baseline finish | Baseline duration | Total slack | Free slack | DISCIPLINA |
| --- | --- | --- | --- | --- | --- | --- | --- | --- | --- | --- | --- | --- |
| 461 | 1.1.11.15 | **LI-F0009-0306-MB-J-00002** | 7d | 2026-06-26 | 2026-07-06 |  | 2026-06-26 | 2026-07-06 | 7d | 3d |  | AUTOMAÇÃO E INSTRUMENTAÇÃO |
| 462 | 1.1.11.15.1 | Emissão inicial | 3d | 2026-06-26 | 2026-06-30 | 477 | 2026-06-26 | 2026-06-30 | 3d | 3d | 0d | AUTOMAÇÃO E INSTRUMENTAÇÃO |
| 463 | 1.1.11.15.2 | Análise Tecnored | 1d | 2026-07-01 | 2026-07-01 | 462 | 2026-07-01 | 2026-07-01 | 1d | 3d | 0d | AUTOMAÇÃO E INSTRUMENTAÇÃO |
| 464 | 1.1.11.15.3 | Atendimento de comentários | 2d | 2026-07-02 | 2026-07-03 | 463 | 2026-07-02 | 2026-07-03 | 2d | 3d | 0d | AUTOMAÇÃO E INSTRUMENTAÇÃO |
| 465 | 1.1.11.15.4 | Aprovação | 1d | 2026-07-06 | 2026-07-06 | 464 | 2026-07-06 | 2026-07-06 | 1d | 3d |  | AUTOMAÇÃO E INSTRUMENTAÇÃO |
| 466 | 1.1.11.16 | **LI-F0009-0306-MB-J-00003** | 6d | 2026-06-26 | 2026-07-03 |  | 2026-06-26 | 2026-07-03 | 6d | 1d |  | AUTOMAÇÃO E INSTRUMENTAÇÃO |
| 467 | 1.1.11.16.1 | Emissão inicial | 2d | 2026-06-26 | 2026-06-29 | 477 | 2026-06-26 | 2026-06-29 | 2d | 1d | 0d | AUTOMAÇÃO E INSTRUMENTAÇÃO |
| 468 | 1.1.11.16.2 | Análise Tecnored | 1d | 2026-06-30 | 2026-06-30 | 467 | 2026-06-30 | 2026-06-30 | 1d | 4d | 0d | AUTOMAÇÃO E INSTRUMENTAÇÃO |
| 469 | 1.1.11.16.3 | Atendimento de comentários | 2d | 2026-07-01 | 2026-07-02 | 468 | 2026-07-01 | 2026-07-02 | 2d | 4d | 0d | AUTOMAÇÃO E INSTRUMENTAÇÃO |
| 470 | 1.1.11.16.4 | Aprovação | 1d | 2026-07-03 | 2026-07-03 | 469 | 2026-07-03 | 2026-07-03 | 1d | 4d |  | AUTOMAÇÃO E INSTRUMENTAÇÃO |
| 471 | 1.1.11.17 | **LM-F0009-0306-MB-J-00001** | 6d | 2026-06-26 | 2026-07-03 |  | 2026-06-26 | 2026-07-03 | 6d | 4d |  | AUTOMAÇÃO E INSTRUMENTAÇÃO |
| 472 | 1.1.11.17.1 | Emissão inicial | 2d | 2026-06-26 | 2026-06-29 | 562FS-5d | 2026-06-26 | 2026-06-29 | 2d | 4d | 0d | AUTOMAÇÃO E INSTRUMENTAÇÃO |
| 473 | 1.1.11.17.2 | Análise Tecnored | 1d | 2026-06-30 | 2026-06-30 | 472 | 2026-06-30 | 2026-06-30 | 1d | 4d | 0d | AUTOMAÇÃO E INSTRUMENTAÇÃO |
| 474 | 1.1.11.17.3 | Atendimento de comentários | 2d | 2026-07-01 | 2026-07-02 | 473 | 2026-07-01 | 2026-07-02 | 2d | 4d | 0d | AUTOMAÇÃO E INSTRUMENTAÇÃO |
| 475 | 1.1.11.17.4 | Aprovação | 1d | 2026-07-03 | 2026-07-03 | 474 | 2026-07-03 | 2026-07-03 | 1d | 4d |  | AUTOMAÇÃO E INSTRUMENTAÇÃO |
| 476 | 1.1.11.18 | **ET-F0009-0306-MB-J-00001** | 6d | 2026-06-24 | 2026-07-01 |  | 2026-06-24 | 2026-07-01 | 6d | 1d |  | AUTOMAÇÃO E INSTRUMENTAÇÃO |
| 477 | 1.1.11.18.1 | Emissão inicial | 2d | 2026-06-24 | 2026-06-25 | 407 | 2026-06-24 | 2026-06-25 | 2d | 1d | 0d | AUTOMAÇÃO E INSTRUMENTAÇÃO |
| 478 | 1.1.11.18.2 | Análise Tecnored | 1d | 2026-06-26 | 2026-06-26 | 477 | 2026-06-26 | 2026-06-26 | 1d | 6d | 0d | AUTOMAÇÃO E INSTRUMENTAÇÃO |
| 479 | 1.1.11.18.3 | Atendimento de comentários | 2d | 2026-06-29 | 2026-06-30 | 478 | 2026-06-29 | 2026-06-30 | 2d | 6d | 0d | AUTOMAÇÃO E INSTRUMENTAÇÃO |
| 480 | 1.1.11.18.4 | Aprovação | 1d | 2026-07-01 | 2026-07-01 | 479 | 2026-07-01 | 2026-07-01 | 1d | 6d |  | AUTOMAÇÃO E INSTRUMENTAÇÃO |
| 481 | 1.1.11.19 | **FD-F0009-0306-MB-J-00001** | 11d | 2026-06-24 | 2026-07-08 |  | 2026-06-24 | 2026-07-08 | 11d | 1d |  | AUTOMAÇÃO E INSTRUMENTAÇÃO |
| 482 | 1.1.11.19.1 | Emissão inicial | 7d | 2026-06-24 | 2026-07-02 | 407 | 2026-06-24 | 2026-07-02 | 7d | 1d | 0d | AUTOMAÇÃO E INSTRUMENTAÇÃO |
| 483 | 1.1.11.19.2 | Análise Tecnored | 1d | 2026-07-03 | 2026-07-03 | 482 | 2026-07-03 | 2026-07-03 | 1d | 1d | 0d | AUTOMAÇÃO E INSTRUMENTAÇÃO |
| 484 | 1.1.11.19.3 | Atendimento de comentários | 2d | 2026-07-06 | 2026-07-07 | 483 | 2026-07-06 | 2026-07-07 | 2d | 1d | 0d | AUTOMAÇÃO E INSTRUMENTAÇÃO |
| 485 | 1.1.11.19.4 | Aprovação | 1d | 2026-07-08 | 2026-07-08 | 484 | 2026-07-08 | 2026-07-08 | 1d | 1d |  | AUTOMAÇÃO E INSTRUMENTAÇÃO |

| ID | WBS | Task | Duration | Start | Finish | Predecessors | Baseline start | Baseline finish | Baseline duration | Total slack | Free slack | DISCIPLINA |
| --- | --- | --- | --- | --- | --- | --- | --- | --- | --- | --- | --- | --- |
| 486 | 1.1.11.20 | **FD-F0009-0306-MB-J-00002** | 11d | 2026-06-24 | 2026-07-08 |  | 2026-06-24 | 2026-07-08 | 11d | 1d |  | AUTOMAÇÃO E INSTRUMENTAÇÃO |
| 487 | 1.1.11.20.1 | Emissão inicial | 7d | 2026-06-24 | 2026-07-02 | 407 | 2026-06-24 | 2026-07-02 | 7d | 1d | 0d | AUTOMAÇÃO E INSTRUMENTAÇÃO |
| 488 | 1.1.11.20.2 | Análise Tecnored | 1d | 2026-07-03 | 2026-07-03 | 487 | 2026-07-03 | 2026-07-03 | 1d | 1d | 0d | AUTOMAÇÃO E INSTRUMENTAÇÃO |
| 489 | 1.1.11.20.3 | Atendimento de comentários | 2d | 2026-07-06 | 2026-07-07 | 488 | 2026-07-06 | 2026-07-07 | 2d | 1d | 0d | AUTOMAÇÃO E INSTRUMENTAÇÃO |
| 490 | 1.1.11.20.4 | Aprovação | 1d | 2026-07-08 | 2026-07-08 | 489 | 2026-07-08 | 2026-07-08 | 1d | 1d |  | AUTOMAÇÃO E INSTRUMENTAÇÃO |
| 491 | 1.1.11.21 | **FD-F0009-0306-MB-J-00003** | 11d | 2026-06-24 | 2026-07-08 |  | 2026-06-24 | 2026-07-08 | 11d | 1d |  | AUTOMAÇÃO E INSTRUMENTAÇÃO |
| 492 | 1.1.11.21.1 | Emissão inicial | 7d | 2026-06-24 | 2026-07-02 | 407 | 2026-06-24 | 2026-07-02 | 7d | 1d | 0d | AUTOMAÇÃO E INSTRUMENTAÇÃO |
| 493 | 1.1.11.21.2 | Análise Tecnored | 1d | 2026-07-03 | 2026-07-03 | 492 | 2026-07-03 | 2026-07-03 | 1d | 1d | 0d | AUTOMAÇÃO E INSTRUMENTAÇÃO |
| 494 | 1.1.11.21.3 | Atendimento de comentários | 2d | 2026-07-06 | 2026-07-07 | 493 | 2026-07-06 | 2026-07-07 | 2d | 1d | 0d | AUTOMAÇÃO E INSTRUMENTAÇÃO |
| 495 | 1.1.11.21.4 | Aprovação | 1d | 2026-07-08 | 2026-07-08 | 494 | 2026-07-08 | 2026-07-08 | 1d | 1d |  | AUTOMAÇÃO E INSTRUMENTAÇÃO |
| 496 | 1.1.11.22 | **FD-F0009-0306-MB-J-00004** | 11d | 2026-06-24 | 2026-07-08 |  | 2026-06-24 | 2026-07-08 | 11d | 1d |  | AUTOMAÇÃO E INSTRUMENTAÇÃO |
| 497 | 1.1.11.22.1 | Emissão inicial | 7d | 2026-06-24 | 2026-07-02 | 407 | 2026-06-24 | 2026-07-02 | 7d | 1d | 0d | AUTOMAÇÃO E INSTRUMENTAÇÃO |
| 498 | 1.1.11.22.2 | Análise Tecnored | 1d | 2026-07-03 | 2026-07-03 | 497 | 2026-07-03 | 2026-07-03 | 1d | 1d | 0d | AUTOMAÇÃO E INSTRUMENTAÇÃO |
| 499 | 1.1.11.22.3 | Atendimento de comentários | 2d | 2026-07-06 | 2026-07-07 | 498 | 2026-07-06 | 2026-07-07 | 2d | 1d | 0d | AUTOMAÇÃO E INSTRUMENTAÇÃO |
| 500 | 1.1.11.22.4 | Aprovação | 1d | 2026-07-08 | 2026-07-08 | 499 | 2026-07-08 | 2026-07-08 | 1d | 1d |  | AUTOMAÇÃO E INSTRUMENTAÇÃO |
| 501 | 1.1.11.23 | **FD-F0009-0306-MB-J-00005** | 11d | 2026-06-24 | 2026-07-08 |  | 2026-06-24 | 2026-07-08 | 11d | 1d |  | AUTOMAÇÃO E INSTRUMENTAÇÃO |
| 502 | 1.1.11.23.1 | Emissão inicial | 7d | 2026-06-24 | 2026-07-02 | 407 | 2026-06-24 | 2026-07-02 | 7d | 1d | 0d | AUTOMAÇÃO E INSTRUMENTAÇÃO |
| 503 | 1.1.11.23.2 | Análise Tecnored | 1d | 2026-07-03 | 2026-07-03 | 502 | 2026-07-03 | 2026-07-03 | 1d | 1d | 0d | AUTOMAÇÃO E INSTRUMENTAÇÃO |
| 504 | 1.1.11.23.3 | Atendimento de comentários | 2d | 2026-07-06 | 2026-07-07 | 503 | 2026-07-06 | 2026-07-07 | 2d | 1d | 0d | AUTOMAÇÃO E INSTRUMENTAÇÃO |
| 505 | 1.1.11.23.4 | Aprovação | 1d | 2026-07-08 | 2026-07-08 | 504 | 2026-07-08 | 2026-07-08 | 1d | 1d |  | AUTOMAÇÃO E INSTRUMENTAÇÃO |
| 506 | 1.1.11.24 | **FD-F0009-0306-MB-J-00006** | 11d | 2026-06-24 | 2026-07-08 |  | 2026-06-24 | 2026-07-08 | 11d | 1d |  | AUTOMAÇÃO E INSTRUMENTAÇÃO |
| 507 | 1.1.11.24.1 | Emissão inicial | 7d | 2026-06-24 | 2026-07-02 | 407 | 2026-06-24 | 2026-07-02 | 7d | 1d | 0d | AUTOMAÇÃO E INSTRUMENTAÇÃO |
| 508 | 1.1.11.24.2 | Análise Tecnored | 1d | 2026-07-03 | 2026-07-03 | 507 | 2026-07-03 | 2026-07-03 | 1d | 1d | 0d | AUTOMAÇÃO E INSTRUMENTAÇÃO |
| 509 | 1.1.11.24.3 | Atendimento de comentários | 2d | 2026-07-06 | 2026-07-07 | 508 | 2026-07-06 | 2026-07-07 | 2d | 1d | 0d | AUTOMAÇÃO E INSTRUMENTAÇÃO |
| 510 | 1.1.11.24.4 | Aprovação | 1d | 2026-07-08 | 2026-07-08 | 509 | 2026-07-08 | 2026-07-08 | 1d | 1d |  | AUTOMAÇÃO E INSTRUMENTAÇÃO |

| ID | WBS | Task | Duration | Start | Finish | Predecessors | Baseline start | Baseline finish | Baseline duration | Total slack | Free slack | DISCIPLINA |
| --- | --- | --- | --- | --- | --- | --- | --- | --- | --- | --- | --- | --- |
| 511 | 1.1.11.25 | **FD-F0009-0306-MB-J-00007** | 11d | 2026-06-24 | 2026-07-08 |  | 2026-06-24 | 2026-07-08 | 11d | 1d |  | AUTOMAÇÃO E INSTRUMENTAÇÃO |
| 512 | 1.1.11.25.1 | Emissão inicial | 7d | 2026-06-24 | 2026-07-02 | 407 | 2026-06-24 | 2026-07-02 | 7d | 1d | 0d | AUTOMAÇÃO E INSTRUMENTAÇÃO |
| 513 | 1.1.11.25.2 | Análise Tecnored | 1d | 2026-07-03 | 2026-07-03 | 512 | 2026-07-03 | 2026-07-03 | 1d | 1d | 0d | AUTOMAÇÃO E INSTRUMENTAÇÃO |
| 514 | 1.1.11.25.3 | Atendimento de comentários | 2d | 2026-07-06 | 2026-07-07 | 513 | 2026-07-06 | 2026-07-07 | 2d | 1d | 0d | AUTOMAÇÃO E INSTRUMENTAÇÃO |
| 515 | 1.1.11.25.4 | Aprovação | 1d | 2026-07-08 | 2026-07-08 | 514 | 2026-07-08 | 2026-07-08 | 1d | 1d |  | AUTOMAÇÃO E INSTRUMENTAÇÃO |
| 516 | 1.1.11.26 | **FD-F0009-0306-MB-J-00008** | 11d | 2026-06-24 | 2026-07-08 |  | 2026-06-24 | 2026-07-08 | 11d | 1d |  | AUTOMAÇÃO E INSTRUMENTAÇÃO |
| 517 | 1.1.11.26.1 | Emissão inicial | 7d | 2026-06-24 | 2026-07-02 | 407 | 2026-06-24 | 2026-07-02 | 7d | 1d | 0d | AUTOMAÇÃO E INSTRUMENTAÇÃO |
| 518 | 1.1.11.26.2 | Análise Tecnored | 1d | 2026-07-03 | 2026-07-03 | 517 | 2026-07-03 | 2026-07-03 | 1d | 1d | 0d | AUTOMAÇÃO E INSTRUMENTAÇÃO |
| 519 | 1.1.11.26.3 | Atendimento de comentários | 2d | 2026-07-06 | 2026-07-07 | 518 | 2026-07-06 | 2026-07-07 | 2d | 1d | 0d | AUTOMAÇÃO E INSTRUMENTAÇÃO |
| 520 | 1.1.11.26.4 | Aprovação | 1d | 2026-07-08 | 2026-07-08 | 519 | 2026-07-08 | 2026-07-08 | 1d | 1d |  | AUTOMAÇÃO E INSTRUMENTAÇÃO |
| 521 | 1.1.11.27 | **FD-F0009-0306-MB-J-00009** | 11d | 2026-06-24 | 2026-07-08 |  | 2026-06-24 | 2026-07-08 | 11d | 1d |  | AUTOMAÇÃO E INSTRUMENTAÇÃO |
| 522 | 1.1.11.27.1 | Emissão inicial | 7d | 2026-06-24 | 2026-07-02 | 407 | 2026-06-24 | 2026-07-02 | 7d | 1d | 0d | AUTOMAÇÃO E INSTRUMENTAÇÃO |
| 523 | 1.1.11.27.2 | Análise Tecnored | 1d | 2026-07-03 | 2026-07-03 | 522 | 2026-07-03 | 2026-07-03 | 1d | 1d | 0d | AUTOMAÇÃO E INSTRUMENTAÇÃO |
| 524 | 1.1.11.27.3 | Atendimento de comentários | 2d | 2026-07-06 | 2026-07-07 | 523 | 2026-07-06 | 2026-07-07 | 2d | 1d | 0d | AUTOMAÇÃO E INSTRUMENTAÇÃO |
| 525 | 1.1.11.27.4 | Aprovação | 1d | 2026-07-08 | 2026-07-08 | 524 | 2026-07-08 | 2026-07-08 | 1d | 1d |  | AUTOMAÇÃO E INSTRUMENTAÇÃO |
| 526 | 1.1.11.28 | **FD-F0009-0306-MB-J-00010** | 11d | 2026-06-24 | 2026-07-08 |  | 2026-06-24 | 2026-07-08 | 11d | 1d |  | AUTOMAÇÃO E INSTRUMENTAÇÃO |
| 527 | 1.1.11.28.1 | Emissão inicial | 7d | 2026-06-24 | 2026-07-02 | 407 | 2026-06-24 | 2026-07-02 | 7d | 1d | 0d | AUTOMAÇÃO E INSTRUMENTAÇÃO |
| 528 | 1.1.11.28.2 | Análise Tecnored | 1d | 2026-07-03 | 2026-07-03 | 527 | 2026-07-03 | 2026-07-03 | 1d | 1d | 0d | AUTOMAÇÃO E INSTRUMENTAÇÃO |
| 529 | 1.1.11.28.3 | Atendimento de comentários | 2d | 2026-07-06 | 2026-07-07 | 528 | 2026-07-06 | 2026-07-07 | 2d | 1d | 0d | AUTOMAÇÃO E INSTRUMENTAÇÃO |
| 530 | 1.1.11.28.4 | Aprovação | 1d | 2026-07-08 | 2026-07-08 | 529 | 2026-07-08 | 2026-07-08 | 1d | 1d |  | AUTOMAÇÃO E INSTRUMENTAÇÃO |
| 531 | 1.1.11.29 | **FD-F0009-0306-MB-J-00011** | 11d | 2026-06-24 | 2026-07-08 |  | 2026-06-24 | 2026-07-08 | 11d | 1d |  | AUTOMAÇÃO E INSTRUMENTAÇÃO |
| 532 | 1.1.11.29.1 | Emissão inicial | 7d | 2026-06-24 | 2026-07-02 | 407 | 2026-06-24 | 2026-07-02 | 7d | 1d | 0d | AUTOMAÇÃO E INSTRUMENTAÇÃO |
| 533 | 1.1.11.29.2 | Análise Tecnored | 1d | 2026-07-03 | 2026-07-03 | 532 | 2026-07-03 | 2026-07-03 | 1d | 1d | 0d | AUTOMAÇÃO E INSTRUMENTAÇÃO |
| 534 | 1.1.11.29.3 | Atendimento de comentários | 2d | 2026-07-06 | 2026-07-07 | 533 | 2026-07-06 | 2026-07-07 | 2d | 1d | 0d | AUTOMAÇÃO E INSTRUMENTAÇÃO |
| 535 | 1.1.11.29.4 | Aprovação | 1d | 2026-07-08 | 2026-07-08 | 534 | 2026-07-08 | 2026-07-08 | 1d | 1d |  | AUTOMAÇÃO E INSTRUMENTAÇÃO |

| ID | WBS | Task | Duration | Start | Finish | Predecessors | Baseline start | Baseline finish | Baseline duration | Total slack | Free slack | DISCIPLINA |
| --- | --- | --- | --- | --- | --- | --- | --- | --- | --- | --- | --- | --- |
| 536 | 1.1.11.30 | **FD-F0009-0306-MB-J-00012** | 11d | 2026-06-24 | 2026-07-08 |  | 2026-06-24 | 2026-07-08 | 11d | 1d |  | AUTOMAÇÃO E INSTRUMENTAÇÃO |
| 537 | 1.1.11.30.1 | Emissão inicial | 7d | 2026-06-24 | 2026-07-02 | 407 | 2026-06-24 | 2026-07-02 | 7d | 1d | 0d | AUTOMAÇÃO E INSTRUMENTAÇÃO |
| 538 | 1.1.11.30.2 | Análise Tecnored | 1d | 2026-07-03 | 2026-07-03 | 537 | 2026-07-03 | 2026-07-03 | 1d | 1d | 0d | AUTOMAÇÃO E INSTRUMENTAÇÃO |
| 539 | 1.1.11.30.3 | Atendimento de comentários | 2d | 2026-07-06 | 2026-07-07 | 538 | 2026-07-06 | 2026-07-07 | 2d | 1d | 0d | AUTOMAÇÃO E INSTRUMENTAÇÃO |
| 540 | 1.1.11.30.4 | Aprovação | 1d | 2026-07-08 | 2026-07-08 | 539 | 2026-07-08 | 2026-07-08 | 1d | 1d |  | AUTOMAÇÃO E INSTRUMENTAÇÃO |
| 541 | 1.1.11.31 | **FD-F0009-0306-MB-J-00013** | 11d | 2026-06-24 | 2026-07-08 |  | 2026-06-24 | 2026-07-08 | 11d | 1d |  | AUTOMAÇÃO E INSTRUMENTAÇÃO |
| 542 | 1.1.11.31.1 | Emissão inicial | 7d | 2026-06-24 | 2026-07-02 | 407 | 2026-06-24 | 2026-07-02 | 7d | 1d | 0d | AUTOMAÇÃO E INSTRUMENTAÇÃO |
| 543 | 1.1.11.31.2 | Análise Tecnored | 1d | 2026-07-03 | 2026-07-03 | 542 | 2026-07-03 | 2026-07-03 | 1d | 1d | 0d | AUTOMAÇÃO E INSTRUMENTAÇÃO |
| 544 | 1.1.11.31.3 | Atendimento de comentários | 2d | 2026-07-06 | 2026-07-07 | 543 | 2026-07-06 | 2026-07-07 | 2d | 1d | 0d | AUTOMAÇÃO E INSTRUMENTAÇÃO |
| 545 | 1.1.11.31.4 | Aprovação | 1d | 2026-07-08 | 2026-07-08 | 544 | 2026-07-08 | 2026-07-08 | 1d | 1d |  | AUTOMAÇÃO E INSTRUMENTAÇÃO |
| 546 | 1.1.11.32 | **FD-F0009-0306-MB-J-00014** | 11d | 2026-06-24 | 2026-07-08 |  | 2026-06-24 | 2026-07-08 | 11d | 1d |  | AUTOMAÇÃO E INSTRUMENTAÇÃO |
| 547 | 1.1.11.32.1 | Emissão inicial | 7d | 2026-06-24 | 2026-07-02 | 407 | 2026-06-24 | 2026-07-02 | 7d | 1d | 0d | AUTOMAÇÃO E INSTRUMENTAÇÃO |
| 548 | 1.1.11.32.2 | Análise Tecnored | 1d | 2026-07-03 | 2026-07-03 | 547 | 2026-07-03 | 2026-07-03 | 1d | 1d | 0d | AUTOMAÇÃO E INSTRUMENTAÇÃO |
| 549 | 1.1.11.32.3 | Atendimento de comentários | 2d | 2026-07-06 | 2026-07-07 | 548 | 2026-07-06 | 2026-07-07 | 2d | 1d | 0d | AUTOMAÇÃO E INSTRUMENTAÇÃO |
| 550 | 1.1.11.32.4 | Aprovação | 1d | 2026-07-08 | 2026-07-08 | 549 | 2026-07-08 | 2026-07-08 | 1d | 1d |  | AUTOMAÇÃO E INSTRUMENTAÇÃO |
| 551 | 1.1.11.33 | **FD-F0009-0306-MB-J-00015** | 11d | 2026-06-24 | 2026-07-08 |  | 2026-06-24 | 2026-07-08 | 11d | 1d |  | AUTOMAÇÃO E INSTRUMENTAÇÃO |
| 552 | 1.1.11.33.1 | Emissão inicial | 7d | 2026-06-24 | 2026-07-02 | 407 | 2026-06-24 | 2026-07-02 | 7d | 1d | 0d | AUTOMAÇÃO E INSTRUMENTAÇÃO |
| 553 | 1.1.11.33.2 | Análise Tecnored | 1d | 2026-07-03 | 2026-07-03 | 552 | 2026-07-03 | 2026-07-03 | 1d | 1d | 0d | AUTOMAÇÃO E INSTRUMENTAÇÃO |
| 554 | 1.1.11.33.3 | Atendimento de comentários | 2d | 2026-07-06 | 2026-07-07 | 553 | 2026-07-06 | 2026-07-07 | 2d | 1d | 0d | AUTOMAÇÃO E INSTRUMENTAÇÃO |
| 555 | 1.1.11.33.4 | Aprovação | 1d | 2026-07-08 | 2026-07-08 | 554 | 2026-07-08 | 2026-07-08 | 1d | 1d |  | AUTOMAÇÃO E INSTRUMENTAÇÃO |
| 556 | 1.1.11.34 | **FD-F0009-0306-MB-J-00016** | 11d | 2026-06-24 | 2026-07-08 |  | 2026-06-24 | 2026-07-08 | 11d | 1d |  | AUTOMAÇÃO E INSTRUMENTAÇÃO |
| 557 | 1.1.11.34.1 | Emissão inicial | 7d | 2026-06-24 | 2026-07-02 | 407 | 2026-06-24 | 2026-07-02 | 7d | 1d | 0d | AUTOMAÇÃO E INSTRUMENTAÇÃO |
| 558 | 1.1.11.34.2 | Análise Tecnored | 1d | 2026-07-03 | 2026-07-03 | 557 | 2026-07-03 | 2026-07-03 | 1d | 1d | 0d | AUTOMAÇÃO E INSTRUMENTAÇÃO |
| 559 | 1.1.11.34.3 | Atendimento de comentários | 2d | 2026-07-06 | 2026-07-07 | 558 | 2026-07-06 | 2026-07-07 | 2d | 1d | 0d | AUTOMAÇÃO E INSTRUMENTAÇÃO |
| 560 | 1.1.11.34.4 | Aprovação | 1d | 2026-07-08 | 2026-07-08 | 559 | 2026-07-08 | 2026-07-08 | 1d | 1d |  | AUTOMAÇÃO E INSTRUMENTAÇÃO |

| ID | WBS | Task | Duration | Start | Finish | Predecessors | Baseline start | Baseline finish | Baseline duration | Total slack | Free slack | DISCIPLINA |
| --- | --- | --- | --- | --- | --- | --- | --- | --- | --- | --- | --- | --- |
| 561 | 1.1.11.35 | **DT-F0009-0306-MB-J-00001** | 7d | 2026-06-30 | 2026-07-08 |  | 2026-06-30 | 2026-07-08 | 7d | 1d |  | AUTOMAÇÃO E INSTRUMENTAÇÃO |
| 562 | 1.1.11.35.1 | Emissão inicial | 3d | 2026-06-30 | 2026-07-02 | 467 | 2026-06-30 | 2026-07-02 | 3d | 1d | 0d | AUTOMAÇÃO E INSTRUMENTAÇÃO |
| 563 | 1.1.11.35.2 | Análise Tecnored | 1d | 2026-07-03 | 2026-07-03 | 562 | 2026-07-03 | 2026-07-03 | 1d | 1d | 0d | AUTOMAÇÃO E INSTRUMENTAÇÃO |
| 564 | 1.1.11.35.3 | Atendimento de comentários | 2d | 2026-07-06 | 2026-07-07 | 563 | 2026-07-06 | 2026-07-07 | 2d | 1d | 0d | AUTOMAÇÃO E INSTRUMENTAÇÃO |
| 565 | 1.1.11.35.4 | Aprovação | 1d | 2026-07-08 | 2026-07-08 | 564 | 2026-07-08 | 2026-07-08 | 1d | 1d |  | AUTOMAÇÃO E INSTRUMENTAÇÃO |
| 566 | 1.1.12 | **Civil** | 13d | 2026-06-18 | 2026-07-06 |  | 2026-06-16 | 2026-07-02 | 13d | 3d |  | CIVIL |
| 567 | 1.1.12.1 | **MC-F0009-0306-MB-C-00001** | 12d | 2026-06-18 | 2026-07-03 |  | 2026-06-16 | 2026-07-01 | 12d | 3d |  | CIVIL |
| 568 | 1.1.12.1.1 | Emissão inicial | 8d | 2026-06-18 | 2026-06-29 | 245 | 2026-06-16 | 2026-06-25 | 8d | 3d | 0d | CIVIL |
| 569 | 1.1.12.1.2 | Análise Tecnored | 1d | 2026-06-30 | 2026-06-30 | 568 | 2026-06-26 | 2026-06-26 | 1d | 4d | 0d | CIVIL |
| 570 | 1.1.12.1.3 | Atendimento de comentários | 2d | 2026-07-01 | 2026-07-02 | 569 | 2026-06-29 | 2026-06-30 | 2d | 4d | 0d | CIVIL |
| 571 | 1.1.12.1.4 | Aprovação | 1d | 2026-07-03 | 2026-07-03 | 570 | 2026-07-01 | 2026-07-01 | 1d | 4d |  | CIVIL |
| 572 | 1.1.12.2 | **PQ-F0009-0306-MB-C-00001** | 5d | 2026-06-30 | 2026-07-06 |  | 2026-06-26 | 2026-07-02 | 5d | 3d |  | CIVIL |
| 573 | 1.1.12.2.1 | Emissão inicial | 1d | 2026-06-30 | 2026-06-30 | 568 | 2026-06-26 | 2026-06-26 | 1d | 3d | 0d | CIVIL |
| 574 | 1.1.12.2.2 | Análise Tecnored | 1d | 2026-07-01 | 2026-07-01 | 573 | 2026-06-29 | 2026-06-29 | 1d | 3d | 0d | CIVIL |
| 575 | 1.1.12.2.3 | Atendimento de comentários | 2d | 2026-07-02 | 2026-07-03 | 574 | 2026-06-30 | 2026-07-01 | 2d | 3d | 0d | CIVIL |
| 576 | 1.1.12.2.4 | Aprovação | 1d | 2026-07-06 | 2026-07-06 | 575 | 2026-07-02 | 2026-07-02 | 1d | 3d |  | CIVIL |
