# CR-F0009-0305-MB-F-00001

Schedule from MS Project, 2026-04-27 to 2026-07-21, status date 2026-06-09, A marks actual dates.

## Calendars

- Padrão: Mon-Fri 09:00-12:00, 13:00-18:00; Sat-Sun off. Exceptions (off unless hours are given): 2026-06-04 to 2026-06-05 (FERIADO).

## Schedule

| ID | WBS | Task | Type | Duration | Start | Finish | Predecessors | Complete | Remaining | Baseline start | Baseline finish | Baseline duration | Total slack | Free slack | Constraint | DISCIPLINA | Início_LB_R0 | Término _LB_R0 | Text5 | ILB_2 | TLB_2 |
| --- | --- | --- | --- | --- | --- | --- | --- | --- | --- | --- | --- | --- | --- | --- | --- | --- | --- | --- | --- | --- | --- |
| 1 | 1 | **F0009 - Programa Marabá** |  | 51d | 2026-04-27 A | 2026-07-08 |  | 8% | 47.14d | 2026-04-27 | 2026-07-08 | 53d |  |  |  | GERAL | Seg 27/04/26 | Ter 07/07/26 | F0009 - Programa Marabá | Seg 27/04/26 | Ter 07/07/26 |
| 2 | 1.1 | **Área 0306 - Sopradores** |  | 51d | 2026-04-27 A | 2026-07-08 |  | 8% | 47.14d | 2026-04-27 | 2026-07-08 | 53d |  |  |  | GERAL | Seg 27/04/26 | Ter 07/07/26 | Área 0306 - Sopradores | Seg 27/04/26 | Ter 07/07/26 |
| 3 | 1.1.1 | KOM - Início de projeto |  | 1d | 2026-04-27 A | 2026-04-27 A |  | 100% |  | 2026-04-27 | 2026-04-27 | 0d |  |  |  | GERAL | Seg 27/04/26 | Seg 27/04/26 | KOM - Início de projeto | Seg 27/04/26 | Seg 27/04/26 |
| 4 | 1.1.2 | **Marcos** |  | 14d | 2026-05-19 A | 2026-06-09 |  | 50% | 7d | 2026-05-19 | 2026-06-05 | 13d |  |  |  | MARCOS | Ter 19/05/26 | Sex 05/06/26 | Marcos | Ter 19/05/26 | Sex 05/06/26 |
| 5 | 1.1.2.1 | Critério de Projeto de Processo | manual | 1d | 2026-06-05 | 2026-06-05 |  |  |  | 2026-06-05 | 2026-06-05 | 0d |  |  |  | MARCOS | Sex 05/06/26 | Sex 05/06/26 | Critério de Projeto de Processo | Sex 05/06/26 | Sex 05/06/26 |
| 6 | 1.1.2.2 | Critério de Projeto de Mecânica | manual | 1d | 2026-05-19 A | 2026-05-19 A |  | 100% |  | 2026-05-19 | 2026-05-19 | 0d |  |  |  | MARCOS | Ter 19/05/26 | Ter 19/05/26 | Critério de Projeto de Mecânica | Ter 19/05/26 | Ter 19/05/26 |
| 7 | 1.1.2.3 | Critério de Projeto de Elétrica | manual | 1d | 2026-06-05 | 2026-06-05 |  |  |  | 2026-06-05 | 2026-06-05 | 0d |  |  |  | MARCOS | Sex 05/06/26 | Sex 05/06/26 | Critério de Projeto de Elétrica | Sex 05/06/26 | Sex 05/06/26 |
| 8 | 1.1.2.4 | Critério de Projeto de Automação | manual | 1d | 2026-06-09 A | 2026-06-09 A |  | 100% |  | 2026-06-05 | 2026-06-05 | 0d |  |  |  | MARCOS | Sex 05/06/26 | Sex 05/06/26 | Critério de Projeto de automação | Sex 05/06/26 | Sex 05/06/26 |
| 9 | 1.1.2.5 | Critério de Projeto de Tubulação | manual | 1d | 2026-05-22 A | 2026-05-22 A |  | 100% |  | 2026-05-22 | 2026-05-22 | 0d |  |  |  | MARCOS | Sex 22/05/26 | Sex 22/05/26 | Critério de Projeto de Tubulação | Sex 22/05/26 | Sex 22/05/26 |
| 10 | 1.1.2.6 | Critério de Projeto de Estrutura metálica | manual | 1d | 2026-06-05 | 2026-06-05 |  |  |  | 2026-06-05 | 2026-06-05 | 0d |  |  |  | MARCOS | Sex 05/06/26 | Sex 05/06/26 | Critério de Projeto de Estrutura metálica | Sex 05/06/26 | Sex 05/06/26 |
| 11 | 1.1.3 | **Pendências** |  | 1d | 2026-04-29 A | 2026-04-29 A |  | 100% |  | 2026-04-29 | 2026-04-29 | 0d |  |  |  | PENDÊNCIAS | Qua 29/04/26 | Qua 29/04/26 | Pendências | Qua 29/04/26 | Qua 29/04/26 |
| 12 | 1.1.3.1 | Recebimento de dados de entrada |  | 1d | 2026-04-29 A | 2026-04-29 A |  | 100% |  | 2026-04-29 | 2026-04-29 | 0d |  |  | finish no earlier than 2026-04-29 | PENDÊNCIAS | Qua 29/04/26 | Qua 29/04/26 | Recebimento de dados de entrada | Qua 29/04/26 | Qua 29/04/26 |
| 13 | 1.1.4 | **Planejamento** |  | 26d | 2026-04-27 A | 2026-06-01 |  | 77% | 6.05d | 2026-04-27 | 2026-06-01 | 25.4d |  |  |  | PLANEJAMENTO | Seg 27/04/26 | Seg 18/05/26 | Planejamento | Seg 27/04/26 | Seg 18/05/26 |
| 14 | 1.1.4.1 | **LD-F0009-0306-MB-F-00001** |  | 26d | 2026-04-27 A | 2026-06-01 |  | 77% | 6.05d | 2026-04-27 | 2026-06-01 | 25.4d |  |  |  | PLANEJAMENTO | Seg 27/04/26 | Qua 13/05/26 | LD-F0009-0306-MB-F-00001 | Seg 27/04/26 | Qua 13/05/26 |
| 15 | 1.1.4.1.1 | Emissão inicial |  | 3d | 2026-04-27 A | 2026-04-29 A | 3 | 100% |  | 2026-04-27 | 2026-04-29 | 3d |  |  |  | PLANEJAMENTO | Seg 27/04/26 | 07/07/2026 | Emissão inicial | Seg 27/04/26 | 07/07/2026 |
| 16 | 1.1.4.1.2 | Análise Tecnored |  | 1d | 2026-04-30 A | 2026-04-30 A | 15 | 100% |  | 2026-04-30 | 2026-04-30 | 1d |  |  |  | PLANEJAMENTO | Qui 30/04/26 | Qui 30/04/26 | Análise Tecnored | Qui 30/04/26 | Qui 30/04/26 |
| 17 | 1.1.4.1.3 | Atendimento de comentários |  | 2.6d | 2026-05-01 A | 2026-05-12 A | 16FS+7d | 100% |  | 2026-05-01 | 2026-05-12 | 2d |  |  | finish no earlier than 2026-05-12 | PLANEJAMENTO | Sex 01/05/26 | Ter 12/05/26 | Atendimento de comentários | Sex 01/05/26 | Ter 12/05/26 |
| 18 | 1.1.4.1.4 | Aprovação |  | 2d | 2026-06-01 | 2026-06-02 | 17FS+13d |  |  | 2026-05-29 | 2026-06-01 | 1d | 33d |  | finish no earlier than 2026-06-01 | PLANEJAMENTO | Ter 12/05/26 | Qua 13/05/26 | Aprovação | Ter 12/05/26 | Qua 13/05/26 |
| 19 | 1.1.4.2 | **CR-F0009-0306-MB-F-00001** |  | 22d | 2026-04-30 A | 2026-05-29 |  | 77% | 5.12d | 2026-04-30 | 2026-05-29 | 21.4d |  |  |  | PLANEJAMENTO | Qui 30/04/26 | Seg 18/05/26 | CR-F0009-0306-MB-F-00001 | Qui 30/04/26 | Seg 18/05/26 |
| 20 | 1.1.4.2.1 | Emissão inicial |  | 3d | 2026-04-30 A | 2026-05-04 A | 15 | 100% |  | 2026-04-30 | 2026-05-04 | 3d |  |  |  | PLANEJAMENTO | Qui 30/04/26 | Seg 04/05/26 | Emissão inicial | Qui 30/04/26 | Seg 04/05/26 |
| 21 | 1.1.4.2.2 | Análise Tecnored |  | 1d | 2026-05-05 A | 2026-05-05 A | 20 | 100% |  | 2026-05-05 | 2026-05-05 | 1d |  |  |  | PLANEJAMENTO | Ter 05/05/26 | Ter 05/05/26 | Análise Tecnored | Ter 05/05/26 | Ter 05/05/26 |
| 22 | 1.1.4.2.3 | Atendimento de comentários |  | 2.6d | 2026-05-06 A | 2026-05-15 A | 21FS+7d | 100% |  | 2026-05-06 | 2026-05-15 | 2d |  |  | finish no earlier than 2026-05-15 | PLANEJAMENTO | Qua 06/05/26 | Sex 15/05/26 | Atendimento de comentários | Qua 06/05/26 | Sex 15/05/26 |
| 23 | 1.1.4.2.4 | Aprovação |  | 2d | 2026-05-29 | 2026-06-01 | 22FS+9d |  |  | 2026-05-28 | 2026-05-29 | 1d | 34d |  | finish no earlier than 2026-05-29 | PLANEJAMENTO | Sex 15/05/26 | Seg 18/05/26 | Aprovação | Sex 15/05/26 | Seg 18/05/26 |
| 24 | 1.1.5 | **Coordenação** |  | 51d | 2026-04-27 A | 2026-07-08 |  | 14% | 44.05d | 2026-04-27 | 2026-07-07 | 52d |  |  |  | COORDENAÇÃO | Seg 27/04/26 | Qua 01/07/26 | Coordenação | Seg 27/04/26 | Qua 01/07/26 |
| 25 | 1.1.5.1 | **RM-F0009-0306-MB-G-00001** |  | 6d | 2026-06-03 | 2026-06-12 |  |  |  | 2026-06-01 | 2026-06-09 | 7d |  |  |  | COORDENAÇÃO | Seg 25/05/26 | Ter 02/06/26 | RM-F0009-0306-MB-G-00001 | Seg 25/05/26 | Ter 02/06/26 |
| 26 | 1.1.5.1.1 | Emissão inicial |  | 3d | 2026-06-03 | 2026-06-09 | 3FS+25d |  |  | 2026-06-01 | 2026-06-03 | 3d | 9d | 0d | start no earlier than 2026-06-03 | COORDENAÇÃO | Seg 25/05/26 | Qua 27/05/26 | Emissão inicial | Seg 25/05/26 | Qua 27/05/26 |
| 27 | 1.1.5.1.2 | Análise Tecnored |  | 1d | 2026-06-10 | 2026-06-10 | 26 |  |  | 2026-06-04 | 2026-06-04 | 1d | 27d | 0d | start no earlier than 2026-06-10 | COORDENAÇÃO | Qui 28/05/26 | Qui 28/05/26 | Análise Tecnored | Qui 28/05/26 | Qui 28/05/26 |
| 28 | 1.1.5.1.3 | Atendimento de comentários |  | 1d | 2026-06-11 | 2026-06-11 | 27 |  |  | 2026-06-05 | 2026-06-08 | 2d | 27d | 0d | finish no earlier than 2026-06-11 | COORDENAÇÃO | Sex 29/05/26 | Seg 01/06/26 | Atendimento de comentários | Sex 29/05/26 | Seg 01/06/26 |
| 29 | 1.1.5.1.4 | Aprovação |  | 1d | 2026-06-12 | 2026-06-12 | 28 |  |  | 2026-06-09 | 2026-06-09 | 1d | 27d |  | start no earlier than 2026-06-12 | COORDENAÇÃO | Ter 02/06/26 | Ter 02/06/26 | Aprovação | Ter 02/06/26 | Ter 02/06/26 |

| ID | WBS | Task | Type | Duration | Start | Finish | Predecessors | Complete | Remaining | Baseline start | Baseline finish | Baseline duration | Total slack | Free slack | Constraint | Baseline cost | DISCIPLINA | Início_LB_R0 | Término _LB_R0 | Text5 | ILB_2 | TLB_2 |
| --- | --- | --- | --- | --- | --- | --- | --- | --- | --- | --- | --- | --- | --- | --- | --- | --- | --- | --- | --- | --- | --- | --- |
| 30 | 1.1.5.2 | **RM-F0009-0306-MB-G-00002** |  | 5d | 2026-06-24 | 2026-06-30 |  |  |  | 2026-06-18 | 2026-06-26 | 7d |  |  |  |  | COORDENAÇÃO | Qui 11/06/26 | Sex 19/06/26 | RM-F0009-0306-MB-G-00002 | Qui 11/06/26 | Sex 19/06/26 |
| 31 | 1.1.5.2.1 | Emissão inicial |  | 2d | 2026-06-24 | 2026-06-25 | 26FS+10d |  |  | 2026-06-18 | 2026-06-22 | 3d | 9d | 0d | finish no earlier than 2026-06-25 |  | COORDENAÇÃO | Qui 11/06/26 | Seg 15/06/26 | Emissão inicial | Qui 11/06/26 | Seg 15/06/26 |
| 32 | 1.1.5.2.2 | Análise Tecnored |  | 1d | 2026-06-26 | 2026-06-26 | 31 |  |  | 2026-06-23 | 2026-06-23 | 1d | 15d | 0d | start no earlier than 2026-06-26 |  | COORDENAÇÃO | Ter 16/06/26 | Ter 16/06/26 | Análise Tecnored | Ter 16/06/26 | Ter 16/06/26 |
| 33 | 1.1.5.2.3 | Atendimento de comentários |  | 1d | 2026-06-29 | 2026-06-29 | 32 |  |  | 2026-06-24 | 2026-06-25 | 2d | 15d | 0d | finish no earlier than 2026-06-29 |  | COORDENAÇÃO | Qua 17/06/26 | Qui 18/06/26 | Atendimento de comentários | Qua 17/06/26 | Qui 18/06/26 |
| 34 | 1.1.5.2.4 | Aprovação |  | 1d | 2026-06-30 | 2026-06-30 | 33 |  |  | 2026-06-26 | 2026-06-26 | 1d | 15d |  |  |  | COORDENAÇÃO | Sex 19/06/26 | Sex 19/06/26 | Aprovação | Sex 19/06/26 | Sex 19/06/26 |
| 35 | 1.1.5.3 | **RL-F0009-0306-MB-G-00001** |  | 4d | 2026-07-03 | 2026-07-08 |  |  |  | 2026-06-30 | 2026-07-07 | 6d |  |  |  |  | COORDENAÇÃO | Ter 23/06/26 | Qua 01/07/26 | RL-F0009-0306-MB-G-00001 | Ter 23/06/26 | Qua 01/07/26 |
| 36 | 1.1.5.3.1 | Emissão inicial |  | 1d | 2026-07-03 | 2026-07-03 | 31FS+5d |  |  | 2026-06-30 | 2026-07-01 | 2d | 9d | 0d | finish no earlier than 2026-07-03 |  | COORDENAÇÃO | Ter 23/06/26 | Qui 25/06/26 | Emissão inicial | Ter 23/06/26 | Qui 25/06/26 |
| 37 | 1.1.5.3.2 | Análise Tecnored |  | 1d | 2026-07-06 | 2026-07-06 | 36 |  |  | 2026-07-02 | 2026-07-02 | 1d | 9d | 0d |  |  | COORDENAÇÃO | Sex 26/06/26 | Sex 26/06/26 | Análise Tecnored | Sex 26/06/26 | Sex 26/06/26 |
| 38 | 1.1.5.3.3 | Atendimento de comentários |  | 1d | 2026-07-07 | 2026-07-07 | 37 |  |  | 2026-07-03 | 2026-07-06 | 2d | 9d | 0d | finish no earlier than 2026-07-07 |  | COORDENAÇÃO | Seg 29/06/26 | Ter 30/06/26 | Atendimento de comentários | Seg 29/06/26 | Ter 30/06/26 |
| 39 | 1.1.5.3.4 | Aprovação |  | 1d | 2026-07-08 | 2026-07-08 | 38 |  |  | 2026-07-07 | 2026-07-07 | 1d | 9d |  | start no earlier than 2026-07-08 |  | COORDENAÇÃO | Qua 01/07/26 | Qua 01/07/26 | Aprovação | Qua 01/07/26 | Qua 01/07/26 |
| 40 | 1.1.5.4 | **LP-F0009-0306-MB-G-00001** |  | 47d | 2026-04-27 A | 2026-07-02 |  | 43% | 26.86d | 2026-04-27 | 2026-06-30 | 47d |  |  |  |  | COORDENAÇÃO | Seg 27/04/26 | Ter 30/06/26 | LP-F0009-0306-MB-G-00001 | Seg 27/04/26 | Ter 30/06/26 |
| 41 | 1.1.5.4.1 | Emissão inicial |  | 3d | 2026-04-27 A | 2026-04-29 A | 3 | 100% |  | 2026-04-27 | 2026-04-29 | 3d |  |  |  |  | COORDENAÇÃO | Seg 27/04/26 | Qua 29/04/26 | Emissão inicial | Seg 27/04/26 | Qua 29/04/26 |
| 42 | 1.1.5.4.2 | Análise Tecnored |  | 1d | 2026-06-15 | 2026-06-15 | 41FS+30d |  |  | 2026-06-11 | 2026-06-11 | 1d | 13d | 0d |  |  | COORDENAÇÃO | Qui 11/06/26 | Qui 11/06/26 | Análise Tecnored | Qui 11/06/26 | Qui 11/06/26 |
| 43 | 1.1.5.4.3 | Atendimento de comentários |  | 2d | 2026-06-30 | 2026-07-01 | 42FS+10d |  |  | 2026-06-26 | 2026-06-29 | 2d | 13d | 0d |  |  | COORDENAÇÃO | Sex 26/06/26 | Seg 29/06/26 | Atendimento de comentários | Sex 26/06/26 | Seg 29/06/26 |
| 44 | 1.1.5.4.4 | Aprovação |  | 1d | 2026-07-02 | 2026-07-02 | 43 |  |  | 2026-06-30 | 2026-06-30 | 1d | 13d |  |  |  | COORDENAÇÃO | Ter 30/06/26 | Ter 30/06/26 | Aprovação | Ter 30/06/26 | Ter 30/06/26 |
| 45 | 1.1.6 | **Processo** |  | 5d | 2026-06-05 A | 2026-06-11 |  | 80% | 1d | 2026-06-05 | 2026-06-11 | 5d |  |  |  |  | PROCESSOS | Ter 05/05/26 | Seg 22/06/26 | Processo | Ter 05/05/26 | Seg 22/06/26 |
| 46 | 1.1.6.1 | **CP-F0009-0306-MB-P-00001** | inactive | 11d | 2026-06-08 | 2026-06-22 |  |  |  |  |  |  | 21d |  |  | -0 |  |  |  |  |  |  |
| 47 | 1.1.6.1.1 | Emissão inicial | inactive | 7d | 2026-06-08 | 2026-06-16 | 20 |  |  |  |  |  | 21d | 0d |  | -0 |  |  |  |  |  |  |
| 48 | 1.1.6.1.2 | Análise Tecnored | inactive | 1d | 2026-06-17 | 2026-06-17 | 47, 5 |  |  |  |  |  | 21d | 0d |  | -0 |  |  |  |  |  |  |
| 49 | 1.1.6.1.3 | Atendimento de comentários | inactive | 2d | 2026-06-18 | 2026-06-19 | 48 |  |  |  |  |  | 21d | 0d |  | -0 |  |  |  |  |  |  |
| 50 | 1.1.6.1.4 | Aprovação | inactive | 1d | 2026-06-22 | 2026-06-22 | 49 |  |  |  |  |  | 21d |  |  | -0 |  |  |  |  |  |  |
| 51 | 1.1.6.2 | **MD-F0009-0306-MB-P-00001** | inactive | 7d | 2026-06-22 | 2026-06-30 |  |  |  |  |  |  | 15d |  |  | -0 |  |  |  |  |  |  |
| 52 | 1.1.6.2.1 | Emissão inicial | inactive | 3d | 2026-06-22 | 2026-06-24 | 57FS+10d |  |  |  |  |  | 15d | 0d |  | -0 |  |  |  |  |  |  |
| 53 | 1.1.6.2.2 | Análise Tecnored | inactive | 1d | 2026-06-25 | 2026-06-25 | 52 |  |  |  |  |  | 15d | 0d |  | -0 |  |  |  |  |  |  |
| 54 | 1.1.6.2.3 | Atendimento de comentários | inactive | 2d | 2026-06-26 | 2026-06-29 | 53 |  |  |  |  |  | 15d | 0d |  | -0 |  |  |  |  |  |  |
| 55 | 1.1.6.2.4 | Aprovação | inactive | 1d | 2026-06-30 | 2026-06-30 | 54 |  |  |  |  |  | 15d |  |  | -0 |  |  |  |  |  |  |

| ID | WBS | Task | Type | Duration | Start | Finish | Predecessors | Complete | Remaining | Baseline start | Baseline finish | Baseline duration | Total slack | Free slack | Constraint | Baseline cost | DISCIPLINA | Início_LB_R0 | Término _LB_R0 | Text5 | ILB_2 | TLB_2 |
| --- | --- | --- | --- | --- | --- | --- | --- | --- | --- | --- | --- | --- | --- | --- | --- | --- | --- | --- | --- | --- | --- | --- |
| 56 | 1.1.6.3 | **FG-F0009-0306-MB-P-00001** |  | 5d | 2026-06-05 A | 2026-06-11 |  | 80% | 1d | 2026-06-05 | 2026-06-11 | 5d |  |  |  |  | PROCESSOS | Qui 14/05/26 | Qua 20/05/26 | FG-F0009-0306-MB-P-00001 | Qui 14/05/26 | Qua 20/05/26 |
| 57 | 1.1.6.3.1 | Emissão inicial |  | 1d | 2026-06-05 A | 2026-06-05 A | 47, 5 | 100% |  | 2026-06-05 | 2026-06-05 | 1d |  |  |  |  | PROCESSOS | Qui 14/05/26 | Qui 14/05/26 | Emissão inicial | Qui 14/05/26 | Qui 14/05/26 |
| 58 | 1.1.6.3.2 | Análise Tecnored |  | 1d | 2026-06-08 A | 2026-06-08 A | 57 | 100% |  | 2026-06-08 | 2026-06-08 | 1d |  |  |  |  | PROCESSOS | Sex 15/05/26 | Sex 15/05/26 | Análise Tecnored | Sex 15/05/26 | Sex 15/05/26 |
| 59 | 1.1.6.3.3 | Atendimento de comentários |  | 2d | 2026-06-09 A | 2026-06-10 A | 58 | 100% |  | 2026-06-09 | 2026-06-10 | 2d |  |  |  |  | PROCESSOS | Seg 18/05/26 | Ter 19/05/26 | Atendimento de comentários | Seg 18/05/26 | Ter 19/05/26 |
| 60 | 1.1.6.3.4 | Aprovação |  | 1d | 2026-06-11 | 2026-06-11 | 59 |  |  | 2026-06-11 | 2026-06-11 | 1d | 28d |  |  |  | PROCESSOS | Qua 20/05/26 | Qua 20/05/26 | Aprovação | Qua 20/05/26 | Qua 20/05/26 |
| 61 | 1.1.7 | **Mecânica** |  | 30d | 2026-05-26 A | 2026-07-08 |  | 10% | 27.03d | 2026-05-26 | 2026-06-30 | 26d |  |  |  |  | MECÂNICA | Ter 05/05/26 | Seg 22/06/26 | Mecânica | Ter 05/05/26 | Seg 22/06/26 |
| 62 | 1.1.7.1 | **CP-F0009-0306-MB-M-00001** | inactive | 11d | 2026-05-26 | 2026-06-11 |  |  |  |  |  |  | -8d | 0d |  | -0 |  |  |  |  |  |  |
| 63 | 1.1.7.1.1 | Emissão inicial | inactive | 7d | 2026-05-26 | 2026-06-03 | 20 |  |  |  |  |  | -8d | 0d |  | -0 |  |  |  |  |  |  |
| 64 | 1.1.7.1.2 | Análise Tecnored | inactive | 1d | 2026-06-08 | 2026-06-08 | 63, 6 |  |  |  |  |  | 28d | 0d |  | -0 |  |  |  |  |  |  |
| 65 | 1.1.7.1.3 | Atendimento de comentários | inactive | 2d | 2026-06-09 | 2026-06-10 | 64 |  |  |  |  |  | 28d | 0d |  | -0 |  |  |  |  |  |  |
| 66 | 1.1.7.1.4 | Aprovação | inactive | 1d | 2026-06-11 | 2026-06-11 | 65 |  |  |  |  |  | 28d |  |  | -0 |  |  |  |  |  |  |
| 67 | 1.1.7.2 | **MD-F0009-0306-MB-M-00001** | inactive | 7d | 2026-06-08 | 2026-06-16 |  |  |  |  |  |  | -8d | 0d |  | -0 |  |  |  |  |  |  |
| 68 | 1.1.7.2.1 | Emissão inicial | inactive | 3d | 2026-06-08 | 2026-06-10 | 63, 75, 6 |  |  |  |  |  | -8d | 0d |  | -0 |  |  |  |  |  |  |
| 69 | 1.1.7.2.2 | Análise Tecnored | inactive | 1d | 2026-06-11 | 2026-06-11 | 68 |  |  |  |  |  | 25d | 0d |  | -0 |  |  |  |  |  |  |
| 70 | 1.1.7.2.3 | Atendimento de comentários | inactive | 2d | 2026-06-12 | 2026-06-15 | 69 |  |  |  |  |  | 25d | 0d |  | -0 |  |  |  |  |  |  |
| 71 | 1.1.7.2.4 | Aprovação | inactive | 1d | 2026-06-16 | 2026-06-16 | 70 |  |  |  |  |  | 25d |  |  | -0 |  |  |  |  |  |  |
| 72 | 1.1.7.3 | **LE-F0009-0306-MB-M-00001** |  | 6d | 2026-05-26 A | 2026-06-02 |  | 33% | 4d | 2026-05-26 | 2026-06-02 | 6d |  |  |  |  | MECÂNICA | Qui 14/05/26 | Qui 21/05/26 | LE-F0009-0306-MB-M-00001 | Qui 14/05/26 | Qui 21/05/26 |
| 73 | 1.1.7.3.1 | Emissão inicial |  | 2d | 2026-05-26 A | 2026-05-27 A | 63, 6FS+5d | 100% |  | 2026-05-26 | 2026-05-27 | 2d |  |  |  |  | MECÂNICA | Qui 14/05/26 | Sex 15/05/26 | Emissão inicial | Qui 14/05/26 | Sex 15/05/26 |
| 74 | 1.1.7.3.2 | Análise Tecnored |  | 1d | 2026-05-28 | 2026-05-28 | 73 |  |  | 2026-05-28 | 2026-05-28 | 1d | -3d | 0d |  |  | MECÂNICA | Seg 18/05/26 | Seg 18/05/26 | Análise Tecnored | Seg 18/05/26 | Seg 18/05/26 |
| 75 | 1.1.7.3.3 | Atendimento de comentários |  | 2d | 2026-05-29 | 2026-06-01 | 74 |  |  | 2026-05-29 | 2026-06-01 | 2d | -3d | 0d |  |  | MECÂNICA | Ter 19/05/26 | Qua 20/05/26 | Atendimento de comentários | Ter 19/05/26 | Qua 20/05/26 |
| 76 | 1.1.7.3.4 | Aprovação |  | 1d | 2026-06-02 | 2026-06-02 | 75 |  |  | 2026-06-02 | 2026-06-02 | 1d | 33d |  |  |  | MECÂNICA | Qui 21/05/26 | Qui 21/05/26 | Aprovação | Qui 21/05/26 | Qui 21/05/26 |
| 77 | 1.1.7.4 | **PQ-F0009-0306-MB-M-00001** |  | 7d | 2026-06-19 | 2026-06-29 |  |  |  | 2026-06-02 | 2026-06-10 | 7d |  |  |  |  | MECÂNICA | Ter 26/05/26 | Qua 03/06/26 | PQ-F0009-0306-MB-M-00001 | Ter 26/05/26 | Qua 03/06/26 |
| 78 | 1.1.7.4.1 | Emissão inicial |  | 3d | 2026-06-19 | 2026-06-23 | 68FS+30d |  |  | 2026-06-02 | 2026-06-04 | 3d | 16d | 0d | start no earlier than 2026-06-19 |  | MECÂNICA | Ter 26/05/26 | Qui 28/05/26 | Emissão inicial | Ter 26/05/26 | Qui 28/05/26 |
| 79 | 1.1.7.4.2 | Análise Tecnored |  | 1d | 2026-06-24 | 2026-06-24 | 78 |  |  | 2026-06-05 | 2026-06-05 | 1d | 16d | 0d | start no earlier than 2026-06-24 |  | MECÂNICA | Sex 29/05/26 | Sex 29/05/26 | Análise Tecnored | Sex 29/05/26 | Sex 29/05/26 |
| 80 | 1.1.7.4.3 | Atendimento de comentários |  | 2d | 2026-06-25 | 2026-06-26 | 79 |  |  | 2026-06-08 | 2026-06-09 | 2d | 16d | 0d | start no earlier than 2026-06-25 |  | MECÂNICA | Seg 01/06/26 | Ter 02/06/26 | Atendimento de comentários | Seg 01/06/26 | Ter 02/06/26 |
| 81 | 1.1.7.4.4 | Aprovação |  | 1d | 2026-06-29 | 2026-06-29 | 80 |  |  | 2026-06-10 | 2026-06-10 | 1d | 16d |  | start no earlier than 2026-06-29 |  | MECÂNICA | Qua 03/06/26 | Qua 03/06/26 | Aprovação | Qua 03/06/26 | Qua 03/06/26 |

| ID | WBS | Task | Duration | Start | Finish | Predecessors | Baseline start | Baseline finish | Baseline duration | Total slack | Free slack | Constraint | DISCIPLINA | Início_LB_R0 | Término _LB_R0 | Text5 | ILB_2 | TLB_2 |
| --- | --- | --- | --- | --- | --- | --- | --- | --- | --- | --- | --- | --- | --- | --- | --- | --- | --- | --- |
| 82 | 1.1.7.5 | **AG-F0009-0306-MB-L-00001** | 8d | 2026-06-29 | 2026-07-08 |  | 2026-06-18 | 2026-06-30 | 9d |  |  |  | MECÂNICA | Qua 10/06/26 | Seg 22/06/26 | AG-F0009-0306-MB-L-00001 | Qua 10/06/26 | Seg 22/06/26 |
| 83 | 1.1.7.5.1 | Emissão inicial | 5d | 2026-06-29 | 2026-07-03 | 230 | 2026-06-18 | 2026-06-24 | 5d | 9d | 0d | start no earlier than 2026-06-29 | MECÂNICA | Qua 10/06/26 | Ter 16/06/26 | Emissão inicial | Qua 10/06/26 | Ter 16/06/26 |
| 84 | 1.1.7.5.2 | Análise Tecnored | 1d | 2026-07-06 | 2026-07-06 | 83 | 2026-06-25 | 2026-06-25 | 1d | 9d | 0d | start no earlier than 2026-07-06 | MECÂNICA | Qua 17/06/26 | Qua 17/06/26 | Análise Tecnored | Qua 17/06/26 | Qua 17/06/26 |
| 85 | 1.1.7.5.3 | Atendimento de comentários | 1d | 2026-07-07 | 2026-07-07 | 84 | 2026-06-26 | 2026-06-29 | 2d | 9d | 0d | finish no earlier than 2026-07-07 | MECÂNICA | Qui 18/06/26 | Sex 19/06/26 | Atendimento de comentários | Qui 18/06/26 | Sex 19/06/26 |
| 86 | 1.1.7.5.4 | Aprovação | 1d | 2026-07-08 | 2026-07-08 | 85 | 2026-06-30 | 2026-06-30 | 1d | 9d |  | start no earlier than 2026-07-08 | MECÂNICA | Seg 22/06/26 | Seg 22/06/26 | Aprovação | Seg 22/06/26 | Seg 22/06/26 |
| 87 | 1.1.7.6 | **AG-F0009-0306-MB-L-00002** | 8d | 2026-06-29 | 2026-07-08 |  | 2026-06-18 | 2026-06-30 | 9d |  |  |  | MECÂNICA | Qua 10/06/26 | Seg 22/06/26 | AG-F0009-0306-MB-L-00002 | Qua 10/06/26 | Seg 22/06/26 |
| 88 | 1.1.7.6.1 | Emissão inicial | 5d | 2026-06-29 | 2026-07-03 | 230 | 2026-06-18 | 2026-06-24 | 5d | 9d | 0d | start no earlier than 2026-06-29 | MECÂNICA | Qua 10/06/26 | Ter 16/06/26 | Emissão inicial | Qua 10/06/26 | Ter 16/06/26 |
| 89 | 1.1.7.6.2 | Análise Tecnored | 1d | 2026-07-06 | 2026-07-06 | 88 | 2026-06-25 | 2026-06-25 | 1d | 9d | 0d | start no earlier than 2026-07-06 | MECÂNICA | Qua 17/06/26 | Qua 17/06/26 | Análise Tecnored | Qua 17/06/26 | Qua 17/06/26 |
| 90 | 1.1.7.6.3 | Atendimento de comentários | 1d | 2026-07-07 | 2026-07-07 | 89 | 2026-06-26 | 2026-06-29 | 2d | 9d | 0d | finish no earlier than 2026-07-07 | MECÂNICA | Qui 18/06/26 | Sex 19/06/26 | Atendimento de comentários | Qui 18/06/26 | Sex 19/06/26 |
| 91 | 1.1.7.6.4 | Aprovação | 1d | 2026-07-08 | 2026-07-08 | 90 | 2026-06-30 | 2026-06-30 | 1d | 9d |  | start no earlier than 2026-07-08 | MECÂNICA | Seg 22/06/26 | Seg 22/06/26 | Aprovação | Seg 22/06/26 | Seg 22/06/26 |
| 92 | 1.1.7.7 | **AG-F0009-0306-MB-L-00003** | 8d | 2026-06-29 | 2026-07-08 |  | 2026-06-18 | 2026-06-30 | 9d |  |  |  | MECÂNICA | Qua 10/06/26 | Seg 22/06/26 | AG-F0009-0306-MB-L-00003 | Qua 10/06/26 | Seg 22/06/26 |
| 93 | 1.1.7.7.1 | Emissão inicial | 5d | 2026-06-29 | 2026-07-03 | 230 | 2026-06-18 | 2026-06-24 | 5d | 9d | 0d | start no earlier than 2026-06-29 | MECÂNICA | Qua 10/06/26 | Ter 16/06/26 | Emissão inicial | Qua 10/06/26 | Ter 16/06/26 |
| 94 | 1.1.7.7.2 | Análise Tecnored | 1d | 2026-07-06 | 2026-07-06 | 93 | 2026-06-25 | 2026-06-25 | 1d | 9d | 0d | start no earlier than 2026-07-06 | MECÂNICA | Qua 17/06/26 | Qua 17/06/26 | Análise Tecnored | Qua 17/06/26 | Qua 17/06/26 |
| 95 | 1.1.7.7.3 | Atendimento de comentários | 1d | 2026-07-07 | 2026-07-07 | 94 | 2026-06-26 | 2026-06-29 | 2d | 9d | 0d | finish no earlier than 2026-07-07 | MECÂNICA | Qui 18/06/26 | Sex 19/06/26 | Atendimento de comentários | Qui 18/06/26 | Sex 19/06/26 |
| 96 | 1.1.7.7.4 | Aprovação | 1d | 2026-07-08 | 2026-07-08 | 95 | 2026-06-30 | 2026-06-30 | 1d | 9d |  | start no earlier than 2026-07-08 | MECÂNICA | Seg 22/06/26 | Seg 22/06/26 | Aprovação | Seg 22/06/26 | Seg 22/06/26 |
| 97 | 1.1.7.8 | **AG-F0009-0306-MB-L-00004** | 8d | 2026-06-29 | 2026-07-08 |  | 2026-06-18 | 2026-06-30 | 9d |  |  |  | MECÂNICA | Qua 10/06/26 | Seg 22/06/26 | AG-F0009-0306-MB-L-00004 | Qua 10/06/26 | Seg 22/06/26 |
| 98 | 1.1.7.8.1 | Emissão inicial | 5d | 2026-06-29 | 2026-07-03 | 230 | 2026-06-18 | 2026-06-24 | 5d | 9d | 0d | start no earlier than 2026-06-29 | MECÂNICA | Qua 10/06/26 | Ter 16/06/26 | Emissão inicial | Qua 10/06/26 | Ter 16/06/26 |
| 99 | 1.1.7.8.2 | Análise Tecnored | 1d | 2026-07-06 | 2026-07-06 | 98 | 2026-06-25 | 2026-06-25 | 1d | 9d | 0d | start no earlier than 2026-07-06 | MECÂNICA | Qua 17/06/26 | Qua 17/06/26 | Análise Tecnored | Qua 17/06/26 | Qua 17/06/26 |
| 100 | 1.1.7.8.3 | Atendimento de comentários | 1d | 2026-07-07 | 2026-07-07 | 99 | 2026-06-26 | 2026-06-29 | 2d | 9d | 0d | finish no earlier than 2026-07-07 | MECÂNICA | Qui 18/06/26 | Sex 19/06/26 | Atendimento de comentários | Qui 18/06/26 | Sex 19/06/26 |
| 101 | 1.1.7.8.4 | Aprovação | 1d | 2026-07-08 | 2026-07-08 | 100 | 2026-06-30 | 2026-06-30 | 1d | 9d |  | start no earlier than 2026-07-08 | MECÂNICA | Seg 22/06/26 | Seg 22/06/26 | Aprovação | Seg 22/06/26 | Seg 22/06/26 |
| 102 | 1.1.7.9 | **PL-F0009-0306-MB-M-00001** | 12d | 2026-06-03 | 2026-06-22 |  | 2026-06-03 | 2026-06-18 | 12d |  |  |  | MECÂNICA | Qui 21/05/26 | Sex 05/06/26 | PL-F0009-0306-MB-M-00001 | Qui 21/05/26 | Sex 05/06/26 |
| 103 | 1.1.7.9.1 | Emissão inicial | 8d | 2026-06-03 | 2026-06-16 | 119 | 2026-06-03 | 2026-06-12 | 8d | 21d | 0d |  | MECÂNICA | Qui 21/05/26 | Seg 01/06/26 | Emissão inicial | Qui 21/05/26 | Seg 01/06/26 |
| 104 | 1.1.7.9.2 | Análise Tecnored | 1d | 2026-06-17 | 2026-06-17 | 103 | 2026-06-15 | 2026-06-15 | 1d | 21d | 0d |  | MECÂNICA | Ter 02/06/26 | Ter 02/06/26 | Análise Tecnored | Ter 02/06/26 | Ter 02/06/26 |
| 105 | 1.1.7.9.3 | Atendimento de comentários | 2d | 2026-06-18 | 2026-06-19 | 104 | 2026-06-16 | 2026-06-17 | 2d | 21d | 0d |  | MECÂNICA | Qua 03/06/26 | Qui 04/06/26 | Atendimento de comentários | Qua 03/06/26 | Qui 04/06/26 |
| 106 | 1.1.7.9.4 | Aprovação | 1d | 2026-06-22 | 2026-06-22 | 105 | 2026-06-18 | 2026-06-18 | 1d | 21d |  |  | MECÂNICA | Sex 05/06/26 | Sex 05/06/26 | Aprovação | Sex 05/06/26 | Sex 05/06/26 |

| ID | WBS | Task | Duration | Start | Finish | Predecessors | Complete | Remaining | Baseline start | Baseline finish | Baseline duration | Total slack | Free slack | Constraint | DISCIPLINA | Início_LB_R0 | Término _LB_R0 | Text5 | ILB_2 | TLB_2 |
| --- | --- | --- | --- | --- | --- | --- | --- | --- | --- | --- | --- | --- | --- | --- | --- | --- | --- | --- | --- | --- |
| 107 | 1.1.7.10 | **PL-F0009-0306-MB-M-00002** | 12d | 2026-06-03 | 2026-06-22 |  |  |  | 2026-06-03 | 2026-06-18 | 12d |  |  |  | MECÂNICA | Qui 21/05/26 | Sex 05/06/26 | PL-F0009-0306-MB-M-00002 | Qui 21/05/26 | Sex 05/06/26 |
| 108 | 1.1.7.10.1 | Emissão inicial | 8d | 2026-06-03 | 2026-06-16 | 119 |  |  | 2026-06-03 | 2026-06-12 | 8d | 21d | 0d |  | MECÂNICA | Qui 21/05/26 | Seg 01/06/26 | Emissão inicial | Qui 21/05/26 | Seg 01/06/26 |
| 109 | 1.1.7.10.2 | Análise Tecnored | 1d | 2026-06-17 | 2026-06-17 | 108 |  |  | 2026-06-15 | 2026-06-15 | 1d | 21d | 0d |  | MECÂNICA | Ter 02/06/26 | Ter 02/06/26 | Análise Tecnored | Ter 02/06/26 | Ter 02/06/26 |
| 110 | 1.1.7.10.3 | Atendimento de comentários | 2d | 2026-06-18 | 2026-06-19 | 109 |  |  | 2026-06-16 | 2026-06-17 | 2d | 21d | 0d |  | MECÂNICA | Qua 03/06/26 | Qui 04/06/26 | Atendimento de comentários | Qua 03/06/26 | Qui 04/06/26 |
| 111 | 1.1.7.10.4 | Aprovação | 1d | 2026-06-22 | 2026-06-22 | 110 |  |  | 2026-06-18 | 2026-06-18 | 1d | 21d |  |  | MECÂNICA | Sex 05/06/26 | Sex 05/06/26 | Aprovação | Sex 05/06/26 | Sex 05/06/26 |
| 112 | 1.1.7.11 | **MC-F0009-0306-MB-M-00001** | 9d | 2026-06-12 | 2026-06-24 |  |  |  | 2026-06-03 | 2026-06-15 | 9d |  |  |  | MECÂNICA | Qui 21/05/26 | Ter 02/06/26 | MC-F0009-0306-MB-M-00001 | Qui 21/05/26 | Ter 02/06/26 |
| 113 | 1.1.7.11.1 | Emissão inicial | 5d | 2026-06-12 | 2026-06-18 | 119 |  |  | 2026-06-03 | 2026-06-09 | 5d | 3d | 0d | start no earlier than 2026-06-12 | MECÂNICA | Qui 21/05/26 | Qua 27/05/26 | Emissão inicial | Qui 21/05/26 | Qua 27/05/26 |
| 114 | 1.1.7.11.2 | Análise Tecnored | 1d | 2026-06-19 | 2026-06-19 | 113 |  |  | 2026-06-10 | 2026-06-10 | 1d | 3d | 0d | start no earlier than 2026-06-19 | MECÂNICA | Qui 28/05/26 | Qui 28/05/26 | Análise Tecnored | Qui 28/05/26 | Qui 28/05/26 |
| 115 | 1.1.7.11.3 | Atendimento de comentários | 2d | 2026-06-22 | 2026-06-23 | 114 |  |  | 2026-06-11 | 2026-06-12 | 2d | 19d | 0d | start no earlier than 2026-06-22 | MECÂNICA | Sex 29/05/26 | Seg 01/06/26 | Atendimento de comentários | Sex 29/05/26 | Seg 01/06/26 |
| 116 | 1.1.7.11.4 | Aprovação | 1d | 2026-06-24 | 2026-06-24 | 115 |  |  | 2026-06-15 | 2026-06-15 | 1d | 19d |  | start no earlier than 2026-06-24 | MECÂNICA | Ter 02/06/26 | Ter 02/06/26 | Aprovação | Ter 02/06/26 | Ter 02/06/26 |
| 117 | 1.1.7.12 | **ML-F0009-0306-MB-M-00001** | 9d | 2026-05-26 A | 2026-06-09 |  | 89% | 1d | 2026-05-26 | 2026-06-05 | 9d |  |  |  | MECÂNICA | Qui 14/05/26 | Seg 25/05/26 | ML-F0009-0306-MB-M-00001 | Qui 14/05/26 | Seg 25/05/26 |
| 118 | 1.1.7.12.1 | Emissão inicial | 5d | 2026-05-26 A | 2026-06-01 A | 63, 6FS+5d | 100% |  | 2026-05-26 | 2026-06-01 | 5d |  |  |  | MECÂNICA | Qui 14/05/26 | Ter 19/05/26 | Emissão inicial | Qui 14/05/26 | Ter 19/05/26 |
| 119 | 1.1.7.12.2 | Análise Tecnored | 1d | 2026-06-02 A | 2026-06-02 A | 118 | 100% |  | 2026-06-02 | 2026-06-02 | 1d |  |  |  | MECÂNICA | Qua 20/05/26 | Qua 20/05/26 | Análise Tecnored | Qua 20/05/26 | Qua 20/05/26 |
| 120 | 1.1.7.12.3 | Atendimento de comentários | 2d | 2026-06-03 A | 2026-06-08 | 119 | 75% | 0.5d | 2026-06-03 | 2026-06-04 | 2d | 0.5d | 0d |  | MECÂNICA | Qui 21/05/26 | Sex 22/05/26 | Atendimento de comentários | Qui 21/05/26 | Sex 22/05/26 |
| 121 | 1.1.7.12.4 | Aprovação | 1d | 2026-06-09 A | 2026-06-09 | 120 | 50% | 0.5d | 2026-06-05 | 2026-06-05 | 1d | 30d |  |  | MECÂNICA | Seg 25/05/26 | Seg 25/05/26 | Aprovação | Seg 25/05/26 | Seg 25/05/26 |
| 122 | 1.1.7.13 | **FD-F0009-0306-MB-M-00001** | 7d | 2026-06-19 | 2026-06-29 |  |  |  | 2026-06-10 | 2026-06-18 | 7d |  |  |  | MECÂNICA | Qui 28/05/26 | Sex 05/06/26 | FD-F0009-0306-MB-M-00001 | Qui 28/05/26 | Sex 05/06/26 |
| 123 | 1.1.7.13.1 | Emissão inicial | 3d | 2026-06-19 | 2026-06-23 | 113 |  |  | 2026-06-10 | 2026-06-12 | 3d | 16d | 0d | start no earlier than 2026-06-19 | MECÂNICA | Qui 28/05/26 | Seg 01/06/26 | Emissão inicial | Qui 28/05/26 | Seg 01/06/26 |
| 124 | 1.1.7.13.2 | Análise Tecnored | 1d | 2026-06-24 | 2026-06-24 | 123 |  |  | 2026-06-15 | 2026-06-15 | 1d | 16d | 0d | start no earlier than 2026-06-24 | MECÂNICA | Ter 02/06/26 | Ter 02/06/26 | Análise Tecnored | Ter 02/06/26 | Ter 02/06/26 |
| 125 | 1.1.7.13.3 | Atendimento de comentários | 2d | 2026-06-25 | 2026-06-26 | 124 |  |  | 2026-06-16 | 2026-06-17 | 2d | 16d | 0d | start no earlier than 2026-06-25 | MECÂNICA | Qua 03/06/26 | Qui 04/06/26 | Atendimento de comentários | Qua 03/06/26 | Qui 04/06/26 |
| 126 | 1.1.7.13.4 | Aprovação | 1d | 2026-06-29 | 2026-06-29 | 125 |  |  | 2026-06-18 | 2026-06-18 | 1d | 16d |  | start no earlier than 2026-06-29 | MECÂNICA | Sex 05/06/26 | Sex 05/06/26 | Aprovação | Sex 05/06/26 | Sex 05/06/26 |
| 127 | 1.1.7.14 | **FD-F0009-0306-MB-M-00002** | 7d | 2026-06-19 | 2026-06-29 |  |  |  | 2026-06-10 | 2026-06-18 | 7d |  |  |  | MECÂNICA | Qui 28/05/26 | Sex 05/06/26 | FD-F0009-0306-MB-M-00002 | Qui 28/05/26 | Sex 05/06/26 |
| 128 | 1.1.7.14.1 | Emissão inicial | 3d | 2026-06-19 | 2026-06-23 | 113 |  |  | 2026-06-10 | 2026-06-12 | 3d | 16d | 0d | start no earlier than 2026-06-19 | MECÂNICA | Qui 28/05/26 | Seg 01/06/26 | Emissão inicial | Qui 28/05/26 | Seg 01/06/26 |
| 129 | 1.1.7.14.2 | Análise Tecnored | 1d | 2026-06-24 | 2026-06-24 | 128 |  |  | 2026-06-15 | 2026-06-15 | 1d | 16d | 0d | start no earlier than 2026-06-24 | MECÂNICA | Ter 02/06/26 | Ter 02/06/26 | Análise Tecnored | Ter 02/06/26 | Ter 02/06/26 |
| 130 | 1.1.7.14.3 | Atendimento de comentários | 2d | 2026-06-25 | 2026-06-26 | 129 |  |  | 2026-06-16 | 2026-06-17 | 2d | 16d | 0d | start no earlier than 2026-06-25 | MECÂNICA | Qua 03/06/26 | Qui 04/06/26 | Atendimento de comentários | Qua 03/06/26 | Qui 04/06/26 |
| 131 | 1.1.7.14.4 | Aprovação | 1d | 2026-06-29 | 2026-06-29 | 130 |  |  | 2026-06-18 | 2026-06-18 | 1d | 16d |  | start no earlier than 2026-06-29 | MECÂNICA | Sex 05/06/26 | Sex 05/06/26 | Aprovação | Sex 05/06/26 | Sex 05/06/26 |

| ID | WBS | Task | Type | Duration | Start | Finish | Predecessors | Complete | Remaining | Baseline start | Baseline finish | Baseline duration | Total slack | Free slack | Constraint | Baseline cost | DISCIPLINA | Início_LB_R0 | Término _LB_R0 | Text5 | ILB_2 | TLB_2 |
| --- | --- | --- | --- | --- | --- | --- | --- | --- | --- | --- | --- | --- | --- | --- | --- | --- | --- | --- | --- | --- | --- | --- |
| 132 | 1.1.8 | **Tubulação/Utilidades** |  | 21d | 2026-06-08 A | 2026-07-06 |  | 2% | 20.66d | 2026-06-02 | 2026-06-29 | 20d |  |  |  |  | TUBULAÇÃO / UTILIDADES | Ter 05/05/26 | Ter 16/06/26 | Tubulação/Utilidades | Ter 05/05/26 | Ter 16/06/26 |
| 133 | 1.1.8.1 | **CP-F0009-0306-MB-T-00001** | inactive | 11d | 2026-06-08 | 2026-06-22 |  |  |  |  |  |  | 21d |  |  | -0 |  |  |  |  |  |  |
| 134 | 1.1.8.1.1 | Emissão inicial | inactive | 7d | 2026-06-08 | 2026-06-16 | 20 |  |  |  |  |  | 21d | 0d |  | -0 |  |  |  |  |  |  |
| 135 | 1.1.8.1.2 | Análise Tecnored | inactive | 1d | 2026-06-17 | 2026-06-17 | 134, 9 |  |  |  |  |  | 21d | 0d |  | -0 |  |  |  |  |  |  |
| 136 | 1.1.8.1.3 | Atendimento de comentários | inactive | 2d | 2026-06-18 | 2026-06-19 | 135 |  |  |  |  |  | 21d | 0d |  | -0 |  |  |  |  |  |  |
| 137 | 1.1.8.1.4 | Aprovação | inactive | 1d | 2026-06-22 | 2026-06-22 | 136 |  |  |  |  |  | 21d |  |  | -0 |  |  |  |  |  |  |
| 138 | 1.1.8.2 | **MD-F0009-0306-MB-U-00001** | inactive | 7d | 2026-07-07 | 2026-07-15 |  |  |  | 2026-06-16 | 2026-06-24 | 7d | 4d |  |  |  |  |  |  |  |  |  |
| 139 | 1.1.8.2.1 | Emissão inicial | inactive | 3d | 2026-07-07 | 2026-07-09 | 183 |  |  | 2026-06-16 | 2026-06-18 | 3d | 4d | 0d |  |  |  |  |  |  |  |  |
| 140 | 1.1.8.2.2 | Análise Tecnored | inactive | 1d | 2026-07-10 | 2026-07-10 | 139 |  |  | 2026-06-19 | 2026-06-19 | 1d | 4d | 0d |  |  |  |  |  |  |  |  |
| 141 | 1.1.8.2.3 | Atendimento de comentários | inactive | 2d | 2026-07-13 | 2026-07-14 | 140 |  |  | 2026-06-22 | 2026-06-23 | 2d | 4d | 0d |  |  |  |  |  |  |  |  |
| 142 | 1.1.8.2.4 | Aprovação | inactive | 1d | 2026-07-15 | 2026-07-15 | 141 |  |  | 2026-06-24 | 2026-06-24 | 1d | 4d |  |  |  |  |  |  |  |  |  |
| 143 | 1.1.8.3 | **ML-F0009-0306-MB-T-00001** |  | 7d | 2026-06-17 | 2026-06-25 |  |  |  | 2026-06-02 | 2026-06-10 | 7d |  |  |  |  | TUBULAÇÃO / UTILIDADES | Qua 20/05/26 | Qui 28/05/26 | MD-F0009-0306-MB-U-00001 | Qua 03/06/26 | Qui 11/06/26 |
| 144 | 1.1.8.3.1 | Emissão inicial |  | 3d | 2026-06-17 | 2026-06-19 | 118FS+9d |  |  | 2026-06-02 | 2026-06-04 | 3d | 11d | 0d |  |  | TUBULAÇÃO / UTILIDADES | Qua 20/05/26 | Sex 22/05/26 | Emissão inicial | Qua 03/06/26 | Sex 05/06/26 |
| 145 | 1.1.8.3.2 | Análise Tecnored |  | 1d | 2026-06-22 | 2026-06-22 | 144 |  |  | 2026-06-05 | 2026-06-05 | 1d | 11d | 0d |  |  | TUBULAÇÃO / UTILIDADES | Seg 25/05/26 | Seg 25/05/26 | Análise Tecnored | Seg 08/06/26 | Seg 08/06/26 |
| 146 | 1.1.8.3.3 | Atendimento de comentários |  | 2d | 2026-06-23 | 2026-06-24 | 145 |  |  | 2026-06-08 | 2026-06-09 | 2d | 11d | 0d |  |  | TUBULAÇÃO / UTILIDADES | Ter 26/05/26 | Qua 27/05/26 | Atendimento de comentários | Ter 09/06/26 | Qua 10/06/26 |
| 147 | 1.1.8.3.4 | Aprovação |  | 1d | 2026-06-25 | 2026-06-25 | 146 |  |  | 2026-06-10 | 2026-06-10 | 1d | 11d | 0d |  |  | TUBULAÇÃO / UTILIDADES | Qui 28/05/26 | Qui 28/05/26 | Aprovação | Qui 11/06/26 | Qui 11/06/26 |
| 148 | 1.1.8.4 | **ET-F0009-0306-MB-T-00001** | inactive | 7d | 2026-06-18 | 2026-06-26 |  |  |  | 2026-06-10 | 2026-06-18 | 7d | 17d |  |  |  |  |  |  |  |  |  |
| 149 | 1.1.8.4.1 | Emissão inicial | inactive | 3d | 2026-06-18 | 2026-06-22 | 154 |  |  | 2026-06-10 | 2026-06-12 | 3d | 17d | 0d |  |  |  |  |  |  |  |  |
| 150 | 1.1.8.4.2 | Análise Tecnored | inactive | 1d | 2026-06-23 | 2026-06-23 | 149 |  |  | 2026-06-15 | 2026-06-15 | 1d | 17d | 0d |  |  |  |  |  |  |  |  |
| 151 | 1.1.8.4.3 | Atendimento de comentários | inactive | 2d | 2026-06-24 | 2026-06-25 | 150 |  |  | 2026-06-16 | 2026-06-17 | 2d | 17d | 0d |  |  |  |  |  |  |  |  |
| 152 | 1.1.8.4.4 | Aprovação | inactive | 1d | 2026-06-26 | 2026-06-26 | 151 |  |  | 2026-06-18 | 2026-06-18 | 1d | 17d |  |  |  |  |  |  |  |  |  |
| 153 | 1.1.8.5 | **FD-F0009-0306-MB-T-00001** |  | 7d | 2026-06-15 | 2026-06-23 |  |  |  | 2026-06-05 | 2026-06-15 | 7d |  |  |  |  | TUBULAÇÃO / UTILIDADES | Seg 25/05/26 | Ter 02/06/26 | ML-F0009-0306-MB-T-00001 | Qua 20/05/26 | Qui 28/05/26 |
| 154 | 1.1.8.5.1 | Emissão inicial |  | 3d | 2026-06-15 | 2026-06-17 | 169, 57FS+3d |  |  | 2026-06-05 | 2026-06-09 | 3d | 20d | 0d | start no earlier than 2026-06-15 |  | TUBULAÇÃO / UTILIDADES | Seg 25/05/26 | Qua 27/05/26 | Emissão inicial | Qua 20/05/26 | Sex 22/05/26 |
| 155 | 1.1.8.5.2 | Análise Tecnored |  | 1d | 2026-06-18 | 2026-06-18 | 154 |  |  | 2026-06-10 | 2026-06-10 | 1d | 20d | 0d | start no earlier than 2026-06-18 |  | TUBULAÇÃO / UTILIDADES | Qui 28/05/26 | Qui 28/05/26 | Análise Tecnored | Seg 25/05/26 | Seg 25/05/26 |
| 156 | 1.1.8.5.3 | Atendimento de comentários |  | 2d | 2026-06-19 | 2026-06-22 | 155 |  |  | 2026-06-11 | 2026-06-12 | 2d | 20d | 0d | start no earlier than 2026-06-19 |  | TUBULAÇÃO / UTILIDADES | Sex 29/05/26 | Seg 01/06/26 | Atendimento de comentários | Ter 26/05/26 | Qua 27/05/26 |
| 157 | 1.1.8.5.4 | Aprovação |  | 1d | 2026-06-23 | 2026-06-23 | 156 |  |  | 2026-06-15 | 2026-06-15 | 1d | 20d |  | start no earlier than 2026-06-23 |  | TUBULAÇÃO / UTILIDADES | Ter 02/06/26 | Ter 02/06/26 | Aprovação | Qui 28/05/26 | Qui 28/05/26 |

| ID | WBS | Task | Type | Duration | Start | Finish | Predecessors | Complete | Remaining | Baseline start | Baseline finish | Baseline duration | Total slack | Free slack | Constraint | DISCIPLINA | Início_LB_R0 | Término _LB_R0 | Text5 | ILB_2 | TLB_2 |
| --- | --- | --- | --- | --- | --- | --- | --- | --- | --- | --- | --- | --- | --- | --- | --- | --- | --- | --- | --- | --- | --- |
| 158 | 1.1.8.6 | **FD-F0009-0306-MB-T-00002** | inactive | 7d | 2026-06-15 | 2026-06-23 |  |  |  | 2026-06-05 | 2026-06-15 | 7d | 20d |  |  |  |  |  |  |  |  |
| 159 | 1.1.8.6.1 | Emissão inicial | inactive | 3d | 2026-06-15 | 2026-06-17 | 169 |  |  | 2026-06-05 | 2026-06-09 | 3d | 20d | 0d |  |  |  |  |  |  |  |
| 160 | 1.1.8.6.2 | Análise Tecnored | inactive | 1d | 2026-06-18 | 2026-06-18 | 159 |  |  | 2026-06-10 | 2026-06-10 | 1d | 20d | 0d |  |  |  |  |  |  |  |
| 161 | 1.1.8.6.3 | Atendimento de comentários | inactive | 2d | 2026-06-19 | 2026-06-22 | 160 |  |  | 2026-06-11 | 2026-06-12 | 2d | 20d | 0d |  |  |  |  |  |  |  |
| 162 | 1.1.8.6.4 | Aprovação | inactive | 1d | 2026-06-23 | 2026-06-23 | 161 |  |  | 2026-06-15 | 2026-06-15 | 1d | 20d |  |  |  |  |  |  |  |  |
| 163 | 1.1.8.7 | **PQ-F0009-0306-MB-T-00001** |  | 7d | 2026-06-16 | 2026-06-24 |  |  |  | 2026-06-19 | 2026-06-29 | 7d |  |  |  | TUBULAÇÃO / UTILIDADES | Seg 08/06/26 | Ter 16/06/26 | ET-F0009-0306-MB-T-00001 | Qui 28/05/26 | Sex 05/06/26 |
| 164 | 1.1.8.7.1 | Emissão inicial |  | 3d | 2026-06-16 | 2026-06-18 | 170 |  |  | 2026-06-19 | 2026-06-23 | 3d | 19d | 0d | start no earlier than 2026-06-16 | TUBULAÇÃO / UTILIDADES | Seg 08/06/26 | Qua 10/06/26 | Emissão inicial | Qui 28/05/26 | Seg 01/06/26 |
| 165 | 1.1.8.7.2 | Análise Tecnored |  | 1d | 2026-06-19 | 2026-06-19 | 164 |  |  | 2026-06-24 | 2026-06-24 | 1d | 19d | 0d | start no earlier than 2026-06-19 | TUBULAÇÃO / UTILIDADES | Qui 11/06/26 | Qui 11/06/26 | Análise Tecnored | Ter 02/06/26 | Ter 02/06/26 |
| 166 | 1.1.8.7.3 | Atendimento de comentários |  | 2d | 2026-06-22 | 2026-06-23 | 165 |  |  | 2026-06-25 | 2026-06-26 | 2d | 19d | 0d | start no earlier than 2026-06-22 | TUBULAÇÃO / UTILIDADES | Sex 12/06/26 | Seg 15/06/26 | Atendimento de comentários | Qua 03/06/26 | Qui 04/06/26 |
| 167 | 1.1.8.7.4 | Aprovação |  | 1d | 2026-06-24 | 2026-06-24 | 166 |  |  | 2026-06-29 | 2026-06-29 | 1d | 19d |  | start no earlier than 2026-06-24 | TUBULAÇÃO / UTILIDADES | Ter 16/06/26 | Ter 16/06/26 | Aprovação | Sex 05/06/26 | Sex 05/06/26 |
| 168 | 1.1.8.8 | **MC-F0009-0306-MB-T-00001** |  | 7d | 2026-06-10 | 2026-06-18 |  |  |  | 2026-06-02 | 2026-06-10 | 7d |  |  |  | TUBULAÇÃO / UTILIDADES | Qua 20/05/26 | Qui 28/05/26 | FD-F0009-0306-MB-T-00001 | Seg 25/05/26 | Ter 02/06/26 |
| 169 | 1.1.8.8.1 | Emissão inicial |  | 3d | 2026-06-10 | 2026-06-12 | 118, 175 |  |  | 2026-06-02 | 2026-06-04 | 3d | 16d | 0d | start no earlier than 2026-06-10 | TUBULAÇÃO / UTILIDADES | Qua 20/05/26 | Sex 22/05/26 | Emissão inicial | Seg 25/05/26 | Qua 27/05/26 |
| 170 | 1.1.8.8.2 | Análise Tecnored |  | 1d | 2026-06-15 | 2026-06-15 | 169 |  |  | 2026-06-05 | 2026-06-05 | 1d | 16d | 0d | start no earlier than 2026-06-15 | TUBULAÇÃO / UTILIDADES | Seg 25/05/26 | Seg 25/05/26 | Análise Tecnored | Qui 28/05/26 | Qui 28/05/26 |
| 171 | 1.1.8.8.3 | Atendimento de comentários |  | 2d | 2026-06-16 | 2026-06-17 | 170 |  |  | 2026-06-08 | 2026-06-09 | 2d | 16d | 0d | start no earlier than 2026-06-16 | TUBULAÇÃO / UTILIDADES | Ter 26/05/26 | Qua 27/05/26 | Atendimento de comentários | Sex 29/05/26 | Seg 01/06/26 |
| 172 | 1.1.8.8.4 | Aprovação |  | 1d | 2026-06-18 | 2026-06-18 | 171 |  |  | 2026-06-10 | 2026-06-10 | 1d | 16d | 0d | start no earlier than 2026-06-18 | TUBULAÇÃO / UTILIDADES | Qui 28/05/26 | Qui 28/05/26 | Aprovação | Ter 02/06/26 | Ter 02/06/26 |
| 173 | 1.1.8.9 | **FG-F0009-0306-MB-T-00001** |  | 5d | 2026-06-08 A | 2026-06-12 |  | 20% | 4d | 2026-06-08 | 2026-06-25 | 14d |  |  |  | TUBULAÇÃO / UTILIDADES | Sex 15/05/26 | Qua 03/06/26 | FD-F0009-0306-MB-T-00002 | Seg 25/05/26 | Ter 02/06/26 |
| 174 | 1.1.8.9.1 | Emissão inicial |  | 1d | 2026-06-08 A | 2026-06-08 A | 57FS+3d | 100% |  | 2026-06-08 | 2026-06-19 | 10d |  |  | finish no earlier than 2026-06-08 | TUBULAÇÃO / UTILIDADES | Sex 15/05/26 | Qui 28/05/26 | Emissão inicial | Seg 25/05/26 | Qua 27/05/26 |
| 175 | 1.1.8.9.2 | Análise Tecnored |  | 1d | 2026-06-09 | 2026-06-09 | 174 |  |  | 2026-06-22 | 2026-06-22 | 1d | 16d | 0d | start no earlier than 2026-06-09 | TUBULAÇÃO / UTILIDADES | Sex 29/05/26 | Sex 29/05/26 | Análise Tecnored | Qui 28/05/26 | Qui 28/05/26 |
| 176 | 1.1.8.9.3 | Atendimento de comentários |  | 2d | 2026-06-10 | 2026-06-11 | 175 |  |  | 2026-06-23 | 2026-06-24 | 2d | 27d | 0d | start no earlier than 2026-06-10 | TUBULAÇÃO / UTILIDADES | Seg 01/06/26 | Ter 02/06/26 | Atendimento de comentários | Sex 29/05/26 | Seg 01/06/26 |
| 177 | 1.1.8.9.4 | Aprovação |  | 1d | 2026-06-12 | 2026-06-12 | 176 |  |  | 2026-06-25 | 2026-06-25 | 1d | 27d |  | start no earlier than 2026-06-12 | TUBULAÇÃO / UTILIDADES | Qua 03/06/26 | Qua 03/06/26 | Aprovação | Ter 02/06/26 | Ter 02/06/26 |
| 178 | 1.1.8.10 | **FG-F0009-0306-MB-T-00002** | inactive | 14d | 2026-06-08 | 2026-06-25 |  |  |  | 2026-06-08 | 2026-06-25 | 14d | 18d |  |  |  |  |  |  |  |  |
| 179 | 1.1.8.10.1 | Emissão inicial | inactive | 10d | 2026-06-08 | 2026-06-19 | 57 |  |  | 2026-06-08 | 2026-06-19 | 10d | 18d | 0d |  |  |  |  |  |  |  |
| 180 | 1.1.8.10.2 | Análise Tecnored | inactive | 1d | 2026-06-22 | 2026-06-22 | 179 |  |  | 2026-06-22 | 2026-06-22 | 1d | 18d | 0d |  |  |  |  |  |  |  |
| 181 | 1.1.8.10.3 | Atendimento de comentários | inactive | 2d | 2026-06-23 | 2026-06-24 | 180 |  |  | 2026-06-23 | 2026-06-24 | 2d | 18d | 0d |  |  |  |  |  |  |  |
| 182 | 1.1.8.10.4 | Aprovação | inactive | 1d | 2026-06-25 | 2026-06-25 | 181 |  |  | 2026-06-25 | 2026-06-25 | 1d | 18d |  |  |  |  |  |  |  |  |

| ID | WBS | Task | Type | Duration | Start | Finish | Predecessors | Baseline start | Baseline finish | Baseline duration | Total slack | Free slack | DISCIPLINA | Início_LB_R0 | Término _LB_R0 | Text5 | ILB_2 | TLB_2 |
| --- | --- | --- | --- | --- | --- | --- | --- | --- | --- | --- | --- | --- | --- | --- | --- | --- | --- | --- |
| 183 | 1.1.8.11 | **AG-F0009-0306-MB-T-00001** |  | 7d | 2026-06-26 | 2026-07-06 |  | 2026-06-05 | 2026-06-15 | 7d |  |  | TUBULAÇÃO / UTILIDADES | Seg 25/05/26 | Ter 02/06/26 | PQ-F0009-0306-MB-T-00001 | Seg 08/06/26 | Ter 16/06/26 |
| 184 | 1.1.8.11.1 | Emissão inicial |  | 3d | 2026-06-26 | 2026-06-30 | 147 | 2026-06-05 | 2026-06-09 | 3d | 11d | 0d | TUBULAÇÃO / UTILIDADES | Seg 25/05/26 | Qua 27/05/26 | Emissão inicial | Seg 08/06/26 | Qua 10/06/26 |
| 185 | 1.1.8.11.2 | Análise Tecnored |  | 1d | 2026-07-01 | 2026-07-01 | 184 | 2026-06-10 | 2026-06-10 | 1d | 11d | 0d | TUBULAÇÃO / UTILIDADES | Qui 28/05/26 | Qui 28/05/26 | Análise Tecnored | Qui 11/06/26 | Qui 11/06/26 |
| 186 | 1.1.8.11.3 | Atendimento de comentários |  | 2d | 2026-07-02 | 2026-07-03 | 185 | 2026-06-11 | 2026-06-12 | 2d | 11d | 0d | TUBULAÇÃO / UTILIDADES | Sex 29/05/26 | Seg 01/06/26 | Atendimento de comentários | Sex 12/06/26 | Seg 15/06/26 |
| 187 | 1.1.8.11.4 | Aprovação |  | 1d | 2026-07-06 | 2026-07-06 | 186 | 2026-06-15 | 2026-06-15 | 1d | 11d |  | TUBULAÇÃO / UTILIDADES | Ter 02/06/26 | Ter 02/06/26 | Aprovação | Ter 16/06/26 | Ter 16/06/26 |
| 188 | 1.1.8.12 | **AG-F0009-0306-MB-T-00002** |  | 7d | 2026-06-26 | 2026-07-06 |  | 2026-06-05 | 2026-06-15 | 7d |  |  | TUBULAÇÃO / UTILIDADES | Seg 25/05/26 | Ter 02/06/26 | MC-F0009-0306-MB-T-00001 | Qua 20/05/26 | Qui 28/05/26 |
| 189 | 1.1.8.12.1 | Emissão inicial |  | 3d | 2026-06-26 | 2026-06-30 | 147 | 2026-06-05 | 2026-06-09 | 3d | 11d | 0d | TUBULAÇÃO / UTILIDADES | Seg 25/05/26 | Qua 27/05/26 | Emissão inicial | Qua 20/05/26 | Sex 22/05/26 |
| 190 | 1.1.8.12.2 | Análise Tecnored |  | 1d | 2026-07-01 | 2026-07-01 | 189 | 2026-06-10 | 2026-06-10 | 1d | 11d | 0d | TUBULAÇÃO / UTILIDADES | Qui 28/05/26 | Qui 28/05/26 | Análise Tecnored | Seg 25/05/26 | Seg 25/05/26 |
| 191 | 1.1.8.12.3 | Atendimento de comentários |  | 2d | 2026-07-02 | 2026-07-03 | 190 | 2026-06-11 | 2026-06-12 | 2d | 11d | 0d | TUBULAÇÃO / UTILIDADES | Sex 29/05/26 | Seg 01/06/26 | Atendimento de comentários | Ter 26/05/26 | Qua 27/05/26 |
| 192 | 1.1.8.12.4 | Aprovação |  | 1d | 2026-07-06 | 2026-07-06 | 191 | 2026-06-15 | 2026-06-15 | 1d | 11d |  | TUBULAÇÃO / UTILIDADES | Ter 02/06/26 | Ter 02/06/26 | Aprovação | Qui 28/05/26 | Qui 28/05/26 |
| 193 | 1.1.8.13 | **AG-F0009-0306-MB-T-00003** |  | 7d | 2026-06-26 | 2026-07-06 |  | 2026-06-05 | 2026-06-15 | 7d |  |  | TUBULAÇÃO / UTILIDADES | Seg 25/05/26 | Ter 02/06/26 | FG-F0009-0306-MB-T-00001 | Sex 15/05/26 | Qua 03/06/26 |
| 194 | 1.1.8.13.1 | Emissão inicial |  | 3d | 2026-06-26 | 2026-06-30 | 147 | 2026-06-05 | 2026-06-09 | 3d | 11d | 0d | TUBULAÇÃO / UTILIDADES | Seg 25/05/26 | Qua 27/05/26 | Emissão inicial | Sex 15/05/26 | Qui 28/05/26 |
| 195 | 1.1.8.13.2 | Análise Tecnored |  | 1d | 2026-07-01 | 2026-07-01 | 194 | 2026-06-10 | 2026-06-10 | 1d | 11d | 0d | TUBULAÇÃO / UTILIDADES | Qui 28/05/26 | Qui 28/05/26 | Análise Tecnored | Sex 29/05/26 | Sex 29/05/26 |
| 196 | 1.1.8.13.3 | Atendimento de comentários |  | 2d | 2026-07-02 | 2026-07-03 | 195 | 2026-06-11 | 2026-06-12 | 2d | 11d | 0d | TUBULAÇÃO / UTILIDADES | Sex 29/05/26 | Seg 01/06/26 | Atendimento de comentários | Seg 01/06/26 | Ter 02/06/26 |
| 197 | 1.1.8.13.4 | Aprovação |  | 1d | 2026-07-06 | 2026-07-06 | 196 | 2026-06-15 | 2026-06-15 | 1d | 11d |  | TUBULAÇÃO / UTILIDADES | Ter 02/06/26 | Ter 02/06/26 | Aprovação | Qua 03/06/26 | Qua 03/06/26 |
| 198 | 1.1.8.14 | **AG-F0009-0306-MB-T-00004** | inactive | 7d | 2026-06-09 | 2026-06-17 |  | 2026-06-05 | 2026-06-15 | 7d | 24d |  |  |  |  |  |  |  |
| 199 | 1.1.8.14.1 | Emissão inicial | inactive | 3d | 2026-06-09 | 2026-06-11 | 120 | 2026-06-05 | 2026-06-09 | 3d | 24d | 0d |  |  |  |  |  |  |
| 200 | 1.1.8.14.2 | Análise Tecnored | inactive | 1d | 2026-06-12 | 2026-06-12 | 199 | 2026-06-10 | 2026-06-10 | 1d | 24d | 0d |  |  |  |  |  |  |
| 201 | 1.1.8.14.3 | Atendimento de comentários | inactive | 2d | 2026-06-15 | 2026-06-16 | 200 | 2026-06-11 | 2026-06-12 | 2d | 24d | 0d |  |  |  |  |  |  |
| 202 | 1.1.8.14.4 | Aprovação | inactive | 1d | 2026-06-17 | 2026-06-17 | 201 | 2026-06-15 | 2026-06-15 | 1d | 24d |  |  |  |  |  |  |  |
| 203 | 1.1.8.15 | **AG-F0009-0306-MB-T-00005** | inactive | 7d | 2026-06-09 | 2026-06-17 |  | 2026-06-05 | 2026-06-15 | 7d | 24d |  |  |  |  |  |  |  |
| 204 | 1.1.8.15.1 | Emissão inicial | inactive | 3d | 2026-06-09 | 2026-06-11 | 120 | 2026-06-05 | 2026-06-09 | 3d | 24d | 0d |  |  |  |  |  |  |
| 205 | 1.1.8.15.2 | Análise Tecnored | inactive | 1d | 2026-06-12 | 2026-06-12 | 204 | 2026-06-10 | 2026-06-10 | 1d | 24d | 0d |  |  |  |  |  |  |
| 206 | 1.1.8.15.3 | Atendimento de comentários | inactive | 2d | 2026-06-15 | 2026-06-16 | 205 | 2026-06-11 | 2026-06-12 | 2d | 24d | 0d |  |  |  |  |  |  |
| 207 | 1.1.8.15.4 | Aprovação | inactive | 1d | 2026-06-17 | 2026-06-17 | 206 | 2026-06-15 | 2026-06-15 | 1d | 24d |  |  |  |  |  |  |  |

| ID | WBS | Task | Type | Duration | Start | Finish | Predecessors | Baseline start | Baseline finish | Baseline duration | Total slack | Free slack | Constraint | Baseline cost | DISCIPLINA | Início_LB_R0 | Término _LB_R0 | Text5 | ILB_2 | TLB_2 |
| --- | --- | --- | --- | --- | --- | --- | --- | --- | --- | --- | --- | --- | --- | --- | --- | --- | --- | --- | --- | --- |
| 208 | 1.1.8.16 | **AG-F0009-0306-MB-T-00006** | inactive | 7d | 2026-06-09 | 2026-06-17 |  | 2026-06-05 | 2026-06-15 | 7d | 24d |  |  |  |  |  |  |  |  |  |
| 209 | 1.1.8.16.1 | Emissão inicial | inactive | 3d | 2026-06-09 | 2026-06-11 | 120 | 2026-06-05 | 2026-06-09 | 3d | 24d | 0d |  |  |  |  |  |  |  |  |
| 210 | 1.1.8.16.2 | Análise Tecnored | inactive | 1d | 2026-06-12 | 2026-06-12 | 209 | 2026-06-10 | 2026-06-10 | 1d | 24d | 0d |  |  |  |  |  |  |  |  |
| 211 | 1.1.8.16.3 | Atendimento de comentários | inactive | 2d | 2026-06-15 | 2026-06-16 | 210 | 2026-06-11 | 2026-06-12 | 2d | 24d | 0d |  |  |  |  |  |  |  |  |
| 212 | 1.1.8.16.4 | Aprovação | inactive | 1d | 2026-06-17 | 2026-06-17 | 211 | 2026-06-15 | 2026-06-15 | 1d | 24d |  |  |  |  |  |  |  |  |  |
| 213 | 1.1.8.17 | **LK-F0009-0306-MB-T-00001** |  | 7d | 2026-06-19 | 2026-06-29 |  | 2026-06-05 | 2026-06-15 | 7d |  |  |  |  | TUBULAÇÃO / UTILIDADES | Seg 25/05/26 | Ter 02/06/26 | FG-F0009-0306-MB-T-00002 | Sex 15/05/26 | Qua 03/06/26 |
| 214 | 1.1.8.17.1 | Emissão inicial |  | 3d | 2026-06-19 | 2026-06-23 | 172 | 2026-06-05 | 2026-06-09 | 3d | 16d | 0d | start no earlier than 2026-06-19 |  | TUBULAÇÃO / UTILIDADES | Seg 25/05/26 | Qua 27/05/26 | Emissão inicial | Sex 15/05/26 | Qui 28/05/26 |
| 215 | 1.1.8.17.2 | Análise Tecnored |  | 1d | 2026-06-24 | 2026-06-24 | 214 | 2026-06-10 | 2026-06-10 | 1d | 16d | 0d | start no earlier than 2026-06-24 |  | TUBULAÇÃO / UTILIDADES | Qui 28/05/26 | Qui 28/05/26 | Análise Tecnored | Sex 29/05/26 | Sex 29/05/26 |
| 216 | 1.1.8.17.3 | Atendimento de comentários |  | 2d | 2026-06-25 | 2026-06-26 | 215 | 2026-06-11 | 2026-06-12 | 2d | 16d | 0d | start no earlier than 2026-06-25 |  | TUBULAÇÃO / UTILIDADES | Sex 29/05/26 | Seg 01/06/26 | Atendimento de comentários | Seg 01/06/26 | Ter 02/06/26 |
| 217 | 1.1.8.17.4 | Aprovação |  | 1d | 2026-06-29 | 2026-06-29 | 216 | 2026-06-15 | 2026-06-15 | 1d | 16d |  | start no earlier than 2026-06-29 |  | TUBULAÇÃO / UTILIDADES | Ter 02/06/26 | Ter 02/06/26 | Aprovação | Qua 03/06/26 | Qua 03/06/26 |
| 218 | 1.1.8.18 | **MC-F0009-0306-MB-T-00002** | inactive | 14d | 2026-06-08 | 2026-06-25 |  | 2026-06-02 | 2026-06-19 | 14d | 18d |  |  |  |  |  |  |  |  |  |
| 219 | 1.1.8.18.1 | Emissão inicial | inactive | 10d | 2026-06-08 | 2026-06-19 | 118 | 2026-06-02 | 2026-06-15 | 10d | 18d | 0d |  |  |  |  |  |  |  |  |
| 220 | 1.1.8.18.2 | Análise Tecnored | inactive | 1d | 2026-06-22 | 2026-06-22 | 219 | 2026-06-16 | 2026-06-16 | 1d | 18d | 0d |  |  |  |  |  |  |  |  |
| 221 | 1.1.8.18.3 | Atendimento de comentários | inactive | 2d | 2026-06-23 | 2026-06-24 | 220 | 2026-06-17 | 2026-06-18 | 2d | 18d | 0d |  |  |  |  |  |  |  |  |
| 222 | 1.1.8.18.4 | Aprovação | inactive | 1d | 2026-06-25 | 2026-06-25 | 221 | 2026-06-19 | 2026-06-19 | 1d | 18d |  |  |  |  |  |  |  |  |  |
| 223 | 1.1.9 | **Estrutura metálica** |  | 9d | 2026-06-22 | 2026-07-02 |  | 2026-06-11 | 2026-07-07 | 19d |  |  |  |  | ESTRUTURA METÁLICA | Ter 05/05/26 | Seg 29/06/26 | AG-F0009-0306-MB-T-00001 | Seg 25/05/26 | Ter 02/06/26 |
| 224 | 1.1.9.1 | **CP-F0009-0306-MB-S-00001** | inactive | 12d | 2026-06-22 | 2026-07-07 |  |  |  |  | 10d |  |  | -0 |  |  |  |  |  |  |
| 225 | 1.1.9.1.1 | Emissão inicial | inactive | 8d | 2026-06-22 | 2026-07-01 | 20, 10 |  |  |  | 10d | 0d |  | -0 |  |  |  |  |  |  |
| 226 | 1.1.9.1.2 | Análise Tecnored | inactive | 1d | 2026-07-02 | 2026-07-02 | 225 |  |  |  | 10d | 0d |  | -0 |  |  |  |  |  |  |
| 227 | 1.1.9.1.3 | Atendimento de comentários | inactive | 2d | 2026-07-03 | 2026-07-06 | 226 |  |  |  | 10d | 0d |  | -0 |  |  |  |  |  |  |
| 228 | 1.1.9.1.4 | Aprovação | inactive | 1d | 2026-07-07 | 2026-07-07 | 227 |  |  |  | 10d |  |  | -0 |  |  |  |  |  |  |
| 229 | 1.1.9.2 | **ML-F0009-0306-MB-S-00001** |  | 9d | 2026-06-22 | 2026-07-02 |  | 2026-06-11 | 2026-06-23 | 9d |  |  |  |  | ESTRUTURA METÁLICA | Qua 03/06/26 | Seg 15/06/26 | Emissão inicial | Seg 25/05/26 | Qua 27/05/26 |
| 230 | 1.1.9.2.1 | Emissão inicial |  | 5d | 2026-06-22 | 2026-06-26 | 245FS-3d | 2026-06-11 | 2026-06-17 | 5d | 3d | 0d | start no earlier than 2026-06-22 |  | ESTRUTURA METÁLICA | Qua 03/06/26 | Ter 09/06/26 | Análise Tecnored | Qui 28/05/26 | Qui 28/05/26 |
| 231 | 1.1.9.2.2 | Análise Tecnored |  | 1d | 2026-06-29 | 2026-06-29 | 230 | 2026-06-18 | 2026-06-18 | 1d | 3d | 0d | start no earlier than 2026-06-29 |  | ESTRUTURA METÁLICA | Qua 10/06/26 | Qua 10/06/26 | Atendimento de comentários | Sex 29/05/26 | Seg 01/06/26 |
| 232 | 1.1.9.2.3 | Atendimento de comentários |  | 2d | 2026-06-30 | 2026-07-01 | 231 | 2026-06-19 | 2026-06-22 | 2d | 3d | 0d | start no earlier than 2026-06-30 |  | ESTRUTURA METÁLICA | Qui 11/06/26 | Sex 12/06/26 | Aprovação | Ter 02/06/26 | Ter 02/06/26 |
| 233 | 1.1.9.2.4 | Aprovação |  | 1d | 2026-07-02 | 2026-07-02 | 232 | 2026-06-23 | 2026-06-23 | 1d | 3d | 0d | start no earlier than 2026-07-02 |  | ESTRUTURA METÁLICA | Seg 15/06/26 | Seg 15/06/26 | AG-F0009-0306-MB-T-00002 | Seg 25/05/26 | Ter 02/06/26 |

| ID | WBS | Task | Duration | Start | Finish | Predecessors | Baseline start | Baseline finish | Baseline duration | Total slack | Free slack | Constraint | DISCIPLINA | Início_LB_R0 | Término _LB_R0 | Text5 | ILB_2 | TLB_2 |
| --- | --- | --- | --- | --- | --- | --- | --- | --- | --- | --- | --- | --- | --- | --- | --- | --- | --- | --- |
| 234 | 1.1.9.3 | **PQ-F0009-0306-MB-S-00001** | 9d | 2026-06-22 | 2026-07-02 |  | 2026-06-29 | 2026-07-07 | 7d |  |  |  | ESTRUTURA METÁLICA | Sex 19/06/26 | Seg 29/06/26 | Emissão inicial | Seg 25/05/26 | Qua 27/05/26 |
| 235 | 1.1.9.3.1 | Emissão inicial | 3d | 2026-07-08 | 2026-07-10 | 240 | 2026-06-29 | 2026-07-01 | 3d | 3d | 0d | start no earlier than 2026-06-22 | ESTRUTURA METÁLICA | Sex 19/06/26 | Ter 23/06/26 | Análise Tecnored | Qui 28/05/26 | Qui 28/05/26 |
| 236 | 1.1.9.3.2 | Análise Tecnored | 1d | 2026-07-13 | 2026-07-13 | 235 | 2026-07-02 | 2026-07-02 | 1d | 3d | 0d | start no earlier than 2026-06-29 | ESTRUTURA METÁLICA | Qua 24/06/26 | Qua 24/06/26 | Atendimento de comentários | Sex 29/05/26 | Seg 01/06/26 |
| 237 | 1.1.9.3.3 | Atendimento de comentários | 2d | 2026-07-14 | 2026-07-15 | 236 | 2026-07-03 | 2026-07-06 | 2d | 3d | 0d | start no earlier than 2026-06-30 | ESTRUTURA METÁLICA | Qui 25/06/26 | Sex 26/06/26 | Aprovação | Ter 02/06/26 | Ter 02/06/26 |
| 238 | 1.1.9.3.4 | Aprovação | 1d | 2026-07-16 | 2026-07-16 | 237 | 2026-07-07 | 2026-07-07 | 1d | 3d |  | start no earlier than 2026-07-02 | ESTRUTURA METÁLICA | Seg 29/06/26 | Seg 29/06/26 | AG-F0009-0306-MB-T-00003 | Seg 25/05/26 | Ter 02/06/26 |
| 239 | 1.1.9.4 | **LM-F0009-0306-MB-S-00001** | 9d | 2026-06-22 | 2026-07-02 |  | 2026-06-24 | 2026-07-02 | 7d |  |  |  | ESTRUTURA METÁLICA | Ter 16/06/26 | Qua 24/06/26 | Emissão inicial | Seg 25/05/26 | Qua 27/05/26 |
| 240 | 1.1.9.4.1 | Emissão inicial | 3d | 2026-07-03 | 2026-07-07 | 233 | 2026-06-24 | 2026-06-26 | 3d | 3d | 0d | start no earlier than 2026-06-22 | ESTRUTURA METÁLICA | Ter 16/06/26 | Qui 18/06/26 | Análise Tecnored | Qui 28/05/26 | Qui 28/05/26 |
| 241 | 1.1.9.4.2 | Análise Tecnored | 1d | 2026-07-08 | 2026-07-08 | 240 | 2026-06-29 | 2026-06-29 | 1d | 6d | 0d | start no earlier than 2026-06-29 | ESTRUTURA METÁLICA | Sex 19/06/26 | Sex 19/06/26 | Atendimento de comentários | Sex 29/05/26 | Seg 01/06/26 |
| 242 | 1.1.9.4.3 | Atendimento de comentários | 2d | 2026-07-09 | 2026-07-10 | 241 | 2026-06-30 | 2026-07-01 | 2d | 6d | 0d | start no earlier than 2026-06-30 | ESTRUTURA METÁLICA | Seg 22/06/26 | Ter 23/06/26 | Aprovação | Ter 02/06/26 | Ter 02/06/26 |
| 243 | 1.1.9.4.4 | Aprovação | 1d | 2026-07-13 | 2026-07-13 | 242 | 2026-07-02 | 2026-07-02 | 1d | 6d |  | start no earlier than 2026-07-02 | ESTRUTURA METÁLICA | Qua 24/06/26 | Qua 24/06/26 | AG-F0009-0306-MB-T-00004 | Seg 25/05/26 | Ter 02/06/26 |
| 244 | 1.1.9.5 | **MC-F0009-0306-MB-S-00001** | 9d | 2026-06-22 | 2026-07-02 |  | 2026-06-11 | 2026-06-19 | 7d |  |  |  | ESTRUTURA METÁLICA | Sex 29/05/26 | Seg 08/06/26 | Emissão inicial | Seg 25/05/26 | Qua 27/05/26 |
| 245 | 1.1.9.5.1 | Emissão inicial | 3d | 2026-06-22 | 2026-06-24 | 114 | 2026-06-11 | 2026-06-15 | 3d | 3d | 0d | start no earlier than 2026-06-22 | ESTRUTURA METÁLICA | Sex 29/05/26 | Ter 02/06/26 | Análise Tecnored | Qui 28/05/26 | Qui 28/05/26 |
| 246 | 1.1.9.5.2 | Análise Tecnored | 1d | 2026-06-29 | 2026-06-29 | 245 | 2026-06-16 | 2026-06-16 | 1d | 13d | 0d | start no earlier than 2026-06-29 | ESTRUTURA METÁLICA | Qua 03/06/26 | Qua 03/06/26 | Atendimento de comentários | Sex 29/05/26 | Seg 01/06/26 |
| 247 | 1.1.9.5.3 | Atendimento de comentários | 2d | 2026-06-30 | 2026-07-01 | 246 | 2026-06-17 | 2026-06-18 | 2d | 13d | 0d | start no earlier than 2026-06-30 | ESTRUTURA METÁLICA | Qui 04/06/26 | Sex 05/06/26 | Aprovação | Ter 02/06/26 | Ter 02/06/26 |
| 248 | 1.1.9.5.4 | Aprovação | 1d | 2026-07-02 | 2026-07-02 | 247 | 2026-06-19 | 2026-06-19 | 1d | 13d |  | start no earlier than 2026-07-02 | ESTRUTURA METÁLICA | Seg 08/06/26 | Seg 08/06/26 | AG-F0009-0306-MB-T-00005 | Seg 25/05/26 | Ter 02/06/26 |
| 249 | 1.1.9.6 | **AG-F0009-0306-MB-S-00001** | 9d | 2026-06-22 | 2026-07-02 |  | 2026-06-23 | 2026-07-03 | 9d |  |  |  | ESTRUTURA METÁLICA | Seg 15/06/26 | Qui 25/06/26 | Emissão inicial | Seg 25/05/26 | Qua 27/05/26 |
| 250 | 1.1.9.6.1 | Emissão inicial | 5d | 2026-07-02 | 2026-07-08 | 232 | 2026-06-23 | 2026-06-29 | 5d | 5d | 0d | start no earlier than 2026-06-22 | ESTRUTURA METÁLICA | Seg 15/06/26 | Sex 19/06/26 | Análise Tecnored | Qui 28/05/26 | Qui 28/05/26 |
| 251 | 1.1.9.6.2 | Análise Tecnored | 1d | 2026-07-09 | 2026-07-09 | 250 | 2026-06-30 | 2026-06-30 | 1d | 5d | 0d | start no earlier than 2026-06-29 | ESTRUTURA METÁLICA | Seg 22/06/26 | Seg 22/06/26 | Atendimento de comentários | Sex 29/05/26 | Seg 01/06/26 |
| 252 | 1.1.9.6.3 | Atendimento de comentários | 2d | 2026-07-10 | 2026-07-13 | 251 | 2026-07-01 | 2026-07-02 | 2d | 5d | 0d | start no earlier than 2026-06-30 | ESTRUTURA METÁLICA | Ter 23/06/26 | Qua 24/06/26 | Aprovação | Ter 02/06/26 | Ter 02/06/26 |
| 253 | 1.1.9.6.4 | Aprovação | 1d | 2026-07-14 | 2026-07-14 | 252 | 2026-07-03 | 2026-07-03 | 1d | 5d |  | start no earlier than 2026-07-02 | ESTRUTURA METÁLICA | Qui 25/06/26 | Qui 25/06/26 | AG-F0009-0306-MB-T-00006 | Seg 25/05/26 | Ter 02/06/26 |
| 254 | 1.1.9.7 | **AG-F0009-0306-MB-S-00002** | 9d | 2026-06-22 | 2026-07-02 |  | 2026-06-23 | 2026-07-03 | 9d |  |  |  | ESTRUTURA METÁLICA | Seg 15/06/26 | Qui 25/06/26 | Emissão inicial | Seg 25/05/26 | Qua 27/05/26 |
| 255 | 1.1.9.7.1 | Emissão inicial | 5d | 2026-07-02 | 2026-07-08 | 232 | 2026-06-23 | 2026-06-29 | 5d | 5d | 0d | start no earlier than 2026-06-22 | ESTRUTURA METÁLICA | Seg 15/06/26 | Sex 19/06/26 | Análise Tecnored | Qui 28/05/26 | Qui 28/05/26 |
| 256 | 1.1.9.7.2 | Análise Tecnored | 1d | 2026-07-09 | 2026-07-09 | 255 | 2026-06-30 | 2026-06-30 | 1d | 5d | 0d | start no earlier than 2026-06-29 | ESTRUTURA METÁLICA | Seg 22/06/26 | Seg 22/06/26 | Atendimento de comentários | Sex 29/05/26 | Seg 01/06/26 |
| 257 | 1.1.9.7.3 | Atendimento de comentários | 2d | 2026-07-10 | 2026-07-13 | 256 | 2026-07-01 | 2026-07-02 | 2d | 5d | 0d | start no earlier than 2026-06-30 | ESTRUTURA METÁLICA | Ter 23/06/26 | Qua 24/06/26 | Aprovação | Ter 02/06/26 | Ter 02/06/26 |
| 258 | 1.1.9.7.4 | Aprovação | 1d | 2026-07-14 | 2026-07-14 | 257 | 2026-07-03 | 2026-07-03 | 1d | 5d |  | start no earlier than 2026-07-02 | ESTRUTURA METÁLICA | Qui 25/06/26 | Qui 25/06/26 | LK-F0009-0306-MB-T-00001 | Seg 25/05/26 | Ter 02/06/26 |

| ID | WBS | Task | Type | Duration | Start | Finish | Predecessors | Complete | Remaining | Baseline start | Baseline finish | Baseline duration | Total slack | Free slack | Constraint | Baseline cost | DISCIPLINA | Início_LB_R0 | Término _LB_R0 | Text5 | ILB_2 | TLB_2 |
| --- | --- | --- | --- | --- | --- | --- | --- | --- | --- | --- | --- | --- | --- | --- | --- | --- | --- | --- | --- | --- | --- | --- |
| 259 | 1.1.9.8 | **AG-F0009-0306-MB-S-00003** |  | 9d | 2026-06-22 | 2026-07-02 |  |  |  | 2026-06-23 | 2026-07-03 | 9d |  |  |  |  | ESTRUTURA METÁLICA | Seg 15/06/26 | Qui 25/06/26 | Emissão inicial | Seg 25/05/26 | Qua 27/05/26 |
| 260 | 1.1.9.8.1 | Emissão inicial |  | 5d | 2026-07-02 | 2026-07-08 | 232 |  |  | 2026-06-23 | 2026-06-29 | 5d | 5d | 0d | start no earlier than 2026-06-22 |  | ESTRUTURA METÁLICA | Seg 15/06/26 | Sex 19/06/26 | Análise Tecnored | Qui 28/05/26 | Qui 28/05/26 |
| 261 | 1.1.9.8.2 | Análise Tecnored |  | 1d | 2026-07-09 | 2026-07-09 | 260 |  |  | 2026-06-30 | 2026-06-30 | 1d | 5d | 0d | start no earlier than 2026-06-29 |  | ESTRUTURA METÁLICA | Seg 22/06/26 | Seg 22/06/26 | Atendimento de comentários | Sex 29/05/26 | Seg 01/06/26 |
| 262 | 1.1.9.8.3 | Atendimento de comentários |  | 2d | 2026-07-10 | 2026-07-13 | 261 |  |  | 2026-07-01 | 2026-07-02 | 2d | 5d | 0d | start no earlier than 2026-06-30 |  | ESTRUTURA METÁLICA | Ter 23/06/26 | Qua 24/06/26 | Aprovação | Ter 02/06/26 | Ter 02/06/26 |
| 263 | 1.1.9.8.4 | Aprovação |  | 1d | 2026-07-14 | 2026-07-14 | 262 |  |  | 2026-07-03 | 2026-07-03 | 1d | 5d |  | start no earlier than 2026-07-02 |  | ESTRUTURA METÁLICA | Qui 25/06/26 | Qui 25/06/26 | MC-F0009-0306-MB-T-00002 | Qua 20/05/26 | Seg 08/06/26 |
| 264 | 1.1.9.9 | **AG-F0009-0306-MB-S-00004** |  | 9d | 2026-06-22 | 2026-07-02 |  |  |  | 2026-06-23 | 2026-07-03 | 9d |  |  |  |  | ESTRUTURA METÁLICA | Seg 15/06/26 | Qui 25/06/26 | Emissão inicial | Qua 20/05/26 | Ter 02/06/26 |
| 265 | 1.1.9.9.1 | Emissão inicial |  | 5d | 2026-07-02 | 2026-07-08 | 232 |  |  | 2026-06-23 | 2026-06-29 | 5d | 5d | 0d | start no earlier than 2026-06-22 |  | ESTRUTURA METÁLICA | Seg 15/06/26 | Sex 19/06/26 | Análise Tecnored | Qua 03/06/26 | Qua 03/06/26 |
| 266 | 1.1.9.9.2 | Análise Tecnored |  | 1d | 2026-07-09 | 2026-07-09 | 265 |  |  | 2026-06-30 | 2026-06-30 | 1d | 5d | 0d | start no earlier than 2026-06-29 |  | ESTRUTURA METÁLICA | Seg 22/06/26 | Seg 22/06/26 | Atendimento de comentários | Qui 04/06/26 | Sex 05/06/26 |
| 267 | 1.1.9.9.3 | Atendimento de comentários |  | 2d | 2026-07-10 | 2026-07-13 | 266 |  |  | 2026-07-01 | 2026-07-02 | 2d | 5d | 0d | start no earlier than 2026-06-30 |  | ESTRUTURA METÁLICA | Ter 23/06/26 | Qua 24/06/26 | Aprovação | Seg 08/06/26 | Seg 08/06/26 |
| 268 | 1.1.9.9.4 | Aprovação |  | 1d | 2026-07-14 | 2026-07-14 | 267 |  |  | 2026-07-03 | 2026-07-03 | 1d | 5d |  | start no earlier than 2026-07-02 |  | ESTRUTURA METÁLICA | Qui 25/06/26 | Qui 25/06/26 | Estrutura metálica | Ter 05/05/26 | Seg 29/06/26 |
| 269 | 1.1.9.10 | **AG-F0009-0306-MB-S-00005** |  | 9d | 2026-06-22 | 2026-07-02 |  |  |  | 2026-06-23 | 2026-07-03 | 9d |  |  |  |  | ESTRUTURA METÁLICA | Seg 15/06/26 | Qui 25/06/26 | ML-F0009-0306-MB-S-00001 | Qua 03/06/26 | Seg 15/06/26 |
| 270 | 1.1.9.10.1 | Emissão inicial |  | 5d | 2026-07-02 | 2026-07-08 | 232 |  |  | 2026-06-23 | 2026-06-29 | 5d | 5d | 0d | start no earlier than 2026-06-22 |  | ESTRUTURA METÁLICA | Seg 15/06/26 | Sex 19/06/26 | Emissão inicial | Qua 03/06/26 | Ter 09/06/26 |
| 271 | 1.1.9.10.2 | Análise Tecnored |  | 1d | 2026-07-09 | 2026-07-09 | 270 |  |  | 2026-06-30 | 2026-06-30 | 1d | 5d | 0d | start no earlier than 2026-06-29 |  | ESTRUTURA METÁLICA | Seg 22/06/26 | Seg 22/06/26 | Análise Tecnored | Qua 10/06/26 | Qua 10/06/26 |
| 272 | 1.1.9.10.3 | Atendimento de comentários |  | 2d | 2026-07-10 | 2026-07-13 | 271 |  |  | 2026-07-01 | 2026-07-02 | 2d | 5d | 0d | start no earlier than 2026-06-30 |  | ESTRUTURA METÁLICA | Ter 23/06/26 | Qua 24/06/26 | Atendimento de comentários | Qui 11/06/26 | Sex 12/06/26 |
| 273 | 1.1.9.10.4 | Aprovação |  | 1d | 2026-07-14 | 2026-07-14 | 272 |  |  | 2026-07-03 | 2026-07-03 | 1d | 5d |  | start no earlier than 2026-07-02 |  | ESTRUTURA METÁLICA | Qui 25/06/26 | Qui 25/06/26 | Aprovação | Seg 15/06/26 | Seg 15/06/26 |
| 274 | 1.1.9.11 | **PL-F0009-0306-MB-S-00001** |  | 9d | 2026-06-22 | 2026-07-02 |  |  |  | 2026-06-23 | 2026-07-03 | 9d |  |  |  |  | ESTRUTURA METÁLICA | Seg 15/06/26 | Qui 25/06/26 | PQ-F0009-0306-MB-S-00001 | Sex 19/06/26 | Seg 29/06/26 |
| 275 | 1.1.9.11.1 | Emissão inicial |  | 5d | 2026-07-02 | 2026-07-08 | 232 |  |  | 2026-06-23 | 2026-06-29 | 5d | 5d | 0d | start no earlier than 2026-06-22 |  | ESTRUTURA METÁLICA | Seg 15/06/26 | Sex 19/06/26 | Emissão inicial | Sex 19/06/26 | Ter 23/06/26 |
| 276 | 1.1.9.11.2 | Análise Tecnored |  | 1d | 2026-07-09 | 2026-07-09 | 275 |  |  | 2026-06-30 | 2026-06-30 | 1d | 5d | 0d | start no earlier than 2026-06-29 |  | ESTRUTURA METÁLICA | Seg 22/06/26 | Seg 22/06/26 | Análise Tecnored | Qua 24/06/26 | Qua 24/06/26 |
| 277 | 1.1.9.11.3 | Atendimento de comentários |  | 2d | 2026-07-10 | 2026-07-13 | 276 |  |  | 2026-07-01 | 2026-07-02 | 2d | 5d | 0d | start no earlier than 2026-06-30 |  | ESTRUTURA METÁLICA | Ter 23/06/26 | Qua 24/06/26 | Atendimento de comentários | Qui 25/06/26 | Sex 26/06/26 |
| 278 | 1.1.9.11.4 | Aprovação |  | 1d | 2026-07-14 | 2026-07-14 | 277 |  |  | 2026-07-03 | 2026-07-03 | 1d | 5d |  | start no earlier than 2026-07-02 |  | ESTRUTURA METÁLICA | Qui 25/06/26 | Qui 25/06/26 | Aprovação | Seg 29/06/26 | Seg 29/06/26 |
| 279 | 1.1.10 | **Elétrica** |  | 26d | 2026-05-28 A | 2026-07-06 |  | 5% | 24.66d | 2026-05-28 | 2026-07-07 | 29d |  |  |  |  | ELÉTRICA | Ter 05/05/26 | Ter 07/07/26 | LM-F0009-0306-MB-S-00001 | Ter 16/06/26 | Qua 24/06/26 |
| 280 | 1.1.10.1 | **CP-F0009-0306-MB-E-00001** | inactive | 11d | 2026-05-28 | 2026-06-15 |  |  |  |  |  |  | 26d |  |  | -0 |  |  |  |  |  |  |
| 281 | 1.1.10.1.1 | Emissão inicial | inactive | 7d | 2026-05-28 | 2026-06-09 | 20 |  |  |  |  |  | 26d | 0d |  | -0 |  |  |  |  |  |  |
| 282 | 1.1.10.1.2 | Análise Tecnored | inactive | 1d | 2026-06-10 | 2026-06-10 | 281, 7 |  |  |  |  |  | 26d | 0d |  | -0 |  |  |  |  |  |  |
| 283 | 1.1.10.1.3 | Atendimento de comentários | inactive | 2d | 2026-06-11 | 2026-06-12 | 282 |  |  |  |  |  | 26d | 0d |  | -0 |  |  |  |  |  |  |
| 284 | 1.1.10.1.4 | Aprovação | inactive | 1d | 2026-06-15 | 2026-06-15 | 283 |  |  |  |  |  | 26d |  |  | -0 |  |  |  |  |  |  |

| ID | WBS | Task | Duration | Start | Finish | Predecessors | Complete | Remaining | Baseline start | Baseline finish | Baseline duration | Total slack | Free slack | Constraint | DISCIPLINA | Início_LB_R0 | Término _LB_R0 | Text5 | ILB_2 | TLB_2 |
| --- | --- | --- | --- | --- | --- | --- | --- | --- | --- | --- | --- | --- | --- | --- | --- | --- | --- | --- | --- | --- |
| 285 | 1.1.10.2 | **ML-F0009-0306-MB-E-00001** | 9d | 2026-06-09 | 2026-06-19 |  |  |  | 2026-06-12 | 2026-06-24 | 9d |  |  |  | ELÉTRICA | Sex 12/06/26 | Qua 24/06/26 | Emissão inicial | Ter 16/06/26 | Qui 18/06/26 |
| 286 | 1.1.10.2.1 | Emissão inicial | 5d | 2026-06-09 | 2026-06-15 | 120 |  |  | 2026-06-12 | 2026-06-18 | 5d | 13d | 0d |  | ELÉTRICA | Sex 12/06/26 | Qui 18/06/26 | Análise Tecnored | Sex 19/06/26 | Sex 19/06/26 |
| 287 | 1.1.10.2.2 | Análise Tecnored | 1d | 2026-06-16 | 2026-06-16 | 286 |  |  | 2026-06-19 | 2026-06-19 | 1d | 22d | 0d |  | ELÉTRICA | Sex 19/06/26 | Sex 19/06/26 | Atendimento de comentários | Seg 22/06/26 | Ter 23/06/26 |
| 288 | 1.1.10.2.3 | Atendimento de comentários | 2d | 2026-06-17 | 2026-06-18 | 287 |  |  | 2026-06-22 | 2026-06-23 | 2d | 22d | 0d |  | ELÉTRICA | Seg 22/06/26 | Ter 23/06/26 | Aprovação | Qua 24/06/26 | Qua 24/06/26 |
| 289 | 1.1.10.2.4 | Aprovação | 1d | 2026-06-19 | 2026-06-19 | 288 |  |  | 2026-06-24 | 2026-06-24 | 1d | 22d |  |  | ELÉTRICA | Qua 24/06/26 | Qua 24/06/26 | MC-F0009-0306-MB-S-00001 | Sex 29/05/26 | Seg 08/06/26 |
| 290 | 1.1.10.3 | **RL-F0009-0306-MB-E-00001** | 7d | 2026-06-02 A | 2026-06-12 |  | 43% | 4d | 2026-06-02 | 2026-06-10 | 7d |  |  |  | ELÉTRICA | Qui 21/05/26 | Sex 29/05/26 | Emissão inicial | Sex 29/05/26 | Ter 02/06/26 |
| 291 | 1.1.10.3.1 | Emissão inicial | 3d | 2026-06-02 A | 2026-06-08 A | 301 | 100% |  | 2026-06-02 | 2026-06-04 | 3d |  |  |  | ELÉTRICA | Qui 21/05/26 | Seg 25/05/26 | Análise Tecnored | Qua 03/06/26 | Qua 03/06/26 |
| 292 | 1.1.10.3.2 | Análise Tecnored | 1d | 2026-06-09 | 2026-06-09 | 291 |  |  | 2026-06-05 | 2026-06-05 | 1d | 27d | 0d |  | ELÉTRICA | Ter 26/05/26 | Ter 26/05/26 | Atendimento de comentários | Qui 04/06/26 | Sex 05/06/26 |
| 293 | 1.1.10.3.3 | Atendimento de comentários | 2d | 2026-06-10 | 2026-06-11 | 292 |  |  | 2026-06-08 | 2026-06-09 | 2d | 27d | 0d |  | ELÉTRICA | Qua 27/05/26 | Qui 28/05/26 | Aprovação | Seg 08/06/26 | Seg 08/06/26 |
| 294 | 1.1.10.3.4 | Aprovação | 1d | 2026-06-12 | 2026-06-12 | 293 |  |  | 2026-06-10 | 2026-06-10 | 1d | 27d |  |  | ELÉTRICA | Sex 29/05/26 | Sex 29/05/26 | AG-F0009-0306-MB-S-00001 | Seg 15/06/26 | Qui 25/06/26 |
| 295 | 1.1.10.4 | **LE-F0009-0306-MB-E-00001** | 7d | 2026-06-26 | 2026-07-06 |  |  |  | 2026-06-24 | 2026-07-02 | 7d |  |  |  | ELÉTRICA | Sex 12/06/26 | Seg 22/06/26 | Emissão inicial | Seg 15/06/26 | Sex 19/06/26 |
| 296 | 1.1.10.4.1 | Emissão inicial | 3d | 2026-07-10 | 2026-07-14 | 321, 326 |  |  | 2026-06-24 | 2026-06-26 | 3d | 1d | 0d |  | ELÉTRICA | Sex 12/06/26 | Ter 16/06/26 | Análise Tecnored | Seg 22/06/26 | Seg 22/06/26 |
| 297 | 1.1.10.4.2 | Análise Tecnored | 1d | 2026-07-15 | 2026-07-15 | 296 |  |  | 2026-06-29 | 2026-06-29 | 1d | 1d | 0d |  | ELÉTRICA | Qua 17/06/26 | Qua 17/06/26 | Atendimento de comentários | Ter 23/06/26 | Qua 24/06/26 |
| 298 | 1.1.10.4.3 | Atendimento de comentários | 2d | 2026-07-16 | 2026-07-17 | 297 |  |  | 2026-06-30 | 2026-07-01 | 2d | 1d | 0d |  | ELÉTRICA | Qui 18/06/26 | Sex 19/06/26 | Aprovação | Qui 25/06/26 | Qui 25/06/26 |
| 299 | 1.1.10.4.4 | Aprovação | 1d | 2026-07-20 | 2026-07-20 | 298 |  |  | 2026-07-02 | 2026-07-02 | 1d | 1d |  |  | ELÉTRICA | Seg 22/06/26 | Seg 22/06/26 | AG-F0009-0306-MB-S-00002 | Seg 15/06/26 | Qui 25/06/26 |
| 300 | 1.1.10.5 | **LR-F0009-0306-MB-E-00001** | 10d | 2026-05-28 A | 2026-06-12 |  | 60% | 4d | 2026-05-28 | 2026-06-05 | 7d |  |  |  | ELÉTRICA | Seg 18/05/26 | Ter 26/05/26 | Emissão inicial | Seg 15/06/26 | Sex 19/06/26 |
| 301 | 1.1.10.5.1 | Emissão inicial | 3d | 2026-05-28 A | 2026-06-01 A | 73 | 100% |  | 2026-05-28 | 2026-06-01 | 3d |  |  |  | ELÉTRICA | Seg 18/05/26 | Qua 20/05/26 | Análise Tecnored | Seg 22/06/26 | Seg 22/06/26 |
| 302 | 1.1.10.5.2 | Análise Tecnored | 4d | 2026-06-02 A | 2026-06-09 | 301 | 75% | 1d | 2026-06-02 | 2026-06-02 | 1d | 27d | 0d | finish no earlier than 2026-06-09 | ELÉTRICA | Qui 21/05/26 | Qui 21/05/26 | Atendimento de comentários | Ter 23/06/26 | Qua 24/06/26 |
| 303 | 1.1.10.5.3 | Atendimento de comentários | 2d | 2026-06-10 | 2026-06-11 | 302 |  |  | 2026-06-03 | 2026-06-04 | 2d | 27d | 0d | start no earlier than 2026-06-10 | ELÉTRICA | Sex 22/05/26 | Seg 25/05/26 | Aprovação | Qui 25/06/26 | Qui 25/06/26 |
| 304 | 1.1.10.5.4 | Aprovação | 1d | 2026-06-12 | 2026-06-12 | 303 |  |  | 2026-06-05 | 2026-06-05 | 1d | 27d |  | start no earlier than 2026-06-12 | ELÉTRICA | Ter 26/05/26 | Ter 26/05/26 | AG-F0009-0306-MB-S-00003 | Seg 15/06/26 | Qui 25/06/26 |
| 305 | 1.1.10.6 | **LM-F0009-0306-MB-E-00001** | 5d | 2026-06-23 | 2026-06-29 |  |  |  | 2026-06-26 | 2026-07-02 | 5d |  |  |  | ELÉTRICA | Sex 26/06/26 | Qui 02/07/26 | Emissão inicial | Seg 15/06/26 | Sex 19/06/26 |
| 306 | 1.1.10.6.1 | Emissão inicial | 1d | 2026-06-23 | 2026-06-23 | 332 |  |  | 2026-06-26 | 2026-06-26 | 1d | 13d | 0d |  | ELÉTRICA | Sex 26/06/26 | Sex 26/06/26 | Análise Tecnored | Seg 22/06/26 | Seg 22/06/26 |
| 307 | 1.1.10.6.2 | Análise Tecnored | 1d | 2026-06-24 | 2026-06-24 | 306 |  |  | 2026-06-29 | 2026-06-29 | 1d | 16d | 0d |  | ELÉTRICA | Seg 29/06/26 | Seg 29/06/26 | Atendimento de comentários | Ter 23/06/26 | Qua 24/06/26 |
| 308 | 1.1.10.6.3 | Atendimento de comentários | 2d | 2026-06-25 | 2026-06-26 | 307 |  |  | 2026-06-30 | 2026-07-01 | 2d | 16d | 0d |  | ELÉTRICA | Ter 30/06/26 | Qua 01/07/26 | Aprovação | Qui 25/06/26 | Qui 25/06/26 |
| 309 | 1.1.10.6.4 | Aprovação | 1d | 2026-06-29 | 2026-06-29 | 308 |  |  | 2026-07-02 | 2026-07-02 | 1d | 16d |  |  | ELÉTRICA | Qui 02/07/26 | Qui 02/07/26 | AG-F0009-0306-MB-S-00004 | Seg 15/06/26 | Qui 25/06/26 |

| ID | WBS | Task | Type | Duration | Start | Finish | Predecessors | Baseline start | Baseline finish | Baseline duration | Total slack | Free slack | Baseline cost | DISCIPLINA | Início_LB_R0 | Término _LB_R0 | Text5 | ILB_2 | TLB_2 |
| --- | --- | --- | --- | --- | --- | --- | --- | --- | --- | --- | --- | --- | --- | --- | --- | --- | --- | --- | --- |
| 310 | 1.1.10.7 | **PQ-F0009-0306-MB-E-00001** |  | 7d | 2026-06-24 | 2026-07-02 |  | 2026-06-29 | 2026-07-07 | 7d |  |  |  | ELÉTRICA | Seg 29/06/26 | Ter 07/07/26 | Emissão inicial | Seg 15/06/26 | Sex 19/06/26 |
| 311 | 1.1.10.7.1 | Emissão inicial |  | 3d | 2026-06-24 | 2026-06-26 | 306 | 2026-06-29 | 2026-07-01 | 3d | 13d | 0d |  | ELÉTRICA | Seg 29/06/26 | Qua 01/07/26 | Análise Tecnored | Seg 22/06/26 | Seg 22/06/26 |
| 312 | 1.1.10.7.2 | Análise Tecnored |  | 1d | 2026-06-29 | 2026-06-29 | 311 | 2026-07-02 | 2026-07-02 | 1d | 13d | 0d |  | ELÉTRICA | Qui 02/07/26 | Qui 02/07/26 | Atendimento de comentários | Ter 23/06/26 | Qua 24/06/26 |
| 313 | 1.1.10.7.3 | Atendimento de comentários |  | 2d | 2026-06-30 | 2026-07-01 | 312 | 2026-07-03 | 2026-07-06 | 2d | 13d | 0d |  | ELÉTRICA | Sex 03/07/26 | Seg 06/07/26 | Aprovação | Qui 25/06/26 | Qui 25/06/26 |
| 314 | 1.1.10.7.4 | Aprovação |  | 1d | 2026-07-02 | 2026-07-02 | 313 | 2026-07-07 | 2026-07-07 | 1d | 13d |  |  | ELÉTRICA | Ter 07/07/26 | Ter 07/07/26 | AG-F0009-0306-MB-S-00005 | Seg 15/06/26 | Qui 25/06/26 |
| 315 | 1.1.10.8 | **MD-F0009-0306-MB-E-00001** | inactive | 6d | 2026-06-24 | 2026-07-01 |  |  |  |  | 14d |  | -0 |  |  |  |  |  |  |
| 316 | 1.1.10.8.1 | Emissão inicial | inactive | 2d | 2026-06-24 | 2026-06-25 | 306 |  |  |  | 14d | 0d | -0 |  |  |  |  |  |  |
| 317 | 1.1.10.8.2 | Análise Tecnored | inactive | 1d | 2026-06-26 | 2026-06-26 | 316 |  |  |  | 14d | 0d | -0 |  |  |  |  |  |  |
| 318 | 1.1.10.8.3 | Atendimento de comentários | inactive | 2d | 2026-06-29 | 2026-06-30 | 317 |  |  |  | 14d | 0d | -0 |  |  |  |  |  |  |
| 319 | 1.1.10.8.4 | Aprovação | inactive | 1d | 2026-07-01 | 2026-07-01 | 318 |  |  |  | 14d |  | -0 |  |  |  |  |  |  |
| 320 | 1.1.10.9 | **MC-F0009-0306-MB-E-00001** |  | 9d | 2026-06-19 | 2026-07-01 |  | 2026-06-17 | 2026-06-26 | 8d |  |  |  | ELÉTRICA | Sex 05/06/26 | Qua 17/06/26 | Emissão inicial | Seg 15/06/26 | Sex 19/06/26 |
| 321 | 1.1.10.9.1 | Emissão inicial |  | 5d | 2026-07-03 | 2026-07-09 | 386 | 2026-06-17 | 2026-06-22 | 4d | 1d | 0d |  | ELÉTRICA | Sex 05/06/26 | Qui 11/06/26 | Análise Tecnored | Seg 22/06/26 | Seg 22/06/26 |
| 322 | 1.1.10.9.2 | Análise Tecnored |  | 1d | 2026-07-10 | 2026-07-10 | 321 | 2026-06-23 | 2026-06-23 | 1d | 4d | 0d |  | ELÉTRICA | Sex 12/06/26 | Sex 12/06/26 | Atendimento de comentários | Ter 23/06/26 | Qua 24/06/26 |
| 323 | 1.1.10.9.3 | Atendimento de comentários |  | 2d | 2026-07-13 | 2026-07-14 | 322 | 2026-06-24 | 2026-06-25 | 2d | 4d | 0d |  | ELÉTRICA | Seg 15/06/26 | Ter 16/06/26 | Aprovação | Qui 25/06/26 | Qui 25/06/26 |
| 324 | 1.1.10.9.4 | Aprovação |  | 1d | 2026-07-15 | 2026-07-15 | 323 | 2026-06-26 | 2026-06-26 | 1d | 4d |  |  | ELÉTRICA | Qua 17/06/26 | Qua 17/06/26 | PL-F0009-0306-MB-S-00001 | Seg 15/06/26 | Qui 25/06/26 |
| 325 | 1.1.10.10 | **MC-F0009-0306-MB-E-00002** |  | 9d | 2026-06-19 | 2026-07-01 |  | 2026-06-17 | 2026-06-29 | 9d |  |  |  | ELÉTRICA | Sex 05/06/26 | Qua 17/06/26 | Emissão inicial | Seg 15/06/26 | Sex 19/06/26 |
| 326 | 1.1.10.10.1 | Emissão inicial |  | 5d | 2026-07-03 | 2026-07-09 | 386 | 2026-06-17 | 2026-06-23 | 5d | 0d |  |  | ELÉTRICA | Sex 05/06/26 | Qui 11/06/26 | Análise Tecnored | Seg 22/06/26 | Seg 22/06/26 |
| 327 | 1.1.10.10.2 | Análise Tecnored |  | 1d | 2026-07-10 | 2026-07-10 | 326 | 2026-06-24 | 2026-06-24 | 1d | 4d | 0d |  | ELÉTRICA | Sex 12/06/26 | Sex 12/06/26 | Atendimento de comentários | Ter 23/06/26 | Qua 24/06/26 |
| 328 | 1.1.10.10.3 | Atendimento de comentários |  | 2d | 2026-07-13 | 2026-07-14 | 327 | 2026-06-25 | 2026-06-26 | 2d | 4d | 0d |  | ELÉTRICA | Seg 15/06/26 | Ter 16/06/26 | Aprovação | Qui 25/06/26 | Qui 25/06/26 |
| 329 | 1.1.10.10.4 | Aprovação |  | 1d | 2026-07-15 | 2026-07-15 | 328 | 2026-06-29 | 2026-06-29 | 1d | 4d |  |  | ELÉTRICA | Qua 17/06/26 | Qua 17/06/26 | Elétrica | Ter 05/05/26 | Ter 07/07/26 |
| 330 | 1.1.10.11 | **AG-F0009-0306-MB-E-00001** |  | 8d | 2026-06-16 | 2026-06-25 |  | 2026-06-19 | 2026-06-30 | 8d |  |  |  | ELÉTRICA | Sex 19/06/26 | Ter 30/06/26 | ML-F0009-0306-MB-E-00001 | Sex 12/06/26 | Qua 24/06/26 |
| 331 | 1.1.10.11.1 | Emissão inicial |  | 4d | 2026-06-16 | 2026-06-19 | 286 | 2026-06-19 | 2026-06-24 | 4d | 13d | 0d |  | ELÉTRICA | Sex 19/06/26 | Qua 24/06/26 | Emissão inicial | Sex 12/06/26 | Qui 18/06/26 |
| 332 | 1.1.10.11.2 | Análise Tecnored |  | 1d | 2026-06-22 | 2026-06-22 | 331 | 2026-06-25 | 2026-06-25 | 1d | 13d | 0d |  | ELÉTRICA | Qui 25/06/26 | Qui 25/06/26 | Análise Tecnored | Sex 19/06/26 | Sex 19/06/26 |
| 333 | 1.1.10.11.3 | Atendimento de comentários |  | 2d | 2026-06-23 | 2026-06-24 | 332 | 2026-06-26 | 2026-06-29 | 2d | 18d | 0d |  | ELÉTRICA | Sex 26/06/26 | Seg 29/06/26 | Atendimento de comentários | Seg 22/06/26 | Ter 23/06/26 |
| 334 | 1.1.10.11.4 | Aprovação |  | 1d | 2026-06-25 | 2026-06-25 | 333 | 2026-06-30 | 2026-06-30 | 1d | 18d |  |  | ELÉTRICA | Ter 30/06/26 | Ter 30/06/26 | Aprovação | Qua 24/06/26 | Qua 24/06/26 |

| ID | WBS | Task | Duration | Start | Finish | Predecessors | Baseline start | Baseline finish | Baseline duration | Total slack | Free slack | Constraint | DISCIPLINA | Início_LB_R0 | Término _LB_R0 | Text5 | ILB_2 | TLB_2 |
| --- | --- | --- | --- | --- | --- | --- | --- | --- | --- | --- | --- | --- | --- | --- | --- | --- | --- | --- |
| 335 | 1.1.10.12 | **DU-F0009-0306-MB-E-00001** | 7d | 2026-06-09 | 2026-06-17 |  | 2026-06-05 | 2026-06-15 | 7d |  |  |  | ELÉTRICA | Ter 26/05/26 | Qua 03/06/26 | RL-F0009-0306-MB-E-00001 | Qui 21/05/26 | Sex 29/05/26 |
| 336 | 1.1.10.12.1 | Emissão inicial | 3d | 2026-06-09 | 2026-06-11 | 291 | 2026-06-05 | 2026-06-09 | 3d | 9d | 0d |  | ELÉTRICA | Ter 26/05/26 | Qui 28/05/26 | Emissão inicial | Qui 21/05/26 | Seg 25/05/26 |
| 337 | 1.1.10.12.2 | Análise Tecnored | 1d | 2026-06-12 | 2026-06-12 | 336 | 2026-06-10 | 2026-06-10 | 1d | 24d | 0d |  | ELÉTRICA | Sex 29/05/26 | Sex 29/05/26 | Análise Tecnored | Ter 26/05/26 | Ter 26/05/26 |
| 338 | 1.1.10.12.3 | Atendimento de comentários | 2d | 2026-06-15 | 2026-06-16 | 337 | 2026-06-11 | 2026-06-12 | 2d | 24d | 0d |  | ELÉTRICA | Seg 01/06/26 | Ter 02/06/26 | Atendimento de comentários | Qua 27/05/26 | Qui 28/05/26 |
| 339 | 1.1.10.12.4 | Aprovação | 1d | 2026-06-17 | 2026-06-17 | 338 | 2026-06-15 | 2026-06-15 | 1d | 24d |  |  | ELÉTRICA | Qua 03/06/26 | Qua 03/06/26 | Aprovação | Sex 29/05/26 | Sex 29/05/26 |
| 340 | 1.1.10.13 | **DU-F0009-0306-MB-E-00002** | 8d | 2026-06-16 | 2026-06-25 |  | 2026-06-24 | 2026-07-01 | 6d |  |  |  | ELÉTRICA | Sex 12/06/26 | Qua 24/06/26 | LE-F0009-0306-MB-E-00001 | Sex 12/06/26 | Seg 22/06/26 |
| 341 | 1.1.10.13.1 | Emissão inicial | 4d | 2026-07-10 | 2026-07-15 | 326 | 2026-06-24 | 2026-06-25 | 2d | 0d |  | finish no earlier than 2026-06-19 | ELÉTRICA | Sex 12/06/26 | Qui 18/06/26 | Emissão inicial | Sex 12/06/26 | Ter 16/06/26 |
| 342 | 1.1.10.13.2 | Análise Tecnored | 1d | 2026-07-16 | 2026-07-16 | 341 | 2026-06-26 | 2026-06-26 | 1d | 0d |  | start no earlier than 2026-06-22 | ELÉTRICA | Sex 19/06/26 | Sex 19/06/26 | Análise Tecnored | Qua 17/06/26 | Qua 17/06/26 |
| 343 | 1.1.10.13.3 | Atendimento de comentários | 2d | 2026-07-17 | 2026-07-20 | 342 | 2026-06-29 | 2026-06-30 | 2d | 0d |  | start no earlier than 2026-06-23 | ELÉTRICA | Seg 22/06/26 | Ter 23/06/26 | Atendimento de comentários | Qui 18/06/26 | Sex 19/06/26 |
| 344 | 1.1.10.13.4 | Aprovação | 1d | 2026-07-21 | 2026-07-21 | 343 | 2026-07-01 | 2026-07-01 | 1d | 0d |  | start no earlier than 2026-06-25 | ELÉTRICA | Qua 24/06/26 | Qua 24/06/26 | Aprovação | Seg 22/06/26 | Seg 22/06/26 |
| 345 | 1.1.10.14 | **DU-F0009-0306-MB-E-00003** | 8d | 2026-06-16 | 2026-06-25 |  | 2026-06-24 | 2026-07-06 | 9d |  |  |  | ELÉTRICA | Sex 12/06/26 | Qua 24/06/26 | LR-F0009-0306-MB-E-00001 | Seg 18/05/26 | Ter 26/05/26 |
| 346 | 1.1.10.14.1 | Emissão inicial | 4d | 2026-07-10 | 2026-07-15 | 326 | 2026-06-24 | 2026-06-30 | 5d | 0d |  | finish no earlier than 2026-06-19 | ELÉTRICA | Sex 12/06/26 | Qui 18/06/26 | Emissão inicial | Seg 18/05/26 | Qua 20/05/26 |
| 347 | 1.1.10.14.2 | Análise Tecnored | 1d | 2026-07-16 | 2026-07-16 | 346 | 2026-07-01 | 2026-07-01 | 1d | 0d |  | start no earlier than 2026-06-22 | ELÉTRICA | Sex 19/06/26 | Sex 19/06/26 | Análise Tecnored | Qui 21/05/26 | Qui 21/05/26 |
| 348 | 1.1.10.14.3 | Atendimento de comentários | 2d | 2026-07-17 | 2026-07-20 | 347 | 2026-07-02 | 2026-07-03 | 2d | 0d |  | start no earlier than 2026-06-23 | ELÉTRICA | Seg 22/06/26 | Ter 23/06/26 | Atendimento de comentários | Sex 22/05/26 | Seg 25/05/26 |
| 349 | 1.1.10.14.4 | Aprovação | 1d | 2026-07-21 | 2026-07-21 | 348 | 2026-07-06 | 2026-07-06 | 1d | 0d |  | start no earlier than 2026-06-25 | ELÉTRICA | Qua 24/06/26 | Qua 24/06/26 | Aprovação | Ter 26/05/26 | Ter 26/05/26 |
| 350 | 1.1.10.15 | **DU-F0009-0306-MB-E-00004** | 9d | 2026-06-12 | 2026-06-24 |  | 2026-06-05 | 2026-06-29 | 17d |  |  |  | ELÉTRICA | Ter 26/05/26 | Qua 17/06/26 | LM-F0009-0306-MB-E-00001 | Sex 26/06/26 | Qui 02/07/26 |
| 351 | 1.1.10.15.1 | Emissão inicial | 5d | 2026-06-12 | 2026-06-18 | 291 | 2026-06-05 | 2026-06-11 | 5d | 23d |  | start no earlier than 2026-06-12 | ELÉTRICA | Ter 26/05/26 | Seg 01/06/26 | Emissão inicial | Sex 26/06/26 | Sex 26/06/26 |
| 352 | 1.1.10.15.2 | Análise Tecnored | 1d | 2026-07-10 | 2026-07-10 | 326 | 2026-06-24 | 2026-06-24 | 1d | 4d | 0d | start no earlier than 2026-06-19 | ELÉTRICA | Sex 12/06/26 | Sex 12/06/26 | Análise Tecnored | Seg 29/06/26 | Seg 29/06/26 |
| 353 | 1.1.10.15.3 | Atendimento de comentários | 2d | 2026-07-13 | 2026-07-14 | 352 | 2026-06-25 | 2026-06-26 | 2d | 4d | 0d | start no earlier than 2026-06-22 | ELÉTRICA | Seg 15/06/26 | Ter 16/06/26 | Atendimento de comentários | Ter 30/06/26 | Qua 01/07/26 |
| 354 | 1.1.10.15.4 | Aprovação | 1d | 2026-07-15 | 2026-07-15 | 353 | 2026-06-29 | 2026-06-29 | 1d | 4d |  | start no earlier than 2026-06-24 | ELÉTRICA | Qua 17/06/26 | Qua 17/06/26 | Aprovação | Qui 02/07/26 | Qui 02/07/26 |
| 355 | 1.1.10.16 | **AG-F0009-0306-MB-E-00002** | 9d | 2026-06-12 | 2026-06-24 |  | 2026-06-19 | 2026-06-30 | 8d |  |  |  | ELÉTRICA | Sex 19/06/26 | Ter 30/06/26 | PQ-F0009-0306-MB-E-00001 | Seg 29/06/26 | Ter 07/07/26 |
| 356 | 1.1.10.16.1 | Emissão inicial | 5d | 2026-06-16 | 2026-06-22 | 286 | 2026-06-19 | 2026-06-24 | 4d | 17d | 0d | finish no earlier than 2026-06-18 | ELÉTRICA | Sex 19/06/26 | Qua 24/06/26 | Emissão inicial | Seg 29/06/26 | Qua 01/07/26 |
| 357 | 1.1.10.16.2 | Análise Tecnored | 1d | 2026-06-23 | 2026-06-23 | 356 | 2026-06-25 | 2026-06-25 | 1d | 17d | 0d | start no earlier than 2026-06-19 | ELÉTRICA | Qui 25/06/26 | Qui 25/06/26 | Análise Tecnored | Qui 02/07/26 | Qui 02/07/26 |
| 358 | 1.1.10.16.3 | Atendimento de comentários | 2d | 2026-06-24 | 2026-06-25 | 357 | 2026-06-26 | 2026-06-29 | 2d | 17d | 0d | start no earlier than 2026-06-22 | ELÉTRICA | Sex 26/06/26 | Seg 29/06/26 | Atendimento de comentários | Sex 03/07/26 | Seg 06/07/26 |
| 359 | 1.1.10.16.4 | Aprovação | 1d | 2026-06-26 | 2026-06-26 | 358 | 2026-06-30 | 2026-06-30 | 1d | 17d |  | start no earlier than 2026-06-24 | ELÉTRICA | Ter 30/06/26 | Ter 30/06/26 | Aprovação | Ter 07/07/26 | Ter 07/07/26 |

| ID | WBS | Task | Duration | Start | Finish | Predecessors | Baseline start | Baseline finish | Baseline duration | Total slack | Free slack | Constraint | DISCIPLINA | Início_LB_R0 | Término _LB_R0 | Text5 | ILB_2 | TLB_2 |
| --- | --- | --- | --- | --- | --- | --- | --- | --- | --- | --- | --- | --- | --- | --- | --- | --- | --- | --- |
| 360 | 1.1.10.17 | **AG-F0009-0306-MB-E-00003** | 9d | 2026-06-12 | 2026-06-24 |  | 2026-06-19 | 2026-06-30 | 8d |  |  |  | ELÉTRICA | Sex 19/06/26 | Ter 30/06/26 | MC-F0009-0306-MB-E-00001 | Sex 05/06/26 | Qua 17/06/26 |
| 361 | 1.1.10.17.1 | Emissão inicial | 5d | 2026-06-16 | 2026-06-22 | 286 | 2026-06-19 | 2026-06-24 | 4d | 17d | 0d | finish no earlier than 2026-06-18 | ELÉTRICA | Sex 19/06/26 | Qua 24/06/26 | Emissão inicial | Sex 05/06/26 | Qui 11/06/26 |
| 362 | 1.1.10.17.2 | Análise Tecnored | 1d | 2026-06-23 | 2026-06-23 | 361 | 2026-06-25 | 2026-06-25 | 1d | 17d | 0d | start no earlier than 2026-06-19 | ELÉTRICA | Qui 25/06/26 | Qui 25/06/26 | Análise Tecnored | Sex 12/06/26 | Sex 12/06/26 |
| 363 | 1.1.10.17.3 | Atendimento de comentários | 2d | 2026-06-24 | 2026-06-25 | 362 | 2026-06-26 | 2026-06-29 | 2d | 17d | 0d | start no earlier than 2026-06-22 | ELÉTRICA | Sex 26/06/26 | Seg 29/06/26 | Atendimento de comentários | Seg 15/06/26 | Ter 16/06/26 |
| 364 | 1.1.10.17.4 | Aprovação | 1d | 2026-06-26 | 2026-06-26 | 363 | 2026-06-30 | 2026-06-30 | 1d | 17d |  | start no earlier than 2026-06-24 | ELÉTRICA | Ter 30/06/26 | Ter 30/06/26 | Aprovação | Qua 17/06/26 | Qua 17/06/26 |
| 365 | 1.1.10.18 | **FD-F0009-0306-MB-E-00001** | 9d | 2026-06-12 | 2026-06-24 |  | 2026-06-10 | 2026-06-22 | 9d |  |  |  | ELÉTRICA | Sex 29/05/26 | Qua 10/06/26 | MC-F0009-0306-MB-E-00002 | Sex 05/06/26 | Qua 17/06/26 |
| 366 | 1.1.10.18.1 | Emissão inicial | 5d | 2026-06-12 | 2026-06-18 | 336 | 2026-06-10 | 2026-06-16 | 5d | 19d | 0d |  | ELÉTRICA | Sex 29/05/26 | Qui 04/06/26 | Emissão inicial | Sex 05/06/26 | Qui 11/06/26 |
| 367 | 1.1.10.18.2 | Análise Tecnored | 1d | 2026-06-19 | 2026-06-19 | 366 | 2026-06-17 | 2026-06-17 | 1d | 19d | 0d |  | ELÉTRICA | Sex 05/06/26 | Sex 05/06/26 | Análise Tecnored | Sex 12/06/26 | Sex 12/06/26 |
| 368 | 1.1.10.18.3 | Atendimento de comentários | 2d | 2026-06-22 | 2026-06-23 | 367 | 2026-06-18 | 2026-06-19 | 2d | 19d | 0d |  | ELÉTRICA | Seg 08/06/26 | Ter 09/06/26 | Atendimento de comentários | Seg 15/06/26 | Ter 16/06/26 |
| 369 | 1.1.10.18.4 | Aprovação | 1d | 2026-06-24 | 2026-06-24 | 368 | 2026-06-22 | 2026-06-22 | 1d | 19d |  |  | ELÉTRICA | Qua 10/06/26 | Qua 10/06/26 | Aprovação | Qua 17/06/26 | Qua 17/06/26 |
| 370 | 1.1.10.19 | **FD-F0009-0306-MB-E-00002** | 9d | 2026-06-12 | 2026-06-24 |  | 2026-06-10 | 2026-06-22 | 9d |  |  |  | ELÉTRICA | Sex 29/05/26 | Qua 10/06/26 | AG-F0009-0306-MB-E-00001 | Sex 19/06/26 | Ter 30/06/26 |
| 371 | 1.1.10.19.1 | Emissão inicial | 5d | 2026-06-12 | 2026-06-18 | 336 | 2026-06-10 | 2026-06-16 | 5d | 19d | 0d |  | ELÉTRICA | Sex 29/05/26 | Qui 04/06/26 | Emissão inicial | Sex 19/06/26 | Qua 24/06/26 |
| 372 | 1.1.10.19.2 | Análise Tecnored | 1d | 2026-06-19 | 2026-06-19 | 371 | 2026-06-17 | 2026-06-17 | 1d | 19d | 0d |  | ELÉTRICA | Sex 05/06/26 | Sex 05/06/26 | Análise Tecnored | Qui 25/06/26 | Qui 25/06/26 |
| 373 | 1.1.10.19.3 | Atendimento de comentários | 2d | 2026-06-22 | 2026-06-23 | 372 | 2026-06-18 | 2026-06-19 | 2d | 19d | 0d |  | ELÉTRICA | Seg 08/06/26 | Ter 09/06/26 | Atendimento de comentários | Sex 26/06/26 | Seg 29/06/26 |
| 374 | 1.1.10.19.4 | Aprovação | 1d | 2026-06-24 | 2026-06-24 | 373 | 2026-06-22 | 2026-06-22 | 1d | 19d |  |  | ELÉTRICA | Qua 10/06/26 | Qua 10/06/26 | Aprovação | Ter 30/06/26 | Ter 30/06/26 |
| 375 | 1.1.10.20 | **FD-F0009-0306-MB-E-00003** | 27d | 2026-05-29 | 2026-07-08 |  | 2026-06-10 | 2026-06-22 | 9d |  |  |  | ELÉTRICA | Sex 29/05/26 | Qua 10/06/26 | DU-F0009-0306-MB-E-00001 | Ter 26/05/26 | Qua 03/06/26 |
| 376 | 1.1.10.20.1 | Emissão inicial | 7d | 2026-06-12 | 2026-06-22 | 336 | 2026-06-10 | 2026-06-16 | 5d | 15d | 0d | finish no earlier than 2026-06-18 | ELÉTRICA | Sex 29/05/26 | Qui 04/06/26 | Emissão inicial | Ter 26/05/26 | Qui 28/05/26 |
| 377 | 1.1.10.20.2 | Análise Tecnored | 3d | 2026-06-23 | 2026-06-25 | 376 | 2026-06-17 | 2026-06-17 | 1d | 15d | 0d | finish no earlier than 2026-06-12 | ELÉTRICA | Sex 05/06/26 | Sex 05/06/26 | Análise Tecnored | Sex 29/05/26 | Sex 29/05/26 |
| 378 | 1.1.10.20.3 | Atendimento de comentários | 1d | 2026-06-26 | 2026-06-26 | 377 | 2026-06-18 | 2026-06-19 | 2d | 15d | 0d | finish no earlier than 2026-06-15 | ELÉTRICA | Seg 08/06/26 | Ter 09/06/26 | Atendimento de comentários | Seg 01/06/26 | Ter 02/06/26 |
| 379 | 1.1.10.20.4 | Aprovação | 2d | 2026-06-29 | 2026-06-30 | 378 | 2026-06-22 | 2026-06-22 | 1d | 15d |  | finish no earlier than 2026-06-17 | ELÉTRICA | Qua 10/06/26 | Qua 10/06/26 | Aprovação | Qua 03/06/26 | Qua 03/06/26 |
| 380 | 1.1.10.21 | **FD-F0009-0306-MB-E-00004** | 1d | 2026-06-18 | 2026-06-18 |  | 2026-06-10 | 2026-06-22 | 9d |  |  |  | ELÉTRICA | Sex 29/05/26 | Qua 10/06/26 | DU-F0009-0306-MB-E-00002 | Sex 12/06/26 | Qua 24/06/26 |
| 381 | 1.1.10.21.1 | Emissão inicial | 6d | 2026-06-29 | 2026-07-06 | 336 | 2026-06-10 | 2026-06-16 | 5d | 6d | 0d | finish no earlier than 2026-07-06 | ELÉTRICA | Sex 29/05/26 | Qui 04/06/26 | Emissão inicial | Sex 12/06/26 | Qui 18/06/26 |
| 382 | 1.1.10.21.2 | Análise Tecnored | 2d | 2026-07-07 | 2026-07-08 | 381 | 2026-06-17 | 2026-06-17 | 1d | 6d | 0d | finish no earlier than 2026-06-30 | ELÉTRICA | Sex 05/06/26 | Sex 05/06/26 | Análise Tecnored | Sex 19/06/26 | Sex 19/06/26 |
| 383 | 1.1.10.21.3 | Atendimento de comentários | 1d | 2026-07-09 | 2026-07-09 | 382 | 2026-06-18 | 2026-06-19 | 2d | 6d | 0d | finish no earlier than 2026-07-01 | ELÉTRICA | Seg 08/06/26 | Ter 09/06/26 | Atendimento de comentários | Seg 22/06/26 | Ter 23/06/26 |
| 384 | 1.1.10.21.4 | Aprovação | 2d | 2026-07-10 | 2026-07-13 | 383 | 2026-06-22 | 2026-06-22 | 1d | 6d |  | finish no earlier than 2026-07-03 | ELÉTRICA | Qua 10/06/26 | Qua 10/06/26 | Aprovação | Qua 24/06/26 | Qua 24/06/26 |

| ID | WBS | Task | Type | Duration | Start | Finish | Predecessors | Complete | Remaining | Baseline start | Baseline finish | Baseline duration | Total slack | Free slack | Constraint | Baseline cost | DISCIPLINA | Início_LB_R0 | Término _LB_R0 | Text5 | ILB_2 | TLB_2 |
| --- | --- | --- | --- | --- | --- | --- | --- | --- | --- | --- | --- | --- | --- | --- | --- | --- | --- | --- | --- | --- | --- | --- |
| 385 | 1.1.10.22 | **FD-F0009-0306-MB-E-00005** |  | 1d | 2026-07-06 | 2026-07-06 |  |  |  | 2026-06-10 | 2026-06-22 | 9d |  |  |  |  | ELÉTRICA | Sex 29/05/26 | Qua 10/06/26 | DU-F0009-0306-MB-E-00003 | Sex 12/06/26 | Qua 24/06/26 |
| 386 | 1.1.10.22.1 | Emissão inicial |  | 6d | 2026-06-25 | 2026-07-02 | 336 |  |  | 2026-06-10 | 2026-06-16 | 5d | 0d |  | finish no earlier than 2026-07-02 |  | ELÉTRICA | Sex 29/05/26 | Qui 04/06/26 | Emissão inicial | Sex 12/06/26 | Qui 18/06/26 |
| 387 | 1.1.10.22.2 | Análise Tecnored |  | 2d | 2026-07-03 | 2026-07-06 | 386 |  |  | 2026-06-17 | 2026-06-17 | 1d | 8d | 0d | finish no earlier than 2026-06-26 |  | ELÉTRICA | Sex 05/06/26 | Sex 05/06/26 | Análise Tecnored | Sex 19/06/26 | Sex 19/06/26 |
| 388 | 1.1.10.22.3 | Atendimento de comentários |  | 1d | 2026-07-07 | 2026-07-07 | 387 |  |  | 2026-06-18 | 2026-06-19 | 2d | 8d | 0d | finish no earlier than 2026-06-29 |  | ELÉTRICA | Seg 08/06/26 | Ter 09/06/26 | Atendimento de comentários | Seg 22/06/26 | Ter 23/06/26 |
| 389 | 1.1.10.22.4 | Aprovação |  | 2d | 2026-07-08 | 2026-07-09 | 388 |  |  | 2026-06-22 | 2026-06-22 | 1d | 8d |  | finish no earlier than 2026-07-01 |  | ELÉTRICA | Qua 10/06/26 | Qua 10/06/26 | Aprovação | Qua 24/06/26 | Qua 24/06/26 |
| 390 | 1.1.11 | **Automação e instrumentação** |  | 24d | 2026-05-29 A | 2026-07-03 |  | 5% | 22.8d | 2026-06-02 | 2026-07-08 | 27d | 12d |  |  |  | AUTOMAÇÃO E INSTRUMENTAÇÃO | Ter 05/05/26 | Ter 07/07/26 | DU-F0009-0306-MB-E-00004 | Ter 26/05/26 | Qua 17/06/26 |
| 391 | 1.1.11.1 | **CP-F0009-0306-MB-J-00001** | inactive | 28d | 2026-05-05 | 2026-06-15 |  |  |  |  |  |  | 26d |  |  | -0 |  |  |  |  |  |  |
| 392 | 1.1.11.1.1 | Emissão inicial | inactive | 7d | 2026-05-05 | 2026-05-13 | 20 |  |  |  |  |  | 43d | 17d |  | -0 |  |  |  |  |  |  |
| 393 | 1.1.11.1.2 | Análise Tecnored | inactive | 1d | 2026-06-10 | 2026-06-10 | 392, 8 |  |  |  |  |  | 26d | 0d |  | -0 |  |  |  |  |  |  |
| 394 | 1.1.11.1.3 | Atendimento de comentários | inactive | 2d | 2026-06-11 | 2026-06-12 | 393 |  |  |  |  |  | 26d | 0d |  | -0 |  |  |  |  |  |  |
| 395 | 1.1.11.1.4 | Aprovação | inactive | 1d | 2026-06-15 | 2026-06-15 | 394 |  |  |  |  |  | 26d |  |  | -0 |  |  |  |  |  |  |
| 396 | 1.1.11.2 | **LI-F0009-0306-MB-J-00001** |  | 9d | 2026-06-09 | 2026-06-19 |  |  |  | 2026-06-05 | 2026-06-15 | 7d | 12d |  |  |  | AUTOMAÇÃO E INSTRUMENTAÇÃO | Qua 20/05/26 | Qui 28/05/26 | Emissão inicial | Ter 26/05/26 | Seg 01/06/26 |
| 397 | 1.1.11.2.1 | Emissão inicial |  | 5d | 2026-06-09 | 2026-06-15 | 427 |  |  | 2026-06-05 | 2026-06-09 | 3d | 12d | 0d | finish no earlier than 2026-06-15 |  | AUTOMAÇÃO E INSTRUMENTAÇÃO | Qua 20/05/26 | Sex 22/05/26 | Análise Tecnored | Sex 12/06/26 | Sex 12/06/26 |
| 398 | 1.1.11.2.2 | Análise Tecnored |  | 1d | 2026-06-16 | 2026-06-16 | 397 |  |  | 2026-06-10 | 2026-06-10 | 1d | 22d | 0d |  |  | AUTOMAÇÃO E INSTRUMENTAÇÃO | Seg 25/05/26 | Seg 25/05/26 | Atendimento de comentários | Seg 15/06/26 | Ter 16/06/26 |
| 399 | 1.1.11.2.3 | Atendimento de comentários |  | 2d | 2026-06-17 | 2026-06-18 | 398 |  |  | 2026-06-11 | 2026-06-12 | 2d | 22d | 0d |  |  | AUTOMAÇÃO E INSTRUMENTAÇÃO | Ter 26/05/26 | Qua 27/05/26 | Aprovação | Qua 17/06/26 | Qua 17/06/26 |
| 400 | 1.1.11.2.4 | Aprovação |  | 1d | 2026-06-19 | 2026-06-19 | 399 |  |  | 2026-06-15 | 2026-06-15 | 1d | 22d |  |  |  | AUTOMAÇÃO E INSTRUMENTAÇÃO | Qui 28/05/26 | Qui 28/05/26 | AG-F0009-0306-MB-E-00002 | Sex 19/06/26 | Ter 30/06/26 |
| 401 | 1.1.11.3 | **LE-F0009-0306-MB-J-00001** |  | 5d | 2026-06-17 | 2026-06-23 |  |  |  | 2026-06-26 | 2026-07-03 | 6d | 20d |  |  |  | AUTOMAÇÃO E INSTRUMENTAÇÃO | Sex 19/06/26 | Seg 29/06/26 | Emissão inicial | Sex 19/06/26 | Qua 24/06/26 |
| 402 | 1.1.11.3.1 | Emissão inicial |  | 1d | 2026-06-17 | 2026-06-17 | 477 |  |  | 2026-06-26 | 2026-06-29 | 2d | 20d | 0d |  |  | AUTOMAÇÃO E INSTRUMENTAÇÃO | Sex 19/06/26 | Ter 23/06/26 | Análise Tecnored | Qui 25/06/26 | Qui 25/06/26 |
| 403 | 1.1.11.3.2 | Análise Tecnored |  | 1d | 2026-06-18 | 2026-06-18 | 402 |  |  | 2026-06-30 | 2026-06-30 | 1d | 20d | 0d |  |  | AUTOMAÇÃO E INSTRUMENTAÇÃO | Qua 24/06/26 | Qua 24/06/26 | Atendimento de comentários | Sex 26/06/26 | Seg 29/06/26 |
| 404 | 1.1.11.3.3 | Atendimento de comentários |  | 2d | 2026-06-19 | 2026-06-22 | 403 |  |  | 2026-07-01 | 2026-07-02 | 2d | 20d | 0d |  |  | AUTOMAÇÃO E INSTRUMENTAÇÃO | Qui 25/06/26 | Sex 26/06/26 | Aprovação | Ter 30/06/26 | Ter 30/06/26 |
| 405 | 1.1.11.3.4 | Aprovação |  | 1d | 2026-06-23 | 2026-06-23 | 404 |  |  | 2026-07-03 | 2026-07-03 | 1d | 20d |  |  |  | AUTOMAÇÃO E INSTRUMENTAÇÃO | Seg 29/06/26 | Seg 29/06/26 | AG-F0009-0306-MB-E-00003 | Sex 19/06/26 | Ter 30/06/26 |
| 406 | 1.1.11.4 | **LZ-F0009-0306-MB-J-00001** |  | 8d | 2026-05-29 A | 2026-06-11 |  | 50% | 4d | 2026-06-22 | 2026-06-29 | 6d | 28d |  |  |  | AUTOMAÇÃO E INSTRUMENTAÇÃO | Qui 11/06/26 | Sex 19/06/26 | Emissão inicial | Sex 19/06/26 | Qua 24/06/26 |
| 407 | 1.1.11.4.1 | Emissão inicial |  | 4d | 2026-05-29 A | 2026-06-03 A | 457FS-5d | 100% |  | 2026-06-22 | 2026-06-23 | 2d |  |  |  |  | AUTOMAÇÃO E INSTRUMENTAÇÃO | Qui 11/06/26 | Seg 15/06/26 | Análise Tecnored | Qui 25/06/26 | Qui 25/06/26 |
| 408 | 1.1.11.4.2 | Análise Tecnored |  | 1d | 2026-06-08 | 2026-06-08 | 407 |  |  | 2026-06-24 | 2026-06-24 | 1d | 28d | 0d |  |  | AUTOMAÇÃO E INSTRUMENTAÇÃO | Ter 16/06/26 | Ter 16/06/26 | Atendimento de comentários | Sex 26/06/26 | Seg 29/06/26 |
| 409 | 1.1.11.4.3 | Atendimento de comentários |  | 2d | 2026-06-09 | 2026-06-10 | 408 |  |  | 2026-06-25 | 2026-06-26 | 2d | 28d | 0d |  |  | AUTOMAÇÃO E INSTRUMENTAÇÃO | Qua 17/06/26 | Qui 18/06/26 | Aprovação | Ter 30/06/26 | Ter 30/06/26 |
| 410 | 1.1.11.4.4 | Aprovação |  | 1d | 2026-06-11 | 2026-06-11 | 409 |  |  | 2026-06-29 | 2026-06-29 | 1d | 28d |  |  |  | AUTOMAÇÃO E INSTRUMENTAÇÃO | Sex 19/06/26 | Sex 19/06/26 | FD-F0009-0306-MB-E-00001 | Sex 29/05/26 | Qua 10/06/26 |

| ID | WBS | Task | Duration | Start | Finish | Predecessors | Complete | Remaining | Baseline start | Baseline finish | Baseline duration | Total slack | Free slack | Constraint | DISCIPLINA | Início_LB_R0 | Término _LB_R0 | Text5 | ILB_2 | TLB_2 |
| --- | --- | --- | --- | --- | --- | --- | --- | --- | --- | --- | --- | --- | --- | --- | --- | --- | --- | --- | --- | --- |
| 411 | 1.1.11.5 | **LE-F0009-0306-MB-J-00002** | 9d | 2026-06-11 | 2026-06-23 |  |  |  | 2026-06-22 | 2026-06-30 | 7d | 20d |  |  | AUTOMAÇÃO E INSTRUMENTAÇÃO | Sex 19/06/26 | Seg 29/06/26 | Emissão inicial | Sex 29/05/26 | Qui 04/06/26 |
| 412 | 1.1.11.5.1 | Emissão inicial | 6d | 2026-06-11 | 2026-06-18 | 477FS-4d |  |  | 2026-06-22 | 2026-06-24 | 3d | 20d | 0d |  | AUTOMAÇÃO E INSTRUMENTAÇÃO | Sex 19/06/26 | Ter 23/06/26 | Análise Tecnored | Sex 05/06/26 | Sex 05/06/26 |
| 413 | 1.1.11.5.2 | Análise Tecnored | 1d | 2026-06-19 | 2026-06-19 | 412 |  |  | 2026-06-25 | 2026-06-25 | 1d | 20d | 0d |  | AUTOMAÇÃO E INSTRUMENTAÇÃO | Qua 24/06/26 | Qua 24/06/26 | Atendimento de comentários | Seg 08/06/26 | Ter 09/06/26 |
| 414 | 1.1.11.5.3 | Atendimento de comentários | 1d | 2026-06-22 | 2026-06-22 | 413 |  |  | 2026-06-26 | 2026-06-29 | 2d | 20d | 0d |  | AUTOMAÇÃO E INSTRUMENTAÇÃO | Qui 25/06/26 | Sex 26/06/26 | Aprovação | Qua 10/06/26 | Qua 10/06/26 |
| 415 | 1.1.11.5.4 | Aprovação | 1d | 2026-06-23 | 2026-06-23 | 414 |  |  | 2026-06-30 | 2026-06-30 | 1d | 20d |  |  | AUTOMAÇÃO E INSTRUMENTAÇÃO | Seg 29/06/26 | Seg 29/06/26 | FD-F0009-0306-MB-E-00002 | Sex 29/05/26 | Qua 10/06/26 |
| 416 | 1.1.11.6 | **PQ-F0009-0306-MB-J-00001** | 9d | 2026-06-16 | 2026-06-26 |  |  |  | 2026-06-23 | 2026-06-29 | 5d | 17d |  |  | AUTOMAÇÃO E INSTRUMENTAÇÃO | Qua 01/07/26 | Ter 07/07/26 | Emissão inicial | Sex 29/05/26 | Qui 04/06/26 |
| 417 | 1.1.11.6.1 | Emissão inicial | 6d | 2026-06-16 | 2026-06-23 | 472FS-5d |  |  | 2026-06-23 | 2026-06-23 | 1d | 17d | 0d |  | AUTOMAÇÃO E INSTRUMENTAÇÃO | Qua 01/07/26 | Qua 01/07/26 | Análise Tecnored | Sex 05/06/26 | Sex 05/06/26 |
| 418 | 1.1.11.6.2 | Análise Tecnored | 1d | 2026-06-24 | 2026-06-24 | 417 |  |  | 2026-06-24 | 2026-06-24 | 1d | 17d | 0d |  | AUTOMAÇÃO E INSTRUMENTAÇÃO | Qui 02/07/26 | Qui 02/07/26 | Atendimento de comentários | Seg 08/06/26 | Ter 09/06/26 |
| 419 | 1.1.11.6.3 | Atendimento de comentários | 1d | 2026-06-25 | 2026-06-25 | 418 |  |  | 2026-06-25 | 2026-06-26 | 2d | 17d | 0d |  | AUTOMAÇÃO E INSTRUMENTAÇÃO | Sex 03/07/26 | Seg 06/07/26 | Aprovação | Qua 10/06/26 | Qua 10/06/26 |
| 420 | 1.1.11.6.4 | Aprovação | 1d | 2026-06-26 | 2026-06-26 | 419 |  |  | 2026-06-29 | 2026-06-29 | 1d | 17d |  |  | AUTOMAÇÃO E INSTRUMENTAÇÃO | Ter 07/07/26 | Ter 07/07/26 | FD-F0009-0306-MB-E-00003 | Sex 29/05/26 | Qua 10/06/26 |
| 421 | 1.1.11.7 | **FG-F0009-0306-MB-J-00001** | 7d | 2026-06-01 A | 2026-06-11 |  | 50% | 3.5d | 2026-06-02 | 2026-06-12 | 9d | 28d |  |  | AUTOMAÇÃO E INSTRUMENTAÇÃO | Sex 15/05/26 | Qua 27/05/26 | Emissão inicial | Sex 29/05/26 | Qui 04/06/26 |
| 422 | 1.1.11.7.1 | Emissão inicial | 4d | 2026-06-01 A | 2026-06-08 A | 57FS-4d | 100% |  | 2026-06-02 | 2026-06-08 | 5d |  |  |  | AUTOMAÇÃO E INSTRUMENTAÇÃO | Sex 15/05/26 | Qui 21/05/26 | Análise Tecnored | Sex 05/06/26 | Sex 05/06/26 |
| 423 | 1.1.11.7.2 | Análise Tecnored | 1d | 2026-06-09 | 2026-06-09 | 422 |  |  | 2026-06-09 | 2026-06-09 | 1d | 28d | 0d | start no earlier than 2026-06-09 | AUTOMAÇÃO E INSTRUMENTAÇÃO | Sex 22/05/26 | Sex 22/05/26 | Atendimento de comentários | Seg 08/06/26 | Ter 09/06/26 |
| 424 | 1.1.11.7.3 | Atendimento de comentários | 2d | 2026-06-10 | 2026-06-11 | 423 |  |  | 2026-06-10 | 2026-06-11 | 2d | 28d | 0d | start no earlier than 2026-06-10 | AUTOMAÇÃO E INSTRUMENTAÇÃO | Seg 25/05/26 | Ter 26/05/26 | Aprovação | Qua 10/06/26 | Qua 10/06/26 |
| 425 | 1.1.11.7.4 | Aprovação | 1d | 2026-06-11 | 2026-06-11 | 424FF |  |  | 2026-06-12 | 2026-06-12 | 1d | 28d |  | start no earlier than 2026-06-11 | AUTOMAÇÃO E INSTRUMENTAÇÃO | Qua 27/05/26 | Qua 27/05/26 | FD-F0009-0306-MB-E-00004 | Sex 29/05/26 | Qua 10/06/26 |
| 426 | 1.1.11.8 | **FG-F0009-0306-MB-J-00002** | 8d | 2026-06-01 A | 2026-06-12 |  | 50% | 4d | 2026-06-02 | 2026-06-10 | 7d | 27d |  |  | AUTOMAÇÃO E INSTRUMENTAÇÃO | Sex 15/05/26 | Seg 25/05/26 | Emissão inicial | Sex 29/05/26 | Qui 04/06/26 |
| 427 | 1.1.11.8.1 | Emissão inicial | 4d | 2026-06-01 A | 2026-06-08 A | 57FS-4d | 100% |  | 2026-06-02 | 2026-06-04 | 3d |  |  |  | AUTOMAÇÃO E INSTRUMENTAÇÃO | Sex 15/05/26 | Ter 19/05/26 | Análise Tecnored | Sex 05/06/26 | Sex 05/06/26 |
| 428 | 1.1.11.8.2 | Análise Tecnored | 1d | 2026-06-09 | 2026-06-09 | 427 |  |  | 2026-06-05 | 2026-06-05 | 1d | 27d | 0d | start no earlier than 2026-06-09 | AUTOMAÇÃO E INSTRUMENTAÇÃO | Qua 20/05/26 | Qua 20/05/26 | Atendimento de comentários | Seg 08/06/26 | Ter 09/06/26 |
| 429 | 1.1.11.8.3 | Atendimento de comentários | 2d | 2026-06-10 | 2026-06-11 | 428 |  |  | 2026-06-08 | 2026-06-09 | 2d | 27d | 0d | start no earlier than 2026-06-10 | AUTOMAÇÃO E INSTRUMENTAÇÃO | Qui 21/05/26 | Sex 22/05/26 | Aprovação | Qua 10/06/26 | Qua 10/06/26 |
| 430 | 1.1.11.8.4 | Aprovação | 1d | 2026-06-12 | 2026-06-12 | 429 |  |  | 2026-06-10 | 2026-06-10 | 1d | 27d |  | start no earlier than 2026-06-12 | AUTOMAÇÃO E INSTRUMENTAÇÃO | Seg 25/05/26 | Seg 25/05/26 | FD-F0009-0306-MB-E-00005 | Sex 29/05/26 | Qua 10/06/26 |
| 431 | 1.1.11.9 | **FG-F0009-0306-MB-J-00003** | 8d | 2026-06-01 A | 2026-06-12 |  | 50% | 4d | 2026-06-02 | 2026-06-12 | 9d | 27d |  |  | AUTOMAÇÃO E INSTRUMENTAÇÃO | Sex 15/05/26 | Qua 27/05/26 | Emissão inicial | Sex 29/05/26 | Qui 04/06/26 |
| 432 | 1.1.11.9.1 | Emissão inicial | 4d | 2026-06-01 A | 2026-06-08 A | 57FS-4d | 100% |  | 2026-06-02 | 2026-06-08 | 5d |  |  |  | AUTOMAÇÃO E INSTRUMENTAÇÃO | Sex 15/05/26 | Qui 21/05/26 | Análise Tecnored | Sex 05/06/26 | Sex 05/06/26 |
| 433 | 1.1.11.9.2 | Análise Tecnored | 1d | 2026-06-09 | 2026-06-09 | 432 |  |  | 2026-06-09 | 2026-06-09 | 1d | 27d | 0d | start no earlier than 2026-06-09 | AUTOMAÇÃO E INSTRUMENTAÇÃO | Sex 22/05/26 | Sex 22/05/26 | Atendimento de comentários | Seg 08/06/26 | Ter 09/06/26 |
| 434 | 1.1.11.9.3 | Atendimento de comentários | 2d | 2026-06-10 | 2026-06-11 | 433 |  |  | 2026-06-10 | 2026-06-11 | 2d | 27d | 0d | start no earlier than 2026-06-10 | AUTOMAÇÃO E INSTRUMENTAÇÃO | Seg 25/05/26 | Ter 26/05/26 | Aprovação | Qua 10/06/26 | Qua 10/06/26 |
| 435 | 1.1.11.9.4 | Aprovação | 1d | 2026-06-12 | 2026-06-12 | 434 |  |  | 2026-06-12 | 2026-06-12 | 1d | 27d |  | start no earlier than 2026-06-12 | AUTOMAÇÃO E INSTRUMENTAÇÃO | Qua 27/05/26 | Qua 27/05/26 | Automação e instrumentação | Ter 05/05/26 | Ter 07/07/26 |

| ID | WBS | Task | Duration | Start | Finish | Predecessors | Baseline start | Baseline finish | Baseline duration | Total slack | Free slack | DISCIPLINA | Início_LB_R0 | Término _LB_R0 | Text5 | ILB_2 | TLB_2 |
| --- | --- | --- | --- | --- | --- | --- | --- | --- | --- | --- | --- | --- | --- | --- | --- | --- | --- |
| 436 | 1.1.11.10 | **AG-F0009-0306-MB-J-00001** | 14d | 2026-06-16 | 2026-07-03 |  | 2026-06-10 | 2026-06-29 | 14d | 12d |  | AUTOMAÇÃO E INSTRUMENTAÇÃO | Seg 25/05/26 | Qui 11/06/26 | LI-F0009-0306-MB-J-00001 | Qua 20/05/26 | Qui 28/05/26 |
| 437 | 1.1.11.10.1 | Emissão inicial | 10d | 2026-06-16 | 2026-06-29 | 397 | 2026-06-10 | 2026-06-23 | 10d | 12d | 0d | AUTOMAÇÃO E INSTRUMENTAÇÃO | Seg 25/05/26 | Sex 05/06/26 | Emissão inicial | Qua 20/05/26 | Sex 22/05/26 |
| 438 | 1.1.11.10.2 | Análise Tecnored | 1d | 2026-06-30 | 2026-06-30 | 437 | 2026-06-24 | 2026-06-24 | 1d | 12d | 0d | AUTOMAÇÃO E INSTRUMENTAÇÃO | Seg 08/06/26 | Seg 08/06/26 | Análise Tecnored | Seg 25/05/26 | Seg 25/05/26 |
| 439 | 1.1.11.10.3 | Atendimento de comentários | 2d | 2026-07-01 | 2026-07-02 | 438 | 2026-06-25 | 2026-06-26 | 2d | 12d | 0d | AUTOMAÇÃO E INSTRUMENTAÇÃO | Ter 09/06/26 | Qua 10/06/26 | Atendimento de comentários | Ter 26/05/26 | Qua 27/05/26 |
| 440 | 1.1.11.10.4 | Aprovação | 1d | 2026-07-03 | 2026-07-03 | 439 | 2026-06-29 | 2026-06-29 | 1d | 12d |  | AUTOMAÇÃO E INSTRUMENTAÇÃO | Qui 11/06/26 | Qui 11/06/26 | Aprovação | Qui 28/05/26 | Qui 28/05/26 |
| 441 | 1.1.11.11 | **AG-F0009-0306-MB-J-00002** | 7d | 2026-06-16 | 2026-06-24 |  | 2026-06-10 | 2026-06-29 | 14d | 19d |  | AUTOMAÇÃO E INSTRUMENTAÇÃO | Seg 25/05/26 | Qui 11/06/26 | LE-F0009-0306-MB-J-00001 | Sex 19/06/26 | Seg 29/06/26 |
| 442 | 1.1.11.11.1 | Emissão inicial | 3d | 2026-06-16 | 2026-06-18 | 397 | 2026-06-10 | 2026-06-23 | 10d | 19d | 0d | AUTOMAÇÃO E INSTRUMENTAÇÃO | Seg 25/05/26 | Sex 05/06/26 | Emissão inicial | Sex 19/06/26 | Ter 23/06/26 |
| 443 | 1.1.11.11.2 | Análise Tecnored | 1d | 2026-06-19 | 2026-06-19 | 442 | 2026-06-24 | 2026-06-24 | 1d | 19d | 0d | AUTOMAÇÃO E INSTRUMENTAÇÃO | Seg 08/06/26 | Seg 08/06/26 | Análise Tecnored | Qua 24/06/26 | Qua 24/06/26 |
| 444 | 1.1.11.11.3 | Atendimento de comentários | 2d | 2026-06-22 | 2026-06-23 | 443 | 2026-06-25 | 2026-06-26 | 2d | 19d | 0d | AUTOMAÇÃO E INSTRUMENTAÇÃO | Ter 09/06/26 | Qua 10/06/26 | Atendimento de comentários | Qui 25/06/26 | Sex 26/06/26 |
| 445 | 1.1.11.11.4 | Aprovação | 1d | 2026-06-24 | 2026-06-24 | 444 | 2026-06-29 | 2026-06-29 | 1d | 19d |  | AUTOMAÇÃO E INSTRUMENTAÇÃO | Qui 11/06/26 | Qui 11/06/26 | Aprovação | Seg 29/06/26 | Seg 29/06/26 |
| 446 | 1.1.11.12 | **AG-F0009-0306-MB-J-00003** | 7d | 2026-06-16 | 2026-06-24 |  | 2026-06-10 | 2026-06-29 | 14d | 17d |  | AUTOMAÇÃO E INSTRUMENTAÇÃO | Seg 25/05/26 | Qui 11/06/26 | LZ-F0009-0306-MB-J-00001 | Qui 11/06/26 | Sex 19/06/26 |
| 447 | 1.1.11.12.1 | Emissão inicial | 3d | 2026-06-16 | 2026-06-18 | 397 | 2026-06-10 | 2026-06-23 | 10d | 17d | 0d | AUTOMAÇÃO E INSTRUMENTAÇÃO | Seg 25/05/26 | Sex 05/06/26 | Emissão inicial | Qui 11/06/26 | Seg 15/06/26 |
| 448 | 1.1.11.12.2 | Análise Tecnored | 1d | 2026-06-19 | 2026-06-19 | 447 | 2026-06-24 | 2026-06-24 | 1d | 19d | 0d | AUTOMAÇÃO E INSTRUMENTAÇÃO | Seg 08/06/26 | Seg 08/06/26 | Análise Tecnored | Ter 16/06/26 | Ter 16/06/26 |
| 449 | 1.1.11.12.3 | Atendimento de comentários | 2d | 2026-06-22 | 2026-06-23 | 448 | 2026-06-25 | 2026-06-26 | 2d | 19d | 0d | AUTOMAÇÃO E INSTRUMENTAÇÃO | Ter 09/06/26 | Qua 10/06/26 | Atendimento de comentários | Qua 17/06/26 | Qui 18/06/26 |
| 450 | 1.1.11.12.4 | Aprovação | 1d | 2026-06-24 | 2026-06-24 | 449 | 2026-06-29 | 2026-06-29 | 1d | 19d |  | AUTOMAÇÃO E INSTRUMENTAÇÃO | Qui 11/06/26 | Qui 11/06/26 | Aprovação | Sex 19/06/26 | Sex 19/06/26 |
| 451 | 1.1.11.13 | **AG-F0009-0306-MB-J-00004** | 6d | 2026-06-16 | 2026-06-23 |  | 2026-06-10 | 2026-06-29 | 14d | 20d |  | AUTOMAÇÃO E INSTRUMENTAÇÃO | Seg 25/05/26 | Qui 11/06/26 | LE-F0009-0306-MB-J-00002 | Sex 19/06/26 | Seg 29/06/26 |
| 452 | 1.1.11.13.1 | Emissão inicial | 2d | 2026-06-16 | 2026-06-17 | 397 | 2026-06-10 | 2026-06-23 | 10d | 20d | 0d | AUTOMAÇÃO E INSTRUMENTAÇÃO | Seg 25/05/26 | Sex 05/06/26 | Emissão inicial | Sex 19/06/26 | Ter 23/06/26 |
| 453 | 1.1.11.13.2 | Análise Tecnored | 1d | 2026-06-18 | 2026-06-18 | 452 | 2026-06-24 | 2026-06-24 | 1d | 20d | 0d | AUTOMAÇÃO E INSTRUMENTAÇÃO | Seg 08/06/26 | Seg 08/06/26 | Análise Tecnored | Qua 24/06/26 | Qua 24/06/26 |
| 454 | 1.1.11.13.3 | Atendimento de comentários | 2d | 2026-06-19 | 2026-06-22 | 453 | 2026-06-25 | 2026-06-26 | 2d | 20d | 0d | AUTOMAÇÃO E INSTRUMENTAÇÃO | Ter 09/06/26 | Qua 10/06/26 | Atendimento de comentários | Qui 25/06/26 | Sex 26/06/26 |
| 455 | 1.1.11.13.4 | Aprovação | 1d | 2026-06-23 | 2026-06-23 | 454 | 2026-06-29 | 2026-06-29 | 1d | 20d |  | AUTOMAÇÃO E INSTRUMENTAÇÃO | Qui 11/06/26 | Qui 11/06/26 | Aprovação | Seg 29/06/26 | Seg 29/06/26 |
| 456 | 1.1.11.14 | **DI-F0009-0306-MB-J-00001** | 6d | 2026-06-19 | 2026-06-26 |  | 2026-06-24 | 2026-07-02 | 7d | 17d |  | AUTOMAÇÃO E INSTRUMENTAÇÃO | Seg 08/06/26 | Ter 16/06/26 | PQ-F0009-0306-MB-J-00001 | Qua 01/07/26 | Ter 07/07/26 |
| 457 | 1.1.11.14.1 | Emissão inicial | 2d | 2026-06-19 | 2026-06-22 | 447 | 2026-06-24 | 2026-06-26 | 3d | 17d | 0d | AUTOMAÇÃO E INSTRUMENTAÇÃO | Seg 08/06/26 | Qua 10/06/26 | Emissão inicial | Qua 01/07/26 | Qua 01/07/26 |
| 458 | 1.1.11.14.2 | Análise Tecnored | 1d | 2026-06-23 | 2026-06-23 | 457 | 2026-06-29 | 2026-06-29 | 1d | 17d | 0d | AUTOMAÇÃO E INSTRUMENTAÇÃO | Qui 11/06/26 | Qui 11/06/26 | Análise Tecnored | Qui 02/07/26 | Qui 02/07/26 |
| 459 | 1.1.11.14.3 | Atendimento de comentários | 2d | 2026-06-24 | 2026-06-25 | 458 | 2026-06-30 | 2026-07-01 | 2d | 17d | 0d | AUTOMAÇÃO E INSTRUMENTAÇÃO | Sex 12/06/26 | Seg 15/06/26 | Atendimento de comentários | Sex 03/07/26 | Seg 06/07/26 |
| 460 | 1.1.11.14.4 | Aprovação | 1d | 2026-06-26 | 2026-06-26 | 459 | 2026-07-02 | 2026-07-02 | 1d | 17d |  | AUTOMAÇÃO E INSTRUMENTAÇÃO | Ter 16/06/26 | Ter 16/06/26 | Aprovação | Ter 07/07/26 | Ter 07/07/26 |

| ID | WBS | Task | Duration | Start | Finish | Predecessors | Baseline start | Baseline finish | Baseline duration | Total slack | Free slack | Constraint | DISCIPLINA | Início_LB_R0 | Término _LB_R0 | Text5 | ILB_2 | TLB_2 |
| --- | --- | --- | --- | --- | --- | --- | --- | --- | --- | --- | --- | --- | --- | --- | --- | --- | --- | --- |
| 461 | 1.1.11.15 | **LI-F0009-0306-MB-J-00002** | 9d | 2026-06-09 | 2026-06-19 |  | 2026-06-26 | 2026-07-06 | 7d | 22d |  |  | AUTOMAÇÃO E INSTRUMENTAÇÃO | Sex 19/06/26 | Seg 29/06/26 | FG-F0009-0306-MB-J-00001 | Sex 15/05/26 | Qua 27/05/26 |
| 462 | 1.1.11.15.1 | Emissão inicial | 5d | 2026-06-09 | 2026-06-15 |  | 2026-06-26 | 2026-06-30 | 3d | 22d | 0d | start no earlier than 2026-06-09 | AUTOMAÇÃO E INSTRUMENTAÇÃO | Sex 19/06/26 | Ter 23/06/26 | Emissão inicial | Sex 15/05/26 | Qui 21/05/26 |
| 463 | 1.1.11.15.2 | Análise Tecnored | 1d | 2026-06-16 | 2026-06-16 | 462 | 2026-07-01 | 2026-07-01 | 1d | 22d | 0d |  | AUTOMAÇÃO E INSTRUMENTAÇÃO | Qua 24/06/26 | Qua 24/06/26 | Análise Tecnored | Sex 22/05/26 | Sex 22/05/26 |
| 464 | 1.1.11.15.3 | Atendimento de comentários | 2d | 2026-06-17 | 2026-06-18 | 463 | 2026-07-02 | 2026-07-03 | 2d | 22d | 0d |  | AUTOMAÇÃO E INSTRUMENTAÇÃO | Qui 25/06/26 | Sex 26/06/26 | Atendimento de comentários | Seg 25/05/26 | Ter 26/05/26 |
| 465 | 1.1.11.15.4 | Aprovação | 1d | 2026-06-19 | 2026-06-19 | 464 | 2026-07-06 | 2026-07-06 | 1d | 22d |  |  | AUTOMAÇÃO E INSTRUMENTAÇÃO | Seg 29/06/26 | Seg 29/06/26 | Aprovação | Qua 27/05/26 | Qua 27/05/26 |
| 466 | 1.1.11.16 | **LI-F0009-0306-MB-J-00003** | 8d | 2026-06-09 | 2026-06-18 |  | 2026-06-26 | 2026-07-03 | 6d | 17d |  |  | AUTOMAÇÃO E INSTRUMENTAÇÃO | Sex 19/06/26 | Seg 29/06/26 | FG-F0009-0306-MB-J-00002 | Sex 15/05/26 | Seg 25/05/26 |
| 467 | 1.1.11.16.1 | Emissão inicial | 5d | 2026-06-09 | 2026-06-15 |  | 2026-06-26 | 2026-06-29 | 2d | 17d | 0d | start no earlier than 2026-06-09 | AUTOMAÇÃO E INSTRUMENTAÇÃO | Sex 19/06/26 | Ter 23/06/26 | Emissão inicial | Sex 15/05/26 | Ter 19/05/26 |
| 468 | 1.1.11.16.2 | Análise Tecnored | 1d | 2026-06-16 | 2026-06-16 | 467 | 2026-06-30 | 2026-06-30 | 1d | 23d | 0d |  | AUTOMAÇÃO E INSTRUMENTAÇÃO | Qua 24/06/26 | Qua 24/06/26 | Análise Tecnored | Qua 20/05/26 | Qua 20/05/26 |
| 469 | 1.1.11.16.3 | Atendimento de comentários | 1d | 2026-06-17 | 2026-06-17 | 468 | 2026-07-01 | 2026-07-02 | 2d | 23d | 0d |  | AUTOMAÇÃO E INSTRUMENTAÇÃO | Qui 25/06/26 | Sex 26/06/26 | Atendimento de comentários | Qui 21/05/26 | Sex 22/05/26 |
| 470 | 1.1.11.16.4 | Aprovação | 1d | 2026-06-18 | 2026-06-18 | 469 | 2026-07-03 | 2026-07-03 | 1d | 23d |  |  | AUTOMAÇÃO E INSTRUMENTAÇÃO | Seg 29/06/26 | Seg 29/06/26 | Aprovação | Seg 25/05/26 | Seg 25/05/26 |
| 471 | 1.1.11.17 | **LM-F0009-0306-MB-J-00001** | 10d | 2026-06-12 | 2026-06-25 |  | 2026-06-26 | 2026-07-03 | 6d | 17d |  |  | AUTOMAÇÃO E INSTRUMENTAÇÃO | Seg 29/06/26 | Seg 06/07/26 | FG-F0009-0306-MB-J-00003 | Sex 15/05/26 | Qua 27/05/26 |
| 472 | 1.1.11.17.1 | Emissão inicial | 7d | 2026-06-12 | 2026-06-22 | 562FS-5d | 2026-06-26 | 2026-06-29 | 2d | 17d | 0d |  | AUTOMAÇÃO E INSTRUMENTAÇÃO | Seg 29/06/26 | Ter 30/06/26 | Emissão inicial | Sex 15/05/26 | Qui 21/05/26 |
| 473 | 1.1.11.17.2 | Análise Tecnored | 1d | 2026-06-23 | 2026-06-23 | 472 | 2026-06-30 | 2026-06-30 | 1d | 18d | 0d |  | AUTOMAÇÃO E INSTRUMENTAÇÃO | Qua 01/07/26 | Qua 01/07/26 | Análise Tecnored | Sex 22/05/26 | Sex 22/05/26 |
| 474 | 1.1.11.17.3 | Atendimento de comentários | 1d | 2026-06-24 | 2026-06-24 | 473 | 2026-07-01 | 2026-07-02 | 2d | 18d | 0d |  | AUTOMAÇÃO E INSTRUMENTAÇÃO | Qui 02/07/26 | Sex 03/07/26 | Atendimento de comentários | Seg 25/05/26 | Ter 26/05/26 |
| 475 | 1.1.11.17.4 | Aprovação | 1d | 2026-06-25 | 2026-06-25 | 474 | 2026-07-03 | 2026-07-03 | 1d | 18d |  |  | AUTOMAÇÃO E INSTRUMENTAÇÃO | Seg 06/07/26 | Seg 06/07/26 | Aprovação | Qua 27/05/26 | Qua 27/05/26 |
| 476 | 1.1.11.18 | **ET-F0009-0306-MB-J-00001** | 10d | 2026-06-08 | 2026-06-19 |  | 2026-06-24 | 2026-07-01 | 6d | 20d |  |  | AUTOMAÇÃO E INSTRUMENTAÇÃO | Ter 16/06/26 | Qua 24/06/26 | AG-F0009-0306-MB-J-00001 | Seg 25/05/26 | Qui 11/06/26 |
| 477 | 1.1.11.18.1 | Emissão inicial | 7d | 2026-06-08 | 2026-06-16 | 407 | 2026-06-24 | 2026-06-25 | 2d | 20d | 0d |  | AUTOMAÇÃO E INSTRUMENTAÇÃO | Ter 16/06/26 | Qui 18/06/26 | Emissão inicial | Seg 25/05/26 | Sex 05/06/26 |
| 478 | 1.1.11.18.2 | Análise Tecnored | 1d | 2026-06-17 | 2026-06-17 | 477 | 2026-06-26 | 2026-06-26 | 1d | 22d | 0d |  | AUTOMAÇÃO E INSTRUMENTAÇÃO | Sex 19/06/26 | Sex 19/06/26 | Análise Tecnored | Seg 08/06/26 | Seg 08/06/26 |
| 479 | 1.1.11.18.3 | Atendimento de comentários | 1d | 2026-06-18 | 2026-06-18 | 478 | 2026-06-29 | 2026-06-30 | 2d | 22d | 0d |  | AUTOMAÇÃO E INSTRUMENTAÇÃO | Seg 22/06/26 | Ter 23/06/26 | Atendimento de comentários | Ter 09/06/26 | Qua 10/06/26 |
| 480 | 1.1.11.18.4 | Aprovação | 1d | 2026-06-19 | 2026-06-19 | 479 | 2026-07-01 | 2026-07-01 | 1d | 22d |  |  | AUTOMAÇÃO E INSTRUMENTAÇÃO | Qua 24/06/26 | Qua 24/06/26 | Aprovação | Qui 11/06/26 | Qui 11/06/26 |
| 481 | 1.1.11.19 | **FD-F0009-0306-MB-J-00001** | 10d | 2026-06-08 | 2026-06-19 |  | 2026-06-24 | 2026-07-08 | 11d | 22d |  |  | AUTOMAÇÃO E INSTRUMENTAÇÃO | Ter 16/06/26 | Sex 03/07/26 | AG-F0009-0306-MB-J-00002 | Seg 25/05/26 | Qui 11/06/26 |
| 482 | 1.1.11.19.1 | Emissão inicial | 7d | 2026-06-08 | 2026-06-16 | 407 | 2026-06-24 | 2026-07-02 | 7d | 22d | 0d |  | AUTOMAÇÃO E INSTRUMENTAÇÃO | Ter 16/06/26 | Seg 29/06/26 | Emissão inicial | Seg 25/05/26 | Sex 05/06/26 |
| 483 | 1.1.11.19.2 | Análise Tecnored | 1d | 2026-06-17 | 2026-06-17 | 482 | 2026-07-03 | 2026-07-03 | 1d | 22d | 0d |  | AUTOMAÇÃO E INSTRUMENTAÇÃO | Ter 30/06/26 | Ter 30/06/26 | Análise Tecnored | Seg 08/06/26 | Seg 08/06/26 |
| 484 | 1.1.11.19.3 | Atendimento de comentários | 1d | 2026-06-18 | 2026-06-18 | 483 | 2026-07-06 | 2026-07-07 | 2d | 22d | 0d |  | AUTOMAÇÃO E INSTRUMENTAÇÃO | Qua 01/07/26 | Qui 02/07/26 | Atendimento de comentários | Ter 09/06/26 | Qua 10/06/26 |
| 485 | 1.1.11.19.4 | Aprovação | 1d | 2026-06-19 | 2026-06-19 | 484 | 2026-07-08 | 2026-07-08 | 1d | 22d |  |  | AUTOMAÇÃO E INSTRUMENTAÇÃO | Sex 03/07/26 | Sex 03/07/26 | Aprovação | Qui 11/06/26 | Qui 11/06/26 |

| ID | WBS | Task | Duration | Start | Finish | Predecessors | Baseline start | Baseline finish | Baseline duration | Total slack | Free slack | DISCIPLINA | Início_LB_R0 | Término _LB_R0 | Text5 | ILB_2 | TLB_2 |
| --- | --- | --- | --- | --- | --- | --- | --- | --- | --- | --- | --- | --- | --- | --- | --- | --- | --- |
| 486 | 1.1.11.20 | **FD-F0009-0306-MB-J-00002** | 10d | 2026-06-08 | 2026-06-19 |  | 2026-06-24 | 2026-07-08 | 11d | 22d |  | AUTOMAÇÃO E INSTRUMENTAÇÃO | Ter 16/06/26 | Sex 03/07/26 | AG-F0009-0306-MB-J-00003 | Seg 25/05/26 | Qui 11/06/26 |
| 487 | 1.1.11.20.1 | Emissão inicial | 7d | 2026-06-08 | 2026-06-16 | 407 | 2026-06-24 | 2026-07-02 | 7d | 22d | 0d | AUTOMAÇÃO E INSTRUMENTAÇÃO | Ter 16/06/26 | Seg 29/06/26 | Emissão inicial | Seg 25/05/26 | Sex 05/06/26 |
| 488 | 1.1.11.20.2 | Análise Tecnored | 1d | 2026-06-17 | 2026-06-17 | 487 | 2026-07-03 | 2026-07-03 | 1d | 22d | 0d | AUTOMAÇÃO E INSTRUMENTAÇÃO | Ter 30/06/26 | Ter 30/06/26 | Análise Tecnored | Seg 08/06/26 | Seg 08/06/26 |
| 489 | 1.1.11.20.3 | Atendimento de comentários | 1d | 2026-06-18 | 2026-06-18 | 488 | 2026-07-06 | 2026-07-07 | 2d | 22d | 0d | AUTOMAÇÃO E INSTRUMENTAÇÃO | Qua 01/07/26 | Qui 02/07/26 | Atendimento de comentários | Ter 09/06/26 | Qua 10/06/26 |
| 490 | 1.1.11.20.4 | Aprovação | 1d | 2026-06-19 | 2026-06-19 | 489 | 2026-07-08 | 2026-07-08 | 1d | 22d |  | AUTOMAÇÃO E INSTRUMENTAÇÃO | Sex 03/07/26 | Sex 03/07/26 | Aprovação | Qui 11/06/26 | Qui 11/06/26 |
| 491 | 1.1.11.21 | **FD-F0009-0306-MB-J-00003** | 10d | 2026-06-08 | 2026-06-19 |  | 2026-06-24 | 2026-07-08 | 11d | 22d |  | AUTOMAÇÃO E INSTRUMENTAÇÃO | Ter 16/06/26 | Sex 03/07/26 | AG-F0009-0306-MB-J-00004 | Seg 25/05/26 | Qui 11/06/26 |
| 492 | 1.1.11.21.1 | Emissão inicial | 7d | 2026-06-08 | 2026-06-16 | 407 | 2026-06-24 | 2026-07-02 | 7d | 22d | 0d | AUTOMAÇÃO E INSTRUMENTAÇÃO | Ter 16/06/26 | Seg 29/06/26 | Emissão inicial | Seg 25/05/26 | Sex 05/06/26 |
| 493 | 1.1.11.21.2 | Análise Tecnored | 1d | 2026-06-17 | 2026-06-17 | 492 | 2026-07-03 | 2026-07-03 | 1d | 22d | 0d | AUTOMAÇÃO E INSTRUMENTAÇÃO | Ter 30/06/26 | Ter 30/06/26 | Análise Tecnored | Seg 08/06/26 | Seg 08/06/26 |
| 494 | 1.1.11.21.3 | Atendimento de comentários | 1d | 2026-06-18 | 2026-06-18 | 493 | 2026-07-06 | 2026-07-07 | 2d | 22d | 0d | AUTOMAÇÃO E INSTRUMENTAÇÃO | Qua 01/07/26 | Qui 02/07/26 | Atendimento de comentários | Ter 09/06/26 | Qua 10/06/26 |
| 495 | 1.1.11.21.4 | Aprovação | 1d | 2026-06-19 | 2026-06-19 | 494 | 2026-07-08 | 2026-07-08 | 1d | 22d |  | AUTOMAÇÃO E INSTRUMENTAÇÃO | Sex 03/07/26 | Sex 03/07/26 | Aprovação | Qui 11/06/26 | Qui 11/06/26 |
| 496 | 1.1.11.22 | **FD-F0009-0306-MB-J-00004** | 10d | 2026-06-08 | 2026-06-19 |  | 2026-06-24 | 2026-07-08 | 11d | 22d |  | AUTOMAÇÃO E INSTRUMENTAÇÃO | Ter 16/06/26 | Sex 03/07/26 | DI-F0009-0306-MB-J-00001 | Seg 08/06/26 | Ter 16/06/26 |
| 497 | 1.1.11.22.1 | Emissão inicial | 7d | 2026-06-08 | 2026-06-16 | 407 | 2026-06-24 | 2026-07-02 | 7d | 22d | 0d | AUTOMAÇÃO E INSTRUMENTAÇÃO | Ter 16/06/26 | Seg 29/06/26 | Emissão inicial | Seg 08/06/26 | Qua 10/06/26 |
| 498 | 1.1.11.22.2 | Análise Tecnored | 1d | 2026-06-17 | 2026-06-17 | 497 | 2026-07-03 | 2026-07-03 | 1d | 22d | 0d | AUTOMAÇÃO E INSTRUMENTAÇÃO | Ter 30/06/26 | Ter 30/06/26 | Análise Tecnored | Qui 11/06/26 | Qui 11/06/26 |
| 499 | 1.1.11.22.3 | Atendimento de comentários | 1d | 2026-06-18 | 2026-06-18 | 498 | 2026-07-06 | 2026-07-07 | 2d | 22d | 0d | AUTOMAÇÃO E INSTRUMENTAÇÃO | Qua 01/07/26 | Qui 02/07/26 | Atendimento de comentários | Sex 12/06/26 | Seg 15/06/26 |
| 500 | 1.1.11.22.4 | Aprovação | 1d | 2026-06-19 | 2026-06-19 | 499 | 2026-07-08 | 2026-07-08 | 1d | 22d |  | AUTOMAÇÃO E INSTRUMENTAÇÃO | Sex 03/07/26 | Sex 03/07/26 | Aprovação | Ter 16/06/26 | Ter 16/06/26 |
| 501 | 1.1.11.23 | **FD-F0009-0306-MB-J-00005** | 10d | 2026-06-08 | 2026-06-19 |  | 2026-06-24 | 2026-07-08 | 11d | 22d |  | AUTOMAÇÃO E INSTRUMENTAÇÃO | Ter 16/06/26 | Sex 03/07/26 | LI-F0009-0306-MB-J-00002 | Sex 19/06/26 | Seg 29/06/26 |
| 502 | 1.1.11.23.1 | Emissão inicial | 7d | 2026-06-08 | 2026-06-16 | 407 | 2026-06-24 | 2026-07-02 | 7d | 22d | 0d | AUTOMAÇÃO E INSTRUMENTAÇÃO | Ter 16/06/26 | Seg 29/06/26 | Emissão inicial | Sex 19/06/26 | Ter 23/06/26 |
| 503 | 1.1.11.23.2 | Análise Tecnored | 1d | 2026-06-17 | 2026-06-17 | 502 | 2026-07-03 | 2026-07-03 | 1d | 22d | 0d | AUTOMAÇÃO E INSTRUMENTAÇÃO | Ter 30/06/26 | Ter 30/06/26 | Análise Tecnored | Qua 24/06/26 | Qua 24/06/26 |
| 504 | 1.1.11.23.3 | Atendimento de comentários | 1d | 2026-06-18 | 2026-06-18 | 503 | 2026-07-06 | 2026-07-07 | 2d | 22d | 0d | AUTOMAÇÃO E INSTRUMENTAÇÃO | Qua 01/07/26 | Qui 02/07/26 | Atendimento de comentários | Qui 25/06/26 | Sex 26/06/26 |
| 505 | 1.1.11.23.4 | Aprovação | 1d | 2026-06-19 | 2026-06-19 | 504 | 2026-07-08 | 2026-07-08 | 1d | 22d |  | AUTOMAÇÃO E INSTRUMENTAÇÃO | Sex 03/07/26 | Sex 03/07/26 | Aprovação | Seg 29/06/26 | Seg 29/06/26 |
| 506 | 1.1.11.24 | **FD-F0009-0306-MB-J-00006** | 10d | 2026-06-08 | 2026-06-19 |  | 2026-06-24 | 2026-07-08 | 11d | 22d |  | AUTOMAÇÃO E INSTRUMENTAÇÃO | Ter 16/06/26 | Sex 03/07/26 | LI-F0009-0306-MB-J-00003 | Sex 19/06/26 | Seg 29/06/26 |
| 507 | 1.1.11.24.1 | Emissão inicial | 7d | 2026-06-08 | 2026-06-16 | 407 | 2026-06-24 | 2026-07-02 | 7d | 22d | 0d | AUTOMAÇÃO E INSTRUMENTAÇÃO | Ter 16/06/26 | Seg 29/06/26 | Emissão inicial | Sex 19/06/26 | Ter 23/06/26 |
| 508 | 1.1.11.24.2 | Análise Tecnored | 1d | 2026-06-17 | 2026-06-17 | 507 | 2026-07-03 | 2026-07-03 | 1d | 22d | 0d | AUTOMAÇÃO E INSTRUMENTAÇÃO | Ter 30/06/26 | Ter 30/06/26 | Análise Tecnored | Qua 24/06/26 | Qua 24/06/26 |
| 509 | 1.1.11.24.3 | Atendimento de comentários | 1d | 2026-06-18 | 2026-06-18 | 508 | 2026-07-06 | 2026-07-07 | 2d | 22d | 0d | AUTOMAÇÃO E INSTRUMENTAÇÃO | Qua 01/07/26 | Qui 02/07/26 | Atendimento de comentários | Qui 25/06/26 | Sex 26/06/26 |
| 510 | 1.1.11.24.4 | Aprovação | 1d | 2026-06-19 | 2026-06-19 | 509 | 2026-07-08 | 2026-07-08 | 1d | 22d |  | AUTOMAÇÃO E INSTRUMENTAÇÃO | Sex 03/07/26 | Sex 03/07/26 | Aprovação | Seg 29/06/26 | Seg 29/06/26 |

| ID | WBS | Task | Duration | Start | Finish | Predecessors | Baseline start | Baseline finish | Baseline duration | Total slack | Free slack | DISCIPLINA | Início_LB_R0 | Término _LB_R0 | Text5 | ILB_2 | TLB_2 |
| --- | --- | --- | --- | --- | --- | --- | --- | --- | --- | --- | --- | --- | --- | --- | --- | --- | --- |
| 511 | 1.1.11.25 | **FD-F0009-0306-MB-J-00007** | 10d | 2026-06-08 | 2026-06-19 |  | 2026-06-24 | 2026-07-08 | 11d | 22d |  | AUTOMAÇÃO E INSTRUMENTAÇÃO | Ter 16/06/26 | Sex 03/07/26 | LM-F0009-0306-MB-J-00001 | Seg 29/06/26 | Seg 06/07/26 |
| 512 | 1.1.11.25.1 | Emissão inicial | 7d | 2026-06-08 | 2026-06-16 | 407 | 2026-06-24 | 2026-07-02 | 7d | 22d | 0d | AUTOMAÇÃO E INSTRUMENTAÇÃO | Ter 16/06/26 | Seg 29/06/26 | Emissão inicial | Seg 29/06/26 | Ter 30/06/26 |
| 513 | 1.1.11.25.2 | Análise Tecnored | 1d | 2026-06-17 | 2026-06-17 | 512 | 2026-07-03 | 2026-07-03 | 1d | 22d | 0d | AUTOMAÇÃO E INSTRUMENTAÇÃO | Ter 30/06/26 | Ter 30/06/26 | Análise Tecnored | Qua 01/07/26 | Qua 01/07/26 |
| 514 | 1.1.11.25.3 | Atendimento de comentários | 1d | 2026-06-18 | 2026-06-18 | 513 | 2026-07-06 | 2026-07-07 | 2d | 22d | 0d | AUTOMAÇÃO E INSTRUMENTAÇÃO | Qua 01/07/26 | Qui 02/07/26 | Atendimento de comentários | Qui 02/07/26 | Sex 03/07/26 |
| 515 | 1.1.11.25.4 | Aprovação | 1d | 2026-06-19 | 2026-06-19 | 514 | 2026-07-08 | 2026-07-08 | 1d | 22d |  | AUTOMAÇÃO E INSTRUMENTAÇÃO | Sex 03/07/26 | Sex 03/07/26 | Aprovação | Seg 06/07/26 | Seg 06/07/26 |
| 516 | 1.1.11.26 | **FD-F0009-0306-MB-J-00008** | 10d | 2026-06-08 | 2026-06-19 |  | 2026-06-24 | 2026-07-08 | 11d | 22d |  | AUTOMAÇÃO E INSTRUMENTAÇÃO | Ter 16/06/26 | Sex 03/07/26 | ET-F0009-0306-MB-J-00001 | Ter 16/06/26 | Qua 24/06/26 |
| 517 | 1.1.11.26.1 | Emissão inicial | 7d | 2026-06-08 | 2026-06-16 | 407 | 2026-06-24 | 2026-07-02 | 7d | 22d | 0d | AUTOMAÇÃO E INSTRUMENTAÇÃO | Ter 16/06/26 | Seg 29/06/26 | Emissão inicial | Ter 16/06/26 | Qui 18/06/26 |
| 518 | 1.1.11.26.2 | Análise Tecnored | 1d | 2026-06-17 | 2026-06-17 | 517 | 2026-07-03 | 2026-07-03 | 1d | 22d | 0d | AUTOMAÇÃO E INSTRUMENTAÇÃO | Ter 30/06/26 | Ter 30/06/26 | Análise Tecnored | Sex 19/06/26 | Sex 19/06/26 |
| 519 | 1.1.11.26.3 | Atendimento de comentários | 1d | 2026-06-18 | 2026-06-18 | 518 | 2026-07-06 | 2026-07-07 | 2d | 22d | 0d | AUTOMAÇÃO E INSTRUMENTAÇÃO | Qua 01/07/26 | Qui 02/07/26 | Atendimento de comentários | Seg 22/06/26 | Ter 23/06/26 |
| 520 | 1.1.11.26.4 | Aprovação | 1d | 2026-06-19 | 2026-06-19 | 519 | 2026-07-08 | 2026-07-08 | 1d | 22d |  | AUTOMAÇÃO E INSTRUMENTAÇÃO | Sex 03/07/26 | Sex 03/07/26 | Aprovação | Qua 24/06/26 | Qua 24/06/26 |
| 521 | 1.1.11.27 | **FD-F0009-0306-MB-J-00009** | 10d | 2026-06-08 | 2026-06-19 |  | 2026-06-24 | 2026-07-08 | 11d | 22d |  | AUTOMAÇÃO E INSTRUMENTAÇÃO | Ter 16/06/26 | Sex 03/07/26 | FD-F0009-0306-MB-J-00001 | Ter 16/06/26 | Sex 03/07/26 |
| 522 | 1.1.11.27.1 | Emissão inicial | 7d | 2026-06-08 | 2026-06-16 | 407 | 2026-06-24 | 2026-07-02 | 7d | 22d | 0d | AUTOMAÇÃO E INSTRUMENTAÇÃO | Ter 16/06/26 | Seg 29/06/26 | Emissão inicial | Ter 16/06/26 | Seg 29/06/26 |
| 523 | 1.1.11.27.2 | Análise Tecnored | 1d | 2026-06-17 | 2026-06-17 | 522 | 2026-07-03 | 2026-07-03 | 1d | 22d | 0d | AUTOMAÇÃO E INSTRUMENTAÇÃO | Ter 30/06/26 | Ter 30/06/26 | Análise Tecnored | Ter 30/06/26 | Ter 30/06/26 |
| 524 | 1.1.11.27.3 | Atendimento de comentários | 1d | 2026-06-18 | 2026-06-18 | 523 | 2026-07-06 | 2026-07-07 | 2d | 22d | 0d | AUTOMAÇÃO E INSTRUMENTAÇÃO | Qua 01/07/26 | Qui 02/07/26 | Atendimento de comentários | Qua 01/07/26 | Qui 02/07/26 |
| 525 | 1.1.11.27.4 | Aprovação | 1d | 2026-06-19 | 2026-06-19 | 524 | 2026-07-08 | 2026-07-08 | 1d | 22d |  | AUTOMAÇÃO E INSTRUMENTAÇÃO | Sex 03/07/26 | Sex 03/07/26 | Aprovação | Sex 03/07/26 | Sex 03/07/26 |
| 526 | 1.1.11.28 | **FD-F0009-0306-MB-J-00010** | 10d | 2026-06-08 | 2026-06-19 |  | 2026-06-24 | 2026-07-08 | 11d | 22d |  | AUTOMAÇÃO E INSTRUMENTAÇÃO | Ter 16/06/26 | Sex 03/07/26 | FD-F0009-0306-MB-J-00002 | Ter 16/06/26 | Sex 03/07/26 |
| 527 | 1.1.11.28.1 | Emissão inicial | 7d | 2026-06-08 | 2026-06-16 | 407 | 2026-06-24 | 2026-07-02 | 7d | 22d | 0d | AUTOMAÇÃO E INSTRUMENTAÇÃO | Ter 16/06/26 | Seg 29/06/26 | Emissão inicial | Ter 16/06/26 | Seg 29/06/26 |
| 528 | 1.1.11.28.2 | Análise Tecnored | 1d | 2026-06-17 | 2026-06-17 | 527 | 2026-07-03 | 2026-07-03 | 1d | 22d | 0d | AUTOMAÇÃO E INSTRUMENTAÇÃO | Ter 30/06/26 | Ter 30/06/26 | Análise Tecnored | Ter 30/06/26 | Ter 30/06/26 |
| 529 | 1.1.11.28.3 | Atendimento de comentários | 1d | 2026-06-18 | 2026-06-18 | 528 | 2026-07-06 | 2026-07-07 | 2d | 22d | 0d | AUTOMAÇÃO E INSTRUMENTAÇÃO | Qua 01/07/26 | Qui 02/07/26 | Atendimento de comentários | Qua 01/07/26 | Qui 02/07/26 |
| 530 | 1.1.11.28.4 | Aprovação | 1d | 2026-06-19 | 2026-06-19 | 529 | 2026-07-08 | 2026-07-08 | 1d | 22d |  | AUTOMAÇÃO E INSTRUMENTAÇÃO | Sex 03/07/26 | Sex 03/07/26 | Aprovação | Sex 03/07/26 | Sex 03/07/26 |
| 531 | 1.1.11.29 | **FD-F0009-0306-MB-J-00011** | 10d | 2026-06-08 | 2026-06-19 |  | 2026-06-24 | 2026-07-08 | 11d | 22d |  | AUTOMAÇÃO E INSTRUMENTAÇÃO | Ter 16/06/26 | Sex 03/07/26 | FD-F0009-0306-MB-J-00003 | Ter 16/06/26 | Sex 03/07/26 |
| 532 | 1.1.11.29.1 | Emissão inicial | 7d | 2026-06-08 | 2026-06-16 | 407 | 2026-06-24 | 2026-07-02 | 7d | 22d | 0d | AUTOMAÇÃO E INSTRUMENTAÇÃO | Ter 16/06/26 | Seg 29/06/26 | Emissão inicial | Ter 16/06/26 | Seg 29/06/26 |
| 533 | 1.1.11.29.2 | Análise Tecnored | 1d | 2026-06-17 | 2026-06-17 | 532 | 2026-07-03 | 2026-07-03 | 1d | 22d | 0d | AUTOMAÇÃO E INSTRUMENTAÇÃO | Ter 30/06/26 | Ter 30/06/26 | Análise Tecnored | Ter 30/06/26 | Ter 30/06/26 |
| 534 | 1.1.11.29.3 | Atendimento de comentários | 1d | 2026-06-18 | 2026-06-18 | 533 | 2026-07-06 | 2026-07-07 | 2d | 22d | 0d | AUTOMAÇÃO E INSTRUMENTAÇÃO | Qua 01/07/26 | Qui 02/07/26 | Atendimento de comentários | Qua 01/07/26 | Qui 02/07/26 |
| 535 | 1.1.11.29.4 | Aprovação | 1d | 2026-06-19 | 2026-06-19 | 534 | 2026-07-08 | 2026-07-08 | 1d | 22d |  | AUTOMAÇÃO E INSTRUMENTAÇÃO | Sex 03/07/26 | Sex 03/07/26 | Aprovação | Sex 03/07/26 | Sex 03/07/26 |

| ID | WBS | Task | Duration | Start | Finish | Predecessors | Baseline start | Baseline finish | Baseline duration | Total slack | Free slack | DISCIPLINA | Início_LB_R0 | Término _LB_R0 | Text5 | ILB_2 | TLB_2 |
| --- | --- | --- | --- | --- | --- | --- | --- | --- | --- | --- | --- | --- | --- | --- | --- | --- | --- |
| 536 | 1.1.11.30 | **FD-F0009-0306-MB-J-00012** | 10d | 2026-06-08 | 2026-06-19 |  | 2026-06-24 | 2026-07-08 | 11d | 22d |  | AUTOMAÇÃO E INSTRUMENTAÇÃO | Ter 16/06/26 | Sex 03/07/26 | FD-F0009-0306-MB-J-00004 | Ter 16/06/26 | Sex 03/07/26 |
| 537 | 1.1.11.30.1 | Emissão inicial | 7d | 2026-06-08 | 2026-06-16 | 407 | 2026-06-24 | 2026-07-02 | 7d | 22d | 0d | AUTOMAÇÃO E INSTRUMENTAÇÃO | Ter 16/06/26 | Seg 29/06/26 | Emissão inicial | Ter 16/06/26 | Seg 29/06/26 |
| 538 | 1.1.11.30.2 | Análise Tecnored | 1d | 2026-06-17 | 2026-06-17 | 537 | 2026-07-03 | 2026-07-03 | 1d | 22d | 0d | AUTOMAÇÃO E INSTRUMENTAÇÃO | Ter 30/06/26 | Ter 30/06/26 | Análise Tecnored | Ter 30/06/26 | Ter 30/06/26 |
| 539 | 1.1.11.30.3 | Atendimento de comentários | 1d | 2026-06-18 | 2026-06-18 | 538 | 2026-07-06 | 2026-07-07 | 2d | 22d | 0d | AUTOMAÇÃO E INSTRUMENTAÇÃO | Qua 01/07/26 | Qui 02/07/26 | Atendimento de comentários | Qua 01/07/26 | Qui 02/07/26 |
| 540 | 1.1.11.30.4 | Aprovação | 1d | 2026-06-19 | 2026-06-19 | 539 | 2026-07-08 | 2026-07-08 | 1d | 22d |  | AUTOMAÇÃO E INSTRUMENTAÇÃO | Sex 03/07/26 | Sex 03/07/26 | Aprovação | Sex 03/07/26 | Sex 03/07/26 |
| 541 | 1.1.11.31 | **FD-F0009-0306-MB-J-00013** | 10d | 2026-06-08 | 2026-06-19 |  | 2026-06-24 | 2026-07-08 | 11d | 22d |  | AUTOMAÇÃO E INSTRUMENTAÇÃO | Ter 16/06/26 | Sex 03/07/26 | FD-F0009-0306-MB-J-00005 | Ter 16/06/26 | Sex 03/07/26 |
| 542 | 1.1.11.31.1 | Emissão inicial | 7d | 2026-06-08 | 2026-06-16 | 407 | 2026-06-24 | 2026-07-02 | 7d | 22d | 0d | AUTOMAÇÃO E INSTRUMENTAÇÃO | Ter 16/06/26 | Seg 29/06/26 | Emissão inicial | Ter 16/06/26 | Seg 29/06/26 |
| 543 | 1.1.11.31.2 | Análise Tecnored | 1d | 2026-06-17 | 2026-06-17 | 542 | 2026-07-03 | 2026-07-03 | 1d | 22d | 0d | AUTOMAÇÃO E INSTRUMENTAÇÃO | Ter 30/06/26 | Ter 30/06/26 | Análise Tecnored | Ter 30/06/26 | Ter 30/06/26 |
| 544 | 1.1.11.31.3 | Atendimento de comentários | 1d | 2026-06-18 | 2026-06-18 | 543 | 2026-07-06 | 2026-07-07 | 2d | 22d | 0d | AUTOMAÇÃO E INSTRUMENTAÇÃO | Qua 01/07/26 | Qui 02/07/26 | Atendimento de comentários | Qua 01/07/26 | Qui 02/07/26 |
| 545 | 1.1.11.31.4 | Aprovação | 1d | 2026-06-19 | 2026-06-19 | 544 | 2026-07-08 | 2026-07-08 | 1d | 22d |  | AUTOMAÇÃO E INSTRUMENTAÇÃO | Sex 03/07/26 | Sex 03/07/26 | Aprovação | Sex 03/07/26 | Sex 03/07/26 |
| 546 | 1.1.11.32 | **FD-F0009-0306-MB-J-00014** | 6d | 2026-06-08 | 2026-06-15 |  | 2026-06-24 | 2026-07-08 | 11d | 26d |  | AUTOMAÇÃO E INSTRUMENTAÇÃO | Ter 16/06/26 | Sex 03/07/26 | FD-F0009-0306-MB-J-00006 | Ter 16/06/26 | Sex 03/07/26 |
| 547 | 1.1.11.32.1 | Emissão inicial | 3d | 2026-06-08 | 2026-06-10 | 407 | 2026-06-24 | 2026-07-02 | 7d | 26d | 0d | AUTOMAÇÃO E INSTRUMENTAÇÃO | Ter 16/06/26 | Seg 29/06/26 | Emissão inicial | Ter 16/06/26 | Seg 29/06/26 |
| 548 | 1.1.11.32.2 | Análise Tecnored | 1d | 2026-06-11 | 2026-06-11 | 547 | 2026-07-03 | 2026-07-03 | 1d | 26d | 0d | AUTOMAÇÃO E INSTRUMENTAÇÃO | Ter 30/06/26 | Ter 30/06/26 | Análise Tecnored | Ter 30/06/26 | Ter 30/06/26 |
| 549 | 1.1.11.32.3 | Atendimento de comentários | 1d | 2026-06-12 | 2026-06-12 | 548 | 2026-07-06 | 2026-07-07 | 2d | 26d | 0d | AUTOMAÇÃO E INSTRUMENTAÇÃO | Qua 01/07/26 | Qui 02/07/26 | Atendimento de comentários | Qua 01/07/26 | Qui 02/07/26 |
| 550 | 1.1.11.32.4 | Aprovação | 1d | 2026-06-15 | 2026-06-15 | 549 | 2026-07-08 | 2026-07-08 | 1d | 26d |  | AUTOMAÇÃO E INSTRUMENTAÇÃO | Sex 03/07/26 | Sex 03/07/26 | Aprovação | Sex 03/07/26 | Sex 03/07/26 |
| 551 | 1.1.11.33 | **FD-F0009-0306-MB-J-00015** | 17d | 2026-06-08 | 2026-06-30 |  | 2026-06-24 | 2026-07-08 | 11d | 15d |  | AUTOMAÇÃO E INSTRUMENTAÇÃO | Ter 16/06/26 | Sex 03/07/26 | FD-F0009-0306-MB-J-00007 | Ter 16/06/26 | Sex 03/07/26 |
| 552 | 1.1.11.33.1 | Emissão inicial | 9d | 2026-06-08 | 2026-06-18 | 407 | 2026-06-24 | 2026-07-02 | 7d | 15d | 0d | AUTOMAÇÃO E INSTRUMENTAÇÃO | Ter 16/06/26 | Seg 29/06/26 | Emissão inicial | Ter 16/06/26 | Seg 29/06/26 |
| 553 | 1.1.11.33.2 | Análise Tecnored | 6d | 2026-06-19 | 2026-06-26 | 552 | 2026-07-03 | 2026-07-03 | 1d | 15d | 0d | AUTOMAÇÃO E INSTRUMENTAÇÃO | Ter 30/06/26 | Ter 30/06/26 | Análise Tecnored | Ter 30/06/26 | Ter 30/06/26 |
| 554 | 1.1.11.33.3 | Atendimento de comentários | 1d | 2026-06-29 | 2026-06-29 | 553 | 2026-07-06 | 2026-07-07 | 2d | 15d | 0d | AUTOMAÇÃO E INSTRUMENTAÇÃO | Qua 01/07/26 | Qui 02/07/26 | Atendimento de comentários | Qua 01/07/26 | Qui 02/07/26 |
| 555 | 1.1.11.33.4 | Aprovação | 1d | 2026-06-30 | 2026-06-30 | 554 | 2026-07-08 | 2026-07-08 | 1d | 15d |  | AUTOMAÇÃO E INSTRUMENTAÇÃO | Sex 03/07/26 | Sex 03/07/26 | Aprovação | Sex 03/07/26 | Sex 03/07/26 |
| 556 | 1.1.11.34 | **FD-F0009-0306-MB-J-00016** | 19d | 2026-06-08 | 2026-07-02 |  | 2026-06-24 | 2026-07-08 | 11d | 13d |  | AUTOMAÇÃO E INSTRUMENTAÇÃO | Ter 16/06/26 | Sex 03/07/26 | FD-F0009-0306-MB-J-00008 | Ter 16/06/26 | Sex 03/07/26 |
| 557 | 1.1.11.34.1 | Emissão inicial | 10d | 2026-06-08 | 2026-06-19 | 407 | 2026-06-24 | 2026-07-02 | 7d | 13d | 0d | AUTOMAÇÃO E INSTRUMENTAÇÃO | Ter 16/06/26 | Seg 29/06/26 | Emissão inicial | Ter 16/06/26 | Seg 29/06/26 |
| 558 | 1.1.11.34.2 | Análise Tecnored | 6d | 2026-06-22 | 2026-06-29 | 557 | 2026-07-03 | 2026-07-03 | 1d | 13d | 0d | AUTOMAÇÃO E INSTRUMENTAÇÃO | Ter 30/06/26 | Ter 30/06/26 | Análise Tecnored | Ter 30/06/26 | Ter 30/06/26 |
| 559 | 1.1.11.34.3 | Atendimento de comentários | 1d | 2026-06-30 | 2026-06-30 | 558 | 2026-07-06 | 2026-07-07 | 2d | 13d | 0d | AUTOMAÇÃO E INSTRUMENTAÇÃO | Qua 01/07/26 | Qui 02/07/26 | Atendimento de comentários | Qua 01/07/26 | Qui 02/07/26 |
| 560 | 1.1.11.34.4 | Aprovação | 2d | 2026-07-01 | 2026-07-02 | 559 | 2026-07-08 | 2026-07-08 | 1d | 13d |  | AUTOMAÇÃO E INSTRUMENTAÇÃO | Sex 03/07/26 | Sex 03/07/26 | Aprovação | Sex 03/07/26 | Sex 03/07/26 |

| ID | WBS | Task | Duration | Start | Finish | Predecessors | Baseline start | Baseline finish | Baseline duration | Total slack | Free slack | DISCIPLINA | Início_LB_R0 | Término _LB_R0 | Text5 | ILB_2 | TLB_2 |
| --- | --- | --- | --- | --- | --- | --- | --- | --- | --- | --- | --- | --- | --- | --- | --- | --- | --- |
| 561 | 1.1.11.35 | **DT-F0009-0306-MB-J-00001** | 7d | 2026-06-16 | 2026-06-24 |  | 2026-06-30 | 2026-07-08 | 7d | 17d |  | AUTOMAÇÃO E INSTRUMENTAÇÃO | Qua 24/06/26 | Qui 02/07/26 | FD-F0009-0306-MB-J-00009 | Ter 16/06/26 | Sex 03/07/26 |
| 562 | 1.1.11.35.1 | Emissão inicial | 3d | 2026-06-16 | 2026-06-18 | 467 | 2026-06-30 | 2026-07-02 | 3d | 17d | 0d | AUTOMAÇÃO E INSTRUMENTAÇÃO | Qua 24/06/26 | Sex 26/06/26 | Emissão inicial | Ter 16/06/26 | Seg 29/06/26 |
| 563 | 1.1.11.35.2 | Análise Tecnored | 1d | 2026-06-19 | 2026-06-19 | 562 | 2026-07-03 | 2026-07-03 | 1d | 19d | 0d | AUTOMAÇÃO E INSTRUMENTAÇÃO | Seg 29/06/26 | Seg 29/06/26 | Análise Tecnored | Ter 30/06/26 | Ter 30/06/26 |
| 564 | 1.1.11.35.3 | Atendimento de comentários | 2d | 2026-06-22 | 2026-06-23 | 563 | 2026-07-06 | 2026-07-07 | 2d | 19d | 0d | AUTOMAÇÃO E INSTRUMENTAÇÃO | Ter 30/06/26 | Qua 01/07/26 | Atendimento de comentários | Qua 01/07/26 | Qui 02/07/26 |
| 565 | 1.1.11.35.4 | Aprovação | 1d | 2026-06-24 | 2026-06-24 | 564 | 2026-07-08 | 2026-07-08 | 1d | 19d |  | AUTOMAÇÃO E INSTRUMENTAÇÃO | Qui 02/07/26 | Qui 02/07/26 | Aprovação | Sex 03/07/26 | Sex 03/07/26 |
| 566 | 1.1.12 | **Civil** | 13d | 2026-06-25 | 2026-07-13 |  | 2026-06-16 | 2026-07-02 | 13d | 6d |  | CIVIL | Qua 03/06/26 | Sex 19/06/26 | FD-F0009-0306-MB-J-00010 | Ter 16/06/26 | Sex 03/07/26 |
| 567 | 1.1.12.1 | **MC-F0009-0306-MB-C-00001** | 12d | 2026-06-25 | 2026-07-10 |  | 2026-06-16 | 2026-07-01 | 12d | 6d |  | CIVIL | Qua 03/06/26 | Qui 18/06/26 | Emissão inicial | Ter 16/06/26 | Seg 29/06/26 |
| 568 | 1.1.12.1.1 | Emissão inicial | 8d | 2026-06-25 | 2026-07-06 | 245 | 2026-06-16 | 2026-06-25 | 8d | 6d | 0d | CIVIL | Qua 03/06/26 | Sex 12/06/26 | Análise Tecnored | Ter 30/06/26 | Ter 30/06/26 |
| 569 | 1.1.12.1.2 | Análise Tecnored | 1d | 2026-07-07 | 2026-07-07 | 568 | 2026-06-26 | 2026-06-26 | 1d | 7d | 0d | CIVIL | Seg 15/06/26 | Seg 15/06/26 | Atendimento de comentários | Qua 01/07/26 | Qui 02/07/26 |
| 570 | 1.1.12.1.3 | Atendimento de comentários | 2d | 2026-07-08 | 2026-07-09 | 569 | 2026-06-29 | 2026-06-30 | 2d | 7d | 0d | CIVIL | Ter 16/06/26 | Qua 17/06/26 | Aprovação | Sex 03/07/26 | Sex 03/07/26 |
| 571 | 1.1.12.1.4 | Aprovação | 1d | 2026-07-10 | 2026-07-10 | 570 | 2026-07-01 | 2026-07-01 | 1d | 7d |  | CIVIL | Qui 18/06/26 | Qui 18/06/26 | FD-F0009-0306-MB-J-00011 | Ter 16/06/26 | Sex 03/07/26 |
| 572 | 1.1.12.2 | **PQ-F0009-0306-MB-C-00001** | 5d | 2026-07-07 | 2026-07-13 |  | 2026-06-26 | 2026-07-02 | 5d | 6d |  | CIVIL | Seg 15/06/26 | Sex 19/06/26 | Emissão inicial | Ter 16/06/26 | Seg 29/06/26 |
| 573 | 1.1.12.2.1 | Emissão inicial | 1d | 2026-07-07 | 2026-07-07 | 568 | 2026-06-26 | 2026-06-26 | 1d | 6d | 0d | CIVIL | Seg 15/06/26 | Seg 15/06/26 | Análise Tecnored | Ter 30/06/26 | Ter 30/06/26 |
| 574 | 1.1.12.2.2 | Análise Tecnored | 1d | 2026-07-08 | 2026-07-08 | 573 | 2026-06-29 | 2026-06-29 | 1d | 6d | 0d | CIVIL | Ter 16/06/26 | Ter 16/06/26 | Atendimento de comentários | Qua 01/07/26 | Qui 02/07/26 |
| 575 | 1.1.12.2.3 | Atendimento de comentários | 2d | 2026-07-09 | 2026-07-10 | 574 | 2026-06-30 | 2026-07-01 | 2d | 6d | 0d | CIVIL | Qua 17/06/26 | Qui 18/06/26 | Aprovação | Sex 03/07/26 | Sex 03/07/26 |
| 576 | 1.1.12.2.4 | Aprovação | 1d | 2026-07-13 | 2026-07-13 | 575 | 2026-07-02 | 2026-07-02 | 1d | 6d |  | CIVIL | Sex 19/06/26 | Sex 19/06/26 | FD-F0009-0306-MB-J-00012 | Ter 16/06/26 | Sex 03/07/26 |
