# CR-F0009-0305-MB-F-00001

Schedule from MS Project, 2026-04-27 to 2026-07-23, status date 2026-06-26, A marks actual dates.

## Calendars

- Padrão: Mon-Fri 09:00-12:00, 13:00-18:00; Sat-Sun off. Exceptions (off unless hours are given): 2026-06-04 to 2026-06-05 (FERIADO).

## Schedule

| ID | WBS | Task | Type | Duration | Start | Finish | Predecessors | Complete | Remaining | Baseline start | Baseline finish | Baseline duration | Total slack | Free slack | Constraint | Disciplina | Início_LB_R0 | Término_LB_R0 | Text5 | ILB_2 | TLB_2 | Sprints |
| --- | --- | --- | --- | --- | --- | --- | --- | --- | --- | --- | --- | --- | --- | --- | --- | --- | --- | --- | --- | --- | --- | --- |
| 1 | 1 | **F0009 - Programa Marabá** |  | 61d | 2026-04-27 A | 2026-07-22 |  | 47% | 32.47d | 2026-04-27 | 2026-07-08 | 53d | 0d |  |  | GERAL | Seg 27/04/26 | Ter 07/07/26 | F0009 - Programa Marabá | Seg 27/04/26 | Ter 07/07/26 | Sprint 2 |
| 2 | 1.1 | **Área 0306 - Sopradores** |  | 61d | 2026-04-27 A | 2026-07-22 |  | 47% | 32.47d | 2026-04-27 | 2026-07-08 | 53d | 0d |  |  | GERAL | Seg 27/04/26 | Ter 07/07/26 | Área 0306 - Sopradores | Seg 27/04/26 | Ter 07/07/26 | Sprint 2 |
| 3 | 1.1.1 | KOM - Início de projeto |  | 1d | 2026-04-27 A | 2026-04-27 A |  | 100% |  | 2026-04-27 | 2026-04-27 | 0d |  |  |  | GERAL | Seg 27/04/26 | Seg 27/04/26 | KOM - Início de projeto | Seg 27/04/26 | Seg 27/04/26 | Sprint 2 |
| 4 | 1.1.2 | **Marcos** |  | 29d | 2026-05-19 A | 2026-06-30 |  | 78% | 6.28d | 2026-05-19 | 2026-06-05 | 13d | 0d |  |  | MARCOS | Ter 19/05/26 | Sex 05/06/26 | Marcos | Ter 19/05/26 | Sex 05/06/26 | Sprint 4 |
| 5 | 1.1.2.1 | Critério de Projeto de Processo | manual | 1d | 2026-06-30 A | 2026-06-30 |  | 70% | 0.3d | 2026-06-05 | 2026-06-05 | 0d |  |  |  | MARCOS | Sex 05/06/26 | Sex 05/06/26 | Critério de Projeto de Processo | Sex 05/06/26 | Sex 05/06/26 | Sprint 10 |
| 6 | 1.1.2.2 | Critério de Projeto de Mecânica | manual | 1d | 2026-05-19 A | 2026-05-19 A |  | 100% |  | 2026-05-19 | 2026-05-19 | 0d |  |  |  | MARCOS | Ter 19/05/26 | Ter 19/05/26 | Critério de Projeto de Mecânica | Ter 19/05/26 | Ter 19/05/26 | Sprint 4 |
| 7 | 1.1.2.3 | Critério de Projeto de Elétrica | manual | 1d | 2026-06-15 A | 2026-06-15 A |  | 100% |  | 2026-06-05 | 2026-06-05 | 0d |  |  |  | MARCOS | Sex 05/06/26 | Sex 05/06/26 | Critério de Projeto de Elétrica | Sex 05/06/26 | Sex 05/06/26 | Sprint 8 |
| 8 | 1.1.2.4 | Critério de Projeto de Automação | manual | 1d | 2026-06-09 A | 2026-06-09 A |  | 100% |  | 2026-06-05 | 2026-06-05 | 0d |  |  |  | MARCOS | Sex 05/06/26 | Sex 05/06/26 | Critério de Projeto de automação | Sex 05/06/26 | Sex 05/06/26 | Sprint 7 |
| 9 | 1.1.2.5 | Critério de Projeto de Tubulação | manual | 1d | 2026-05-22 A | 2026-05-22 A |  | 100% |  | 2026-05-22 | 2026-05-22 | 0d |  |  |  | MARCOS | Sex 22/05/26 | Sex 22/05/26 | Critério de Projeto de Tubulação | Sex 22/05/26 | Sex 22/05/26 | Sprint 4 |
| 10 | 1.1.2.6 | Critério de Projeto de Estrutura metálica | manual | 1d | 2026-06-30 | 2026-06-30 |  |  |  | 2026-06-05 | 2026-06-05 | 0d |  |  |  | MARCOS | Sex 05/06/26 | Sex 05/06/26 | Critério de Projeto de Estrutura metálica | Sex 05/06/26 | Sex 05/06/26 | Sprint 2 |
| 11 | 1.1.3 | **Pendências** |  | 1d | 2026-04-29 A | 2026-04-29 A |  | 100% |  | 2026-04-29 | 2026-04-29 | 0d |  |  |  | PENDÊNCIAS | Qua 29/04/26 | Qua 29/04/26 | Pendências | Qua 29/04/26 | Qua 29/04/26 | Sprint 2 |
| 12 | 1.1.3.1 | Recebimento de dados de entrada |  | 1d | 2026-04-29 A | 2026-04-29 A |  | 100% |  | 2026-04-29 | 2026-04-29 | 0d |  |  | finish no earlier than 2026-04-29 | PENDÊNCIAS | Qua 29/04/26 | Qua 29/04/26 | Recebimento de dados de entrada | Qua 29/04/26 | Qua 29/04/26 | Sprint 2 |
| 13 | 1.1.4 | **Planejamento** |  | 27d | 2026-04-27 A | 2026-06-02 A |  | 100% |  | 2026-04-27 | 2026-06-01 | 25.4d |  |  |  | PLANEJAMENTO | Seg 27/04/26 | Seg 18/05/26 | Planejamento | Seg 27/04/26 | Seg 18/05/26 | Sprint 2 |
| 14 | 1.1.4.1 | **LD-F0009-0306-MB-F-00001** |  | 27d | 2026-04-27 A | 2026-06-02 A |  | 100% |  | 2026-04-27 | 2026-06-01 | 25.4d |  |  |  | PLANEJAMENTO | Seg 27/04/26 | Qua 13/05/26 | LD-F0009-0306-MB-F-00001 | Seg 27/04/26 | Qua 13/05/26 | Sprint 2 |
| 15 | 1.1.4.1.1 | Emissão inicial |  | 3d | 2026-04-27 A | 2026-04-29 A | 3 | 100% |  | 2026-04-27 | 2026-04-29 | 3d |  |  |  | PLANEJAMENTO | Seg 27/04/26 | 07/07/2026 | Emissão inicial | Seg 27/04/26 | 07/07/2026 | Sprint 2 |
| 16 | 1.1.4.1.2 | Análise Tecnored |  | 1d | 2026-04-30 A | 2026-04-30 A | 15 | 100% |  | 2026-04-30 | 2026-04-30 | 1d |  |  |  | PLANEJAMENTO | Qui 30/04/26 | Qui 30/04/26 | Análise Tecnored | Qui 30/04/26 | Qui 30/04/26 | Sprint 2 |
| 17 | 1.1.4.1.3 | Atendimento de comentários |  | 2.6d | 2026-05-01 A | 2026-05-12 A | 16FS+7d | 100% |  | 2026-05-01 | 2026-05-12 | 2d |  |  | finish no earlier than 2026-05-12 | PLANEJAMENTO | Sex 01/05/26 | Ter 12/05/26 | Atendimento de comentários | Sex 01/05/26 | Ter 12/05/26 | Sprint 2 |
| 18 | 1.1.4.1.4 | Aprovação |  | 2d | 2026-06-01 A | 2026-06-02 A | 17FS+13d | 100% |  | 2026-05-29 | 2026-06-01 | 1d |  |  | finish no earlier than 2026-06-01 | PLANEJAMENTO | Ter 12/05/26 | Qua 13/05/26 | Aprovação | Ter 12/05/26 | Qua 13/05/26 | Sprint 6 |
| 19 | 1.1.4.2 | **CR-F0009-0306-MB-F-00001** |  | 23d | 2026-04-30 A | 2026-06-01 A |  | 100% |  | 2026-04-30 | 2026-05-29 | 21.4d |  |  |  | PLANEJAMENTO | Qui 30/04/26 | Seg 18/05/26 | CR-F0009-0306-MB-F-00001 | Qui 30/04/26 | Seg 18/05/26 | Sprint 2 |
| 20 | 1.1.4.2.1 | Emissão inicial |  | 3d | 2026-04-30 A | 2026-05-04 A | 15 | 100% |  | 2026-04-30 | 2026-05-04 | 3d |  |  |  | PLANEJAMENTO | Qui 30/04/26 | Seg 04/05/26 | Emissão inicial | Qui 30/04/26 | Seg 04/05/26 | Sprint 2 |
| 21 | 1.1.4.2.2 | Análise Tecnored |  | 1d | 2026-05-05 A | 2026-05-05 A | 20 | 100% |  | 2026-05-05 | 2026-05-05 | 1d |  |  |  | PLANEJAMENTO | Ter 05/05/26 | Ter 05/05/26 | Análise Tecnored | Ter 05/05/26 | Ter 05/05/26 | Sprint 2 |
| 22 | 1.1.4.2.3 | Atendimento de comentários |  | 2.6d | 2026-05-06 A | 2026-05-15 A | 21FS+7d | 100% |  | 2026-05-06 | 2026-05-15 | 2d |  |  | finish no earlier than 2026-05-15 | PLANEJAMENTO | Qua 06/05/26 | Sex 15/05/26 | Atendimento de comentários | Qua 06/05/26 | Sex 15/05/26 | Sprint 2 |
| 23 | 1.1.4.2.4 | Aprovação |  | 2d | 2026-05-29 A | 2026-06-01 A | 22FS+9d | 100% |  | 2026-05-28 | 2026-05-29 | 1d |  |  | finish no earlier than 2026-05-29 | PLANEJAMENTO | Sex 15/05/26 | Seg 18/05/26 | Aprovação | Sex 15/05/26 | Seg 18/05/26 | Sprint 5 |
| 24 | 1.1.5 | **Coordenação** |  | 48d | 2026-04-27 A | 2026-07-03 |  | 32% | 32.47d | 2026-04-27 | 2026-07-07 | 52d | 13d |  |  | COORDENAÇÃO | Seg 27/04/26 | Qua 01/07/26 | Coordenação | Seg 27/04/26 | Qua 01/07/26 | Sprint 2 |
| 25 | 1.1.5.1 | **RM-F0009-0306-MB-G-00001** |  | 6d | 2026-06-24 A | 2026-07-01 |  | 25% | 4.5d | 2026-06-01 | 2026-06-09 | 7d | 15d |  |  | COORDENAÇÃO | Seg 25/05/26 | Ter 02/06/26 | RM-F0009-0306-MB-G-00001 | Seg 25/05/26 | Ter 02/06/26 | Sprint 9 |
| 26 | 1.1.5.1.1 | Emissão inicial |  | 3d | 2026-06-24 A | 2026-06-26 | 3FS+25d | 50% | 1.5d | 2026-06-01 | 2026-06-03 | 3d | 13d | 0d | finish no earlier than 2026-06-15 | COORDENAÇÃO | Seg 25/05/26 | Qua 27/05/26 | Emissão inicial | Seg 25/05/26 | Qua 27/05/26 | Sprint 9 |
| 27 | 1.1.5.1.2 | Análise Tecnored |  | 1d | 2026-06-29 | 2026-06-29 | 26 |  |  | 2026-06-04 | 2026-06-04 | 1d | 13d | 0d |  | COORDENAÇÃO | Qui 28/05/26 | Qui 28/05/26 | Análise Tecnored | Qui 28/05/26 | Qui 28/05/26 | Sprint 10 |
| 28 | 1.1.5.1.3 | Atendimento de comentários |  | 1d | 2026-06-30 | 2026-06-30 | 27 |  |  | 2026-06-05 | 2026-06-08 | 2d | 15d | 0d |  | COORDENAÇÃO | Sex 29/05/26 | Seg 01/06/26 | Atendimento de comentários | Sex 29/05/26 | Seg 01/06/26 | Sprint 10 |
| 29 | 1.1.5.1.4 | Aprovação |  | 1d | 2026-07-01 | 2026-07-01 | 28 |  |  | 2026-06-09 | 2026-06-09 | 1d | 15d |  |  | COORDENAÇÃO | Ter 02/06/26 | Ter 02/06/26 | Aprovação | Ter 02/06/26 | Ter 02/06/26 | Sprint 10 |

| ID | WBS | Task | Type | Duration | Start | Finish | Predecessors | Complete | Remaining | Baseline start | Baseline finish | Baseline duration | Total slack | Free slack | Constraint | Baseline cost | Disciplina | Início_LB_R0 | Término_LB_R0 | Text5 | ILB_2 | TLB_2 | Sprints |
| --- | --- | --- | --- | --- | --- | --- | --- | --- | --- | --- | --- | --- | --- | --- | --- | --- | --- | --- | --- | --- | --- | --- | --- |
| 30 | 1.1.5.2 | **RM-F0009-0306-MB-G-00002** | inactive | 5d | 2026-07-06 | 2026-07-10 |  |  |  | 2026-06-18 | 2026-06-26 | 7d | 8d |  |  |  | COORDENAÇÃO | Qui 11/06/26 | Sex 19/06/26 | RM-F0009-0306-MB-G-00002 | Qui 11/06/26 | Sex 19/06/26 | Sprint 11 |
| 31 | 1.1.5.2.1 | Emissão inicial | inactive | 2d | 2026-07-06 | 2026-07-07 | 26FS+5d |  |  | 2026-06-18 | 2026-06-22 | 3d | 8d | 0d |  |  | COORDENAÇÃO | Qui 11/06/26 | Seg 15/06/26 | Emissão inicial | Qui 11/06/26 | Seg 15/06/26 | Sprint 11 |
| 32 | 1.1.5.2.2 | Análise Tecnored | inactive | 1d | 2026-07-08 | 2026-07-08 | 31 |  |  | 2026-06-23 | 2026-06-23 | 1d | 8d | 0d |  |  | COORDENAÇÃO | Ter 16/06/26 | Ter 16/06/26 | Análise Tecnored | Ter 16/06/26 | Ter 16/06/26 | Sprint 11 |
| 33 | 1.1.5.2.3 | Atendimento de comentários | inactive | 1d | 2026-07-09 | 2026-07-09 | 32 |  |  | 2026-06-24 | 2026-06-25 | 2d | 8d | 0d |  |  | COORDENAÇÃO | Qua 17/06/26 | Qui 18/06/26 | Atendimento de comentários | Qua 17/06/26 | Qui 18/06/26 | Sprint 11 |
| 34 | 1.1.5.2.4 | Aprovação | inactive | 1d | 2026-07-10 | 2026-07-10 | 33 |  |  | 2026-06-26 | 2026-06-26 | 1d | 8d |  |  |  | COORDENAÇÃO | Sex 19/06/26 | Sex 19/06/26 | Aprovação | Sex 19/06/26 | Sex 19/06/26 | Sprint 11 |
| 35 | 1.1.5.3 | **RL-F0009-0306-MB-G-00001** |  | 4d | 2026-06-30 | 2026-07-03 |  |  |  | 2026-06-30 | 2026-07-07 | 6d | 13d |  |  |  | COORDENAÇÃO | Ter 23/06/26 | Qua 01/07/26 | RL-F0009-0306-MB-G-00001 | Ter 23/06/26 | Qua 01/07/26 | Sprint 10 |
| 36 | 1.1.5.3.1 | Emissão inicial |  | 1d | 2026-06-30 | 2026-06-30 | 27 |  |  | 2026-06-30 | 2026-07-01 | 2d | 13d | 0d | start no earlier than 2026-06-25 |  | COORDENAÇÃO | Ter 23/06/26 | Qui 25/06/26 | Emissão inicial | Ter 23/06/26 | Qui 25/06/26 | Sprint 10 |
| 37 | 1.1.5.3.2 | Análise Tecnored |  | 1d | 2026-07-01 | 2026-07-01 | 36 |  |  | 2026-07-02 | 2026-07-02 | 1d | 13d | 0d |  |  | COORDENAÇÃO | Sex 26/06/26 | Sex 26/06/26 | Análise Tecnored | Sex 26/06/26 | Sex 26/06/26 | Sprint 10 |
| 38 | 1.1.5.3.3 | Atendimento de comentários |  | 1d | 2026-07-02 | 2026-07-02 | 37 |  |  | 2026-07-03 | 2026-07-06 | 2d | 13d | 0d |  |  | COORDENAÇÃO | Seg 29/06/26 | Ter 30/06/26 | Atendimento de comentários | Seg 29/06/26 | Ter 30/06/26 | Sprint 10 |
| 39 | 1.1.5.3.4 | Aprovação |  | 1d | 2026-07-03 | 2026-07-03 | 38 |  |  | 2026-07-07 | 2026-07-07 | 1d | 13d |  |  |  | COORDENAÇÃO | Qua 01/07/26 | Qua 01/07/26 | Aprovação | Qua 01/07/26 | Qua 01/07/26 | Sprint 10 |
| 40 | 1.1.5.4 | **LP-F0009-0306-MB-G-00001** |  | 45d | 2026-04-27 A | 2026-06-30 |  | 57% | 19.29d | 2026-04-27 | 2026-06-30 | 47d | 16d |  |  |  | COORDENAÇÃO | Seg 27/04/26 | Ter 30/06/26 | LP-F0009-0306-MB-G-00001 | Seg 27/04/26 | Ter 30/06/26 | Sprint 2 |
| 41 | 1.1.5.4.1 | Emissão inicial |  | 3d | 2026-04-27 A | 2026-04-29 A | 3 | 100% |  | 2026-04-27 | 2026-04-29 | 3d |  |  |  |  | COORDENAÇÃO | Seg 27/04/26 | Qua 29/04/26 | Emissão inicial | Seg 27/04/26 | Qua 29/04/26 | Sprint 2 |
| 42 | 1.1.5.4.2 | Análise Tecnored |  | 1d | 2026-06-18 A | 2026-06-18 A | 41FS+25d | 100% |  | 2026-06-11 | 2026-06-11 | 1d |  |  | start no earlier than 2026-06-18 |  | COORDENAÇÃO | Qui 11/06/26 | Qui 11/06/26 | Análise Tecnored | Qui 11/06/26 | Qui 11/06/26 | Sprint 8 |
| 43 | 1.1.5.4.3 | Atendimento de comentários |  | 2d | 2026-06-26 | 2026-06-29 | 42FS+5d |  |  | 2026-06-26 | 2026-06-29 | 2d | 16d | 0d |  |  | COORDENAÇÃO | Sex 26/06/26 | Seg 29/06/26 | Atendimento de comentários | Sex 26/06/26 | Seg 29/06/26 | Sprint 9 |
| 44 | 1.1.5.4.4 | Aprovação |  | 1d | 2026-06-30 | 2026-06-30 | 43 |  |  | 2026-06-30 | 2026-06-30 | 1d | 16d |  |  |  | COORDENAÇÃO | Ter 30/06/26 | Ter 30/06/26 | Aprovação | Ter 30/06/26 | Ter 30/06/26 | Sprint 10 |
| 45 | 1.1.6 | **Processo** |  | 4d | 2026-06-05 A | 2026-06-11 A |  | 100% |  | 2026-06-05 | 2026-06-11 | 5d |  |  |  |  | PROCESSOS | Ter 05/05/26 | Seg 22/06/26 | Processo | Ter 05/05/26 | Seg 22/06/26 | Sprint 6 |
| 46 | 1.1.6.1 | **CP-F0009-0306-MB-P-00001** | inactive | 43d | 2026-05-05 | 2026-07-06 |  |  |  |  |  |  | 12d |  |  | -0 |  |  |  |  |  |  | Sprint 2 |
| 47 | 1.1.6.1.1 | Emissão inicial | inactive | 7d | 2026-05-05 | 2026-05-13 | 20 |  |  |  |  |  | 44d | 32d |  | -0 |  |  |  |  |  |  | Sprint 2 |
| 48 | 1.1.6.1.2 | Análise Tecnored | inactive | 1d | 2026-07-01 | 2026-07-01 | 47, 5 |  |  |  |  |  | 12d | 0d |  | -0 |  |  |  |  |  |  | Sprint 10 |
| 49 | 1.1.6.1.3 | Atendimento de comentários | inactive | 2d | 2026-07-02 | 2026-07-03 | 48 |  |  |  |  |  | 12d | 0d |  | -0 |  |  |  |  |  |  | Sprint 10 |
| 50 | 1.1.6.1.4 | Aprovação | inactive | 1d | 2026-07-06 | 2026-07-06 | 49 |  |  |  |  |  | 12d |  |  | -0 |  |  |  |  |  |  | Sprint 11 |
| 51 | 1.1.6.2 | **MD-F0009-0306-MB-P-00001** | inactive | 7d | 2026-06-22 | 2026-06-30 |  |  |  |  |  |  | 16d |  |  | -0 |  |  |  |  |  |  | Sprint 9 |
| 52 | 1.1.6.2.1 | Emissão inicial | inactive | 3d | 2026-06-22 | 2026-06-24 | 57FS+10d |  |  |  |  |  | 16d | 0d |  | -0 |  |  |  |  |  |  | Sprint 9 |
| 53 | 1.1.6.2.2 | Análise Tecnored | inactive | 1d | 2026-06-25 | 2026-06-25 | 52 |  |  |  |  |  | 16d | 0d |  | -0 |  |  |  |  |  |  | Sprint 9 |
| 54 | 1.1.6.2.3 | Atendimento de comentários | inactive | 2d | 2026-06-26 | 2026-06-29 | 53 |  |  |  |  |  | 16d | 0d |  | -0 |  |  |  |  |  |  | Sprint 9 |
| 55 | 1.1.6.2.4 | Aprovação | inactive | 1d | 2026-06-30 | 2026-06-30 | 54 |  |  |  |  |  | 16d |  |  | -0 |  |  |  |  |  |  | Sprint 10 |

| ID | WBS | Task | Type | Duration | Start | Finish | Predecessors | Complete | Remaining | Baseline start | Baseline finish | Baseline duration | Total slack | Free slack | Constraint | Baseline cost | Disciplina | Início_LB_R0 | Término_LB_R0 | Text5 | ILB_2 | TLB_2 | Sprints |
| --- | --- | --- | --- | --- | --- | --- | --- | --- | --- | --- | --- | --- | --- | --- | --- | --- | --- | --- | --- | --- | --- | --- | --- |
| 56 | 1.1.6.3 | **FG-F0009-0306-MB-P-00001** |  | 4d | 2026-06-05 A | 2026-06-11 A |  | 100% |  | 2026-06-05 | 2026-06-11 | 5d |  |  |  |  | PROCESSOS | Qui 14/05/26 | Qua 20/05/26 | FG-F0009-0306-MB-P-00001 | Qui 14/05/26 | Qua 20/05/26 | Sprint 6 |
| 57 | 1.1.6.3.1 | Emissão inicial |  | 1d | 2026-06-05 A | 2026-06-05 A | 47, 5 | 100% |  | 2026-06-05 | 2026-06-05 | 1d |  |  |  |  | PROCESSOS | Qui 14/05/26 | Qui 14/05/26 | Emissão inicial | Qui 14/05/26 | Qui 14/05/26 | Sprint 6 |
| 58 | 1.1.6.3.2 | Análise Tecnored |  | 1d | 2026-06-08 A | 2026-06-08 A | 57 | 100% |  | 2026-06-08 | 2026-06-08 | 1d |  |  |  |  | PROCESSOS | Sex 15/05/26 | Sex 15/05/26 | Análise Tecnored | Sex 15/05/26 | Sex 15/05/26 | Sprint 7 |
| 59 | 1.1.6.3.3 | Atendimento de comentários |  | 2d | 2026-06-09 A | 2026-06-10 A | 58 | 100% |  | 2026-06-09 | 2026-06-10 | 2d |  |  |  |  | PROCESSOS | Seg 18/05/26 | Ter 19/05/26 | Atendimento de comentários | Seg 18/05/26 | Ter 19/05/26 | Sprint 7 |
| 60 | 1.1.6.3.4 | 0 |  | 1d | 2026-06-11 A | 2026-06-11 A | 59 | 100% |  | 2026-06-11 | 2026-06-11 | 1d |  |  |  |  | PROCESSOS | Qua 20/05/26 | Qua 20/05/26 | Aprovação | Qua 20/05/26 | Qua 20/05/26 | Sprint 7 |
| 61 | 1.1.7 | **Mecânica** |  | 29d | 2026-05-26 A | 2026-07-07 |  | 54% | 13.25d | 2026-05-26 | 2026-06-30 | 26d | 11d |  |  |  | MECÂNICA | Ter 05/05/26 | Seg 22/06/26 | Mecânica | Ter 05/05/26 | Seg 22/06/26 | Sprint 5 |
| 62 | 1.1.7.1 | **CP-F0009-0306-MB-M-00001** | inactive | 15d | 2026-05-05 | 2026-05-25 |  |  |  |  |  |  | 40d |  |  | -0 |  |  |  |  |  |  | Sprint 2 |
| 63 | 1.1.7.1.1 | Emissão inicial | inactive | 7d | 2026-05-05 | 2026-05-13 | 20 |  |  |  |  |  | 41d | 4d |  | -0 |  |  |  |  |  |  | Sprint 2 |
| 64 | 1.1.7.1.2 | Análise Tecnored | inactive | 1d | 2026-05-20 | 2026-05-20 | 63, 6 |  |  |  |  |  | 40d | 0d |  | -0 |  |  |  |  |  |  | Sprint 4 |
| 65 | 1.1.7.1.3 | Atendimento de comentários | inactive | 2d | 2026-05-21 | 2026-05-22 | 64 |  |  |  |  |  | 40d | 0d |  | -0 |  |  |  |  |  |  | Sprint 4 |
| 66 | 1.1.7.1.4 | Aprovação | inactive | 1d | 2026-05-25 | 2026-05-25 | 65 |  |  |  |  |  | 40d |  |  | -0 |  |  |  |  |  |  | Sprint 5 |
| 67 | 1.1.7.2 | **MD-F0009-0306-MB-M-00001** | inactive | 7d | 2026-06-18 | 2026-06-26 |  |  |  |  |  |  | 18d |  |  | -0 |  |  |  |  |  |  | Sprint 8 |
| 68 | 1.1.7.2.1 | Emissão inicial | inactive | 3d | 2026-06-18 | 2026-06-22 | 63, 75, 6 |  |  |  |  |  | 18d | 0d |  | -0 |  |  |  |  |  |  | Sprint 8 |
| 69 | 1.1.7.2.2 | Análise Tecnored | inactive | 1d | 2026-06-23 | 2026-06-23 | 68 |  |  |  |  |  | 18d | 0d |  | -0 |  |  |  |  |  |  | Sprint 9 |
| 70 | 1.1.7.2.3 | Atendimento de comentários | inactive | 2d | 2026-06-24 | 2026-06-25 | 69 |  |  |  |  |  | 18d | 0d |  | -0 |  |  |  |  |  |  | Sprint 9 |
| 71 | 1.1.7.2.4 | Aprovação | inactive | 1d | 2026-06-26 | 2026-06-26 | 70 |  |  |  |  |  | 18d |  |  | -0 |  |  |  |  |  |  | Sprint 9 |
| 72 | 1.1.7.3 | **LE-F0009-0306-MB-M-00001** |  | 6d | 2026-06-11 A | 2026-06-18 A |  | 100% |  | 2026-05-26 | 2026-06-02 | 6d |  |  |  |  | MECÂNICA | Qui 14/05/26 | Qui 21/05/26 | LE-F0009-0306-MB-M-00001 | Qui 14/05/26 | Qui 21/05/26 | Sprint 7 |
| 73 | 1.1.7.3.1 | Emissão inicial |  | 2d | 2026-06-11 A | 2026-06-12 A | 63, 6FS+5d | 100% |  | 2026-05-26 | 2026-05-27 | 2d |  |  |  |  | MECÂNICA | Qui 14/05/26 | Sex 15/05/26 | Emissão inicial | Qui 14/05/26 | Sex 15/05/26 | Sprint 7 |
| 74 | 1.1.7.3.2 | Análise Tecnored |  | 1d | 2026-06-15 A | 2026-06-15 A | 73 | 100% |  | 2026-05-28 | 2026-05-28 | 1d |  |  |  |  | MECÂNICA | Seg 18/05/26 | Seg 18/05/26 | Análise Tecnored | Seg 18/05/26 | Seg 18/05/26 | Sprint 8 |
| 75 | 1.1.7.3.3 | Atendimento de comentários |  | 2d | 2026-06-16 A | 2026-06-17 A | 74 | 100% |  | 2026-05-29 | 2026-06-01 | 2d |  |  |  |  | MECÂNICA | Ter 19/05/26 | Qua 20/05/26 | Atendimento de comentários | Ter 19/05/26 | Qua 20/05/26 | Sprint 8 |
| 76 | 1.1.7.3.4 | Aprovação |  | 1d | 2026-06-18 A | 2026-06-18 A | 75 | 100% |  | 2026-06-02 | 2026-06-02 | 1d |  |  |  |  | MECÂNICA | Qui 21/05/26 | Qui 21/05/26 | Aprovação | Qui 21/05/26 | Qui 21/05/26 | Sprint 8 |
| 77 | 1.1.7.4 | **PQ-F0009-0306-MB-M-00001** |  | 13d | 2026-06-11 A | 2026-06-29 |  | 71% | 3.71d | 2026-06-02 | 2026-06-10 | 7d | 17d |  |  |  | MECÂNICA | Ter 26/05/26 | Qua 03/06/26 | PQ-F0009-0306-MB-M-00001 | Ter 26/05/26 | Qua 03/06/26 | Sprint 7 |
| 78 | 1.1.7.4.1 | Emissão inicial |  | 3d | 2026-06-11 A | 2026-06-15 A | 68FS+30d | 100% |  | 2026-06-02 | 2026-06-04 | 3d |  |  | finish no earlier than 2026-06-12 |  | MECÂNICA | Ter 26/05/26 | Qui 28/05/26 | Emissão inicial | Ter 26/05/26 | Qui 28/05/26 | Sprint 7 |
| 79 | 1.1.7.4.2 | Análise Tecnored |  | 1d | 2026-06-24 A | 2026-06-24 A | 78 | 100% |  | 2026-06-05 | 2026-06-05 | 1d |  |  | start no earlier than 2026-06-24 |  | MECÂNICA | Sex 29/05/26 | Sex 29/05/26 | Análise Tecnored | Sex 29/05/26 | Sex 29/05/26 | Sprint 9 |
| 80 | 1.1.7.4.3 | Atendimento de comentários |  | 2d | 2026-06-25 A | 2026-06-26 | 79 | 50% | 1d | 2026-06-08 | 2026-06-09 | 2d | 17d | 0d | start no earlier than 2026-06-25 |  | MECÂNICA | Seg 01/06/26 | Ter 02/06/26 | Atendimento de comentários | Seg 01/06/26 | Ter 02/06/26 | Sprint 9 |
| 81 | 1.1.7.4.4 | Aprovação |  | 1d | 2026-06-29 | 2026-06-29 | 80 |  |  | 2026-06-10 | 2026-06-10 | 1d | 17d |  | start no earlier than 2026-06-29 |  | MECÂNICA | Qua 03/06/26 | Qua 03/06/26 | Aprovação | Qua 03/06/26 | Qua 03/06/26 | Sprint 10 |

| ID | WBS | Task | Duration | Start | Finish | Predecessors | Complete | Baseline start | Baseline finish | Baseline duration | Total slack | Free slack | Constraint | Disciplina | Início_LB_R0 | Término_LB_R0 | Text5 | ILB_2 | TLB_2 | Sprints |
| --- | --- | --- | --- | --- | --- | --- | --- | --- | --- | --- | --- | --- | --- | --- | --- | --- | --- | --- | --- | --- |
| 82 | 1.1.7.5 | **AG-F0009-0306-MB-L-00001** | 7d | 2026-06-29 | 2026-07-07 |  |  | 2026-06-18 | 2026-06-30 | 9d | 11d |  |  | MECÂNICA | Qua 10/06/26 | Seg 22/06/26 | AG-F0009-0306-MB-L-00001 | Qua 10/06/26 | Seg 22/06/26 | Sprint 10 |
| 83 | 1.1.7.5.1 | Emissão inicial | 4d | 2026-06-29 | 2026-07-02 | 240 |  | 2026-06-18 | 2026-06-24 | 5d | 11d | 0d | finish no earlier than 2026-06-25 | MECÂNICA | Qua 10/06/26 | Ter 16/06/26 | Emissão inicial | Qua 10/06/26 | Ter 16/06/26 | Sprint 10 |
| 84 | 1.1.7.5.2 | Análise Tecnored | 1d | 2026-07-03 | 2026-07-03 | 83 |  | 2026-06-25 | 2026-06-25 | 1d | 11d | 0d | finish no earlier than 2026-06-26 | MECÂNICA | Qua 17/06/26 | Qua 17/06/26 | Análise Tecnored | Qua 17/06/26 | Qua 17/06/26 | Sprint 10 |
| 85 | 1.1.7.5.3 | Atendimento de comentários | 1d | 2026-07-06 | 2026-07-06 | 84 |  | 2026-06-26 | 2026-06-29 | 2d | 11d | 0d | finish no earlier than 2026-06-29 | MECÂNICA | Qui 18/06/26 | Sex 19/06/26 | Atendimento de comentários | Qui 18/06/26 | Sex 19/06/26 | Sprint 11 |
| 86 | 1.1.7.5.4 | Aprovação | 1d | 2026-07-07 | 2026-07-07 | 85 |  | 2026-06-30 | 2026-06-30 | 1d | 11d |  | finish no earlier than 2026-06-30 | MECÂNICA | Seg 22/06/26 | Seg 22/06/26 | Aprovação | Seg 22/06/26 | Seg 22/06/26 | Sprint 11 |
| 87 | 1.1.7.6 | **AG-F0009-0306-MB-L-00002** | 7d | 2026-06-29 | 2026-07-07 |  |  | 2026-06-18 | 2026-06-30 | 9d | 11d |  |  | MECÂNICA | Qua 10/06/26 | Seg 22/06/26 | AG-F0009-0306-MB-L-00002 | Qua 10/06/26 | Seg 22/06/26 | Sprint 10 |
| 88 | 1.1.7.6.1 | Emissão inicial | 4d | 2026-06-29 | 2026-07-02 | 240 |  | 2026-06-18 | 2026-06-24 | 5d | 11d | 0d | finish no earlier than 2026-06-25 | MECÂNICA | Qua 10/06/26 | Ter 16/06/26 | Emissão inicial | Qua 10/06/26 | Ter 16/06/26 | Sprint 10 |
| 89 | 1.1.7.6.2 | Análise Tecnored | 1d | 2026-07-03 | 2026-07-03 | 88 |  | 2026-06-25 | 2026-06-25 | 1d | 11d | 0d | finish no earlier than 2026-06-26 | MECÂNICA | Qua 17/06/26 | Qua 17/06/26 | Análise Tecnored | Qua 17/06/26 | Qua 17/06/26 | Sprint 10 |
| 90 | 1.1.7.6.3 | Atendimento de comentários | 1d | 2026-07-06 | 2026-07-06 | 89 |  | 2026-06-26 | 2026-06-29 | 2d | 11d | 0d | finish no earlier than 2026-06-29 | MECÂNICA | Qui 18/06/26 | Sex 19/06/26 | Atendimento de comentários | Qui 18/06/26 | Sex 19/06/26 | Sprint 11 |
| 91 | 1.1.7.6.4 | Aprovação | 1d | 2026-07-07 | 2026-07-07 | 90 |  | 2026-06-30 | 2026-06-30 | 1d | 11d |  | finish no earlier than 2026-06-30 | MECÂNICA | Seg 22/06/26 | Seg 22/06/26 | Aprovação | Seg 22/06/26 | Seg 22/06/26 | Sprint 11 |
| 92 | 1.1.7.7 | **AG-F0009-0306-MB-L-00003** | 7d | 2026-06-29 | 2026-07-07 |  |  | 2026-06-18 | 2026-06-30 | 9d | 11d |  |  | MECÂNICA | Qua 10/06/26 | Seg 22/06/26 | AG-F0009-0306-MB-L-00003 | Qua 10/06/26 | Seg 22/06/26 | Sprint 10 |
| 93 | 1.1.7.7.1 | Emissão inicial | 4d | 2026-06-29 | 2026-07-02 | 240 |  | 2026-06-18 | 2026-06-24 | 5d | 11d | 0d | finish no earlier than 2026-06-25 | MECÂNICA | Qua 10/06/26 | Ter 16/06/26 | Emissão inicial | Qua 10/06/26 | Ter 16/06/26 | Sprint 10 |
| 94 | 1.1.7.7.2 | Análise Tecnored | 1d | 2026-07-03 | 2026-07-03 | 93 |  | 2026-06-25 | 2026-06-25 | 1d | 11d | 0d | finish no earlier than 2026-06-26 | MECÂNICA | Qua 17/06/26 | Qua 17/06/26 | Análise Tecnored | Qua 17/06/26 | Qua 17/06/26 | Sprint 10 |
| 95 | 1.1.7.7.3 | Atendimento de comentários | 1d | 2026-07-06 | 2026-07-06 | 94 |  | 2026-06-26 | 2026-06-29 | 2d | 11d | 0d | finish no earlier than 2026-06-29 | MECÂNICA | Qui 18/06/26 | Sex 19/06/26 | Atendimento de comentários | Qui 18/06/26 | Sex 19/06/26 | Sprint 11 |
| 96 | 1.1.7.7.4 | Aprovação | 1d | 2026-07-07 | 2026-07-07 | 95 |  | 2026-06-30 | 2026-06-30 | 1d | 11d |  | finish no earlier than 2026-06-30 | MECÂNICA | Seg 22/06/26 | Seg 22/06/26 | Aprovação | Seg 22/06/26 | Seg 22/06/26 | Sprint 11 |
| 97 | 1.1.7.8 | **AG-F0009-0306-MB-L-00004** | 7d | 2026-06-29 | 2026-07-07 |  |  | 2026-06-18 | 2026-06-30 | 9d | 11d |  |  | MECÂNICA | Qua 10/06/26 | Seg 22/06/26 | AG-F0009-0306-MB-L-00004 | Qua 10/06/26 | Seg 22/06/26 | Sprint 10 |
| 98 | 1.1.7.8.1 | Emissão inicial | 4d | 2026-06-29 | 2026-07-02 | 240 |  | 2026-06-18 | 2026-06-24 | 5d | 11d | 0d | finish no earlier than 2026-06-25 | MECÂNICA | Qua 10/06/26 | Ter 16/06/26 | Emissão inicial | Qua 10/06/26 | Ter 16/06/26 | Sprint 10 |
| 99 | 1.1.7.8.2 | Análise Tecnored | 1d | 2026-07-03 | 2026-07-03 | 98 |  | 2026-06-25 | 2026-06-25 | 1d | 11d | 0d | finish no earlier than 2026-06-26 | MECÂNICA | Qua 17/06/26 | Qua 17/06/26 | Análise Tecnored | Qua 17/06/26 | Qua 17/06/26 | Sprint 10 |
| 100 | 1.1.7.8.3 | Atendimento de comentários | 1d | 2026-07-06 | 2026-07-06 | 99 |  | 2026-06-26 | 2026-06-29 | 2d | 11d | 0d | finish no earlier than 2026-06-29 | MECÂNICA | Qui 18/06/26 | Sex 19/06/26 | Atendimento de comentários | Qui 18/06/26 | Sex 19/06/26 | Sprint 11 |
| 101 | 1.1.7.8.4 | Aprovação | 1d | 2026-07-07 | 2026-07-07 | 100 |  | 2026-06-30 | 2026-06-30 | 1d | 11d |  | finish no earlier than 2026-06-30 | MECÂNICA | Seg 22/06/26 | Seg 22/06/26 | Aprovação | Seg 22/06/26 | Seg 22/06/26 | Sprint 11 |
| 102 | 1.1.7.9 | **PL-F0009-0306-MB-M-00001** | 10d | 2026-06-03 A | 2026-06-18 A |  | 100% | 2026-06-03 | 2026-06-18 | 12d |  |  |  | MECÂNICA | Qui 21/05/26 | Sex 05/06/26 | PL-F0009-0306-MB-M-00001 | Qui 21/05/26 | Sex 05/06/26 | Sprint 6 |
| 103 | 1.1.7.9.1 | Emissão inicial | 6d | 2026-06-03 A | 2026-06-12 A | 124 | 100% | 2026-06-03 | 2026-06-12 | 8d |  |  | finish no earlier than 2026-06-12 | MECÂNICA | Qui 21/05/26 | Seg 01/06/26 | Emissão inicial | Qui 21/05/26 | Seg 01/06/26 | Sprint 6 |
| 104 | 1.1.7.9.2 | Análise Tecnored | 1d | 2026-06-15 A | 2026-06-15 A | 103 | 100% | 2026-06-15 | 2026-06-15 | 1d |  |  |  | MECÂNICA | Ter 02/06/26 | Ter 02/06/26 | Análise Tecnored | Ter 02/06/26 | Ter 02/06/26 | Sprint 8 |
| 105 | 1.1.7.9.3 | Atendimento de comentários | 2d | 2026-06-16 A | 2026-06-17 A | 104 | 100% | 2026-06-16 | 2026-06-17 | 2d |  |  |  | MECÂNICA | Qua 03/06/26 | Qui 04/06/26 | Atendimento de comentários | Qua 03/06/26 | Qui 04/06/26 | Sprint 8 |
| 106 | 1.1.7.9.4 | Aprovação | 1d | 2026-06-18 A | 2026-06-18 A | 105 | 100% | 2026-06-18 | 2026-06-18 | 1d |  |  |  | MECÂNICA | Sex 05/06/26 | Sex 05/06/26 | Aprovação | Sex 05/06/26 | Sex 05/06/26 | Sprint 8 |

| ID | WBS | Task | Type | Duration | Start | Finish | Predecessors | Complete | Remaining | Baseline start | Baseline finish | Baseline duration | Total slack | Free slack | Constraint | Disciplina | Início_LB_R0 | Término_LB_R0 | Text5 | ILB_2 | TLB_2 | Sprints |
| --- | --- | --- | --- | --- | --- | --- | --- | --- | --- | --- | --- | --- | --- | --- | --- | --- | --- | --- | --- | --- | --- | --- |
| 107 | 1.1.7.10 | **PL-F0009-0306-MB-M-00002** | inactive | 12d | 2026-06-03 | 2026-06-22 |  |  |  | 2026-06-03 | 2026-06-18 | 12d |  |  |  | MECÂNICA | Qui 21/05/26 | Sex 05/06/26 | PL-F0009-0306-MB-M-00002 | Qui 21/05/26 | Sex 05/06/26 | Sprint 6 |
| 108 | 1.1.7.10.1 | Emissão inicial | inactive | 8d | 2026-06-03 | 2026-06-16 | 124 |  |  | 2026-06-03 | 2026-06-12 | 8d | 22d | 0d |  | MECÂNICA | Qui 21/05/26 | Seg 01/06/26 | Emissão inicial | Qui 21/05/26 | Seg 01/06/26 | Sprint 6 |
| 109 | 1.1.7.10.2 | Análise Tecnored | inactive | 1d | 2026-06-17 | 2026-06-17 | 108 |  |  | 2026-06-15 | 2026-06-15 | 1d | 22d | 0d |  | MECÂNICA | Ter 02/06/26 | Ter 02/06/26 | Análise Tecnored | Ter 02/06/26 | Ter 02/06/26 | Sprint 8 |
| 110 | 1.1.7.10.3 | Atendimento de comentários | inactive | 2d | 2026-06-18 | 2026-06-19 | 109 |  |  | 2026-06-16 | 2026-06-17 | 2d | 22d | 0d |  | MECÂNICA | Qua 03/06/26 | Qui 04/06/26 | Atendimento de comentários | Qua 03/06/26 | Qui 04/06/26 | Sprint 8 |
| 111 | 1.1.7.10.4 | Aprovação | inactive | 1d | 2026-06-22 | 2026-06-22 | 110 |  |  | 2026-06-18 | 2026-06-18 | 1d | 22d |  |  | MECÂNICA | Sex 05/06/26 | Sex 05/06/26 | Aprovação | Sex 05/06/26 | Sex 05/06/26 | Sprint 9 |
| 112 | 1.1.7.11 | **MC-F0009-0306-MB-M-00001** |  | 8d | 2026-06-12 A | 2026-06-23 |  | 83% | 1.33d | 2026-06-03 | 2026-06-15 | 9d | 21d |  |  | MECÂNICA | Qui 21/05/26 | Ter 02/06/26 | MC-F0009-0306-MB-M-00001 | Qui 21/05/26 | Ter 02/06/26 | Sprint 7 |
| 113 | 1.1.7.11.1 | Emissão inicial |  | 2d | 2026-06-12 A | 2026-06-15 A | 124 | 100% |  | 2026-06-03 | 2026-06-09 | 5d |  |  | finish no earlier than 2026-06-16 | MECÂNICA | Qui 21/05/26 | Qua 27/05/26 | Emissão inicial | Qui 21/05/26 | Qua 27/05/26 | Sprint 7 |
| 114 | 1.1.7.11.2 | Análise Tecnored |  | 1d | 2026-06-16 A | 2026-06-17 A | 113 | 100% |  | 2026-06-10 | 2026-06-10 | 1d |  |  | finish no earlier than 2026-06-17 | MECÂNICA | Qui 28/05/26 | Qui 28/05/26 | Análise Tecnored | Qui 28/05/26 | Qui 28/05/26 | Sprint 8 |
| 115 | 1.1.7.11.3 | Atendimento de comentários |  | 2d | 2026-06-18 A | 2026-06-19 A | 114 | 100% |  | 2026-06-11 | 2026-06-12 | 2d |  |  | finish no earlier than 2026-06-19 | MECÂNICA | Sex 29/05/26 | Seg 01/06/26 | Atendimento de comentários | Sex 29/05/26 | Seg 01/06/26 | Sprint 8 |
| 116 | 1.1.7.11.4 | Aprovação |  | 1d | 2026-06-23 | 2026-06-23 | 115 |  |  | 2026-06-15 | 2026-06-15 | 1d | 21d |  | finish no earlier than 2026-06-23 | MECÂNICA | Ter 02/06/26 | Ter 02/06/26 | Aprovação | Ter 02/06/26 | Ter 02/06/26 | Sprint 9 |
| 117 | 1.1.7.12 | **MC-F0009-0306-MB-M-00002** |  | 8d | 2026-06-12 A | 2026-06-23 |  | 83% | 1.33d | 2026-06-03 | 2026-06-15 | 9d | 21d |  |  | MECÂNICA | Qui 21/05/26 | Ter 02/06/26 | MC-F0009-0306-MB-M-00001 | Qui 21/05/26 | Ter 02/06/26 | Sprint 7 |
| 118 | 1.1.7.12.1 | Emissão inicial |  | 2d | 2026-06-12 A | 2026-06-15 A | 124 | 100% |  | 2026-06-03 | 2026-06-09 | 5d |  |  | finish no earlier than 2026-06-16 | MECÂNICA | Qui 21/05/26 | Qua 27/05/26 | Emissão inicial | Qui 21/05/26 | Qua 27/05/26 | Sprint 7 |
| 119 | 1.1.7.12.2 | Análise Tecnored |  | 1d | 2026-06-17 A | 2026-06-17 A | 118 | 100% |  | 2026-06-10 | 2026-06-10 | 1d |  |  | finish no earlier than 2026-06-17 | MECÂNICA | Qui 28/05/26 | Qui 28/05/26 | Análise Tecnored | Qui 28/05/26 | Qui 28/05/26 | Sprint 8 |
| 120 | 1.1.7.12.3 | Atendimento de comentários |  | 2d | 2026-06-18 A | 2026-06-19 A | 119 | 100% |  | 2026-06-11 | 2026-06-12 | 2d |  |  | finish no earlier than 2026-06-19 | MECÂNICA | Sex 29/05/26 | Seg 01/06/26 | Atendimento de comentários | Sex 29/05/26 | Seg 01/06/26 | Sprint 8 |
| 121 | 1.1.7.12.4 | Aprovação |  | 1d | 2026-06-23 | 2026-06-23 | 120 |  |  | 2026-06-15 | 2026-06-15 | 1d | 21d |  | finish no earlier than 2026-06-23 | MECÂNICA | Ter 02/06/26 | Ter 02/06/26 | Aprovação | Ter 02/06/26 | Ter 02/06/26 | Sprint 9 |
| 122 | 1.1.7.13 | **ML-F0009-0306-MB-M-00001** |  | 9d | 2026-05-26 A | 2026-06-09 A |  | 100% |  | 2026-05-26 | 2026-06-05 | 9d |  |  |  | MECÂNICA | Qui 14/05/26 | Seg 25/05/26 | ML-F0009-0306-MB-M-00001 | Qui 14/05/26 | Seg 25/05/26 | Sprint 5 |
| 123 | 1.1.7.13.1 | Emissão inicial |  | 5d | 2026-05-26 A | 2026-06-01 A | 63, 6FS+5d | 100% |  | 2026-05-26 | 2026-06-01 | 5d |  |  |  | MECÂNICA | Qui 14/05/26 | Ter 19/05/26 | Emissão inicial | Qui 14/05/26 | Ter 19/05/26 | Sprint 5 |
| 124 | 1.1.7.13.2 | Análise Tecnored |  | 1d | 2026-06-02 A | 2026-06-02 A | 123 | 100% |  | 2026-06-02 | 2026-06-02 | 1d |  |  |  | MECÂNICA | Qua 20/05/26 | Qua 20/05/26 | Análise Tecnored | Qua 20/05/26 | Qua 20/05/26 | Sprint 6 |
| 125 | 1.1.7.13.3 | Atendimento de comentários |  | 2d | 2026-06-03 A | 2026-06-08 A | 124 | 100% |  | 2026-06-03 | 2026-06-04 | 2d |  |  |  | MECÂNICA | Qui 21/05/26 | Sex 22/05/26 | Atendimento de comentários | Qui 21/05/26 | Sex 22/05/26 | Sprint 6 |
| 126 | 1.1.7.13.4 | Aprovação |  | 1d | 2026-06-09 A | 2026-06-09 A | 125 | 100% |  | 2026-06-05 | 2026-06-05 | 1d |  |  |  | MECÂNICA | Seg 25/05/26 | Seg 25/05/26 | Aprovação | Seg 25/05/26 | Seg 25/05/26 | Sprint 7 |
| 127 | 1.1.7.14 | **FD-F0009-0306-MB-M-00001** |  | 7d | 2026-06-17 A | 2026-06-25 |  | 50% | 3.5d | 2026-06-10 | 2026-06-18 | 7d | 19d |  |  | MECÂNICA | Qui 28/05/26 | Sex 05/06/26 | FD-F0009-0306-MB-M-00001 | Qui 28/05/26 | Sex 05/06/26 | Sprint 8 |
| 128 | 1.1.7.14.1 | Emissão inicial |  | 3d | 2026-06-17 A | 2026-06-19 A | 113, 118 | 100% |  | 2026-06-10 | 2026-06-12 | 3d |  |  | finish no earlier than 2026-06-19 | MECÂNICA | Qui 28/05/26 | Seg 01/06/26 | Emissão inicial | Qui 28/05/26 | Seg 01/06/26 | Sprint 8 |
| 129 | 1.1.7.14.2 | Análise Tecnored |  | 1d | 2026-06-22 A | 2026-06-22 | 128 | 50% | 0.5d | 2026-06-15 | 2026-06-15 | 1d | 19d | 0d | finish no earlier than 2026-06-22 | MECÂNICA | Ter 02/06/26 | Ter 02/06/26 | Análise Tecnored | Ter 02/06/26 | Ter 02/06/26 | Sprint 9 |
| 130 | 1.1.7.14.3 | Atendimento de comentários |  | 2d | 2026-06-23 | 2026-06-24 | 129 |  |  | 2026-06-16 | 2026-06-17 | 2d | 19d | 0d | finish no earlier than 2026-06-24 | MECÂNICA | Qua 03/06/26 | Qui 04/06/26 | Atendimento de comentários | Qua 03/06/26 | Qui 04/06/26 | Sprint 9 |
| 131 | 1.1.7.14.4 | Aprovação |  | 1d | 2026-06-25 | 2026-06-25 | 130 |  |  | 2026-06-18 | 2026-06-18 | 1d | 19d |  | finish no earlier than 2026-06-25 | MECÂNICA | Sex 05/06/26 | Sex 05/06/26 | Aprovação | Sex 05/06/26 | Sex 05/06/26 | Sprint 9 |

| ID | WBS | Task | Type | Duration | Start | Finish | Predecessors | Complete | Remaining | Baseline start | Baseline finish | Baseline duration | Total slack | Free slack | Constraint | Baseline cost | Disciplina | Início_LB_R0 | Término_LB_R0 | Text5 | ILB_2 | TLB_2 | Sprints |
| --- | --- | --- | --- | --- | --- | --- | --- | --- | --- | --- | --- | --- | --- | --- | --- | --- | --- | --- | --- | --- | --- | --- | --- |
| 132 | 1.1.7.15 | **FD-F0009-0306-MB-M-00002** |  | 7d | 2026-06-17 A | 2026-06-25 |  | 50% | 3.5d | 2026-06-10 | 2026-06-18 | 7d | 19d |  |  |  | MECÂNICA | Qui 28/05/26 | Sex 05/06/26 | FD-F0009-0306-MB-M-00002 | Qui 28/05/26 | Sex 05/06/26 | Sprint 8 |
| 133 | 1.1.7.15.1 | Emissão inicial |  | 3d | 2026-06-17 A | 2026-06-19 A | 113, 118 | 100% |  | 2026-06-10 | 2026-06-12 | 3d |  |  | finish no earlier than 2026-06-19 |  | MECÂNICA | Qui 28/05/26 | Seg 01/06/26 | Emissão inicial | Qui 28/05/26 | Seg 01/06/26 | Sprint 8 |
| 134 | 1.1.7.15.2 | Análise Tecnored |  | 1d | 2026-06-22 A | 2026-06-22 | 133 | 50% | 0.5d | 2026-06-15 | 2026-06-15 | 1d | 19d | 0d | finish no earlier than 2026-06-22 |  | MECÂNICA | Ter 02/06/26 | Ter 02/06/26 | Análise Tecnored | Ter 02/06/26 | Ter 02/06/26 | Sprint 9 |
| 135 | 1.1.7.15.3 | Atendimento de comentários |  | 2d | 2026-06-23 | 2026-06-24 | 134 |  |  | 2026-06-16 | 2026-06-17 | 2d | 19d | 0d | finish no earlier than 2026-06-24 |  | MECÂNICA | Qua 03/06/26 | Qui 04/06/26 | Atendimento de comentários | Qua 03/06/26 | Qui 04/06/26 | Sprint 9 |
| 136 | 1.1.7.15.4 | Aprovação |  | 1d | 2026-06-25 | 2026-06-25 | 135 |  |  | 2026-06-18 | 2026-06-18 | 1d | 19d |  | finish no earlier than 2026-06-25 |  | MECÂNICA | Sex 05/06/26 | Sex 05/06/26 | Aprovação | Sex 05/06/26 | Sex 05/06/26 | Sprint 9 |
| 137 | 1.1.7.16 | **FD-F0009-0306-MB-M-00003** |  | 7d | 2026-06-17 A | 2026-06-25 |  | 50% | 3.5d | 2026-06-10 | 2026-06-18 | 7d | 19d |  |  |  | MECÂNICA | Qui 28/05/26 | Sex 05/06/26 | FD-F0009-0306-MB-M-00002 | Qui 28/05/26 | Sex 05/06/26 | Sprint 8 |
| 138 | 1.1.7.16.1 | Emissão inicial |  | 3d | 2026-06-17 A | 2026-06-19 A | 113, 118 | 100% |  | 2026-06-10 | 2026-06-12 | 3d |  |  | finish no earlier than 2026-06-19 |  | MECÂNICA | Qui 28/05/26 | Seg 01/06/26 | Emissão inicial | Qui 28/05/26 | Seg 01/06/26 | Sprint 8 |
| 139 | 1.1.7.16.2 | Análise Tecnored |  | 1d | 2026-06-22 A | 2026-06-22 | 138 | 50% | 0.5d | 2026-06-15 | 2026-06-15 | 1d | 19d | 0d | finish no earlier than 2026-06-22 |  | MECÂNICA | Ter 02/06/26 | Ter 02/06/26 | Análise Tecnored | Ter 02/06/26 | Ter 02/06/26 | Sprint 9 |
| 140 | 1.1.7.16.3 | Atendimento de comentários |  | 2d | 2026-06-23 | 2026-06-24 | 139 |  |  | 2026-06-16 | 2026-06-17 | 2d | 19d | 0d | finish no earlier than 2026-06-24 |  | MECÂNICA | Qua 03/06/26 | Qui 04/06/26 | Atendimento de comentários | Qua 03/06/26 | Qui 04/06/26 | Sprint 9 |
| 141 | 1.1.7.16.4 | Aprovação |  | 1d | 2026-06-25 | 2026-06-25 | 140 |  |  | 2026-06-18 | 2026-06-18 | 1d | 19d |  | finish no earlier than 2026-06-25 |  | MECÂNICA | Sex 05/06/26 | Sex 05/06/26 | Aprovação | Sex 05/06/26 | Sex 05/06/26 | Sprint 9 |
| 142 | 1.1.8 | **Tubulação/Utilidades** |  | 24d | 2026-06-08 A | 2026-07-09 |  | 37% | 15.05d | 2026-06-02 | 2026-06-29 | 20d | 9d |  |  |  | TUBULAÇÃO / UTILIDADES | Ter 05/05/26 | Ter 16/06/26 | Tubulação/Utilidades | Ter 05/05/26 | Ter 16/06/26 | Sprint 7 |
| 143 | 1.1.8.1 | **CP-F0009-0306-MB-T-00001** | inactive | 18d | 2026-05-05 | 2026-05-28 |  |  |  |  |  |  | 37d |  |  | -0 |  |  |  |  |  |  | Sprint 2 |
| 144 | 1.1.8.1.1 | Emissão inicial | inactive | 7d | 2026-05-05 | 2026-05-13 | 20 |  |  |  |  |  | 44d | 7d |  | -0 |  |  |  |  |  |  | Sprint 2 |
| 145 | 1.1.8.1.2 | Análise Tecnored | inactive | 1d | 2026-05-25 | 2026-05-25 | 144, 9 |  |  |  |  |  | 37d | 0d |  | -0 |  |  |  |  |  |  | Sprint 5 |
| 146 | 1.1.8.1.3 | Atendimento de comentários | inactive | 2d | 2026-05-26 | 2026-05-27 | 145 |  |  |  |  |  | 37d | 0d |  | -0 |  |  |  |  |  |  | Sprint 5 |
| 147 | 1.1.8.1.4 | Aprovação | inactive | 1d | 2026-05-28 | 2026-05-28 | 146 |  |  |  |  |  | 37d |  |  | -0 |  |  |  |  |  |  | Sprint 5 |
| 148 | 1.1.8.2 | **MD-F0009-0306-MB-U-00001** | inactive | 7d | 2026-07-02 | 2026-07-10 |  |  |  | 2026-06-16 | 2026-06-24 | 7d | 8d |  |  |  |  |  |  |  |  |  | Sprint 10 |
| 149 | 1.1.8.2.1 | Emissão inicial | inactive | 3d | 2026-07-02 | 2026-07-06 | 193 |  |  | 2026-06-16 | 2026-06-18 | 3d | 8d | 0d |  |  |  |  |  |  |  |  | Sprint 10 |
| 150 | 1.1.8.2.2 | Análise Tecnored | inactive | 1d | 2026-07-07 | 2026-07-07 | 149 |  |  | 2026-06-19 | 2026-06-19 | 1d | 8d | 0d |  |  |  |  |  |  |  |  | Sprint 11 |
| 151 | 1.1.8.2.3 | Atendimento de comentários | inactive | 2d | 2026-07-08 | 2026-07-09 | 150 |  |  | 2026-06-22 | 2026-06-23 | 2d | 8d | 0d |  |  |  |  |  |  |  |  | Sprint 11 |
| 152 | 1.1.8.2.4 | Aprovação | inactive | 1d | 2026-07-10 | 2026-07-10 | 151 |  |  | 2026-06-24 | 2026-06-24 | 1d | 8d |  |  |  |  |  |  |  |  |  | Sprint 11 |
| 153 | 1.1.8.3 | **ML-F0009-0306-MB-T-00001** |  | 9d | 2026-06-15 A | 2026-06-25 |  | 56% | 4d | 2026-06-02 | 2026-06-10 | 7d | 19d |  |  |  | TUBULAÇÃO / UTILIDADES | Qua 20/05/26 | Qui 28/05/26 | MD-F0009-0306-MB-U-00001 | Qua 03/06/26 | Qui 11/06/26 | Sprint 8 |
| 154 | 1.1.8.3.1 | Emissão inicial |  | 5d | 2026-06-15 A | 2026-06-19 A |  | 100% |  | 2026-06-02 | 2026-06-04 | 3d |  |  | finish no earlier than 2026-06-19 |  | TUBULAÇÃO / UTILIDADES | Qua 20/05/26 | Sex 22/05/26 | Emissão inicial | Qua 03/06/26 | Sex 05/06/26 | Sprint 8 |
| 155 | 1.1.8.3.2 | Análise Tecnored |  | 1d | 2026-06-22 | 2026-06-22 | 154 |  |  | 2026-06-05 | 2026-06-05 | 1d | 19d | 0d |  |  | TUBULAÇÃO / UTILIDADES | Seg 25/05/26 | Seg 25/05/26 | Análise Tecnored | Seg 08/06/26 | Seg 08/06/26 | Sprint 9 |
| 156 | 1.1.8.3.3 | Atendimento de comentários |  | 2d | 2026-06-23 | 2026-06-24 | 155 |  |  | 2026-06-08 | 2026-06-09 | 2d | 19d | 0d |  |  | TUBULAÇÃO / UTILIDADES | Ter 26/05/26 | Qua 27/05/26 | Atendimento de comentários | Ter 09/06/26 | Qua 10/06/26 | Sprint 9 |
| 157 | 1.1.8.3.4 | Aprovação |  | 1d | 2026-06-25 | 2026-06-25 | 156 |  |  | 2026-06-10 | 2026-06-10 | 1d | 19d |  |  |  | TUBULAÇÃO / UTILIDADES | Qui 28/05/26 | Qui 28/05/26 | Aprovação | Qui 11/06/26 | Qui 11/06/26 | Sprint 9 |

| ID | WBS | Task | Type | Duration | Start | Finish | Predecessors | Complete | Remaining | Baseline start | Baseline finish | Baseline duration | Total slack | Free slack | Constraint | Sprints | Disciplina | Início_LB_R0 | Término_LB_R0 | Text5 | ILB_2 | TLB_2 |
| --- | --- | --- | --- | --- | --- | --- | --- | --- | --- | --- | --- | --- | --- | --- | --- | --- | --- | --- | --- | --- | --- | --- |
| 158 | 1.1.8.4 | **ET-F0009-0306-MB-T-00001** | inactive | 7d | 2026-06-30 | 2026-07-08 |  |  |  | 2026-06-10 | 2026-06-18 | 7d | 10d |  |  | Sprint 10 |  |  |  |  |  |  |
| 159 | 1.1.8.4.1 | Emissão inicial | inactive | 3d | 2026-06-30 | 2026-07-02 | 164 |  |  | 2026-06-10 | 2026-06-12 | 3d | 10d | 0d |  | Sprint 10 |  |  |  |  |  |  |
| 160 | 1.1.8.4.2 | Análise Tecnored | inactive | 1d | 2026-07-03 | 2026-07-03 | 159 |  |  | 2026-06-15 | 2026-06-15 | 1d | 10d | 0d |  | Sprint 10 |  |  |  |  |  |  |
| 161 | 1.1.8.4.3 | Atendimento de comentários | inactive | 2d | 2026-07-06 | 2026-07-07 | 160 |  |  | 2026-06-16 | 2026-06-17 | 2d | 10d | 0d |  | Sprint 11 |  |  |  |  |  |  |
| 162 | 1.1.8.4.4 | Aprovação | inactive | 1d | 2026-07-08 | 2026-07-08 | 161 |  |  | 2026-06-18 | 2026-06-18 | 1d | 10d |  |  | Sprint 11 |  |  |  |  |  |  |
| 163 | 1.1.8.5 | **FD-F0009-0306-MB-T-00001** |  | 7d | 2026-06-25 | 2026-07-03 |  |  |  | 2026-06-05 | 2026-06-15 | 7d | 13d |  |  | Sprint 9 | TUBULAÇÃO / UTILIDADES | Seg 25/05/26 | Ter 02/06/26 | ML-F0009-0306-MB-T-00001 | Qua 20/05/26 | Qui 28/05/26 |
| 164 | 1.1.8.5.1 | Emissão inicial |  | 3d | 2026-06-25 | 2026-06-29 | 179, 57FS+3d |  |  | 2026-06-05 | 2026-06-09 | 3d | 13d | 0d | start no earlier than 2026-06-25 | Sprint 9 | TUBULAÇÃO / UTILIDADES | Seg 25/05/26 | Qua 27/05/26 | Emissão inicial | Qua 20/05/26 | Sex 22/05/26 |
| 165 | 1.1.8.5.2 | Análise Tecnored |  | 1d | 2026-06-30 | 2026-06-30 | 164 |  |  | 2026-06-10 | 2026-06-10 | 1d | 13d | 0d | start no earlier than 2026-06-18 | Sprint 10 | TUBULAÇÃO / UTILIDADES | Qui 28/05/26 | Qui 28/05/26 | Análise Tecnored | Seg 25/05/26 | Seg 25/05/26 |
| 166 | 1.1.8.5.3 | Atendimento de comentários |  | 2d | 2026-07-01 | 2026-07-02 | 165 |  |  | 2026-06-11 | 2026-06-12 | 2d | 13d | 0d | start no earlier than 2026-06-19 | Sprint 10 | TUBULAÇÃO / UTILIDADES | Sex 29/05/26 | Seg 01/06/26 | Atendimento de comentários | Ter 26/05/26 | Qua 27/05/26 |
| 167 | 1.1.8.5.4 | Aprovação |  | 1d | 2026-07-03 | 2026-07-03 | 166 |  |  | 2026-06-15 | 2026-06-15 | 1d | 13d |  | start no earlier than 2026-06-23 | Sprint 10 | TUBULAÇÃO / UTILIDADES | Ter 02/06/26 | Ter 02/06/26 | Aprovação | Qui 28/05/26 | Qui 28/05/26 |
| 168 | 1.1.8.6 | **FD-F0009-0306-MB-T-00002** | inactive | 7d | 2026-06-15 | 2026-06-23 |  |  |  | 2026-06-05 | 2026-06-15 | 7d | 21d |  |  | Sprint 8 |  |  |  |  |  |  |
| 169 | 1.1.8.6.1 | Emissão inicial | inactive | 3d | 2026-06-15 | 2026-06-17 | 179 |  |  | 2026-06-05 | 2026-06-09 | 3d | 21d | 0d |  | Sprint 8 |  |  |  |  |  |  |
| 170 | 1.1.8.6.2 | Análise Tecnored | inactive | 1d | 2026-06-18 | 2026-06-18 | 169 |  |  | 2026-06-10 | 2026-06-10 | 1d | 21d | 0d |  | Sprint 8 |  |  |  |  |  |  |
| 171 | 1.1.8.6.3 | Atendimento de comentários | inactive | 2d | 2026-06-19 | 2026-06-22 | 170 |  |  | 2026-06-11 | 2026-06-12 | 2d | 21d | 0d |  | Sprint 8 |  |  |  |  |  |  |
| 172 | 1.1.8.6.4 | Aprovação | inactive | 1d | 2026-06-23 | 2026-06-23 | 171 |  |  | 2026-06-15 | 2026-06-15 | 1d | 21d |  |  | Sprint 9 |  |  |  |  |  |  |
| 173 | 1.1.8.7 | **PQ-F0009-0306-MB-T-00001** |  | 8d | 2026-06-22 A | 2026-07-01 |  | 33% | 5.33d | 2026-06-19 | 2026-06-29 | 7d | 15d |  |  | Sprint 9 | TUBULAÇÃO / UTILIDADES | Seg 08/06/26 | Ter 16/06/26 | ET-F0009-0306-MB-T-00001 | Qui 28/05/26 | Sex 05/06/26 |
| 174 | 1.1.8.7.1 | Emissão inicial |  | 2d | 2026-06-22 A | 2026-06-25 A | 180 | 100% |  | 2026-06-19 | 2026-06-23 | 3d |  |  | finish no earlier than 2026-06-25 | Sprint 9 | TUBULAÇÃO / UTILIDADES | Seg 08/06/26 | Qua 10/06/26 | Emissão inicial | Qui 28/05/26 | Seg 01/06/26 |
| 175 | 1.1.8.7.2 | Análise Tecnored |  | 1d | 2026-06-26 | 2026-06-26 | 174 |  |  | 2026-06-24 | 2026-06-24 | 1d | 15d | 0d | start no earlier than 2026-06-19 | Sprint 9 | TUBULAÇÃO / UTILIDADES | Qui 11/06/26 | Qui 11/06/26 | Análise Tecnored | Ter 02/06/26 | Ter 02/06/26 |
| 176 | 1.1.8.7.3 | Atendimento de comentários |  | 2d | 2026-06-29 | 2026-06-30 | 175 |  |  | 2026-06-25 | 2026-06-26 | 2d | 15d | 0d | start no earlier than 2026-06-22 | Sprint 10 | TUBULAÇÃO / UTILIDADES | Sex 12/06/26 | Seg 15/06/26 | Atendimento de comentários | Qua 03/06/26 | Qui 04/06/26 |
| 177 | 1.1.8.7.4 | Aprovação |  | 1d | 2026-07-01 | 2026-07-01 | 176 |  |  | 2026-06-29 | 2026-06-29 | 1d | 15d |  | start no earlier than 2026-06-24 | Sprint 10 | TUBULAÇÃO / UTILIDADES | Ter 16/06/26 | Ter 16/06/26 | Aprovação | Sex 05/06/26 | Sex 05/06/26 |
| 178 | 1.1.8.8 | **MC-F0009-0306-MB-T-00001** | inactive | 7d | 2026-06-10 | 2026-06-18 |  |  |  | 2026-06-02 | 2026-06-10 | 7d |  |  |  | Sprint 7 | TUBULAÇÃO / UTILIDADES | Qua 20/05/26 | Qui 28/05/26 | FD-F0009-0306-MB-T-00001 | Seg 25/05/26 | Ter 02/06/26 |
| 179 | 1.1.8.8.1 | Emissão inicial | inactive | 3d | 2026-06-10 | 2026-06-12 | 123, 185 |  |  | 2026-06-02 | 2026-06-04 | 3d | 17d | 0d | start no earlier than 2026-06-10 | Sprint 7 | TUBULAÇÃO / UTILIDADES | Qua 20/05/26 | Sex 22/05/26 | Emissão inicial | Seg 25/05/26 | Qua 27/05/26 |
| 180 | 1.1.8.8.2 | Análise Tecnored | inactive | 1d | 2026-06-15 | 2026-06-15 | 179 |  |  | 2026-06-05 | 2026-06-05 | 1d | 17d | 0d | start no earlier than 2026-06-15 | Sprint 8 | TUBULAÇÃO / UTILIDADES | Seg 25/05/26 | Seg 25/05/26 | Análise Tecnored | Qui 28/05/26 | Qui 28/05/26 |
| 181 | 1.1.8.8.3 | Atendimento de comentários | inactive | 2d | 2026-06-16 | 2026-06-17 | 180 |  |  | 2026-06-08 | 2026-06-09 | 2d | 17d | 0d | start no earlier than 2026-06-16 | Sprint 8 | TUBULAÇÃO / UTILIDADES | Ter 26/05/26 | Qua 27/05/26 | Atendimento de comentários | Sex 29/05/26 | Seg 01/06/26 |
| 182 | 1.1.8.8.4 | Aprovação | inactive | 1d | 2026-06-18 | 2026-06-18 | 181 |  |  | 2026-06-10 | 2026-06-10 | 1d | 17d | 8d | start no earlier than 2026-06-18 | Sprint 8 | TUBULAÇÃO / UTILIDADES | Qui 28/05/26 | Qui 28/05/26 | Aprovação | Ter 02/06/26 | Ter 02/06/26 |

| ID | WBS | Task | Type | Duration | Start | Finish | Predecessors | Complete | Remaining | Baseline start | Baseline finish | Baseline duration | Total slack | Free slack | Constraint | Disciplina | Início_LB_R0 | Término_LB_R0 | Text5 | ILB_2 | TLB_2 | Sprints |
| --- | --- | --- | --- | --- | --- | --- | --- | --- | --- | --- | --- | --- | --- | --- | --- | --- | --- | --- | --- | --- | --- | --- |
| 183 | 1.1.8.9 | **FG-F0009-0306-MB-T-00001** |  | 5d | 2026-06-08 A | 2026-06-12 |  | 60% | 2d | 2026-06-08 | 2026-06-25 | 14d | 28d |  |  | TUBULAÇÃO / UTILIDADES | Sex 15/05/26 | Qua 03/06/26 | FD-F0009-0306-MB-T-00002 | Seg 25/05/26 | Ter 02/06/26 | Sprint 7 |
| 184 | 1.1.8.9.1 | Emissão inicial |  | 1d | 2026-06-08 A | 2026-06-08 A | 57FS+3d | 100% |  | 2026-06-08 | 2026-06-19 | 10d |  |  | finish no earlier than 2026-06-08 | TUBULAÇÃO / UTILIDADES | Sex 15/05/26 | Qui 28/05/26 | Emissão inicial | Seg 25/05/26 | Qua 27/05/26 | Sprint 7 |
| 185 | 1.1.8.9.2 | Análise Tecnored |  | 1d | 2026-06-09 A | 2026-06-09 A | 184 | 100% |  | 2026-06-22 | 2026-06-22 | 1d |  |  | start no earlier than 2026-06-09 | TUBULAÇÃO / UTILIDADES | Sex 29/05/26 | Sex 29/05/26 | Análise Tecnored | Qui 28/05/26 | Qui 28/05/26 | Sprint 7 |
| 186 | 1.1.8.9.3 | Atendimento de comentários |  | 2d | 2026-06-10 A | 2026-06-11 | 185 | 50% | 1d | 2026-06-23 | 2026-06-24 | 2d | 28d | 0d | start no earlier than 2026-06-10 | TUBULAÇÃO / UTILIDADES | Seg 01/06/26 | Ter 02/06/26 | Atendimento de comentários | Sex 29/05/26 | Seg 01/06/26 | Sprint 7 |
| 187 | 1.1.8.9.4 | Aprovação |  | 1d | 2026-06-12 | 2026-06-12 | 186 |  |  | 2026-06-25 | 2026-06-25 | 1d | 28d |  | start no earlier than 2026-06-12 | TUBULAÇÃO / UTILIDADES | Qua 03/06/26 | Qua 03/06/26 | Aprovação | Ter 02/06/26 | Ter 02/06/26 | Sprint 7 |
| 188 | 1.1.8.10 | **FG-F0009-0306-MB-T-00002** | inactive | 14d | 2026-06-08 | 2026-06-25 |  |  |  | 2026-06-08 | 2026-06-25 | 14d | 19d |  |  |  |  |  |  |  |  | Sprint 7 |
| 189 | 1.1.8.10.1 | Emissão inicial | inactive | 10d | 2026-06-08 | 2026-06-19 | 57 |  |  | 2026-06-08 | 2026-06-19 | 10d | 19d | 0d |  |  |  |  |  |  |  | Sprint 7 |
| 190 | 1.1.8.10.2 | Análise Tecnored | inactive | 1d | 2026-06-22 | 2026-06-22 | 189 |  |  | 2026-06-22 | 2026-06-22 | 1d | 19d | 0d |  |  |  |  |  |  |  | Sprint 9 |
| 191 | 1.1.8.10.3 | Atendimento de comentários | inactive | 2d | 2026-06-23 | 2026-06-24 | 190 |  |  | 2026-06-23 | 2026-06-24 | 2d | 19d | 0d |  |  |  |  |  |  |  | Sprint 9 |
| 192 | 1.1.8.10.4 | Aprovação | inactive | 1d | 2026-06-25 | 2026-06-25 | 191 |  |  | 2026-06-25 | 2026-06-25 | 1d | 19d |  |  |  |  |  |  |  |  | Sprint 9 |
| 193 | 1.1.8.11 | **AG-F0009-0306-MB-T-00001** |  | 7d | 2026-06-23 A | 2026-07-01 |  | 50% | 3.5d | 2026-06-05 | 2026-06-15 | 7d | 15d | 0d |  | TUBULAÇÃO / UTILIDADES | Seg 25/05/26 | Ter 02/06/26 | PQ-F0009-0306-MB-T-00001 | Seg 08/06/26 | Ter 16/06/26 | Sprint 9 |
| 194 | 1.1.8.11.1 | Emissão inicial |  | 3d | 2026-06-23 A | 2026-06-25 A | 155 | 100% |  | 2026-06-05 | 2026-06-09 | 3d |  |  |  | TUBULAÇÃO / UTILIDADES | Seg 25/05/26 | Qua 27/05/26 | Emissão inicial | Seg 08/06/26 | Qua 10/06/26 | Sprint 9 |
| 195 | 1.1.8.11.2 | Análise Tecnored |  | 1d | 2026-06-26 A | 2026-06-26 | 194 | 50% | 0.5d | 2026-06-10 | 2026-06-10 | 1d | 15d | 0d |  | TUBULAÇÃO / UTILIDADES | Qui 28/05/26 | Qui 28/05/26 | Análise Tecnored | Qui 11/06/26 | Qui 11/06/26 | Sprint 9 |
| 196 | 1.1.8.11.3 | Atendimento de comentários |  | 2d | 2026-06-29 | 2026-06-30 | 195 |  |  | 2026-06-11 | 2026-06-12 | 2d | 15d | 0d |  | TUBULAÇÃO / UTILIDADES | Sex 29/05/26 | Seg 01/06/26 | Atendimento de comentários | Sex 12/06/26 | Seg 15/06/26 | Sprint 10 |
| 197 | 1.1.8.11.4 | Aprovação |  | 1d | 2026-07-01 | 2026-07-01 | 196 |  |  | 2026-06-15 | 2026-06-15 | 1d | 15d |  |  | TUBULAÇÃO / UTILIDADES | Ter 02/06/26 | Ter 02/06/26 | Aprovação | Ter 16/06/26 | Ter 16/06/26 | Sprint 10 |
| 198 | 1.1.8.12 | **AG-F0009-0306-MB-T-00002** |  | 7d | 2026-06-23 A | 2026-07-01 |  | 50% | 3.5d | 2026-06-05 | 2026-06-15 | 7d | 15d |  |  | TUBULAÇÃO / UTILIDADES | Seg 25/05/26 | Ter 02/06/26 | MC-F0009-0306-MB-T-00001 | Qua 20/05/26 | Qui 28/05/26 | Sprint 9 |
| 199 | 1.1.8.12.1 | Emissão inicial |  | 3d | 2026-06-23 A | 2026-06-25 A | 155 | 100% |  | 2026-06-05 | 2026-06-09 | 3d |  |  |  | TUBULAÇÃO / UTILIDADES | Seg 25/05/26 | Qua 27/05/26 | Emissão inicial | Qua 20/05/26 | Sex 22/05/26 | Sprint 9 |
| 200 | 1.1.8.12.2 | Análise Tecnored |  | 1d | 2026-06-26 A | 2026-06-26 | 199 | 50% | 0.5d | 2026-06-10 | 2026-06-10 | 1d | 15d | 0d |  | TUBULAÇÃO / UTILIDADES | Qui 28/05/26 | Qui 28/05/26 | Análise Tecnored | Seg 25/05/26 | Seg 25/05/26 | Sprint 9 |
| 201 | 1.1.8.12.3 | Atendimento de comentários |  | 2d | 2026-06-29 | 2026-06-30 | 200 |  |  | 2026-06-11 | 2026-06-12 | 2d | 15d | 0d |  | TUBULAÇÃO / UTILIDADES | Sex 29/05/26 | Seg 01/06/26 | Atendimento de comentários | Ter 26/05/26 | Qua 27/05/26 | Sprint 10 |
| 202 | 1.1.8.12.4 | Aprovação |  | 1d | 2026-07-01 | 2026-07-01 | 201 |  |  | 2026-06-15 | 2026-06-15 | 1d | 15d |  |  | TUBULAÇÃO / UTILIDADES | Ter 02/06/26 | Ter 02/06/26 | Aprovação | Qui 28/05/26 | Qui 28/05/26 | Sprint 10 |
| 203 | 1.1.8.13 | **AG-F0009-0306-MB-T-00003** |  | 7d | 2026-06-23 A | 2026-07-01 |  | 50% | 3.5d | 2026-06-05 | 2026-06-15 | 7d | 15d |  |  | TUBULAÇÃO / UTILIDADES | Seg 25/05/26 | Ter 02/06/26 | FG-F0009-0306-MB-T-00001 | Sex 15/05/26 | Qua 03/06/26 | Sprint 9 |
| 204 | 1.1.8.13.1 | Emissão inicial |  | 3d | 2026-06-23 A | 2026-06-25 A | 155 | 100% |  | 2026-06-05 | 2026-06-09 | 3d |  |  |  | TUBULAÇÃO / UTILIDADES | Seg 25/05/26 | Qua 27/05/26 | Emissão inicial | Sex 15/05/26 | Qui 28/05/26 | Sprint 9 |
| 205 | 1.1.8.13.2 | Análise Tecnored |  | 1d | 2026-06-26 A | 2026-06-26 | 204 | 50% | 0.5d | 2026-06-10 | 2026-06-10 | 1d | 15d | 0d |  | TUBULAÇÃO / UTILIDADES | Qui 28/05/26 | Qui 28/05/26 | Análise Tecnored | Sex 29/05/26 | Sex 29/05/26 | Sprint 9 |
| 206 | 1.1.8.13.3 | Atendimento de comentários |  | 2d | 2026-06-29 | 2026-06-30 | 205 |  |  | 2026-06-11 | 2026-06-12 | 2d | 15d | 0d |  | TUBULAÇÃO / UTILIDADES | Sex 29/05/26 | Seg 01/06/26 | Atendimento de comentários | Seg 01/06/26 | Ter 02/06/26 | Sprint 10 |
| 207 | 1.1.8.13.4 | Aprovação |  | 1d | 2026-07-01 | 2026-07-01 | 206 |  |  | 2026-06-15 | 2026-06-15 | 1d | 15d |  |  | TUBULAÇÃO / UTILIDADES | Ter 02/06/26 | Ter 02/06/26 | Aprovação | Qua 03/06/26 | Qua 03/06/26 | Sprint 10 |

| ID | WBS | Task | Type | Duration | Start | Finish | Predecessors | Baseline start | Baseline finish | Baseline duration | Total slack | Free slack | Constraint | Sprints | Disciplina | Início_LB_R0 | Término_LB_R0 | Text5 | ILB_2 | TLB_2 |
| --- | --- | --- | --- | --- | --- | --- | --- | --- | --- | --- | --- | --- | --- | --- | --- | --- | --- | --- | --- | --- |
| 208 | 1.1.8.14 | **AG-F0009-0306-MB-T-00004** | inactive | 7d | 2026-06-09 | 2026-06-17 |  | 2026-06-05 | 2026-06-15 | 7d | 25d |  |  | Sprint 7 |  |  |  |  |  |  |
| 209 | 1.1.8.14.1 | Emissão inicial | inactive | 3d | 2026-06-09 | 2026-06-11 | 125 | 2026-06-05 | 2026-06-09 | 3d | 25d | 0d |  | Sprint 7 |  |  |  |  |  |  |
| 210 | 1.1.8.14.2 | Análise Tecnored | inactive | 1d | 2026-06-12 | 2026-06-12 | 209 | 2026-06-10 | 2026-06-10 | 1d | 25d | 0d |  | Sprint 7 |  |  |  |  |  |  |
| 211 | 1.1.8.14.3 | Atendimento de comentários | inactive | 2d | 2026-06-15 | 2026-06-16 | 210 | 2026-06-11 | 2026-06-12 | 2d | 25d | 0d |  | Sprint 8 |  |  |  |  |  |  |
| 212 | 1.1.8.14.4 | Aprovação | inactive | 1d | 2026-06-17 | 2026-06-17 | 211 | 2026-06-15 | 2026-06-15 | 1d | 25d |  |  | Sprint 8 |  |  |  |  |  |  |
| 213 | 1.1.8.15 | **AG-F0009-0306-MB-T-00005** | inactive | 7d | 2026-06-09 | 2026-06-17 |  | 2026-06-05 | 2026-06-15 | 7d | 25d |  |  | Sprint 7 |  |  |  |  |  |  |
| 214 | 1.1.8.15.1 | Emissão inicial | inactive | 3d | 2026-06-09 | 2026-06-11 | 125 | 2026-06-05 | 2026-06-09 | 3d | 25d | 0d |  | Sprint 7 |  |  |  |  |  |  |
| 215 | 1.1.8.15.2 | Análise Tecnored | inactive | 1d | 2026-06-12 | 2026-06-12 | 214 | 2026-06-10 | 2026-06-10 | 1d | 25d | 0d |  | Sprint 7 |  |  |  |  |  |  |
| 216 | 1.1.8.15.3 | Atendimento de comentários | inactive | 2d | 2026-06-15 | 2026-06-16 | 215 | 2026-06-11 | 2026-06-12 | 2d | 25d | 0d |  | Sprint 8 |  |  |  |  |  |  |
| 217 | 1.1.8.15.4 | Aprovação | inactive | 1d | 2026-06-17 | 2026-06-17 | 216 | 2026-06-15 | 2026-06-15 | 1d | 25d |  |  | Sprint 8 |  |  |  |  |  |  |
| 218 | 1.1.8.16 | **AG-F0009-0306-MB-T-00006** | inactive | 7d | 2026-06-09 | 2026-06-17 |  | 2026-06-05 | 2026-06-15 | 7d | 25d |  |  | Sprint 7 |  |  |  |  |  |  |
| 219 | 1.1.8.16.1 | Emissão inicial | inactive | 3d | 2026-06-09 | 2026-06-11 | 125 | 2026-06-05 | 2026-06-09 | 3d | 25d | 0d |  | Sprint 7 |  |  |  |  |  |  |
| 220 | 1.1.8.16.2 | Análise Tecnored | inactive | 1d | 2026-06-12 | 2026-06-12 | 219 | 2026-06-10 | 2026-06-10 | 1d | 25d | 0d |  | Sprint 7 |  |  |  |  |  |  |
| 221 | 1.1.8.16.3 | Atendimento de comentários | inactive | 2d | 2026-06-15 | 2026-06-16 | 220 | 2026-06-11 | 2026-06-12 | 2d | 25d | 0d |  | Sprint 8 |  |  |  |  |  |  |
| 222 | 1.1.8.16.4 | Aprovação | inactive | 1d | 2026-06-17 | 2026-06-17 | 221 | 2026-06-15 | 2026-06-15 | 1d | 25d |  |  | Sprint 8 |  |  |  |  |  |  |
| 223 | 1.1.8.17 | **LK-F0009-0306-MB-T-00001** |  | 7d | 2026-07-01 | 2026-07-09 |  | 2026-06-05 | 2026-06-15 | 7d | 9d |  |  | Sprint 10 | TUBULAÇÃO / UTILIDADES | Seg 25/05/26 | Ter 02/06/26 | FG-F0009-0306-MB-T-00002 | Sex 15/05/26 | Qua 03/06/26 |
| 224 | 1.1.8.17.1 | Emissão inicial |  | 3d | 2026-07-01 | 2026-07-03 | 182 | 2026-06-05 | 2026-06-09 | 3d | 9d | 0d | start no earlier than 2026-07-01 | Sprint 10 | TUBULAÇÃO / UTILIDADES | Seg 25/05/26 | Qua 27/05/26 | Emissão inicial | Sex 15/05/26 | Qui 28/05/26 |
| 225 | 1.1.8.17.2 | Análise Tecnored |  | 1d | 2026-07-06 | 2026-07-06 | 224 | 2026-06-10 | 2026-06-10 | 1d | 9d | 0d | start no earlier than 2026-06-29 | Sprint 11 | TUBULAÇÃO / UTILIDADES | Qui 28/05/26 | Qui 28/05/26 | Análise Tecnored | Sex 29/05/26 | Sex 29/05/26 |
| 226 | 1.1.8.17.3 | Atendimento de comentários |  | 2d | 2026-07-07 | 2026-07-08 | 225 | 2026-06-11 | 2026-06-12 | 2d | 9d | 0d | start no earlier than 2026-06-30 | Sprint 11 | TUBULAÇÃO / UTILIDADES | Sex 29/05/26 | Seg 01/06/26 | Atendimento de comentários | Seg 01/06/26 | Ter 02/06/26 |
| 227 | 1.1.8.17.4 | Aprovação |  | 1d | 2026-07-09 | 2026-07-09 | 226 | 2026-06-15 | 2026-06-15 | 1d | 9d |  | start no earlier than 2026-07-02 | Sprint 11 | TUBULAÇÃO / UTILIDADES | Ter 02/06/26 | Ter 02/06/26 | Aprovação | Qua 03/06/26 | Qua 03/06/26 |
| 228 | 1.1.8.18 | **MC-F0009-0306-MB-T-00002** | inactive | 14d | 2026-06-02 | 2026-06-23 |  | 2026-06-02 | 2026-06-19 | 14d | 21d |  |  | Sprint 6 |  |  |  |  |  |  |
| 229 | 1.1.8.18.1 | Emissão inicial | inactive | 10d | 2026-06-02 | 2026-06-17 | 123 | 2026-06-02 | 2026-06-15 | 10d | 21d | 0d |  | Sprint 6 |  |  |  |  |  |  |
| 230 | 1.1.8.18.2 | Análise Tecnored | inactive | 1d | 2026-06-18 | 2026-06-18 | 229 | 2026-06-16 | 2026-06-16 | 1d | 21d | 0d |  | Sprint 8 |  |  |  |  |  |  |
| 231 | 1.1.8.18.3 | Atendimento de comentários | inactive | 2d | 2026-06-19 | 2026-06-22 | 230 | 2026-06-17 | 2026-06-18 | 2d | 21d | 0d |  | Sprint 8 |  |  |  |  |  |  |
| 232 | 1.1.8.18.4 | Aprovação | inactive | 1d | 2026-06-23 | 2026-06-23 | 231 | 2026-06-19 | 2026-06-19 | 1d | 21d |  |  | Sprint 9 |  |  |  |  |  |  |

| ID | WBS | Task | Type | Duration | Start | Finish | Predecessors | Complete | Remaining | Baseline start | Baseline finish | Baseline duration | Total slack | Free slack | Constraint | Baseline cost | Disciplina | Início_LB_R0 | Término_LB_R0 | Text5 | ILB_2 | TLB_2 | Sprints |
| --- | --- | --- | --- | --- | --- | --- | --- | --- | --- | --- | --- | --- | --- | --- | --- | --- | --- | --- | --- | --- | --- | --- | --- |
| 233 | 1.1.9 | **Estrutura metálica** |  | 16d | 2026-06-18 A | 2026-07-09 |  | 8% | 14.77d | 2026-06-11 | 2026-07-07 | 19d | 9d |  |  |  | ESTRUTURA METÁLICA | Ter 05/05/26 | Seg 29/06/26 | AG-F0009-0306-MB-T-00001 | Seg 25/05/26 | Ter 02/06/26 | Sprint 8 |
| 234 | 1.1.9.1 | **CP-F0009-0306-MB-S-00001** | inactive | 12d | 2026-07-01 | 2026-07-16 |  |  |  |  |  |  | 4d |  |  | -0 |  |  |  |  |  |  | Sprint 10 |
| 235 | 1.1.9.1.1 | Emissão inicial | inactive | 8d | 2026-07-01 | 2026-07-10 | 20, 10 |  |  |  |  |  | 4d | 0d |  | -0 |  |  |  |  |  |  | Sprint 10 |
| 236 | 1.1.9.1.2 | Análise Tecnored | inactive | 1d | 2026-07-13 | 2026-07-13 | 235 |  |  |  |  |  | 4d | 0d |  | -0 |  |  |  |  |  |  | Sprint 12 |
| 237 | 1.1.9.1.3 | Atendimento de comentários | inactive | 2d | 2026-07-14 | 2026-07-15 | 236 |  |  |  |  |  | 4d | 0d |  | -0 |  |  |  |  |  |  | Sprint 12 |
| 238 | 1.1.9.1.4 | Aprovação | inactive | 1d | 2026-07-16 | 2026-07-16 | 237 |  |  |  |  |  | 4d |  |  | -0 |  |  |  |  |  |  | Sprint 12 |
| 239 | 1.1.9.2 | **ML-F0009-0306-MB-S-00001** |  | 6d | 2026-06-24 A | 2026-07-01 |  | 50% | 3d | 2026-06-11 | 2026-06-23 | 9d | 15d |  |  |  | ESTRUTURA METÁLICA | Qua 03/06/26 | Seg 15/06/26 | Emissão inicial | Seg 25/05/26 | Qua 27/05/26 | Sprint 9 |
| 240 | 1.1.9.2.1 | Emissão inicial |  | 3d | 2026-06-24 A | 2026-06-26 A | 255FS-3d | 100% |  | 2026-06-11 | 2026-06-17 | 5d |  |  | start no earlier than 2026-06-19 |  | ESTRUTURA METÁLICA | Qua 03/06/26 | Ter 09/06/26 | Análise Tecnored | Qui 28/05/26 | Qui 28/05/26 | Sprint 9 |
| 241 | 1.1.9.2.2 | Análise Tecnored |  | 1d | 2026-06-29 | 2026-06-29 | 240 |  |  | 2026-06-18 | 2026-06-18 | 1d | 3.45d | 0d |  |  | ESTRUTURA METÁLICA | Qua 10/06/26 | Qua 10/06/26 | Atendimento de comentários | Sex 29/05/26 | Seg 01/06/26 | Sprint 10 |
| 242 | 1.1.9.2.3 | Atendimento de comentários |  | 1d | 2026-06-30 | 2026-06-30 | 241 |  |  | 2026-06-19 | 2026-06-22 | 2d | 15d | 0d |  |  | ESTRUTURA METÁLICA | Qui 11/06/26 | Sex 12/06/26 | Aprovação | Ter 02/06/26 | Ter 02/06/26 | Sprint 10 |
| 243 | 1.1.9.2.4 | Aprovação |  | 1d | 2026-07-01 | 2026-07-01 | 242 |  |  | 2026-06-23 | 2026-06-23 | 1d | 15d |  |  |  | ESTRUTURA METÁLICA | Seg 15/06/26 | Seg 15/06/26 | AG-F0009-0306-MB-T-00002 | Seg 25/05/26 | Ter 02/06/26 | Sprint 10 |
| 244 | 1.1.9.3 | **PQ-F0009-0306-MB-S-00001** |  | 6d | 2026-07-02 | 2026-07-09 |  |  |  | 2026-06-29 | 2026-07-07 | 7d | 9d |  |  |  | ESTRUTURA METÁLICA | Sex 19/06/26 | Seg 29/06/26 | Emissão inicial | Seg 25/05/26 | Qua 27/05/26 | Sprint 10 |
| 245 | 1.1.9.3.1 | Emissão inicial |  | 3d | 2026-07-02 | 2026-07-06 | 250 |  |  | 2026-06-29 | 2026-07-01 | 3d | 9d | 0d |  |  | ESTRUTURA METÁLICA | Sex 19/06/26 | Ter 23/06/26 | Análise Tecnored | Qui 28/05/26 | Qui 28/05/26 | Sprint 10 |
| 246 | 1.1.9.3.2 | Análise Tecnored |  | 1d | 2026-07-07 | 2026-07-07 | 245 |  |  | 2026-07-02 | 2026-07-02 | 1d | 9d | 0d |  |  | ESTRUTURA METÁLICA | Qua 24/06/26 | Qua 24/06/26 | Atendimento de comentários | Sex 29/05/26 | Seg 01/06/26 | Sprint 11 |
| 247 | 1.1.9.3.3 | Atendimento de comentários |  | 1d | 2026-07-08 | 2026-07-08 | 246 |  |  | 2026-07-03 | 2026-07-06 | 2d | 9d | 0d |  |  | ESTRUTURA METÁLICA | Qui 25/06/26 | Sex 26/06/26 | Aprovação | Ter 02/06/26 | Ter 02/06/26 | Sprint 11 |
| 248 | 1.1.9.3.4 | Aprovação |  | 1d | 2026-07-09 | 2026-07-09 | 247 |  |  | 2026-07-07 | 2026-07-07 | 1d | 9d |  |  |  | ESTRUTURA METÁLICA | Seg 29/06/26 | Seg 29/06/26 | AG-F0009-0306-MB-T-00003 | Seg 25/05/26 | Ter 02/06/26 | Sprint 11 |
| 249 | 1.1.9.4 | **LM-F0009-0306-MB-S-00001** |  | 6d | 2026-06-29 | 2026-07-06 |  |  |  | 2026-06-24 | 2026-07-02 | 7d | 9d |  |  |  | ESTRUTURA METÁLICA | Ter 16/06/26 | Qua 24/06/26 | Emissão inicial | Seg 25/05/26 | Qua 27/05/26 | Sprint 10 |
| 250 | 1.1.9.4.1 | Emissão inicial |  | 3d | 2026-06-29 | 2026-07-01 | 240 |  |  | 2026-06-24 | 2026-06-26 | 3d | 9d | 0d |  |  | ESTRUTURA METÁLICA | Ter 16/06/26 | Qui 18/06/26 | Análise Tecnored | Qui 28/05/26 | Qui 28/05/26 | Sprint 10 |
| 251 | 1.1.9.4.2 | Análise Tecnored |  | 1d | 2026-07-02 | 2026-07-02 | 250 |  |  | 2026-06-29 | 2026-06-29 | 1d | 12d | 0d |  |  | ESTRUTURA METÁLICA | Sex 19/06/26 | Sex 19/06/26 | Atendimento de comentários | Sex 29/05/26 | Seg 01/06/26 | Sprint 10 |
| 252 | 1.1.9.4.3 | Atendimento de comentários |  | 1d | 2026-07-03 | 2026-07-03 | 251 |  |  | 2026-06-30 | 2026-07-01 | 2d | 12d | 0d |  |  | ESTRUTURA METÁLICA | Seg 22/06/26 | Ter 23/06/26 | Aprovação | Ter 02/06/26 | Ter 02/06/26 | Sprint 10 |
| 253 | 1.1.9.4.4 | Aprovação |  | 1d | 2026-07-06 | 2026-07-06 | 252 |  |  | 2026-07-02 | 2026-07-02 | 1d | 12d |  |  |  | ESTRUTURA METÁLICA | Qua 24/06/26 | Qua 24/06/26 | AG-F0009-0306-MB-T-00004 | Seg 25/05/26 | Ter 02/06/26 | Sprint 11 |
| 254 | 1.1.9.5 | **MC-F0009-0306-MB-S-00001** |  | 5d | 2026-06-18 A | 2026-06-24 |  | 40% | 3d | 2026-06-11 | 2026-06-19 | 7d | 20d |  |  |  | ESTRUTURA METÁLICA | Sex 29/05/26 | Seg 08/06/26 | Emissão inicial | Seg 25/05/26 | Qua 27/05/26 | Sprint 8 |
| 255 | 1.1.9.5.1 | Emissão inicial |  | 2d | 2026-06-18 A | 2026-06-19 A | 114, 119 | 100% |  | 2026-06-11 | 2026-06-15 | 3d |  |  | start no earlier than 2026-06-16 |  | ESTRUTURA METÁLICA | Sex 29/05/26 | Ter 02/06/26 | Análise Tecnored | Qui 28/05/26 | Qui 28/05/26 | Sprint 8 |
| 256 | 1.1.9.5.2 | Análise Tecnored |  | 1d | 2026-06-22 | 2026-06-22 | 255 |  |  | 2026-06-16 | 2026-06-16 | 1d | 20d | 0d |  |  | ESTRUTURA METÁLICA | Qua 03/06/26 | Qua 03/06/26 | Atendimento de comentários | Sex 29/05/26 | Seg 01/06/26 | Sprint 9 |
| 257 | 1.1.9.5.3 | Atendimento de comentários |  | 1d | 2026-06-23 | 2026-06-23 | 256 |  |  | 2026-06-17 | 2026-06-18 | 2d | 20d | 0d |  |  | ESTRUTURA METÁLICA | Qui 04/06/26 | Sex 05/06/26 | Aprovação | Ter 02/06/26 | Ter 02/06/26 | Sprint 9 |
| 258 | 1.1.9.5.4 | Aprovação |  | 1d | 2026-06-24 | 2026-06-24 | 257 |  |  | 2026-06-19 | 2026-06-19 | 1d | 20d |  |  |  | ESTRUTURA METÁLICA | Seg 08/06/26 | Seg 08/06/26 | AG-F0009-0306-MB-T-00005 | Seg 25/05/26 | Ter 02/06/26 | Sprint 9 |

| ID | WBS | Task | Duration | Start | Finish | Predecessors | Baseline start | Baseline finish | Baseline duration | Total slack | Free slack | Disciplina | Início_LB_R0 | Término_LB_R0 | Text5 | ILB_2 | TLB_2 | Sprints |
| --- | --- | --- | --- | --- | --- | --- | --- | --- | --- | --- | --- | --- | --- | --- | --- | --- | --- | --- |
| 259 | 1.1.9.6 | **AG-F0009-0306-MB-S-00001** | 7d | 2026-06-29 | 2026-07-07 |  | 2026-06-23 | 2026-07-03 | 9d | 11d |  | ESTRUTURA METÁLICA | Seg 15/06/26 | Qui 25/06/26 | Emissão inicial | Seg 25/05/26 | Qua 27/05/26 | Sprint 10 |
| 260 | 1.1.9.6.1 | Emissão inicial | 4d | 2026-06-29 | 2026-07-02 | 240 | 2026-06-23 | 2026-06-29 | 5d | 11d | 0d | ESTRUTURA METÁLICA | Seg 15/06/26 | Sex 19/06/26 | Análise Tecnored | Qui 28/05/26 | Qui 28/05/26 | Sprint 10 |
| 261 | 1.1.9.6.2 | Análise Tecnored | 1d | 2026-07-03 | 2026-07-03 | 260 | 2026-06-30 | 2026-06-30 | 1d | 11d | 0d | ESTRUTURA METÁLICA | Seg 22/06/26 | Seg 22/06/26 | Atendimento de comentários | Sex 29/05/26 | Seg 01/06/26 | Sprint 10 |
| 262 | 1.1.9.6.3 | Atendimento de comentários | 1d | 2026-07-06 | 2026-07-06 | 261 | 2026-07-01 | 2026-07-02 | 2d | 11d | 0d | ESTRUTURA METÁLICA | Ter 23/06/26 | Qua 24/06/26 | Aprovação | Ter 02/06/26 | Ter 02/06/26 | Sprint 11 |
| 263 | 1.1.9.6.4 | Aprovação | 1d | 2026-07-07 | 2026-07-07 | 262 | 2026-07-03 | 2026-07-03 | 1d | 11d |  | ESTRUTURA METÁLICA | Qui 25/06/26 | Qui 25/06/26 | AG-F0009-0306-MB-T-00006 | Seg 25/05/26 | Ter 02/06/26 | Sprint 11 |
| 264 | 1.1.9.7 | **AG-F0009-0306-MB-S-00002** | 7d | 2026-06-29 | 2026-07-07 |  | 2026-06-23 | 2026-07-03 | 9d | 11d |  | ESTRUTURA METÁLICA | Seg 15/06/26 | Qui 25/06/26 | Emissão inicial | Seg 25/05/26 | Qua 27/05/26 | Sprint 10 |
| 265 | 1.1.9.7.1 | Emissão inicial | 4d | 2026-06-29 | 2026-07-02 | 240 | 2026-06-23 | 2026-06-29 | 5d | 11d | 0d | ESTRUTURA METÁLICA | Seg 15/06/26 | Sex 19/06/26 | Análise Tecnored | Qui 28/05/26 | Qui 28/05/26 | Sprint 10 |
| 266 | 1.1.9.7.2 | Análise Tecnored | 1d | 2026-07-03 | 2026-07-03 | 265 | 2026-06-30 | 2026-06-30 | 1d | 11d | 0d | ESTRUTURA METÁLICA | Seg 22/06/26 | Seg 22/06/26 | Atendimento de comentários | Sex 29/05/26 | Seg 01/06/26 | Sprint 10 |
| 267 | 1.1.9.7.3 | Atendimento de comentários | 1d | 2026-07-06 | 2026-07-06 | 266 | 2026-07-01 | 2026-07-02 | 2d | 11d | 0d | ESTRUTURA METÁLICA | Ter 23/06/26 | Qua 24/06/26 | Aprovação | Ter 02/06/26 | Ter 02/06/26 | Sprint 11 |
| 268 | 1.1.9.7.4 | Aprovação | 1d | 2026-07-07 | 2026-07-07 | 267 | 2026-07-03 | 2026-07-03 | 1d | 11d |  | ESTRUTURA METÁLICA | Qui 25/06/26 | Qui 25/06/26 | LK-F0009-0306-MB-T-00001 | Seg 25/05/26 | Ter 02/06/26 | Sprint 11 |
| 269 | 1.1.9.8 | **AG-F0009-0306-MB-S-00003** | 7d | 2026-06-29 | 2026-07-07 |  | 2026-06-23 | 2026-07-03 | 9d | 11d |  | ESTRUTURA METÁLICA | Seg 15/06/26 | Qui 25/06/26 | Emissão inicial | Seg 25/05/26 | Qua 27/05/26 | Sprint 10 |
| 270 | 1.1.9.8.1 | Emissão inicial | 4d | 2026-06-29 | 2026-07-02 | 240 | 2026-06-23 | 2026-06-29 | 5d | 11d | 0d | ESTRUTURA METÁLICA | Seg 15/06/26 | Sex 19/06/26 | Análise Tecnored | Qui 28/05/26 | Qui 28/05/26 | Sprint 10 |
| 271 | 1.1.9.8.2 | Análise Tecnored | 1d | 2026-07-03 | 2026-07-03 | 270 | 2026-06-30 | 2026-06-30 | 1d | 11d | 0d | ESTRUTURA METÁLICA | Seg 22/06/26 | Seg 22/06/26 | Atendimento de comentários | Sex 29/05/26 | Seg 01/06/26 | Sprint 10 |
| 272 | 1.1.9.8.3 | Atendimento de comentários | 1d | 2026-07-06 | 2026-07-06 | 271 | 2026-07-01 | 2026-07-02 | 2d | 11d | 0d | ESTRUTURA METÁLICA | Ter 23/06/26 | Qua 24/06/26 | Aprovação | Ter 02/06/26 | Ter 02/06/26 | Sprint 11 |
| 273 | 1.1.9.8.4 | Aprovação | 1d | 2026-07-07 | 2026-07-07 | 272 | 2026-07-03 | 2026-07-03 | 1d | 11d |  | ESTRUTURA METÁLICA | Qui 25/06/26 | Qui 25/06/26 | MC-F0009-0306-MB-T-00002 | Qua 20/05/26 | Seg 08/06/26 | Sprint 11 |
| 274 | 1.1.9.9 | **AG-F0009-0306-MB-S-00004** | 7d | 2026-06-29 | 2026-07-07 |  | 2026-06-23 | 2026-07-03 | 9d | 11d |  | ESTRUTURA METÁLICA | Seg 15/06/26 | Qui 25/06/26 | Emissão inicial | Qua 20/05/26 | Ter 02/06/26 | Sprint 10 |
| 275 | 1.1.9.9.1 | Emissão inicial | 4d | 2026-06-29 | 2026-07-02 | 240 | 2026-06-23 | 2026-06-29 | 5d | 11d | 0d | ESTRUTURA METÁLICA | Seg 15/06/26 | Sex 19/06/26 | Análise Tecnored | Qua 03/06/26 | Qua 03/06/26 | Sprint 10 |
| 276 | 1.1.9.9.2 | Análise Tecnored | 1d | 2026-07-03 | 2026-07-03 | 275 | 2026-06-30 | 2026-06-30 | 1d | 11d | 0d | ESTRUTURA METÁLICA | Seg 22/06/26 | Seg 22/06/26 | Atendimento de comentários | Qui 04/06/26 | Sex 05/06/26 | Sprint 10 |
| 277 | 1.1.9.9.3 | Atendimento de comentários | 1d | 2026-07-06 | 2026-07-06 | 276 | 2026-07-01 | 2026-07-02 | 2d | 11d | 0d | ESTRUTURA METÁLICA | Ter 23/06/26 | Qua 24/06/26 | Aprovação | Seg 08/06/26 | Seg 08/06/26 | Sprint 11 |
| 278 | 1.1.9.9.4 | Aprovação | 1d | 2026-07-07 | 2026-07-07 | 277 | 2026-07-03 | 2026-07-03 | 1d | 11d |  | ESTRUTURA METÁLICA | Qui 25/06/26 | Qui 25/06/26 | Estrutura metálica | Ter 05/05/26 | Seg 29/06/26 | Sprint 11 |
| 279 | 1.1.9.10 | **AG-F0009-0306-MB-S-00005** | 7d | 2026-06-29 | 2026-07-07 |  | 2026-06-23 | 2026-07-03 | 9d | 11d |  | ESTRUTURA METÁLICA | Seg 15/06/26 | Qui 25/06/26 | ML-F0009-0306-MB-S-00001 | Qua 03/06/26 | Seg 15/06/26 | Sprint 10 |
| 280 | 1.1.9.10.1 | Emissão inicial | 4d | 2026-06-29 | 2026-07-02 | 240 | 2026-06-23 | 2026-06-29 | 5d | 11d | 0d | ESTRUTURA METÁLICA | Seg 15/06/26 | Sex 19/06/26 | Emissão inicial | Qua 03/06/26 | Ter 09/06/26 | Sprint 10 |
| 281 | 1.1.9.10.2 | Análise Tecnored | 1d | 2026-07-03 | 2026-07-03 | 280 | 2026-06-30 | 2026-06-30 | 1d | 11d | 0d | ESTRUTURA METÁLICA | Seg 22/06/26 | Seg 22/06/26 | Análise Tecnored | Qua 10/06/26 | Qua 10/06/26 | Sprint 10 |
| 282 | 1.1.9.10.3 | Atendimento de comentários | 1d | 2026-07-06 | 2026-07-06 | 281 | 2026-07-01 | 2026-07-02 | 2d | 11d | 0d | ESTRUTURA METÁLICA | Ter 23/06/26 | Qua 24/06/26 | Atendimento de comentários | Qui 11/06/26 | Sex 12/06/26 | Sprint 11 |
| 283 | 1.1.9.10.4 | Aprovação | 1d | 2026-07-07 | 2026-07-07 | 282 | 2026-07-03 | 2026-07-03 | 1d | 11d |  | ESTRUTURA METÁLICA | Qui 25/06/26 | Qui 25/06/26 | Aprovação | Seg 15/06/26 | Seg 15/06/26 | Sprint 11 |

| ID | WBS | Task | Type | Duration | Start | Finish | Predecessors | Complete | Remaining | Baseline start | Baseline finish | Baseline duration | Total slack | Free slack | Constraint | Baseline cost | Disciplina | Início_LB_R0 | Término_LB_R0 | Text5 | ILB_2 | TLB_2 | Sprints |
| --- | --- | --- | --- | --- | --- | --- | --- | --- | --- | --- | --- | --- | --- | --- | --- | --- | --- | --- | --- | --- | --- | --- | --- |
| 284 | 1.1.9.11 | **PL-F0009-0306-MB-S-00001** |  | 7d | 2026-06-29 | 2026-07-07 |  |  |  | 2026-06-23 | 2026-07-03 | 9d | 11d |  |  |  | ESTRUTURA METÁLICA | Seg 15/06/26 | Qui 25/06/26 | PQ-F0009-0306-MB-S-00001 | Sex 19/06/26 | Seg 29/06/26 | Sprint 10 |
| 285 | 1.1.9.11.1 | Emissão inicial |  | 4d | 2026-06-29 | 2026-07-02 | 240 |  |  | 2026-06-23 | 2026-06-29 | 5d | 11d | 0d |  |  | ESTRUTURA METÁLICA | Seg 15/06/26 | Sex 19/06/26 | Emissão inicial | Sex 19/06/26 | Ter 23/06/26 | Sprint 10 |
| 286 | 1.1.9.11.2 | Análise Tecnored |  | 1d | 2026-07-03 | 2026-07-03 | 285 |  |  | 2026-06-30 | 2026-06-30 | 1d | 11d | 0d |  |  | ESTRUTURA METÁLICA | Seg 22/06/26 | Seg 22/06/26 | Análise Tecnored | Qua 24/06/26 | Qua 24/06/26 | Sprint 10 |
| 287 | 1.1.9.11.3 | Atendimento de comentários |  | 1d | 2026-07-06 | 2026-07-06 | 286 |  |  | 2026-07-01 | 2026-07-02 | 2d | 11d | 0d |  |  | ESTRUTURA METÁLICA | Ter 23/06/26 | Qua 24/06/26 | Atendimento de comentários | Qui 25/06/26 | Sex 26/06/26 | Sprint 11 |
| 288 | 1.1.9.11.4 | Aprovação |  | 1d | 2026-07-07 | 2026-07-07 | 287 |  |  | 2026-07-03 | 2026-07-03 | 1d | 11d |  |  |  | ESTRUTURA METÁLICA | Qui 25/06/26 | Qui 25/06/26 | Aprovação | Seg 29/06/26 | Seg 29/06/26 | Sprint 11 |
| 289 | 1.1.10 | **Elétrica** |  | 38d | 2026-05-28 A | 2026-07-22 |  | 22% | 29.46d | 2026-05-28 | 2026-07-07 | 29d | 0d |  |  |  | ELÉTRICA | Ter 05/05/26 | Ter 07/07/26 | LM-F0009-0306-MB-S-00001 | Ter 16/06/26 | Qua 24/06/26 | Sprint 5 |
| 290 | 1.1.10.1 | **CP-F0009-0306-MB-E-00001** | inactive | 32d | 2026-05-05 | 2026-06-19 |  |  |  |  |  |  | 23d |  |  | -0 |  |  |  |  |  |  | Sprint 2 |
| 291 | 1.1.10.1.1 | Emissão inicial | inactive | 7d | 2026-05-05 | 2026-05-13 | 20 |  |  |  |  |  | 44d | 21d |  | -0 |  |  |  |  |  |  | Sprint 2 |
| 292 | 1.1.10.1.2 | Análise Tecnored | inactive | 1d | 2026-06-16 | 2026-06-16 | 291, 7 |  |  |  |  |  | 23d | 0d |  | -0 |  |  |  |  |  |  | Sprint 8 |
| 293 | 1.1.10.1.3 | Atendimento de comentários | inactive | 2d | 2026-06-17 | 2026-06-18 | 292 |  |  |  |  |  | 23d | 0d |  | -0 |  |  |  |  |  |  | Sprint 8 |
| 294 | 1.1.10.1.4 | Aprovação | inactive | 1d | 2026-06-19 | 2026-06-19 | 293 |  |  |  |  |  | 23d |  |  | -0 |  |  |  |  |  |  | Sprint 8 |
| 295 | 1.1.10.2 | **ML-F0009-0306-MB-E-00001** |  | 6d | 2026-07-03 A | 2026-07-10 |  | 8% | 5.55d | 2026-06-12 | 2026-06-24 | 9d | 8d |  |  |  | ELÉTRICA | Sex 12/06/26 | Qua 24/06/26 | Emissão inicial | Ter 16/06/26 | Qui 18/06/26 | Sprint 10 |
| 296 | 1.1.10.2.1 | Emissão inicial |  | 3d | 2026-07-03 A | 2026-07-07 | 125, 241 | 15% | 2.55d | 2026-06-12 | 2026-06-18 | 5d | 0d |  | finish no earlier than 2026-06-24 |  | ELÉTRICA | Sex 12/06/26 | Qui 18/06/26 | Análise Tecnored | Sex 19/06/26 | Sex 19/06/26 | Sprint 10 |
| 297 | 1.1.10.2.2 | Análise Tecnored |  | 1d | 2026-07-08 | 2026-07-08 | 296 |  |  | 2026-06-19 | 2026-06-19 | 1d | 8d | 0d |  |  | ELÉTRICA | Sex 19/06/26 | Sex 19/06/26 | Atendimento de comentários | Seg 22/06/26 | Ter 23/06/26 | Sprint 11 |
| 298 | 1.1.10.2.3 | Atendimento de comentários |  | 1d | 2026-07-09 | 2026-07-09 | 297 |  |  | 2026-06-22 | 2026-06-23 | 2d | 8d | 0d |  |  | ELÉTRICA | Seg 22/06/26 | Ter 23/06/26 | Aprovação | Qua 24/06/26 | Qua 24/06/26 | Sprint 11 |
| 299 | 1.1.10.2.4 | Aprovação |  | 1d | 2026-07-10 | 2026-07-10 | 298 |  |  | 2026-06-24 | 2026-06-24 | 1d | 8d |  |  |  | ELÉTRICA | Qua 24/06/26 | Qua 24/06/26 | MC-F0009-0306-MB-S-00001 | Sex 29/05/26 | Seg 08/06/26 | Sprint 11 |
| 300 | 1.1.10.3 | **RL-F0009-0306-MB-E-00001** |  | 5.75d | 2026-06-02 A | 2026-06-11 |  | 86% | 0.82d | 2026-06-02 | 2026-06-10 | 7d | 29.25d |  |  |  | ELÉTRICA | Qui 21/05/26 | Sex 29/05/26 | Emissão inicial | Sex 29/05/26 | Ter 02/06/26 | Sprint 6 |
| 301 | 1.1.10.3.1 | Emissão inicial |  | 3d | 2026-06-02 A | 2026-06-08 A | 311FS-1d | 100% |  | 2026-06-02 | 2026-06-04 | 3d |  |  |  |  | ELÉTRICA | Qui 21/05/26 | Seg 25/05/26 | Análise Tecnored | Qua 03/06/26 | Qua 03/06/26 | Sprint 6 |
| 302 | 1.1.10.3.2 | Análise Tecnored |  | 2d | 2026-06-09 A | 2026-06-10 A | 301 | 100% |  | 2026-06-05 | 2026-06-05 | 1d |  |  |  |  | ELÉTRICA | Ter 26/05/26 | Ter 26/05/26 | Atendimento de comentários | Qui 04/06/26 | Sex 05/06/26 | Sprint 7 |
| 303 | 1.1.10.3.3 | Atendimento de comentários |  | 1d | 2026-06-10 A | 2026-06-11 A | 302 | 100% |  | 2026-06-08 | 2026-06-09 | 2d |  |  |  |  | ELÉTRICA | Qua 27/05/26 | Qui 28/05/26 | Aprovação | Seg 08/06/26 | Seg 08/06/26 | Sprint 7 |
| 304 | 1.1.10.3.4 | Aprovação |  | 1d | 2026-06-10 | 2026-06-11 | 303FF |  |  | 2026-06-10 | 2026-06-10 | 1d | 29.25d |  |  |  | ELÉTRICA | Sex 29/05/26 | Sex 29/05/26 | AG-F0009-0306-MB-S-00001 | Seg 15/06/26 | Qui 25/06/26 | Sprint 7 |
| 305 | 1.1.10.4 | **LE-F0009-0306-MB-E-00001** | inactive | 5d | 2026-07-06 | 2026-07-10 |  |  |  | 2026-06-24 | 2026-07-02 | 7d | 8d |  |  |  | ELÉTRICA | Sex 12/06/26 | Seg 22/06/26 | Emissão inicial | Seg 15/06/26 | Sex 19/06/26 | Sprint 11 |
| 306 | 1.1.10.4.1 | Emissão inicial | inactive | 3d | 2026-07-06 | 2026-07-08 | 331, 336 |  |  | 2026-06-24 | 2026-06-26 | 3d | 8d | 0d | finish no earlier than 2026-06-29 |  | ELÉTRICA | Sex 12/06/26 | Ter 16/06/26 | Análise Tecnored | Seg 22/06/26 | Seg 22/06/26 | Sprint 11 |
| 307 | 1.1.10.4.2 | Análise Tecnored | inactive | 1d | 2026-07-09 | 2026-07-09 | 306 |  |  | 2026-06-29 | 2026-06-29 | 1d | 8d | 0d |  |  | ELÉTRICA | Qua 17/06/26 | Qua 17/06/26 | Atendimento de comentários | Ter 23/06/26 | Qua 24/06/26 | Sprint 11 |
| 308 | 1.1.10.4.3 | Atendimento de comentários | inactive | 1d | 2026-07-10 | 2026-07-10 | 307 |  |  | 2026-06-30 | 2026-07-01 | 2d | 8d | 0d |  |  | ELÉTRICA | Qui 18/06/26 | Sex 19/06/26 | Aprovação | Qui 25/06/26 | Qui 25/06/26 | Sprint 11 |
| 309 | 1.1.10.4.4 | Aprovação | inactive | 1d | 2026-07-10 | 2026-07-10 | 308FF |  |  | 2026-07-02 | 2026-07-02 | 1d | 8d |  |  |  | ELÉTRICA | Seg 22/06/26 | Seg 22/06/26 | AG-F0009-0306-MB-S-00002 | Seg 15/06/26 | Qui 25/06/26 | Sprint 11 |

| ID | WBS | Task | Type | Duration | Start | Finish | Predecessors | Complete | Remaining | Baseline start | Baseline finish | Baseline duration | Total slack | Free slack | Constraint | Baseline cost | Disciplina | Início_LB_R0 | Término_LB_R0 | Text5 | ILB_2 | TLB_2 | Sprints |
| --- | --- | --- | --- | --- | --- | --- | --- | --- | --- | --- | --- | --- | --- | --- | --- | --- | --- | --- | --- | --- | --- | --- | --- |
| 310 | 1.1.10.5 | **LR-F0009-0306-MB-E-00001** |  | 5d | 2026-05-28 A | 2026-06-03 |  | 75% | 1.25d | 2026-05-28 | 2026-06-05 | 7d | 33d |  |  |  | ELÉTRICA | Seg 18/05/26 | Ter 26/05/26 | Emissão inicial | Seg 15/06/26 | Sex 19/06/26 | Sprint 5 |
| 311 | 1.1.10.5.1 | Emissão inicial |  | 3d | 2026-05-28 A | 2026-06-01 A | 73 | 100% |  | 2026-05-28 | 2026-06-01 | 3d |  |  |  |  | ELÉTRICA | Seg 18/05/26 | Qua 20/05/26 | Análise Tecnored | Seg 22/06/26 | Seg 22/06/26 | Sprint 5 |
| 312 | 1.1.10.5.2 | Análise Tecnored |  | 1d | 2026-06-02 A | 2026-06-02 A | 311 | 100% |  | 2026-06-02 | 2026-06-02 | 1d |  |  |  |  | ELÉTRICA | Qui 21/05/26 | Qui 21/05/26 | Atendimento de comentários | Ter 23/06/26 | Qua 24/06/26 | Sprint 6 |
| 313 | 1.1.10.5.3 | Atendimento de comentários |  | 1d | 2026-06-03 A | 2026-06-03 | 312 | 50% | 0.5d | 2026-06-03 | 2026-06-04 | 2d | 33d | 0d |  |  | ELÉTRICA | Sex 22/05/26 | Seg 25/05/26 | Aprovação | Qui 25/06/26 | Qui 25/06/26 | Sprint 6 |
| 314 | 1.1.10.5.4 | Aprovação |  | 1d | 2026-06-03 | 2026-06-03 | 313FF |  |  | 2026-06-05 | 2026-06-05 | 1d | 33d |  |  |  | ELÉTRICA | Ter 26/05/26 | Ter 26/05/26 | AG-F0009-0306-MB-S-00003 | Seg 15/06/26 | Qui 25/06/26 | Sprint 6 |
| 315 | 1.1.10.6 | **LM-F0009-0306-MB-E-00001** |  | 3d | 2026-07-15 | 2026-07-17 |  |  |  | 2026-06-26 | 2026-07-02 | 5d | 0d |  |  |  | ELÉTRICA | Sex 26/06/26 | Qui 02/07/26 | Emissão inicial | Seg 15/06/26 | Sex 19/06/26 | Sprint 12 |
| 316 | 1.1.10.6.1 | Emissão inicial |  | 1d | 2026-07-15 | 2026-07-15 | 342 |  |  | 2026-06-26 | 2026-06-26 | 1d | 0d |  |  |  | ELÉTRICA | Sex 26/06/26 | Sex 26/06/26 | Análise Tecnored | Seg 22/06/26 | Seg 22/06/26 | Sprint 12 |
| 317 | 1.1.10.6.2 | Análise Tecnored |  | 1d | 2026-07-16 | 2026-07-16 | 316 |  |  | 2026-06-29 | 2026-06-29 | 1d | 3d | 0d |  |  | ELÉTRICA | Seg 29/06/26 | Seg 29/06/26 | Atendimento de comentários | Ter 23/06/26 | Qua 24/06/26 | Sprint 12 |
| 318 | 1.1.10.6.3 | Atendimento de comentários |  | 1d | 2026-07-17 | 2026-07-17 | 317 |  |  | 2026-06-30 | 2026-07-01 | 2d | 3d | 0d |  |  | ELÉTRICA | Ter 30/06/26 | Qua 01/07/26 | Aprovação | Qui 25/06/26 | Qui 25/06/26 | Sprint 12 |
| 319 | 1.1.10.6.4 | Aprovação |  | 1d | 2026-07-17 | 2026-07-17 | 318FF |  |  | 2026-07-02 | 2026-07-02 | 1d | 3d |  |  |  | ELÉTRICA | Qui 02/07/26 | Qui 02/07/26 | AG-F0009-0306-MB-S-00004 | Seg 15/06/26 | Qui 25/06/26 | Sprint 12 |
| 320 | 1.1.10.7 | **PQ-F0009-0306-MB-E-00001** |  | 5d | 2026-07-16 | 2026-07-22 |  |  |  | 2026-06-29 | 2026-07-07 | 7d | 0d |  |  |  | ELÉTRICA | Seg 29/06/26 | Ter 07/07/26 | Emissão inicial | Seg 15/06/26 | Sex 19/06/26 | Sprint 12 |
| 321 | 1.1.10.7.1 | Emissão inicial |  | 3d | 2026-07-16 | 2026-07-20 | 316 |  |  | 2026-06-29 | 2026-07-01 | 3d | 0d |  |  |  | ELÉTRICA | Seg 29/06/26 | Qua 01/07/26 | Análise Tecnored | Seg 22/06/26 | Seg 22/06/26 | Sprint 12 |
| 322 | 1.1.10.7.2 | Análise Tecnored |  | 1d | 2026-07-21 | 2026-07-21 | 321 |  |  | 2026-07-02 | 2026-07-02 | 1d | 0d |  |  |  | ELÉTRICA | Qui 02/07/26 | Qui 02/07/26 | Atendimento de comentários | Ter 23/06/26 | Qua 24/06/26 | Sprint 13 |
| 323 | 1.1.10.7.3 | Atendimento de comentários |  | 1d | 2026-07-22 | 2026-07-22 | 322 |  |  | 2026-07-03 | 2026-07-06 | 2d | 0d |  |  |  | ELÉTRICA | Sex 03/07/26 | Seg 06/07/26 | Aprovação | Qui 25/06/26 | Qui 25/06/26 | Sprint 13 |
| 324 | 1.1.10.7.4 | Aprovação |  | 1d | 2026-07-22 | 2026-07-22 | 323FF |  |  | 2026-07-07 | 2026-07-07 | 1d | 0d |  |  |  | ELÉTRICA | Ter 07/07/26 | Ter 07/07/26 | AG-F0009-0306-MB-S-00005 | Seg 15/06/26 | Qui 25/06/26 | Sprint 13 |
| 325 | 1.1.10.8 | **MD-F0009-0306-MB-E-00001** | inactive | 6d | 2026-07-16 | 2026-07-23 |  |  |  |  |  |  | -1d | 0d |  | -0 |  |  |  |  |  |  | Sprint 12 |
| 326 | 1.1.10.8.1 | Emissão inicial | inactive | 2d | 2026-07-16 | 2026-07-17 | 316 |  |  |  |  |  | -1d | 0d |  | -0 |  |  |  |  |  |  | Sprint 12 |
| 327 | 1.1.10.8.2 | Análise Tecnored | inactive | 1d | 2026-07-20 | 2026-07-20 | 326 |  |  |  |  |  | -1d | 0d |  | -0 |  |  |  |  |  |  | Sprint 13 |
| 328 | 1.1.10.8.3 | Atendimento de comentários | inactive | 2d | 2026-07-21 | 2026-07-22 | 327 |  |  |  |  |  | -1d | 0d |  | -0 |  |  |  |  |  |  | Sprint 13 |
| 329 | 1.1.10.8.4 | Aprovação | inactive | 1d | 2026-07-23 | 2026-07-23 | 328 |  |  |  |  |  | -1d | 0d |  | -0 |  |  |  |  |  |  | Sprint 13 |
| 330 | 1.1.10.9 | **MC-F0009-0306-MB-E-00001** |  | 5d | 2026-07-01 A | 2026-07-07 |  | 15% | 4.25d | 2026-06-17 | 2026-06-26 | 8d | 11d |  |  |  | ELÉTRICA | Sex 05/06/26 | Qua 17/06/26 | Emissão inicial | Seg 15/06/26 | Sex 19/06/26 | Sprint 10 |
| 331 | 1.1.10.9.1 | Emissão inicial |  | 3d | 2026-07-01 A | 2026-07-03 |  | 30% | 2.1d | 2026-06-17 | 2026-06-22 | 4d | 11d | 0d | start no earlier than 2026-07-01 |  | ELÉTRICA | Sex 05/06/26 | Qui 11/06/26 | Análise Tecnored | Seg 22/06/26 | Seg 22/06/26 | Sprint 10 |
| 332 | 1.1.10.9.2 | Análise Tecnored |  | 1d | 2026-07-06 | 2026-07-06 | 331 |  |  | 2026-06-23 | 2026-06-23 | 1d | 11d | 0d |  |  | ELÉTRICA | Sex 12/06/26 | Sex 12/06/26 | Atendimento de comentários | Ter 23/06/26 | Qua 24/06/26 | Sprint 11 |
| 333 | 1.1.10.9.3 | Atendimento de comentários |  | 1d | 2026-07-07 | 2026-07-07 | 332 |  |  | 2026-06-24 | 2026-06-25 | 2d | 11d | 0d |  |  | ELÉTRICA | Seg 15/06/26 | Ter 16/06/26 | Aprovação | Qui 25/06/26 | Qui 25/06/26 | Sprint 11 |
| 334 | 1.1.10.9.4 | Aprovação |  | 1d | 2026-07-07 | 2026-07-07 | 333FF |  |  | 2026-06-26 | 2026-06-26 | 1d | 11d |  |  |  | ELÉTRICA | Qua 17/06/26 | Qua 17/06/26 | PL-F0009-0306-MB-S-00001 | Seg 15/06/26 | Qui 25/06/26 | Sprint 11 |

| ID | WBS | Task | Type | Duration | Start | Finish | Predecessors | Complete | Remaining | Baseline start | Baseline finish | Baseline duration | Total slack | Free slack | Constraint | Disciplina | Início_LB_R0 | Término_LB_R0 | Text5 | ILB_2 | TLB_2 | Sprints |
| --- | --- | --- | --- | --- | --- | --- | --- | --- | --- | --- | --- | --- | --- | --- | --- | --- | --- | --- | --- | --- | --- | --- |
| 335 | 1.1.10.10 | **MC-F0009-0306-MB-E-00002** |  | 5d | 2026-07-01 A | 2026-07-07 |  | 15% | 4.25d | 2026-06-17 | 2026-06-29 | 9d | 11d |  |  | ELÉTRICA | Sex 05/06/26 | Qua 17/06/26 | Emissão inicial | Seg 15/06/26 | Sex 19/06/26 | Sprint 10 |
| 336 | 1.1.10.10.1 | Emissão inicial |  | 3d | 2026-07-01 A | 2026-07-03 |  | 30% | 2.1d | 2026-06-17 | 2026-06-23 | 5d | 11d | 0d | start no earlier than 2026-07-01 | ELÉTRICA | Sex 05/06/26 | Qui 11/06/26 | Análise Tecnored | Seg 22/06/26 | Seg 22/06/26 | Sprint 10 |
| 337 | 1.1.10.10.2 | Análise Tecnored |  | 1d | 2026-07-06 | 2026-07-06 | 336 |  |  | 2026-06-24 | 2026-06-24 | 1d | 11d | 0d |  | ELÉTRICA | Sex 12/06/26 | Sex 12/06/26 | Atendimento de comentários | Ter 23/06/26 | Qua 24/06/26 | Sprint 11 |
| 338 | 1.1.10.10.3 | Atendimento de comentários |  | 1d | 2026-07-07 | 2026-07-07 | 337 |  |  | 2026-06-25 | 2026-06-26 | 2d | 11d | 0d |  | ELÉTRICA | Seg 15/06/26 | Ter 16/06/26 | Aprovação | Qui 25/06/26 | Qui 25/06/26 | Sprint 11 |
| 339 | 1.1.10.10.4 | Aprovação |  | 1d | 2026-07-07 | 2026-07-07 | 338FF |  |  | 2026-06-29 | 2026-06-29 | 1d | 11d |  |  | ELÉTRICA | Qua 17/06/26 | Qua 17/06/26 | Elétrica | Ter 05/05/26 | Ter 07/07/26 | Sprint 11 |
| 340 | 1.1.10.11 | **AG-F0009-0306-MB-E-00001** |  | 6d | 2026-07-08 | 2026-07-15 |  |  |  | 2026-06-19 | 2026-06-30 | 8d | 0d |  |  | ELÉTRICA | Sex 19/06/26 | Ter 30/06/26 | ML-F0009-0306-MB-E-00001 | Sex 12/06/26 | Qua 24/06/26 | Sprint 11 |
| 341 | 1.1.10.11.1 | Emissão inicial |  | 4d | 2026-07-08 | 2026-07-13 | 296 |  |  | 2026-06-19 | 2026-06-24 | 4d | 0d |  |  | ELÉTRICA | Sex 19/06/26 | Qua 24/06/26 | Emissão inicial | Sex 12/06/26 | Qui 18/06/26 | Sprint 11 |
| 342 | 1.1.10.11.2 | Análise Tecnored |  | 1d | 2026-07-14 | 2026-07-14 | 341 |  |  | 2026-06-25 | 2026-06-25 | 1d | 0d |  |  | ELÉTRICA | Qui 25/06/26 | Qui 25/06/26 | Análise Tecnored | Sex 19/06/26 | Sex 19/06/26 | Sprint 12 |
| 343 | 1.1.10.11.3 | Atendimento de comentários |  | 1d | 2026-07-15 | 2026-07-15 | 342 |  |  | 2026-06-26 | 2026-06-29 | 2d | 5d | 0d |  | ELÉTRICA | Sex 26/06/26 | Seg 29/06/26 | Atendimento de comentários | Seg 22/06/26 | Ter 23/06/26 | Sprint 12 |
| 344 | 1.1.10.11.4 | Aprovação |  | 1d | 2026-07-15 | 2026-07-15 | 343FF |  |  | 2026-06-30 | 2026-06-30 | 1d | 5d |  |  | ELÉTRICA | Ter 30/06/26 | Ter 30/06/26 | Aprovação | Qua 24/06/26 | Qua 24/06/26 | Sprint 12 |
| 345 | 1.1.10.12 | **DU-F0009-0306-MB-E-00001** |  | 6d | 2026-06-23 A | 2026-06-30 |  | 58% | 2.5d | 2026-06-05 | 2026-06-15 | 7d | 16d |  |  | ELÉTRICA | Ter 26/05/26 | Qua 03/06/26 | RL-F0009-0306-MB-E-00001 | Qui 21/05/26 | Sex 29/05/26 | Sprint 9 |
| 346 | 1.1.10.12.1 | Emissão inicial |  | 3d | 2026-06-23 A | 2026-06-25 A | 301 | 100% |  | 2026-06-05 | 2026-06-09 | 3d |  |  | start no earlier than 2026-06-17 | ELÉTRICA | Ter 26/05/26 | Qui 28/05/26 | Emissão inicial | Qui 21/05/26 | Seg 25/05/26 | Sprint 9 |
| 347 | 1.1.10.12.2 | Análise Tecnored |  | 1d | 2026-06-26 A | 2026-06-26 | 346 | 50% | 0.5d | 2026-06-10 | 2026-06-10 | 1d | 16d | 0d |  | ELÉTRICA | Sex 29/05/26 | Sex 29/05/26 | Análise Tecnored | Ter 26/05/26 | Ter 26/05/26 | Sprint 9 |
| 348 | 1.1.10.12.3 | Atendimento de comentários |  | 1d | 2026-06-29 | 2026-06-29 | 347 |  |  | 2026-06-11 | 2026-06-12 | 2d | 16d | 0d |  | ELÉTRICA | Seg 01/06/26 | Ter 02/06/26 | Atendimento de comentários | Qua 27/05/26 | Qui 28/05/26 | Sprint 10 |
| 349 | 1.1.10.12.4 | Aprovação |  | 1d | 2026-06-30 | 2026-06-30 | 348 |  |  | 2026-06-15 | 2026-06-15 | 1d | 16d |  |  | ELÉTRICA | Qua 03/06/26 | Qua 03/06/26 | Aprovação | Sex 29/05/26 | Sex 29/05/26 | Sprint 10 |
| 350 | 1.1.10.13 | **DU-F0009-0306-MB-E-00002** | inactive | 11d | 2026-06-17 | 2026-07-01 |  |  |  | 2026-06-24 | 2026-07-01 | 6d | 15d |  |  | ELÉTRICA | Sex 12/06/26 | Qua 24/06/26 | LE-F0009-0306-MB-E-00001 | Sex 12/06/26 | Seg 22/06/26 | Sprint 8 |
| 351 | 1.1.10.13.1 | Emissão inicial | inactive | 3d | 2026-06-17 | 2026-06-19 | 301 |  |  | 2026-06-24 | 2026-06-25 | 2d | 20d | 5d | finish no earlier than 2026-06-19 | ELÉTRICA | Sex 12/06/26 | Qui 18/06/26 | Emissão inicial | Sex 12/06/26 | Ter 16/06/26 | Sprint 8 |
| 352 | 1.1.10.13.2 | Análise Tecnored | inactive | 1d | 2026-06-29 | 2026-06-29 | 351 |  |  | 2026-06-26 | 2026-06-26 | 1d | 15d | 0d | start no earlier than 2026-06-29 | ELÉTRICA | Sex 19/06/26 | Sex 19/06/26 | Análise Tecnored | Qua 17/06/26 | Qua 17/06/26 | Sprint 10 |
| 353 | 1.1.10.13.3 | Atendimento de comentários | inactive | 1d | 2026-06-30 | 2026-06-30 | 352 |  |  | 2026-06-29 | 2026-06-30 | 2d | 15d | 0d | start no earlier than 2026-06-30 | ELÉTRICA | Seg 22/06/26 | Ter 23/06/26 | Atendimento de comentários | Qui 18/06/26 | Sex 19/06/26 | Sprint 10 |
| 354 | 1.1.10.13.4 | Aprovação | inactive | 1d | 2026-07-01 | 2026-07-01 | 353 |  |  | 2026-07-01 | 2026-07-01 | 1d | 15d |  | start no earlier than 2026-07-01 | ELÉTRICA | Qua 24/06/26 | Qua 24/06/26 | Aprovação | Seg 22/06/26 | Seg 22/06/26 | Sprint 10 |
| 355 | 1.1.10.14 | **DU-F0009-0306-MB-E-00003** | inactive | 11d | 2026-06-17 | 2026-07-01 |  |  |  | 2026-06-24 | 2026-07-06 | 9d | 15d |  |  | ELÉTRICA | Sex 12/06/26 | Qua 24/06/26 | LR-F0009-0306-MB-E-00001 | Seg 18/05/26 | Ter 26/05/26 | Sprint 8 |
| 356 | 1.1.10.14.1 | Emissão inicial | inactive | 3d | 2026-06-17 | 2026-06-19 | 301 |  |  | 2026-06-24 | 2026-06-30 | 5d | 20d | 5d | finish no earlier than 2026-06-19 | ELÉTRICA | Sex 12/06/26 | Qui 18/06/26 | Emissão inicial | Seg 18/05/26 | Qua 20/05/26 | Sprint 8 |
| 357 | 1.1.10.14.2 | Análise Tecnored | inactive | 1d | 2026-06-29 | 2026-06-29 | 356 |  |  | 2026-07-01 | 2026-07-01 | 1d | 15d | 0d | start no earlier than 2026-06-29 | ELÉTRICA | Sex 19/06/26 | Sex 19/06/26 | Análise Tecnored | Qui 21/05/26 | Qui 21/05/26 | Sprint 10 |
| 358 | 1.1.10.14.3 | Atendimento de comentários | inactive | 1d | 2026-06-30 | 2026-06-30 | 357 |  |  | 2026-07-02 | 2026-07-03 | 2d | 15d | 0d | start no earlier than 2026-06-30 | ELÉTRICA | Seg 22/06/26 | Ter 23/06/26 | Atendimento de comentários | Sex 22/05/26 | Seg 25/05/26 | Sprint 10 |
| 359 | 1.1.10.14.4 | Aprovação | inactive | 1d | 2026-07-01 | 2026-07-01 | 358 |  |  | 2026-07-06 | 2026-07-06 | 1d | 15d |  | start no earlier than 2026-07-01 | ELÉTRICA | Qua 24/06/26 | Qua 24/06/26 | Aprovação | Ter 26/05/26 | Ter 26/05/26 | Sprint 10 |

| ID | WBS | Task | Type | Duration | Start | Finish | Predecessors | Complete | Remaining | Baseline start | Baseline finish | Baseline duration | Total slack | Free slack | Constraint | Disciplina | Início_LB_R0 | Término_LB_R0 | Text5 | ILB_2 | TLB_2 | Sprints |
| --- | --- | --- | --- | --- | --- | --- | --- | --- | --- | --- | --- | --- | --- | --- | --- | --- | --- | --- | --- | --- | --- | --- |
| 360 | 1.1.10.15 | **DU-F0009-0306-MB-E-00004** | inactive | 11d | 2026-06-17 | 2026-07-01 |  |  |  | 2026-06-05 | 2026-06-29 | 17d | 15d |  |  | ELÉTRICA | Ter 26/05/26 | Qua 17/06/26 | LM-F0009-0306-MB-E-00001 | Sex 26/06/26 | Qui 02/07/26 | Sprint 8 |
| 361 | 1.1.10.15.1 | Emissão inicial | inactive | 3d | 2026-06-17 | 2026-06-19 | 301 |  |  | 2026-06-05 | 2026-06-11 | 5d | 20d | 5d | finish no earlier than 2026-06-19 | ELÉTRICA | Ter 26/05/26 | Seg 01/06/26 | Emissão inicial | Sex 26/06/26 | Sex 26/06/26 | Sprint 8 |
| 362 | 1.1.10.15.2 | Análise Tecnored | inactive | 1d | 2026-06-29 | 2026-06-29 | 361 |  |  | 2026-06-24 | 2026-06-24 | 1d | 15d | 0d | start no earlier than 2026-06-29 | ELÉTRICA | Sex 12/06/26 | Sex 12/06/26 | Análise Tecnored | Seg 29/06/26 | Seg 29/06/26 | Sprint 10 |
| 363 | 1.1.10.15.3 | Atendimento de comentários | inactive | 1d | 2026-06-30 | 2026-06-30 | 362 |  |  | 2026-06-25 | 2026-06-26 | 2d | 15d | 0d | start no earlier than 2026-06-30 | ELÉTRICA | Seg 15/06/26 | Ter 16/06/26 | Atendimento de comentários | Ter 30/06/26 | Qua 01/07/26 | Sprint 10 |
| 364 | 1.1.10.15.4 | Aprovação | inactive | 1d | 2026-07-01 | 2026-07-01 | 363 |  |  | 2026-06-29 | 2026-06-29 | 1d | 15d |  | start no earlier than 2026-07-01 | ELÉTRICA | Qua 17/06/26 | Qua 17/06/26 | Aprovação | Qui 02/07/26 | Qui 02/07/26 | Sprint 10 |
| 365 | 1.1.10.16 | **AG-F0009-0306-MB-E-00002** |  | 6d | 2026-06-24 A | 2026-07-01 |  | 17% | 4.97d | 2026-06-19 | 2026-06-30 | 8d | 15d |  |  | ELÉTRICA | Sex 19/06/26 | Ter 30/06/26 | PQ-F0009-0306-MB-E-00001 | Seg 29/06/26 | Ter 07/07/26 | Sprint 9 |
| 366 | 1.1.10.16.1 | Emissão inicial |  | 4d | 2026-06-24 A | 2026-06-29 | 346FS-2d | 30% | 2.8d | 2026-06-19 | 2026-06-24 | 4d | 15d | 0d | start no earlier than 2026-06-19 | ELÉTRICA | Sex 19/06/26 | Qua 24/06/26 | Emissão inicial | Seg 29/06/26 | Qua 01/07/26 | Sprint 9 |
| 367 | 1.1.10.16.2 | Análise Tecnored |  | 1d | 2026-06-30 | 2026-06-30 | 366 |  |  | 2026-06-25 | 2026-06-25 | 1d | 15d | 0d |  | ELÉTRICA | Qui 25/06/26 | Qui 25/06/26 | Análise Tecnored | Qui 02/07/26 | Qui 02/07/26 | Sprint 10 |
| 368 | 1.1.10.16.3 | Atendimento de comentários |  | 1d | 2026-07-01 | 2026-07-01 | 367 |  |  | 2026-06-26 | 2026-06-29 | 2d | 15d | 0d |  | ELÉTRICA | Sex 26/06/26 | Seg 29/06/26 | Atendimento de comentários | Sex 03/07/26 | Seg 06/07/26 | Sprint 10 |
| 369 | 1.1.10.16.4 | Aprovação |  | 1d | 2026-07-01 | 2026-07-01 | 368FF |  |  | 2026-06-30 | 2026-06-30 | 1d | 15d |  |  | ELÉTRICA | Ter 30/06/26 | Ter 30/06/26 | Aprovação | Ter 07/07/26 | Ter 07/07/26 | Sprint 10 |
| 370 | 1.1.10.17 | **AG-F0009-0306-MB-E-00003** |  | 6d | 2026-06-24 A | 2026-07-01 |  | 17% | 4.97d | 2026-06-19 | 2026-06-30 | 8d | 15d |  |  | ELÉTRICA | Sex 19/06/26 | Ter 30/06/26 | MC-F0009-0306-MB-E-00001 | Sex 05/06/26 | Qua 17/06/26 | Sprint 9 |
| 371 | 1.1.10.17.1 | Emissão inicial |  | 4d | 2026-06-24 A | 2026-06-29 | 346FS-2d | 30% | 2.8d | 2026-06-19 | 2026-06-24 | 4d | 15d | 0d | start no earlier than 2026-06-19 | ELÉTRICA | Sex 19/06/26 | Qua 24/06/26 | Emissão inicial | Sex 05/06/26 | Qui 11/06/26 | Sprint 9 |
| 372 | 1.1.10.17.2 | Análise Tecnored |  | 1d | 2026-06-30 | 2026-06-30 | 371 |  |  | 2026-06-25 | 2026-06-25 | 1d | 15d | 0d |  | ELÉTRICA | Qui 25/06/26 | Qui 25/06/26 | Análise Tecnored | Sex 12/06/26 | Sex 12/06/26 | Sprint 10 |
| 373 | 1.1.10.17.3 | Atendimento de comentários |  | 1d | 2026-07-01 | 2026-07-01 | 372 |  |  | 2026-06-26 | 2026-06-29 | 2d | 15d | 0d |  | ELÉTRICA | Sex 26/06/26 | Seg 29/06/26 | Atendimento de comentários | Seg 15/06/26 | Ter 16/06/26 | Sprint 10 |
| 374 | 1.1.10.17.4 | Aprovação |  | 1d | 2026-07-01 | 2026-07-01 | 373FF |  |  | 2026-06-30 | 2026-06-30 | 1d | 15d |  |  | ELÉTRICA | Ter 30/06/26 | Ter 30/06/26 | Aprovação | Qua 17/06/26 | Qua 17/06/26 | Sprint 10 |
| 375 | 1.1.10.18 | **FD-F0009-0306-MB-E-00001** |  | 6d | 2026-06-22 A | 2026-06-29 |  | 64% | 2.14d | 2026-06-10 | 2026-06-22 | 9d | 17d |  |  | ELÉTRICA | Sex 29/05/26 | Qua 10/06/26 | MC-F0009-0306-MB-E-00002 | Sex 05/06/26 | Qua 17/06/26 | Sprint 9 |
| 376 | 1.1.10.18.1 | Emissão inicial |  | 4d | 2026-06-22 A | 2026-06-25 A | 346FS-2d | 100% |  | 2026-06-10 | 2026-06-16 | 5d |  |  | start no earlier than 2026-06-22 | ELÉTRICA | Sex 29/05/26 | Qui 04/06/26 | Emissão inicial | Sex 05/06/26 | Qui 11/06/26 | Sprint 9 |
| 377 | 1.1.10.18.2 | Análise Tecnored |  | 1d | 2026-06-26 A | 2026-06-26 | 376 | 50% | 0.5d | 2026-06-17 | 2026-06-17 | 1d | 17d | 0d |  | ELÉTRICA | Sex 05/06/26 | Sex 05/06/26 | Análise Tecnored | Sex 12/06/26 | Sex 12/06/26 | Sprint 9 |
| 378 | 1.1.10.18.3 | Atendimento de comentários |  | 1d | 2026-06-29 | 2026-06-29 | 377 |  |  | 2026-06-18 | 2026-06-19 | 2d | 17d | 0d |  | ELÉTRICA | Seg 08/06/26 | Ter 09/06/26 | Atendimento de comentários | Seg 15/06/26 | Ter 16/06/26 | Sprint 10 |
| 379 | 1.1.10.18.4 | Aprovação |  | 1d | 2026-06-29 | 2026-06-29 | 378FF |  |  | 2026-06-22 | 2026-06-22 | 1d | 17d |  |  | ELÉTRICA | Qua 10/06/26 | Qua 10/06/26 | Aprovação | Qua 17/06/26 | Qua 17/06/26 | Sprint 10 |
| 380 | 1.1.10.19 | **FD-F0009-0306-MB-E-00002** |  | 6d | 2026-06-24 | 2026-07-01 |  |  |  | 2026-06-10 | 2026-06-22 | 9d | 15d |  |  | ELÉTRICA | Sex 29/05/26 | Qua 10/06/26 | AG-F0009-0306-MB-E-00001 | Sex 19/06/26 | Ter 30/06/26 | Sprint 9 |
| 381 | 1.1.10.19.1 | Emissão inicial |  | 4d | 2026-06-24 | 2026-06-29 | 346FS-2d |  |  | 2026-06-10 | 2026-06-16 | 5d | 15d | 0d | start no earlier than 2026-06-23 | ELÉTRICA | Sex 29/05/26 | Qui 04/06/26 | Emissão inicial | Sex 19/06/26 | Qua 24/06/26 | Sprint 9 |
| 382 | 1.1.10.19.2 | Análise Tecnored |  | 1d | 2026-06-30 | 2026-06-30 | 381 |  |  | 2026-06-17 | 2026-06-17 | 1d | 15d | 0d |  | ELÉTRICA | Sex 05/06/26 | Sex 05/06/26 | Análise Tecnored | Qui 25/06/26 | Qui 25/06/26 | Sprint 10 |
| 383 | 1.1.10.19.3 | Atendimento de comentários |  | 1d | 2026-07-01 | 2026-07-01 | 382 |  |  | 2026-06-18 | 2026-06-19 | 2d | 15d | 0d |  | ELÉTRICA | Seg 08/06/26 | Ter 09/06/26 | Atendimento de comentários | Sex 26/06/26 | Seg 29/06/26 | Sprint 10 |
| 384 | 1.1.10.19.4 | Aprovação |  | 1d | 2026-07-01 | 2026-07-01 | 383FF |  |  | 2026-06-22 | 2026-06-22 | 1d | 15d |  |  | ELÉTRICA | Qua 10/06/26 | Qua 10/06/26 | Aprovação | Ter 30/06/26 | Ter 30/06/26 | Sprint 10 |

| ID | WBS | Task | Type | Duration | Start | Finish | Predecessors | Complete | Remaining | Baseline start | Baseline finish | Baseline duration | Total slack | Free slack | Constraint | Baseline cost | Disciplina | Início_LB_R0 | Término_LB_R0 | Text5 | ILB_2 | TLB_2 | Sprints |
| --- | --- | --- | --- | --- | --- | --- | --- | --- | --- | --- | --- | --- | --- | --- | --- | --- | --- | --- | --- | --- | --- | --- | --- |
| 385 | 1.1.10.20 | **FD-F0009-0306-MB-E-00003** |  | 6d | 2026-06-24 | 2026-07-01 |  |  |  | 2026-06-10 | 2026-06-22 | 9d | 15d |  |  |  | ELÉTRICA | Sex 29/05/26 | Qua 10/06/26 | DU-F0009-0306-MB-E-00001 | Ter 26/05/26 | Qua 03/06/26 | Sprint 9 |
| 386 | 1.1.10.20.1 | Emissão inicial |  | 4d | 2026-06-24 | 2026-06-29 | 346FS-2d |  |  | 2026-06-10 | 2026-06-16 | 5d | 15d | 0d | start no earlier than 2026-06-23 |  | ELÉTRICA | Sex 29/05/26 | Qui 04/06/26 | Emissão inicial | Ter 26/05/26 | Qui 28/05/26 | Sprint 9 |
| 387 | 1.1.10.20.2 | Análise Tecnored |  | 1d | 2026-06-30 | 2026-06-30 | 386 |  |  | 2026-06-17 | 2026-06-17 | 1d | 15d | 0d | start no earlier than 2026-06-29 |  | ELÉTRICA | Sex 05/06/26 | Sex 05/06/26 | Análise Tecnored | Sex 29/05/26 | Sex 29/05/26 | Sprint 10 |
| 388 | 1.1.10.20.3 | Atendimento de comentários |  | 1d | 2026-07-01 | 2026-07-01 | 387 |  |  | 2026-06-18 | 2026-06-19 | 2d | 15d | 0d | start no earlier than 2026-06-30 |  | ELÉTRICA | Seg 08/06/26 | Ter 09/06/26 | Atendimento de comentários | Seg 01/06/26 | Ter 02/06/26 | Sprint 10 |
| 389 | 1.1.10.20.4 | Aprovação |  | 1d | 2026-07-01 | 2026-07-01 | 388FF |  |  | 2026-06-22 | 2026-06-22 | 1d | 15d |  | start no earlier than 2026-06-30 |  | ELÉTRICA | Qua 10/06/26 | Qua 10/06/26 | Aprovação | Qua 03/06/26 | Qua 03/06/26 | Sprint 10 |
| 390 | 1.1.10.21 | **FD-F0009-0306-MB-E-00004** |  | 7d | 2026-06-24 | 2026-07-02 |  |  |  | 2026-06-10 | 2026-06-22 | 9d | 14d |  |  |  | ELÉTRICA | Sex 29/05/26 | Qua 10/06/26 | DU-F0009-0306-MB-E-00002 | Sex 12/06/26 | Qua 24/06/26 | Sprint 9 |
| 391 | 1.1.10.21.1 | Emissão inicial |  | 4d | 2026-06-24 | 2026-06-29 | 346FS-2d |  |  | 2026-06-10 | 2026-06-16 | 5d | 14d | 0d | start no earlier than 2026-06-23 |  | ELÉTRICA | Sex 29/05/26 | Qui 04/06/26 | Emissão inicial | Sex 12/06/26 | Qui 18/06/26 | Sprint 9 |
| 392 | 1.1.10.21.2 | Análise Tecnored |  | 1d | 2026-06-30 | 2026-06-30 | 391 |  |  | 2026-06-17 | 2026-06-17 | 1d | 14d | 0d | start no earlier than 2026-06-29 |  | ELÉTRICA | Sex 05/06/26 | Sex 05/06/26 | Análise Tecnored | Sex 19/06/26 | Sex 19/06/26 | Sprint 10 |
| 393 | 1.1.10.21.3 | Atendimento de comentários |  | 1d | 2026-07-01 | 2026-07-01 | 392 |  |  | 2026-06-18 | 2026-06-19 | 2d | 14d | 0d | start no earlier than 2026-06-30 |  | ELÉTRICA | Seg 08/06/26 | Ter 09/06/26 | Atendimento de comentários | Seg 22/06/26 | Ter 23/06/26 | Sprint 10 |
| 394 | 1.1.10.21.4 | Aprovação |  | 1d | 2026-07-02 | 2026-07-02 | 393 |  |  | 2026-06-22 | 2026-06-22 | 1d | 14d |  |  |  | ELÉTRICA | Qua 10/06/26 | Qua 10/06/26 | Aprovação | Qua 24/06/26 | Qua 24/06/26 | Sprint 10 |
| 395 | 1.1.10.22 | **FD-F0009-0306-MB-E-00005** |  | 7d | 2026-06-24 | 2026-07-02 |  |  |  | 2026-06-10 | 2026-06-22 | 9d | 14d |  |  |  | ELÉTRICA | Sex 29/05/26 | Qua 10/06/26 | DU-F0009-0306-MB-E-00003 | Sex 12/06/26 | Qua 24/06/26 | Sprint 9 |
| 396 | 1.1.10.22.1 | Emissão inicial |  | 4d | 2026-06-24 | 2026-06-29 | 346FS-2d |  |  | 2026-06-10 | 2026-06-16 | 5d | 14d | 0d | finish no earlier than 2026-06-25 |  | ELÉTRICA | Sex 29/05/26 | Qui 04/06/26 | Emissão inicial | Sex 12/06/26 | Qui 18/06/26 | Sprint 9 |
| 397 | 1.1.10.22.2 | Análise Tecnored |  | 1d | 2026-06-30 | 2026-06-30 | 396 |  |  | 2026-06-17 | 2026-06-17 | 1d | 14d | 0d | start no earlier than 2026-06-29 |  | ELÉTRICA | Sex 05/06/26 | Sex 05/06/26 | Análise Tecnored | Sex 19/06/26 | Sex 19/06/26 | Sprint 10 |
| 398 | 1.1.10.22.3 | Atendimento de comentários |  | 1d | 2026-07-01 | 2026-07-01 | 397 |  |  | 2026-06-18 | 2026-06-19 | 2d | 14d | 0d | start no earlier than 2026-06-30 |  | ELÉTRICA | Seg 08/06/26 | Ter 09/06/26 | Atendimento de comentários | Seg 22/06/26 | Ter 23/06/26 | Sprint 10 |
| 399 | 1.1.10.22.4 | Aprovação |  | 1d | 2026-07-02 | 2026-07-02 | 398 |  |  | 2026-06-22 | 2026-06-22 | 1d | 14d |  |  |  | ELÉTRICA | Qua 10/06/26 | Qua 10/06/26 | Aprovação | Qua 24/06/26 | Qua 24/06/26 | Sprint 10 |
| 400 | 1.1.11 | **Automação e instrumentação** |  | 22d | 2026-06-09 A | 2026-07-08 |  | 60% | 8.71d | 2026-06-02 | 2026-07-08 | 27d | 10d |  |  |  | AUTOMAÇÃO E INSTRUMENTAÇÃO | Ter 05/05/26 | Ter 07/07/26 | DU-F0009-0306-MB-E-00004 | Ter 26/05/26 | Qua 17/06/26 | Sprint 7 |
| 401 | 1.1.11.1 | **CP-F0009-0306-MB-J-00001** | inactive | 28d | 2026-05-05 | 2026-06-15 |  |  |  |  |  |  | 27d |  |  | -0 |  |  |  |  |  |  | Sprint 2 |
| 402 | 1.1.11.1.1 | Emissão inicial | inactive | 7d | 2026-05-05 | 2026-05-13 | 20 |  |  |  |  |  | 44d | 17d |  | -0 |  |  |  |  |  |  | Sprint 2 |
| 403 | 1.1.11.1.2 | Análise Tecnored | inactive | 1d | 2026-06-10 | 2026-06-10 | 402, 8 |  |  |  |  |  | 27d | 0d |  | -0 |  |  |  |  |  |  | Sprint 7 |
| 404 | 1.1.11.1.3 | Atendimento de comentários | inactive | 2d | 2026-06-11 | 2026-06-12 | 403 |  |  |  |  |  | 27d | 0d |  | -0 |  |  |  |  |  |  | Sprint 7 |
| 405 | 1.1.11.1.4 | Aprovação | inactive | 1d | 2026-06-15 | 2026-06-15 | 404 |  |  |  |  |  | 27d |  |  | -0 |  |  |  |  |  |  | Sprint 8 |
| 406 | 1.1.11.2 | **LI-F0009-0306-MB-J-00001** |  | 8d | 2026-06-16 A | 2026-06-25 |  | 75% | 2d | 2026-06-05 | 2026-06-15 | 7d | 19d |  |  |  | AUTOMAÇÃO E INSTRUMENTAÇÃO | Qua 20/05/26 | Qui 28/05/26 | Emissão inicial | Ter 26/05/26 | Seg 01/06/26 | Sprint 8 |
| 407 | 1.1.11.2.1 | Emissão inicial |  | 4d | 2026-06-16 A | 2026-06-19 A | 442 | 100% |  | 2026-06-05 | 2026-06-09 | 3d |  |  | finish no earlier than 2026-06-19 |  | AUTOMAÇÃO E INSTRUMENTAÇÃO | Qua 20/05/26 | Sex 22/05/26 | Análise Tecnored | Sex 12/06/26 | Sex 12/06/26 | Sprint 8 |
| 408 | 1.1.11.2.2 | Análise Tecnored |  | 1d | 2026-06-22 A | 2026-06-22 A | 407 | 100% |  | 2026-06-10 | 2026-06-10 | 1d |  |  |  |  | AUTOMAÇÃO E INSTRUMENTAÇÃO | Seg 25/05/26 | Seg 25/05/26 | Atendimento de comentários | Seg 15/06/26 | Ter 16/06/26 | Sprint 9 |
| 409 | 1.1.11.2.3 | Atendimento de comentários |  | 2d | 2026-06-23 A | 2026-06-24 | 408 | 50% | 1d | 2026-06-11 | 2026-06-12 | 2d | 19d | 0d |  |  | AUTOMAÇÃO E INSTRUMENTAÇÃO | Ter 26/05/26 | Qua 27/05/26 | Aprovação | Qua 17/06/26 | Qua 17/06/26 | Sprint 9 |
| 410 | 1.1.11.2.4 | Aprovação |  | 1d | 2026-06-25 | 2026-06-25 | 409 |  |  | 2026-06-15 | 2026-06-15 | 1d | 19d |  | finish no earlier than 2026-06-23 |  | AUTOMAÇÃO E INSTRUMENTAÇÃO | Qui 28/05/26 | Qui 28/05/26 | AG-F0009-0306-MB-E-00002 | Sex 19/06/26 | Ter 30/06/26 | Sprint 9 |

| ID | WBS | Task | Type | Duration | Start | Finish | Predecessors | Complete | Remaining | Baseline start | Baseline finish | Baseline duration | Total slack | Free slack | Constraint | Disciplina | Início_LB_R0 | Término_LB_R0 | Text5 | ILB_2 | TLB_2 | Sprints |
| --- | --- | --- | --- | --- | --- | --- | --- | --- | --- | --- | --- | --- | --- | --- | --- | --- | --- | --- | --- | --- | --- | --- |
| 411 | 1.1.11.3 | **LE-F0009-0306-MB-J-00001** |  | 8d | 2026-06-15 A | 2026-06-24 |  | 56% | 3.5d | 2026-06-26 | 2026-07-03 | 6d | 20d |  |  | AUTOMAÇÃO E INSTRUMENTAÇÃO | Sex 19/06/26 | Seg 29/06/26 | Emissão inicial | Sex 19/06/26 | Qua 24/06/26 | Sprint 8 |
| 412 | 1.1.11.3.1 | Emissão inicial |  | 4d | 2026-06-15 A | 2026-06-18 A |  | 100% |  | 2026-06-26 | 2026-06-29 | 2d |  |  | finish no earlier than 2026-06-18 | AUTOMAÇÃO E INSTRUMENTAÇÃO | Sex 19/06/26 | Ter 23/06/26 | Análise Tecnored | Qui 25/06/26 | Qui 25/06/26 | Sprint 8 |
| 413 | 1.1.11.3.2 | Análise Tecnored |  | 1d | 2026-06-19 A | 2026-06-19 | 412 | 50% | 0.5d | 2026-06-30 | 2026-06-30 | 1d | 20d | 0d |  | AUTOMAÇÃO E INSTRUMENTAÇÃO | Qua 24/06/26 | Qua 24/06/26 | Atendimento de comentários | Sex 26/06/26 | Seg 29/06/26 | Sprint 8 |
| 414 | 1.1.11.3.3 | Atendimento de comentários |  | 2d | 2026-06-22 | 2026-06-23 | 413 |  |  | 2026-07-01 | 2026-07-02 | 2d | 20d | 0d |  | AUTOMAÇÃO E INSTRUMENTAÇÃO | Qui 25/06/26 | Sex 26/06/26 | Aprovação | Ter 30/06/26 | Ter 30/06/26 | Sprint 9 |
| 415 | 1.1.11.3.4 | Aprovação |  | 1d | 2026-06-24 | 2026-06-24 | 414 |  |  | 2026-07-03 | 2026-07-03 | 1d | 20d |  |  | AUTOMAÇÃO E INSTRUMENTAÇÃO | Seg 29/06/26 | Seg 29/06/26 | AG-F0009-0306-MB-E-00003 | Sex 19/06/26 | Ter 30/06/26 | Sprint 9 |
| 416 | 1.1.11.4 | **LL-F0009-0306-MB-J-00001** |  | 8d | 2026-06-09 A | 2026-06-18 A |  | 100% |  | 2026-06-22 | 2026-06-29 | 6d |  |  |  | AUTOMAÇÃO E INSTRUMENTAÇÃO | Qui 11/06/26 | Sex 19/06/26 | Emissão inicial | Sex 19/06/26 | Qua 24/06/26 | Sprint 7 |
| 417 | 1.1.11.4.1 | Emissão inicial |  | 4d | 2026-06-09 A | 2026-06-12 A | 472FS-5d | 100% |  | 2026-06-22 | 2026-06-23 | 2d |  |  |  | AUTOMAÇÃO E INSTRUMENTAÇÃO | Qui 11/06/26 | Seg 15/06/26 | Análise Tecnored | Qui 25/06/26 | Qui 25/06/26 | Sprint 7 |
| 418 | 1.1.11.4.2 | Análise Tecnored |  | 1d | 2026-06-15 A | 2026-06-15 A | 417 | 100% |  | 2026-06-24 | 2026-06-24 | 1d |  |  |  | AUTOMAÇÃO E INSTRUMENTAÇÃO | Ter 16/06/26 | Ter 16/06/26 | Atendimento de comentários | Sex 26/06/26 | Seg 29/06/26 | Sprint 8 |
| 419 | 1.1.11.4.3 | Atendimento de comentários |  | 2d | 2026-06-16 A | 2026-06-17 A | 418 | 100% |  | 2026-06-25 | 2026-06-26 | 2d |  |  |  | AUTOMAÇÃO E INSTRUMENTAÇÃO | Qua 17/06/26 | Qui 18/06/26 | Aprovação | Ter 30/06/26 | Ter 30/06/26 | Sprint 8 |
| 420 | 1.1.11.4.4 | Aprovação |  | 1d | 2026-06-18 A | 2026-06-18 A | 419 | 100% |  | 2026-06-29 | 2026-06-29 | 1d |  |  |  | AUTOMAÇÃO E INSTRUMENTAÇÃO | Sex 19/06/26 | Sex 19/06/26 | FD-F0009-0306-MB-E-00001 | Sex 29/05/26 | Qua 10/06/26 | Sprint 8 |
| 421 | 1.1.11.5 | **LZ-F0009-0306-MB-J-00001** | inactive | 8d | 2026-06-23 | 2026-07-02 |  |  |  | 2026-06-22 | 2026-06-29 | 6d | 14d |  |  | AUTOMAÇÃO E INSTRUMENTAÇÃO | Qui 11/06/26 | Sex 19/06/26 | Emissão inicial | Sex 19/06/26 | Qua 24/06/26 | Sprint 9 |
| 422 | 1.1.11.5.1 | Emissão inicial | inactive | 4d | 2026-06-23 | 2026-06-26 | 472FS-5d |  |  | 2026-06-22 | 2026-06-23 | 2d | 14d | 0d |  | AUTOMAÇÃO E INSTRUMENTAÇÃO | Qui 11/06/26 | Seg 15/06/26 | Análise Tecnored | Qui 25/06/26 | Qui 25/06/26 | Sprint 9 |
| 423 | 1.1.11.5.2 | Análise Tecnored | inactive | 1d | 2026-06-29 | 2026-06-29 | 422 |  |  | 2026-06-24 | 2026-06-24 | 1d | 14d | 0d |  | AUTOMAÇÃO E INSTRUMENTAÇÃO | Ter 16/06/26 | Ter 16/06/26 | Atendimento de comentários | Sex 26/06/26 | Seg 29/06/26 | Sprint 10 |
| 424 | 1.1.11.5.3 | Atendimento de comentários | inactive | 2d | 2026-06-30 | 2026-07-01 | 423 |  |  | 2026-06-25 | 2026-06-26 | 2d | 14d | 0d |  | AUTOMAÇÃO E INSTRUMENTAÇÃO | Qua 17/06/26 | Qui 18/06/26 | Aprovação | Ter 30/06/26 | Ter 30/06/26 | Sprint 10 |
| 425 | 1.1.11.5.4 | Aprovação | inactive | 1d | 2026-07-02 | 2026-07-02 | 424 |  |  | 2026-06-29 | 2026-06-29 | 1d | 14d |  |  | AUTOMAÇÃO E INSTRUMENTAÇÃO | Sex 19/06/26 | Sex 19/06/26 | FD-F0009-0306-MB-E-00001 | Sex 29/05/26 | Qua 10/06/26 | Sprint 10 |
| 426 | 1.1.11.6 | **LE-F0009-0306-MB-J-00002** | inactive | 7d | 2026-06-09 | 2026-06-17 |  |  |  | 2026-06-22 | 2026-06-30 | 7d | 25d |  |  | AUTOMAÇÃO E INSTRUMENTAÇÃO | Sex 19/06/26 | Seg 29/06/26 | Emissão inicial | Sex 29/05/26 | Qui 04/06/26 | Sprint 7 |
| 427 | 1.1.11.6.1 | Emissão inicial | inactive | 4d | 2026-06-09 | 2026-06-12 | 417SS |  |  | 2026-06-22 | 2026-06-24 | 3d | 25d | 0d |  | AUTOMAÇÃO E INSTRUMENTAÇÃO | Sex 19/06/26 | Ter 23/06/26 | Análise Tecnored | Sex 05/06/26 | Sex 05/06/26 | Sprint 7 |
| 428 | 1.1.11.6.2 | Análise Tecnored | inactive | 1d | 2026-06-15 | 2026-06-15 | 427 |  |  | 2026-06-25 | 2026-06-25 | 1d | 25d | 0d |  | AUTOMAÇÃO E INSTRUMENTAÇÃO | Qua 24/06/26 | Qua 24/06/26 | Atendimento de comentários | Seg 08/06/26 | Ter 09/06/26 | Sprint 8 |
| 429 | 1.1.11.6.3 | Atendimento de comentários | inactive | 1d | 2026-06-16 | 2026-06-16 | 428 |  |  | 2026-06-26 | 2026-06-29 | 2d | 25d | 0d |  | AUTOMAÇÃO E INSTRUMENTAÇÃO | Qui 25/06/26 | Sex 26/06/26 | Aprovação | Qua 10/06/26 | Qua 10/06/26 | Sprint 8 |
| 430 | 1.1.11.6.4 | Aprovação | inactive | 1d | 2026-06-17 | 2026-06-17 | 429 |  |  | 2026-06-30 | 2026-06-30 | 1d | 25d |  |  | AUTOMAÇÃO E INSTRUMENTAÇÃO | Seg 29/06/26 | Seg 29/06/26 | FD-F0009-0306-MB-E-00002 | Sex 29/05/26 | Qua 10/06/26 | Sprint 8 |
| 431 | 1.1.11.7 | **PQ-F0009-0306-MB-J-00001** |  | 9d | 2026-06-25 | 2026-07-07 |  |  |  | 2026-06-23 | 2026-06-29 | 5d | 11d |  |  | AUTOMAÇÃO E INSTRUMENTAÇÃO | Qua 01/07/26 | Ter 07/07/26 | Emissão inicial | Sex 29/05/26 | Qui 04/06/26 | Sprint 9 |
| 432 | 1.1.11.7.1 | Emissão inicial |  | 6d | 2026-06-25 | 2026-07-02 | 487FS-5d |  |  | 2026-06-23 | 2026-06-23 | 1d | 11d | 0d |  | AUTOMAÇÃO E INSTRUMENTAÇÃO | Qua 01/07/26 | Qua 01/07/26 | Análise Tecnored | Sex 05/06/26 | Sex 05/06/26 | Sprint 9 |
| 433 | 1.1.11.7.2 | Análise Tecnored |  | 1d | 2026-07-03 | 2026-07-03 | 432 |  |  | 2026-06-24 | 2026-06-24 | 1d | 11d | 0d |  | AUTOMAÇÃO E INSTRUMENTAÇÃO | Qui 02/07/26 | Qui 02/07/26 | Atendimento de comentários | Seg 08/06/26 | Ter 09/06/26 | Sprint 10 |
| 434 | 1.1.11.7.3 | Atendimento de comentários |  | 1d | 2026-07-06 | 2026-07-06 | 433 |  |  | 2026-06-25 | 2026-06-26 | 2d | 11d | 0d |  | AUTOMAÇÃO E INSTRUMENTAÇÃO | Sex 03/07/26 | Seg 06/07/26 | Aprovação | Qua 10/06/26 | Qua 10/06/26 | Sprint 11 |
| 435 | 1.1.11.7.4 | Aprovação |  | 1d | 2026-07-07 | 2026-07-07 | 434 |  |  | 2026-06-29 | 2026-06-29 | 1d | 11d |  |  | AUTOMAÇÃO E INSTRUMENTAÇÃO | Ter 07/07/26 | Ter 07/07/26 | FD-F0009-0306-MB-E-00003 | Sex 29/05/26 | Qua 10/06/26 | Sprint 11 |

| ID | WBS | Task | Duration | Start | Finish | Predecessors | Complete | Remaining | Baseline start | Baseline finish | Baseline duration | Total slack | Free slack | Constraint | Disciplina | Início_LB_R0 | Término_LB_R0 | Text5 | ILB_2 | TLB_2 | Sprints |
| --- | --- | --- | --- | --- | --- | --- | --- | --- | --- | --- | --- | --- | --- | --- | --- | --- | --- | --- | --- | --- | --- |
| 436 | 1.1.11.8 | **FG-F0009-0306-MB-J-00001** | 9d | 2026-06-16 A | 2026-06-26 |  | 80% | 1.8d | 2026-06-02 | 2026-06-12 | 9d | 18d |  |  | AUTOMAÇÃO E INSTRUMENTAÇÃO | Sex 15/05/26 | Qua 27/05/26 | Emissão inicial | Sex 29/05/26 | Qui 04/06/26 | Sprint 8 |
| 437 | 1.1.11.8.1 | Emissão inicial | 6d | 2026-06-16 A | 2026-06-23 A | 57FS-4d | 100% |  | 2026-06-02 | 2026-06-08 | 5d |  |  | finish no earlier than 2026-06-12 | AUTOMAÇÃO E INSTRUMENTAÇÃO | Sex 15/05/26 | Qui 21/05/26 | Análise Tecnored | Sex 05/06/26 | Sex 05/06/26 | Sprint 8 |
| 438 | 1.1.11.8.2 | Análise Tecnored | 1d | 2026-06-24 A | 2026-06-24 A | 437 | 100% |  | 2026-06-09 | 2026-06-09 | 1d |  |  |  | AUTOMAÇÃO E INSTRUMENTAÇÃO | Sex 22/05/26 | Sex 22/05/26 | Atendimento de comentários | Seg 08/06/26 | Ter 09/06/26 | Sprint 9 |
| 439 | 1.1.11.8.3 | Atendimento de comentários | 2d | 2026-06-25 A | 2026-06-26 | 438 | 50% | 1d | 2026-06-10 | 2026-06-11 | 2d | 18d | 0d |  | AUTOMAÇÃO E INSTRUMENTAÇÃO | Seg 25/05/26 | Ter 26/05/26 | Aprovação | Qua 10/06/26 | Qua 10/06/26 | Sprint 9 |
| 440 | 1.1.11.8.4 | Aprovação | 1d | 2026-06-26 | 2026-06-26 | 439FF |  |  | 2026-06-12 | 2026-06-12 | 1d | 18d |  |  | AUTOMAÇÃO E INSTRUMENTAÇÃO | Qua 27/05/26 | Qua 27/05/26 | FD-F0009-0306-MB-E-00004 | Sex 29/05/26 | Qua 10/06/26 | Sprint 9 |
| 441 | 1.1.11.9 | **FG-F0009-0306-MB-J-00002** | 10d | 2026-06-19 A | 2026-07-02 |  | 60% | 4d | 2026-06-02 | 2026-06-10 | 7d | 14d |  |  | AUTOMAÇÃO E INSTRUMENTAÇÃO | Sex 15/05/26 | Seg 25/05/26 | Emissão inicial | Sex 29/05/26 | Qui 04/06/26 | Sprint 8 |
| 442 | 1.1.11.9.1 | Emissão inicial | 6d | 2026-06-19 A | 2026-06-26 A | 57FS-4d | 100% |  | 2026-06-02 | 2026-06-04 | 3d |  |  |  | AUTOMAÇÃO E INSTRUMENTAÇÃO | Sex 15/05/26 | Ter 19/05/26 | Análise Tecnored | Sex 05/06/26 | Sex 05/06/26 | Sprint 8 |
| 443 | 1.1.11.9.2 | Análise Tecnored | 1d | 2026-06-29 | 2026-06-29 | 442 |  |  | 2026-06-05 | 2026-06-05 | 1d | 14d | 0d |  | AUTOMAÇÃO E INSTRUMENTAÇÃO | Qua 20/05/26 | Qua 20/05/26 | Atendimento de comentários | Seg 08/06/26 | Ter 09/06/26 | Sprint 10 |
| 444 | 1.1.11.9.3 | Atendimento de comentários | 2d | 2026-06-30 | 2026-07-01 | 443 |  |  | 2026-06-08 | 2026-06-09 | 2d | 14d | 0d |  | AUTOMAÇÃO E INSTRUMENTAÇÃO | Qui 21/05/26 | Sex 22/05/26 | Aprovação | Qua 10/06/26 | Qua 10/06/26 | Sprint 10 |
| 445 | 1.1.11.9.4 | Aprovação | 1d | 2026-07-02 | 2026-07-02 | 444 |  |  | 2026-06-10 | 2026-06-10 | 1d | 14d |  |  | AUTOMAÇÃO E INSTRUMENTAÇÃO | Seg 25/05/26 | Seg 25/05/26 | FD-F0009-0306-MB-E-00005 | Sex 29/05/26 | Qua 10/06/26 | Sprint 10 |
| 446 | 1.1.11.10 | **FG-F0009-0306-MB-J-00003** | 10d | 2026-06-19 A | 2026-07-02 |  | 60% | 4d | 2026-06-02 | 2026-06-12 | 9d | 14d |  |  | AUTOMAÇÃO E INSTRUMENTAÇÃO | Sex 15/05/26 | Qua 27/05/26 | Emissão inicial | Sex 29/05/26 | Qui 04/06/26 | Sprint 8 |
| 447 | 1.1.11.10.1 | Emissão inicial | 6d | 2026-06-19 A | 2026-06-26 A | 57FS-4d | 100% |  | 2026-06-02 | 2026-06-08 | 5d |  |  | finish no earlier than 2026-06-12 | AUTOMAÇÃO E INSTRUMENTAÇÃO | Sex 15/05/26 | Qui 21/05/26 | Análise Tecnored | Sex 05/06/26 | Sex 05/06/26 | Sprint 8 |
| 448 | 1.1.11.10.2 | Análise Tecnored | 1d | 2026-06-29 | 2026-06-29 | 447 |  |  | 2026-06-09 | 2026-06-09 | 1d | 14d | 0d |  | AUTOMAÇÃO E INSTRUMENTAÇÃO | Sex 22/05/26 | Sex 22/05/26 | Atendimento de comentários | Seg 08/06/26 | Ter 09/06/26 | Sprint 10 |
| 449 | 1.1.11.10.3 | Atendimento de comentários | 2d | 2026-06-30 | 2026-07-01 | 448 |  |  | 2026-06-10 | 2026-06-11 | 2d | 14d | 0d |  | AUTOMAÇÃO E INSTRUMENTAÇÃO | Seg 25/05/26 | Ter 26/05/26 | Aprovação | Qua 10/06/26 | Qua 10/06/26 | Sprint 10 |
| 450 | 1.1.11.10.4 | Aprovação | 1d | 2026-07-02 | 2026-07-02 | 449 |  |  | 2026-06-12 | 2026-06-12 | 1d | 14d |  |  | AUTOMAÇÃO E INSTRUMENTAÇÃO | Qua 27/05/26 | Qua 27/05/26 | Automação e instrumentação | Ter 05/05/26 | Ter 07/07/26 | Sprint 10 |
| 451 | 1.1.11.11 | **AG-F0009-0306-MB-J-00001** | 8d | 2026-06-23 A | 2026-07-02 |  | 50% | 4d | 2026-06-10 | 2026-06-29 | 14d | 14d |  |  | AUTOMAÇÃO E INSTRUMENTAÇÃO | Seg 25/05/26 | Qui 11/06/26 | LI-F0009-0306-MB-J-00001 | Qua 20/05/26 | Qui 28/05/26 | Sprint 9 |
| 452 | 1.1.11.11.1 | Emissão inicial | 4d | 2026-06-23 A | 2026-06-26 A | 407 | 100% |  | 2026-06-10 | 2026-06-23 | 10d |  |  | finish no earlier than 2026-06-23 | AUTOMAÇÃO E INSTRUMENTAÇÃO | Seg 25/05/26 | Sex 05/06/26 | Emissão inicial | Qua 20/05/26 | Sex 22/05/26 | Sprint 9 |
| 453 | 1.1.11.11.2 | Análise Tecnored | 1d | 2026-06-29 | 2026-06-29 | 452 |  |  | 2026-06-24 | 2026-06-24 | 1d | 14d | 0d |  | AUTOMAÇÃO E INSTRUMENTAÇÃO | Seg 08/06/26 | Seg 08/06/26 | Análise Tecnored | Seg 25/05/26 | Seg 25/05/26 | Sprint 10 |
| 454 | 1.1.11.11.3 | Atendimento de comentários | 2d | 2026-06-30 | 2026-07-01 | 453 |  |  | 2026-06-25 | 2026-06-26 | 2d | 14d | 0d |  | AUTOMAÇÃO E INSTRUMENTAÇÃO | Ter 09/06/26 | Qua 10/06/26 | Atendimento de comentários | Ter 26/05/26 | Qua 27/05/26 | Sprint 10 |
| 455 | 1.1.11.11.4 | Aprovação | 1d | 2026-07-02 | 2026-07-02 | 454 |  |  | 2026-06-29 | 2026-06-29 | 1d | 14d |  |  | AUTOMAÇÃO E INSTRUMENTAÇÃO | Qui 11/06/26 | Qui 11/06/26 | Aprovação | Qui 28/05/26 | Qui 28/05/26 | Sprint 10 |
| 456 | 1.1.11.12 | **AG-F0009-0306-MB-J-00002** | 8d | 2026-06-23 A | 2026-07-02 |  | 38% | 5d | 2026-06-10 | 2026-06-29 | 14d | 14d |  |  | AUTOMAÇÃO E INSTRUMENTAÇÃO | Seg 25/05/26 | Qui 11/06/26 | LE-F0009-0306-MB-J-00001 | Sex 19/06/26 | Seg 29/06/26 | Sprint 9 |
| 457 | 1.1.11.12.1 | Emissão inicial | 4d | 2026-06-23 A | 2026-06-26 | 407 | 75% | 1d | 2026-06-10 | 2026-06-23 | 10d | 14d | 0d | finish no earlier than 2026-06-26 | AUTOMAÇÃO E INSTRUMENTAÇÃO | Seg 25/05/26 | Sex 05/06/26 | Emissão inicial | Sex 19/06/26 | Ter 23/06/26 | Sprint 9 |
| 458 | 1.1.11.12.2 | Análise Tecnored | 1d | 2026-06-29 | 2026-06-29 | 457 |  |  | 2026-06-24 | 2026-06-24 | 1d | 14d | 0d |  | AUTOMAÇÃO E INSTRUMENTAÇÃO | Seg 08/06/26 | Seg 08/06/26 | Análise Tecnored | Qua 24/06/26 | Qua 24/06/26 | Sprint 10 |
| 459 | 1.1.11.12.3 | Atendimento de comentários | 2d | 2026-06-30 | 2026-07-01 | 458 |  |  | 2026-06-25 | 2026-06-26 | 2d | 14d | 0d |  | AUTOMAÇÃO E INSTRUMENTAÇÃO | Ter 09/06/26 | Qua 10/06/26 | Atendimento de comentários | Qui 25/06/26 | Sex 26/06/26 | Sprint 10 |
| 460 | 1.1.11.12.4 | Aprovação | 1d | 2026-07-02 | 2026-07-02 | 459 |  |  | 2026-06-29 | 2026-06-29 | 1d | 14d |  |  | AUTOMAÇÃO E INSTRUMENTAÇÃO | Qui 11/06/26 | Qui 11/06/26 | Aprovação | Seg 29/06/26 | Seg 29/06/26 | Sprint 10 |

| ID | WBS | Task | Type | Duration | Start | Finish | Predecessors | Complete | Remaining | Baseline start | Baseline finish | Baseline duration | Total slack | Free slack | Constraint | Disciplina | Início_LB_R0 | Término_LB_R0 | Text5 | ILB_2 | TLB_2 | Sprints |
| --- | --- | --- | --- | --- | --- | --- | --- | --- | --- | --- | --- | --- | --- | --- | --- | --- | --- | --- | --- | --- | --- | --- |
| 461 | 1.1.11.13 | **AG-F0009-0306-MB-J-00003** |  | 8d | 2026-06-23 A | 2026-07-02 |  | 38% | 5d | 2026-06-10 | 2026-06-29 | 14d | 14d |  |  | AUTOMAÇÃO E INSTRUMENTAÇÃO | Seg 25/05/26 | Qui 11/06/26 | LZ-F0009-0306-MB-J-00001 | Qui 11/06/26 | Sex 19/06/26 | Sprint 9 |
| 462 | 1.1.11.13.1 | Emissão inicial |  | 4d | 2026-06-23 A | 2026-06-26 | 407 | 75% | 1d | 2026-06-10 | 2026-06-23 | 10d | 14d | 0d | finish no earlier than 2026-06-26 | AUTOMAÇÃO E INSTRUMENTAÇÃO | Seg 25/05/26 | Sex 05/06/26 | Emissão inicial | Qui 11/06/26 | Seg 15/06/26 | Sprint 9 |
| 463 | 1.1.11.13.2 | Análise Tecnored |  | 1d | 2026-06-29 | 2026-06-29 | 462 |  |  | 2026-06-24 | 2026-06-24 | 1d | 14d | 0d |  | AUTOMAÇÃO E INSTRUMENTAÇÃO | Seg 08/06/26 | Seg 08/06/26 | Análise Tecnored | Ter 16/06/26 | Ter 16/06/26 | Sprint 10 |
| 464 | 1.1.11.13.3 | Atendimento de comentários |  | 2d | 2026-06-30 | 2026-07-01 | 463 |  |  | 2026-06-25 | 2026-06-26 | 2d | 14d | 0d |  | AUTOMAÇÃO E INSTRUMENTAÇÃO | Ter 09/06/26 | Qua 10/06/26 | Atendimento de comentários | Qua 17/06/26 | Qui 18/06/26 | Sprint 10 |
| 465 | 1.1.11.13.4 | Aprovação |  | 1d | 2026-07-02 | 2026-07-02 | 464 |  |  | 2026-06-29 | 2026-06-29 | 1d | 14d |  |  | AUTOMAÇÃO E INSTRUMENTAÇÃO | Qui 11/06/26 | Qui 11/06/26 | Aprovação | Sex 19/06/26 | Sex 19/06/26 | Sprint 10 |
| 466 | 1.1.11.14 | **AG-F0009-0306-MB-J-00004** | inactive | 6d | 2026-06-22 | 2026-06-29 |  |  |  | 2026-06-10 | 2026-06-29 | 14d | 17d |  |  | AUTOMAÇÃO E INSTRUMENTAÇÃO | Seg 25/05/26 | Qui 11/06/26 | LE-F0009-0306-MB-J-00002 | Sex 19/06/26 | Seg 29/06/26 | Sprint 9 |
| 467 | 1.1.11.14.1 | Emissão inicial | inactive | 2d | 2026-06-22 | 2026-06-23 | 407 |  |  | 2026-06-10 | 2026-06-23 | 10d | 17d | 0d |  | AUTOMAÇÃO E INSTRUMENTAÇÃO | Seg 25/05/26 | Sex 05/06/26 | Emissão inicial | Sex 19/06/26 | Ter 23/06/26 | Sprint 9 |
| 468 | 1.1.11.14.2 | Análise Tecnored | inactive | 1d | 2026-06-24 | 2026-06-24 | 467 |  |  | 2026-06-24 | 2026-06-24 | 1d | 17d | 0d |  | AUTOMAÇÃO E INSTRUMENTAÇÃO | Seg 08/06/26 | Seg 08/06/26 | Análise Tecnored | Qua 24/06/26 | Qua 24/06/26 | Sprint 9 |
| 469 | 1.1.11.14.3 | Atendimento de comentários | inactive | 2d | 2026-06-25 | 2026-06-26 | 468 |  |  | 2026-06-25 | 2026-06-26 | 2d | 17d | 0d |  | AUTOMAÇÃO E INSTRUMENTAÇÃO | Ter 09/06/26 | Qua 10/06/26 | Atendimento de comentários | Qui 25/06/26 | Sex 26/06/26 | Sprint 9 |
| 470 | 1.1.11.14.4 | Aprovação | inactive | 1d | 2026-06-29 | 2026-06-29 | 469 |  |  | 2026-06-29 | 2026-06-29 | 1d | 17d |  |  | AUTOMAÇÃO E INSTRUMENTAÇÃO | Qui 11/06/26 | Qui 11/06/26 | Aprovação | Seg 29/06/26 | Seg 29/06/26 | Sprint 10 |
| 471 | 1.1.11.15 | **DI-F0009-0306-MB-J-00001** |  | 8d | 2026-06-24 A | 2026-07-03 |  | 25% | 6d | 2026-06-24 | 2026-07-02 | 7d | 13d |  |  | AUTOMAÇÃO E INSTRUMENTAÇÃO | Seg 08/06/26 | Ter 16/06/26 | PQ-F0009-0306-MB-J-00001 | Qua 01/07/26 | Ter 07/07/26 | Sprint 9 |
| 472 | 1.1.11.15.1 | Emissão inicial |  | 4d | 2026-06-24 A | 2026-06-29 |  | 50% | 2d | 2026-06-24 | 2026-06-26 | 3d | 9d | 0d | start no earlier than 2026-06-17 | AUTOMAÇÃO E INSTRUMENTAÇÃO | Seg 08/06/26 | Qua 10/06/26 | Emissão inicial | Qua 01/07/26 | Qua 01/07/26 | Sprint 9 |
| 473 | 1.1.11.15.2 | Análise Tecnored |  | 1d | 2026-06-30 | 2026-06-30 | 472 |  |  | 2026-06-29 | 2026-06-29 | 1d | 13d | 0d |  | AUTOMAÇÃO E INSTRUMENTAÇÃO | Qui 11/06/26 | Qui 11/06/26 | Análise Tecnored | Qui 02/07/26 | Qui 02/07/26 | Sprint 10 |
| 474 | 1.1.11.15.3 | Atendimento de comentários |  | 2d | 2026-07-01 | 2026-07-02 | 473 |  |  | 2026-06-30 | 2026-07-01 | 2d | 13d | 0d |  | AUTOMAÇÃO E INSTRUMENTAÇÃO | Sex 12/06/26 | Seg 15/06/26 | Atendimento de comentários | Sex 03/07/26 | Seg 06/07/26 | Sprint 10 |
| 475 | 1.1.11.15.4 | Aprovação |  | 1d | 2026-07-03 | 2026-07-03 | 474 |  |  | 2026-07-02 | 2026-07-02 | 1d | 13d |  |  | AUTOMAÇÃO E INSTRUMENTAÇÃO | Ter 16/06/26 | Ter 16/06/26 | Aprovação | Ter 07/07/26 | Ter 07/07/26 | Sprint 10 |
| 476 | 1.1.11.16 | **LI-F0009-0306-MB-J-00002** |  | 8d | 2026-06-16 A | 2026-06-25 |  | 50% | 4d | 2026-06-26 | 2026-07-06 | 7d | 19d |  |  | AUTOMAÇÃO E INSTRUMENTAÇÃO | Sex 19/06/26 | Seg 29/06/26 | FG-F0009-0306-MB-J-00001 | Sex 15/05/26 | Qua 27/05/26 | Sprint 8 |
| 477 | 1.1.11.16.1 | Emissão inicial |  | 4d | 2026-06-16 A | 2026-06-19 A |  | 100% |  | 2026-06-26 | 2026-06-30 | 3d |  |  | finish no earlier than 2026-06-19 | AUTOMAÇÃO E INSTRUMENTAÇÃO | Sex 19/06/26 | Ter 23/06/26 | Emissão inicial | Sex 15/05/26 | Qui 21/05/26 | Sprint 8 |
| 478 | 1.1.11.16.2 | Análise Tecnored |  | 1d | 2026-06-22 | 2026-06-22 | 477 |  |  | 2026-07-01 | 2026-07-01 | 1d | 19d | 0d | finish no earlier than 2026-06-22 | AUTOMAÇÃO E INSTRUMENTAÇÃO | Qua 24/06/26 | Qua 24/06/26 | Análise Tecnored | Sex 22/05/26 | Sex 22/05/26 | Sprint 9 |
| 479 | 1.1.11.16.3 | Atendimento de comentários |  | 2d | 2026-06-23 | 2026-06-24 | 478 |  |  | 2026-07-02 | 2026-07-03 | 2d | 19d | 0d | finish no earlier than 2026-06-24 | AUTOMAÇÃO E INSTRUMENTAÇÃO | Qui 25/06/26 | Sex 26/06/26 | Atendimento de comentários | Seg 25/05/26 | Ter 26/05/26 | Sprint 9 |
| 480 | 1.1.11.16.4 | Aprovação |  | 1d | 2026-06-25 | 2026-06-25 | 479 |  |  | 2026-07-06 | 2026-07-06 | 1d | 19d |  | finish no earlier than 2026-06-25 | AUTOMAÇÃO E INSTRUMENTAÇÃO | Seg 29/06/26 | Seg 29/06/26 | Aprovação | Qua 27/05/26 | Qua 27/05/26 | Sprint 9 |
| 481 | 1.1.11.17 | **LI-F0009-0306-MB-J-00003** |  | 8d | 2026-06-16 A | 2026-06-25 |  | 50% | 4d | 2026-06-26 | 2026-07-03 | 6d | 19d |  |  | AUTOMAÇÃO E INSTRUMENTAÇÃO | Sex 19/06/26 | Seg 29/06/26 | FG-F0009-0306-MB-J-00002 | Sex 15/05/26 | Seg 25/05/26 | Sprint 8 |
| 482 | 1.1.11.17.1 | Emissão inicial |  | 4d | 2026-06-16 A | 2026-06-19 A |  | 100% |  | 2026-06-26 | 2026-06-29 | 2d |  |  | finish no earlier than 2026-06-19 | AUTOMAÇÃO E INSTRUMENTAÇÃO | Sex 19/06/26 | Ter 23/06/26 | Emissão inicial | Sex 15/05/26 | Ter 19/05/26 | Sprint 8 |
| 483 | 1.1.11.17.2 | Análise Tecnored |  | 1d | 2026-06-22 | 2026-06-22 | 482 |  |  | 2026-06-30 | 2026-06-30 | 1d | 19d | 0d | finish no earlier than 2026-06-22 | AUTOMAÇÃO E INSTRUMENTAÇÃO | Qua 24/06/26 | Qua 24/06/26 | Análise Tecnored | Qua 20/05/26 | Qua 20/05/26 | Sprint 9 |
| 484 | 1.1.11.17.3 | Atendimento de comentários |  | 2d | 2026-06-23 | 2026-06-24 | 483 |  |  | 2026-07-01 | 2026-07-02 | 2d | 19d | 0d | finish no earlier than 2026-06-24 | AUTOMAÇÃO E INSTRUMENTAÇÃO | Qui 25/06/26 | Sex 26/06/26 | Atendimento de comentários | Qui 21/05/26 | Sex 22/05/26 | Sprint 9 |
| 485 | 1.1.11.17.4 | Aprovação |  | 1d | 2026-06-25 | 2026-06-25 | 484 |  |  | 2026-07-03 | 2026-07-03 | 1d | 19d |  | finish no earlier than 2026-06-25 | AUTOMAÇÃO E INSTRUMENTAÇÃO | Seg 29/06/26 | Seg 29/06/26 | Aprovação | Seg 25/05/26 | Seg 25/05/26 | Sprint 9 |

| ID | WBS | Task | Duration | Start | Finish | Predecessors | Complete | Remaining | Baseline start | Baseline finish | Baseline duration | Total slack | Free slack | Constraint | Disciplina | Início_LB_R0 | Término_LB_R0 | Text5 | ILB_2 | TLB_2 | Sprints |
| --- | --- | --- | --- | --- | --- | --- | --- | --- | --- | --- | --- | --- | --- | --- | --- | --- | --- | --- | --- | --- | --- |
| 486 | 1.1.11.18 | **LM-F0009-0306-MB-J-00001** | 7d | 2026-06-26 | 2026-07-06 |  |  |  | 2026-06-26 | 2026-07-03 | 6d | 11d |  |  | AUTOMAÇÃO E INSTRUMENTAÇÃO | Seg 29/06/26 | Seg 06/07/26 | FG-F0009-0306-MB-J-00003 | Sex 15/05/26 | Qua 27/05/26 | Sprint 9 |
| 487 | 1.1.11.18.1 | Emissão inicial | 4d | 2026-06-26 | 2026-07-01 | 417SS, 422SS |  |  | 2026-06-26 | 2026-06-29 | 2d | 11d | 0d | start no earlier than 2026-06-26 | AUTOMAÇÃO E INSTRUMENTAÇÃO | Seg 29/06/26 | Ter 30/06/26 | Emissão inicial | Sex 15/05/26 | Qui 21/05/26 | Sprint 9 |
| 488 | 1.1.11.18.2 | Análise Tecnored | 1d | 2026-07-02 | 2026-07-02 | 487 |  |  | 2026-06-30 | 2026-06-30 | 1d | 12d | 0d |  | AUTOMAÇÃO E INSTRUMENTAÇÃO | Qua 01/07/26 | Qua 01/07/26 | Análise Tecnored | Sex 22/05/26 | Sex 22/05/26 | Sprint 10 |
| 489 | 1.1.11.18.3 | Atendimento de comentários | 1d | 2026-07-03 | 2026-07-03 | 488 |  |  | 2026-07-01 | 2026-07-02 | 2d | 12d | 0d |  | AUTOMAÇÃO E INSTRUMENTAÇÃO | Qui 02/07/26 | Sex 03/07/26 | Atendimento de comentários | Seg 25/05/26 | Ter 26/05/26 | Sprint 10 |
| 490 | 1.1.11.18.4 | Aprovação | 1d | 2026-07-06 | 2026-07-06 | 489 |  |  | 2026-07-03 | 2026-07-03 | 1d | 12d |  |  | AUTOMAÇÃO E INSTRUMENTAÇÃO | Seg 06/07/26 | Seg 06/07/26 | Aprovação | Qua 27/05/26 | Qua 27/05/26 | Sprint 11 |
| 491 | 1.1.11.19 | **ET-F0009-0306-MB-J-00001** | 7d | 2026-06-16 A | 2026-06-24 |  | 57% | 3d | 2026-06-24 | 2026-07-01 | 6d | 20d |  |  | AUTOMAÇÃO E INSTRUMENTAÇÃO | Ter 16/06/26 | Qua 24/06/26 | AG-F0009-0306-MB-J-00001 | Seg 25/05/26 | Qui 11/06/26 | Sprint 8 |
| 492 | 1.1.11.19.1 | Emissão inicial | 4d | 2026-06-16 A | 2026-06-19 A | 417SS, 422SS | 100% |  | 2026-06-24 | 2026-06-25 | 2d |  |  |  | AUTOMAÇÃO E INSTRUMENTAÇÃO | Ter 16/06/26 | Qui 18/06/26 | Emissão inicial | Seg 25/05/26 | Sex 05/06/26 | Sprint 8 |
| 493 | 1.1.11.19.2 | Análise Tecnored | 1d | 2026-06-22 | 2026-06-22 | 492 |  |  | 2026-06-26 | 2026-06-26 | 1d | 20d | 0d |  | AUTOMAÇÃO E INSTRUMENTAÇÃO | Sex 19/06/26 | Sex 19/06/26 | Análise Tecnored | Seg 08/06/26 | Seg 08/06/26 | Sprint 9 |
| 494 | 1.1.11.19.3 | Atendimento de comentários | 1d | 2026-06-23 | 2026-06-23 | 493 |  |  | 2026-06-29 | 2026-06-30 | 2d | 20d | 0d |  | AUTOMAÇÃO E INSTRUMENTAÇÃO | Seg 22/06/26 | Ter 23/06/26 | Atendimento de comentários | Ter 09/06/26 | Qua 10/06/26 | Sprint 9 |
| 495 | 1.1.11.19.4 | Aprovação | 1d | 2026-06-24 | 2026-06-24 | 494 |  |  | 2026-07-01 | 2026-07-01 | 1d | 20d |  |  | AUTOMAÇÃO E INSTRUMENTAÇÃO | Qua 24/06/26 | Qua 24/06/26 | Aprovação | Qui 11/06/26 | Qui 11/06/26 | Sprint 9 |
| 496 | 1.1.11.20 | **FD-F0009-0306-MB-J-00001** | 10d | 2026-06-18 A | 2026-07-01 |  | 70% | 3d | 2026-06-24 | 2026-07-08 | 11d | 15d |  |  | AUTOMAÇÃO E INSTRUMENTAÇÃO | Ter 16/06/26 | Sex 03/07/26 | AG-F0009-0306-MB-J-00002 | Seg 25/05/26 | Qui 11/06/26 | Sprint 8 |
| 497 | 1.1.11.20.1 | Emissão inicial | 7d | 2026-06-18 A | 2026-06-26 A |  | 100% |  | 2026-06-24 | 2026-07-02 | 7d |  |  | start no earlier than 2026-06-17 | AUTOMAÇÃO E INSTRUMENTAÇÃO | Ter 16/06/26 | Seg 29/06/26 | Emissão inicial | Seg 25/05/26 | Sex 05/06/26 | Sprint 8 |
| 498 | 1.1.11.20.2 | Análise Tecnored | 1d | 2026-06-29 | 2026-06-29 | 497 |  |  | 2026-07-03 | 2026-07-03 | 1d | 15d | 0d |  | AUTOMAÇÃO E INSTRUMENTAÇÃO | Ter 30/06/26 | Ter 30/06/26 | Análise Tecnored | Seg 08/06/26 | Seg 08/06/26 | Sprint 10 |
| 499 | 1.1.11.20.3 | Atendimento de comentários | 1d | 2026-06-30 | 2026-06-30 | 498 |  |  | 2026-07-06 | 2026-07-07 | 2d | 15d | 0d |  | AUTOMAÇÃO E INSTRUMENTAÇÃO | Qua 01/07/26 | Qui 02/07/26 | Atendimento de comentários | Ter 09/06/26 | Qua 10/06/26 | Sprint 10 |
| 500 | 1.1.11.20.4 | Aprovação | 1d | 2026-07-01 | 2026-07-01 | 499 |  |  | 2026-07-08 | 2026-07-08 | 1d | 15d |  |  | AUTOMAÇÃO E INSTRUMENTAÇÃO | Sex 03/07/26 | Sex 03/07/26 | Aprovação | Qui 11/06/26 | Qui 11/06/26 | Sprint 10 |
| 501 | 1.1.11.21 | **FD-F0009-0306-MB-J-00002** | 10d | 2026-06-18 A | 2026-07-01 |  | 75% | 2.5d | 2026-06-24 | 2026-07-08 | 11d | 15d |  |  | AUTOMAÇÃO E INSTRUMENTAÇÃO | Ter 16/06/26 | Sex 03/07/26 | AG-F0009-0306-MB-J-00003 | Seg 25/05/26 | Qui 11/06/26 | Sprint 8 |
| 502 | 1.1.11.21.1 | Emissão inicial | 7d | 2026-06-18 A | 2026-06-26 A | 497SS | 100% |  | 2026-06-24 | 2026-07-02 | 7d |  |  |  | AUTOMAÇÃO E INSTRUMENTAÇÃO | Ter 16/06/26 | Seg 29/06/26 | Emissão inicial | Seg 25/05/26 | Sex 05/06/26 | Sprint 8 |
| 503 | 1.1.11.21.2 | Análise Tecnored | 1d | 2026-06-29 A | 2026-06-29 | 502 | 50% | 0.5d | 2026-07-03 | 2026-07-03 | 1d | 15d | 0d |  | AUTOMAÇÃO E INSTRUMENTAÇÃO | Ter 30/06/26 | Ter 30/06/26 | Análise Tecnored | Seg 08/06/26 | Seg 08/06/26 | Sprint 10 |
| 504 | 1.1.11.21.3 | Atendimento de comentários | 1d | 2026-06-30 | 2026-06-30 | 503 |  |  | 2026-07-06 | 2026-07-07 | 2d | 15d | 0d |  | AUTOMAÇÃO E INSTRUMENTAÇÃO | Qua 01/07/26 | Qui 02/07/26 | Atendimento de comentários | Ter 09/06/26 | Qua 10/06/26 | Sprint 10 |
| 505 | 1.1.11.21.4 | Aprovação | 1d | 2026-07-01 | 2026-07-01 | 504 |  |  | 2026-07-08 | 2026-07-08 | 1d | 15d |  |  | AUTOMAÇÃO E INSTRUMENTAÇÃO | Sex 03/07/26 | Sex 03/07/26 | Aprovação | Qui 11/06/26 | Qui 11/06/26 | Sprint 10 |
| 506 | 1.1.11.22 | **FD-F0009-0306-MB-J-00003** | 10d | 2026-06-18 A | 2026-07-01 |  | 70% | 3d | 2026-06-24 | 2026-07-08 | 11d | 15d |  |  | AUTOMAÇÃO E INSTRUMENTAÇÃO | Ter 16/06/26 | Sex 03/07/26 | AG-F0009-0306-MB-J-00004 | Seg 25/05/26 | Qui 11/06/26 | Sprint 8 |
| 507 | 1.1.11.22.1 | Emissão inicial | 7d | 2026-06-18 A | 2026-06-26 A | 497SS | 100% |  | 2026-06-24 | 2026-07-02 | 7d |  |  |  | AUTOMAÇÃO E INSTRUMENTAÇÃO | Ter 16/06/26 | Seg 29/06/26 | Emissão inicial | Seg 25/05/26 | Sex 05/06/26 | Sprint 8 |
| 508 | 1.1.11.22.2 | Análise Tecnored | 1d | 2026-06-29 | 2026-06-29 | 507 |  |  | 2026-07-03 | 2026-07-03 | 1d | 15d | 0d |  | AUTOMAÇÃO E INSTRUMENTAÇÃO | Ter 30/06/26 | Ter 30/06/26 | Análise Tecnored | Seg 08/06/26 | Seg 08/06/26 | Sprint 10 |
| 509 | 1.1.11.22.3 | Atendimento de comentários | 1d | 2026-06-30 | 2026-06-30 | 508 |  |  | 2026-07-06 | 2026-07-07 | 2d | 15d | 0d |  | AUTOMAÇÃO E INSTRUMENTAÇÃO | Qua 01/07/26 | Qui 02/07/26 | Atendimento de comentários | Ter 09/06/26 | Qua 10/06/26 | Sprint 10 |
| 510 | 1.1.11.22.4 | Aprovação | 1d | 2026-07-01 | 2026-07-01 | 509 |  |  | 2026-07-08 | 2026-07-08 | 1d | 15d |  |  | AUTOMAÇÃO E INSTRUMENTAÇÃO | Sex 03/07/26 | Sex 03/07/26 | Aprovação | Qui 11/06/26 | Qui 11/06/26 | Sprint 10 |

| ID | WBS | Task | Duration | Start | Finish | Predecessors | Complete | Remaining | Baseline start | Baseline finish | Baseline duration | Total slack | Free slack | Disciplina | Início_LB_R0 | Término_LB_R0 | Text5 | ILB_2 | TLB_2 | Sprints |
| --- | --- | --- | --- | --- | --- | --- | --- | --- | --- | --- | --- | --- | --- | --- | --- | --- | --- | --- | --- | --- |
| 511 | 1.1.11.23 | **FD-F0009-0306-MB-J-00004** | 10d | 2026-06-18 A | 2026-07-01 |  | 70% | 3d | 2026-06-24 | 2026-07-08 | 11d | 15d |  | AUTOMAÇÃO E INSTRUMENTAÇÃO | Ter 16/06/26 | Sex 03/07/26 | DI-F0009-0306-MB-J-00001 | Seg 08/06/26 | Ter 16/06/26 | Sprint 8 |
| 512 | 1.1.11.23.1 | Emissão inicial | 7d | 2026-06-18 A | 2026-06-26 A | 497SS | 100% |  | 2026-06-24 | 2026-07-02 | 7d |  |  | AUTOMAÇÃO E INSTRUMENTAÇÃO | Ter 16/06/26 | Seg 29/06/26 | Emissão inicial | Seg 08/06/26 | Qua 10/06/26 | Sprint 8 |
| 513 | 1.1.11.23.2 | Análise Tecnored | 1d | 2026-06-29 | 2026-06-29 | 512 |  |  | 2026-07-03 | 2026-07-03 | 1d | 15d | 0d | AUTOMAÇÃO E INSTRUMENTAÇÃO | Ter 30/06/26 | Ter 30/06/26 | Análise Tecnored | Qui 11/06/26 | Qui 11/06/26 | Sprint 10 |
| 514 | 1.1.11.23.3 | Atendimento de comentários | 1d | 2026-06-30 | 2026-06-30 | 513 |  |  | 2026-07-06 | 2026-07-07 | 2d | 15d | 0d | AUTOMAÇÃO E INSTRUMENTAÇÃO | Qua 01/07/26 | Qui 02/07/26 | Atendimento de comentários | Sex 12/06/26 | Seg 15/06/26 | Sprint 10 |
| 515 | 1.1.11.23.4 | Aprovação | 1d | 2026-07-01 | 2026-07-01 | 514 |  |  | 2026-07-08 | 2026-07-08 | 1d | 15d |  | AUTOMAÇÃO E INSTRUMENTAÇÃO | Sex 03/07/26 | Sex 03/07/26 | Aprovação | Ter 16/06/26 | Ter 16/06/26 | Sprint 10 |
| 516 | 1.1.11.24 | **FD-F0009-0306-MB-J-00005** | 10d | 2026-06-18 A | 2026-07-01 |  | 75% | 2.5d | 2026-06-24 | 2026-07-08 | 11d | 15d |  | AUTOMAÇÃO E INSTRUMENTAÇÃO | Ter 16/06/26 | Sex 03/07/26 | LI-F0009-0306-MB-J-00002 | Sex 19/06/26 | Seg 29/06/26 | Sprint 8 |
| 517 | 1.1.11.24.1 | Emissão inicial | 7d | 2026-06-18 A | 2026-06-26 A | 497SS | 100% |  | 2026-06-24 | 2026-07-02 | 7d |  |  | AUTOMAÇÃO E INSTRUMENTAÇÃO | Ter 16/06/26 | Seg 29/06/26 | Emissão inicial | Sex 19/06/26 | Ter 23/06/26 | Sprint 8 |
| 518 | 1.1.11.24.2 | Análise Tecnored | 1d | 2026-06-29 A | 2026-06-29 | 517 | 50% | 0.5d | 2026-07-03 | 2026-07-03 | 1d | 15d | 0d | AUTOMAÇÃO E INSTRUMENTAÇÃO | Ter 30/06/26 | Ter 30/06/26 | Análise Tecnored | Qua 24/06/26 | Qua 24/06/26 | Sprint 10 |
| 519 | 1.1.11.24.3 | Atendimento de comentários | 1d | 2026-06-30 | 2026-06-30 | 518 |  |  | 2026-07-06 | 2026-07-07 | 2d | 15d | 0d | AUTOMAÇÃO E INSTRUMENTAÇÃO | Qua 01/07/26 | Qui 02/07/26 | Atendimento de comentários | Qui 25/06/26 | Sex 26/06/26 | Sprint 10 |
| 520 | 1.1.11.24.4 | Aprovação | 1d | 2026-07-01 | 2026-07-01 | 519 |  |  | 2026-07-08 | 2026-07-08 | 1d | 15d |  | AUTOMAÇÃO E INSTRUMENTAÇÃO | Sex 03/07/26 | Sex 03/07/26 | Aprovação | Seg 29/06/26 | Seg 29/06/26 | Sprint 10 |
| 521 | 1.1.11.25 | **FD-F0009-0306-MB-J-00006** | 10d | 2026-06-18 A | 2026-07-01 |  | 75% | 2.5d | 2026-06-24 | 2026-07-08 | 11d | 15d |  | AUTOMAÇÃO E INSTRUMENTAÇÃO | Ter 16/06/26 | Sex 03/07/26 | LI-F0009-0306-MB-J-00003 | Sex 19/06/26 | Seg 29/06/26 | Sprint 8 |
| 522 | 1.1.11.25.1 | Emissão inicial | 7d | 2026-06-18 A | 2026-06-26 A | 497SS | 100% |  | 2026-06-24 | 2026-07-02 | 7d |  |  | AUTOMAÇÃO E INSTRUMENTAÇÃO | Ter 16/06/26 | Seg 29/06/26 | Emissão inicial | Sex 19/06/26 | Ter 23/06/26 | Sprint 8 |
| 523 | 1.1.11.25.2 | Análise Tecnored | 1d | 2026-06-29 A | 2026-06-29 | 522 | 50% | 0.5d | 2026-07-03 | 2026-07-03 | 1d | 15d | 0d | AUTOMAÇÃO E INSTRUMENTAÇÃO | Ter 30/06/26 | Ter 30/06/26 | Análise Tecnored | Qua 24/06/26 | Qua 24/06/26 | Sprint 10 |
| 524 | 1.1.11.25.3 | Atendimento de comentários | 1d | 2026-06-30 | 2026-06-30 | 523 |  |  | 2026-07-06 | 2026-07-07 | 2d | 15d | 0d | AUTOMAÇÃO E INSTRUMENTAÇÃO | Qua 01/07/26 | Qui 02/07/26 | Atendimento de comentários | Qui 25/06/26 | Sex 26/06/26 | Sprint 10 |
| 525 | 1.1.11.25.4 | Aprovação | 1d | 2026-07-01 | 2026-07-01 | 524 |  |  | 2026-07-08 | 2026-07-08 | 1d | 15d |  | AUTOMAÇÃO E INSTRUMENTAÇÃO | Sex 03/07/26 | Sex 03/07/26 | Aprovação | Seg 29/06/26 | Seg 29/06/26 | Sprint 10 |
| 526 | 1.1.11.26 | **FD-F0009-0306-MB-J-00007** | 10d | 2026-06-18 A | 2026-07-01 |  | 75% | 2.5d | 2026-06-24 | 2026-07-08 | 11d | 15d |  | AUTOMAÇÃO E INSTRUMENTAÇÃO | Ter 16/06/26 | Sex 03/07/26 | LM-F0009-0306-MB-J-00001 | Seg 29/06/26 | Seg 06/07/26 | Sprint 8 |
| 527 | 1.1.11.26.1 | Emissão inicial | 7d | 2026-06-18 A | 2026-06-26 A | 497SS | 100% |  | 2026-06-24 | 2026-07-02 | 7d |  |  | AUTOMAÇÃO E INSTRUMENTAÇÃO | Ter 16/06/26 | Seg 29/06/26 | Emissão inicial | Seg 29/06/26 | Ter 30/06/26 | Sprint 8 |
| 528 | 1.1.11.26.2 | Análise Tecnored | 1d | 2026-06-29 A | 2026-06-29 | 527 | 50% | 0.5d | 2026-07-03 | 2026-07-03 | 1d | 15d | 0d | AUTOMAÇÃO E INSTRUMENTAÇÃO | Ter 30/06/26 | Ter 30/06/26 | Análise Tecnored | Qua 01/07/26 | Qua 01/07/26 | Sprint 10 |
| 529 | 1.1.11.26.3 | Atendimento de comentários | 1d | 2026-06-30 | 2026-06-30 | 528 |  |  | 2026-07-06 | 2026-07-07 | 2d | 15d | 0d | AUTOMAÇÃO E INSTRUMENTAÇÃO | Qua 01/07/26 | Qui 02/07/26 | Atendimento de comentários | Qui 02/07/26 | Sex 03/07/26 | Sprint 10 |
| 530 | 1.1.11.26.4 | Aprovação | 1d | 2026-07-01 | 2026-07-01 | 529 |  |  | 2026-07-08 | 2026-07-08 | 1d | 15d |  | AUTOMAÇÃO E INSTRUMENTAÇÃO | Sex 03/07/26 | Sex 03/07/26 | Aprovação | Seg 06/07/26 | Seg 06/07/26 | Sprint 10 |
| 531 | 1.1.11.27 | **FD-F0009-0306-MB-J-00008** | 10d | 2026-06-18 A | 2026-07-01 |  | 75% | 2.5d | 2026-06-24 | 2026-07-08 | 11d | 15d |  | AUTOMAÇÃO E INSTRUMENTAÇÃO | Ter 16/06/26 | Sex 03/07/26 | ET-F0009-0306-MB-J-00001 | Ter 16/06/26 | Qua 24/06/26 | Sprint 8 |
| 532 | 1.1.11.27.1 | Emissão inicial | 7d | 2026-06-18 A | 2026-06-26 A | 497SS | 100% |  | 2026-06-24 | 2026-07-02 | 7d |  |  | AUTOMAÇÃO E INSTRUMENTAÇÃO | Ter 16/06/26 | Seg 29/06/26 | Emissão inicial | Ter 16/06/26 | Qui 18/06/26 | Sprint 8 |
| 533 | 1.1.11.27.2 | Análise Tecnored | 1d | 2026-06-29 A | 2026-06-29 | 532 | 50% | 0.5d | 2026-07-03 | 2026-07-03 | 1d | 15d | 0d | AUTOMAÇÃO E INSTRUMENTAÇÃO | Ter 30/06/26 | Ter 30/06/26 | Análise Tecnored | Sex 19/06/26 | Sex 19/06/26 | Sprint 10 |
| 534 | 1.1.11.27.3 | Atendimento de comentários | 1d | 2026-06-30 | 2026-06-30 | 533 |  |  | 2026-07-06 | 2026-07-07 | 2d | 15d | 0d | AUTOMAÇÃO E INSTRUMENTAÇÃO | Qua 01/07/26 | Qui 02/07/26 | Atendimento de comentários | Seg 22/06/26 | Ter 23/06/26 | Sprint 10 |
| 535 | 1.1.11.27.4 | Aprovação | 1d | 2026-07-01 | 2026-07-01 | 534 |  |  | 2026-07-08 | 2026-07-08 | 1d | 15d |  | AUTOMAÇÃO E INSTRUMENTAÇÃO | Sex 03/07/26 | Sex 03/07/26 | Aprovação | Qua 24/06/26 | Qua 24/06/26 | Sprint 10 |

| ID | WBS | Task | Duration | Start | Finish | Predecessors | Complete | Remaining | Baseline start | Baseline finish | Baseline duration | Total slack | Free slack | Disciplina | Início_LB_R0 | Término_LB_R0 | Text5 | ILB_2 | TLB_2 | Sprints |
| --- | --- | --- | --- | --- | --- | --- | --- | --- | --- | --- | --- | --- | --- | --- | --- | --- | --- | --- | --- | --- |
| 536 | 1.1.11.28 | **FD-F0009-0306-MB-J-00009** | 10d | 2026-06-18 A | 2026-07-01 |  | 70% | 3d | 2026-06-24 | 2026-07-08 | 11d | 15d |  | AUTOMAÇÃO E INSTRUMENTAÇÃO | Ter 16/06/26 | Sex 03/07/26 | FD-F0009-0306-MB-J-00001 | Ter 16/06/26 | Sex 03/07/26 | Sprint 8 |
| 537 | 1.1.11.28.1 | Emissão inicial | 7d | 2026-06-18 A | 2026-06-26 A | 497SS | 100% |  | 2026-06-24 | 2026-07-02 | 7d |  |  | AUTOMAÇÃO E INSTRUMENTAÇÃO | Ter 16/06/26 | Seg 29/06/26 | Emissão inicial | Ter 16/06/26 | Seg 29/06/26 | Sprint 8 |
| 538 | 1.1.11.28.2 | Análise Tecnored | 1d | 2026-06-29 | 2026-06-29 | 537 |  |  | 2026-07-03 | 2026-07-03 | 1d | 15d | 0d | AUTOMAÇÃO E INSTRUMENTAÇÃO | Ter 30/06/26 | Ter 30/06/26 | Análise Tecnored | Ter 30/06/26 | Ter 30/06/26 | Sprint 10 |
| 539 | 1.1.11.28.3 | Atendimento de comentários | 1d | 2026-06-30 | 2026-06-30 | 538 |  |  | 2026-07-06 | 2026-07-07 | 2d | 15d | 0d | AUTOMAÇÃO E INSTRUMENTAÇÃO | Qua 01/07/26 | Qui 02/07/26 | Atendimento de comentários | Qua 01/07/26 | Qui 02/07/26 | Sprint 10 |
| 540 | 1.1.11.28.4 | Aprovação | 1d | 2026-07-01 | 2026-07-01 | 539 |  |  | 2026-07-08 | 2026-07-08 | 1d | 15d |  | AUTOMAÇÃO E INSTRUMENTAÇÃO | Sex 03/07/26 | Sex 03/07/26 | Aprovação | Sex 03/07/26 | Sex 03/07/26 | Sprint 10 |
| 541 | 1.1.11.29 | **FD-F0009-0306-MB-J-00010** | 10d | 2026-06-18 A | 2026-07-01 |  | 70% | 3d | 2026-06-24 | 2026-07-08 | 11d | 15d |  | AUTOMAÇÃO E INSTRUMENTAÇÃO | Ter 16/06/26 | Sex 03/07/26 | FD-F0009-0306-MB-J-00002 | Ter 16/06/26 | Sex 03/07/26 | Sprint 8 |
| 542 | 1.1.11.29.1 | Emissão inicial | 7d | 2026-06-18 A | 2026-06-26 A | 497SS | 100% |  | 2026-06-24 | 2026-07-02 | 7d |  |  | AUTOMAÇÃO E INSTRUMENTAÇÃO | Ter 16/06/26 | Seg 29/06/26 | Emissão inicial | Ter 16/06/26 | Seg 29/06/26 | Sprint 8 |
| 543 | 1.1.11.29.2 | Análise Tecnored | 1d | 2026-06-29 | 2026-06-29 | 542 |  |  | 2026-07-03 | 2026-07-03 | 1d | 15d | 0d | AUTOMAÇÃO E INSTRUMENTAÇÃO | Ter 30/06/26 | Ter 30/06/26 | Análise Tecnored | Ter 30/06/26 | Ter 30/06/26 | Sprint 10 |
| 544 | 1.1.11.29.3 | Atendimento de comentários | 1d | 2026-06-30 | 2026-06-30 | 543 |  |  | 2026-07-06 | 2026-07-07 | 2d | 15d | 0d | AUTOMAÇÃO E INSTRUMENTAÇÃO | Qua 01/07/26 | Qui 02/07/26 | Atendimento de comentários | Qua 01/07/26 | Qui 02/07/26 | Sprint 10 |
| 545 | 1.1.11.29.4 | Aprovação | 1d | 2026-07-01 | 2026-07-01 | 544 |  |  | 2026-07-08 | 2026-07-08 | 1d | 15d |  | AUTOMAÇÃO E INSTRUMENTAÇÃO | Sex 03/07/26 | Sex 03/07/26 | Aprovação | Sex 03/07/26 | Sex 03/07/26 | Sprint 10 |
| 546 | 1.1.11.30 | **FD-F0009-0306-MB-J-00011** | 10d | 2026-06-18 A | 2026-07-01 |  | 70% | 3d | 2026-06-24 | 2026-07-08 | 11d | 15d |  | AUTOMAÇÃO E INSTRUMENTAÇÃO | Ter 16/06/26 | Sex 03/07/26 | FD-F0009-0306-MB-J-00003 | Ter 16/06/26 | Sex 03/07/26 | Sprint 8 |
| 547 | 1.1.11.30.1 | Emissão inicial | 7d | 2026-06-18 A | 2026-06-26 A | 497SS | 100% |  | 2026-06-24 | 2026-07-02 | 7d |  |  | AUTOMAÇÃO E INSTRUMENTAÇÃO | Ter 16/06/26 | Seg 29/06/26 | Emissão inicial | Ter 16/06/26 | Seg 29/06/26 | Sprint 8 |
| 548 | 1.1.11.30.2 | Análise Tecnored | 1d | 2026-06-29 | 2026-06-29 | 547 |  |  | 2026-07-03 | 2026-07-03 | 1d | 15d | 0d | AUTOMAÇÃO E INSTRUMENTAÇÃO | Ter 30/06/26 | Ter 30/06/26 | Análise Tecnored | Ter 30/06/26 | Ter 30/06/26 | Sprint 10 |
| 549 | 1.1.11.30.3 | Atendimento de comentários | 1d | 2026-06-30 | 2026-06-30 | 548 |  |  | 2026-07-06 | 2026-07-07 | 2d | 15d | 0d | AUTOMAÇÃO E INSTRUMENTAÇÃO | Qua 01/07/26 | Qui 02/07/26 | Atendimento de comentários | Qua 01/07/26 | Qui 02/07/26 | Sprint 10 |
| 550 | 1.1.11.30.4 | Aprovação | 1d | 2026-07-01 | 2026-07-01 | 549 |  |  | 2026-07-08 | 2026-07-08 | 1d | 15d |  | AUTOMAÇÃO E INSTRUMENTAÇÃO | Sex 03/07/26 | Sex 03/07/26 | Aprovação | Sex 03/07/26 | Sex 03/07/26 | Sprint 10 |
| 551 | 1.1.11.31 | **FD-F0009-0306-MB-J-00012** | 10d | 2026-06-18 A | 2026-07-01 |  | 70% | 3d | 2026-06-24 | 2026-07-08 | 11d | 15d |  | AUTOMAÇÃO E INSTRUMENTAÇÃO | Ter 16/06/26 | Sex 03/07/26 | FD-F0009-0306-MB-J-00004 | Ter 16/06/26 | Sex 03/07/26 | Sprint 8 |
| 552 | 1.1.11.31.1 | Emissão inicial | 7d | 2026-06-18 A | 2026-06-26 A | 497SS | 100% |  | 2026-06-24 | 2026-07-02 | 7d |  |  | AUTOMAÇÃO E INSTRUMENTAÇÃO | Ter 16/06/26 | Seg 29/06/26 | Emissão inicial | Ter 16/06/26 | Seg 29/06/26 | Sprint 8 |
| 553 | 1.1.11.31.2 | Análise Tecnored | 1d | 2026-06-29 | 2026-06-29 | 552 |  |  | 2026-07-03 | 2026-07-03 | 1d | 15d | 0d | AUTOMAÇÃO E INSTRUMENTAÇÃO | Ter 30/06/26 | Ter 30/06/26 | Análise Tecnored | Ter 30/06/26 | Ter 30/06/26 | Sprint 10 |
| 554 | 1.1.11.31.3 | Atendimento de comentários | 1d | 2026-06-30 | 2026-06-30 | 553 |  |  | 2026-07-06 | 2026-07-07 | 2d | 15d | 0d | AUTOMAÇÃO E INSTRUMENTAÇÃO | Qua 01/07/26 | Qui 02/07/26 | Atendimento de comentários | Qua 01/07/26 | Qui 02/07/26 | Sprint 10 |
| 555 | 1.1.11.31.4 | Aprovação | 1d | 2026-07-01 | 2026-07-01 | 554 |  |  | 2026-07-08 | 2026-07-08 | 1d | 15d |  | AUTOMAÇÃO E INSTRUMENTAÇÃO | Sex 03/07/26 | Sex 03/07/26 | Aprovação | Sex 03/07/26 | Sex 03/07/26 | Sprint 10 |
| 556 | 1.1.11.32 | **FD-F0009-0306-MB-J-00013** | 10d | 2026-06-18 A | 2026-07-01 |  | 75% | 2.5d | 2026-06-24 | 2026-07-08 | 11d | 15d |  | AUTOMAÇÃO E INSTRUMENTAÇÃO | Ter 16/06/26 | Sex 03/07/26 | FD-F0009-0306-MB-J-00005 | Ter 16/06/26 | Sex 03/07/26 | Sprint 8 |
| 557 | 1.1.11.32.1 | Emissão inicial | 7d | 2026-06-18 A | 2026-06-26 A | 497SS | 100% |  | 2026-06-24 | 2026-07-02 | 7d |  |  | AUTOMAÇÃO E INSTRUMENTAÇÃO | Ter 16/06/26 | Seg 29/06/26 | Emissão inicial | Ter 16/06/26 | Seg 29/06/26 | Sprint 8 |
| 558 | 1.1.11.32.2 | Análise Tecnored | 1d | 2026-06-29 A | 2026-06-29 | 557 | 50% | 0.5d | 2026-07-03 | 2026-07-03 | 1d | 15d | 0d | AUTOMAÇÃO E INSTRUMENTAÇÃO | Ter 30/06/26 | Ter 30/06/26 | Análise Tecnored | Ter 30/06/26 | Ter 30/06/26 | Sprint 10 |
| 559 | 1.1.11.32.3 | Atendimento de comentários | 1d | 2026-06-30 | 2026-06-30 | 558 |  |  | 2026-07-06 | 2026-07-07 | 2d | 15d | 0d | AUTOMAÇÃO E INSTRUMENTAÇÃO | Qua 01/07/26 | Qui 02/07/26 | Atendimento de comentários | Qua 01/07/26 | Qui 02/07/26 | Sprint 10 |
| 560 | 1.1.11.32.4 | Aprovação | 1d | 2026-07-01 | 2026-07-01 | 559 |  |  | 2026-07-08 | 2026-07-08 | 1d | 15d |  | AUTOMAÇÃO E INSTRUMENTAÇÃO | Sex 03/07/26 | Sex 03/07/26 | Aprovação | Sex 03/07/26 | Sex 03/07/26 | Sprint 10 |

| ID | WBS | Task | Duration | Start | Finish | Predecessors | Complete | Remaining | Baseline start | Baseline finish | Baseline duration | Total slack | Free slack | Constraint | Disciplina | Início_LB_R0 | Término_LB_R0 | Text5 | ILB_2 | TLB_2 | Sprints |
| --- | --- | --- | --- | --- | --- | --- | --- | --- | --- | --- | --- | --- | --- | --- | --- | --- | --- | --- | --- | --- | --- |
| 561 | 1.1.11.33 | **FD-F0009-0306-MB-J-00014** | 10d | 2026-06-18 A | 2026-07-01 |  | 70% | 3d | 2026-06-24 | 2026-07-08 | 11d | 15d |  |  | AUTOMAÇÃO E INSTRUMENTAÇÃO | Ter 16/06/26 | Sex 03/07/26 | FD-F0009-0306-MB-J-00006 | Ter 16/06/26 | Sex 03/07/26 | Sprint 8 |
| 562 | 1.1.11.33.1 | Emissão inicial | 7d | 2026-06-18 A | 2026-06-26 A | 497SS | 100% |  | 2026-06-24 | 2026-07-02 | 7d |  |  |  | AUTOMAÇÃO E INSTRUMENTAÇÃO | Ter 16/06/26 | Seg 29/06/26 | Emissão inicial | Ter 16/06/26 | Seg 29/06/26 | Sprint 8 |
| 563 | 1.1.11.33.2 | Análise Tecnored | 1d | 2026-06-29 | 2026-06-29 | 562 |  |  | 2026-07-03 | 2026-07-03 | 1d | 15d | 0d |  | AUTOMAÇÃO E INSTRUMENTAÇÃO | Ter 30/06/26 | Ter 30/06/26 | Análise Tecnored | Ter 30/06/26 | Ter 30/06/26 | Sprint 10 |
| 564 | 1.1.11.33.3 | Atendimento de comentários | 1d | 2026-06-30 | 2026-06-30 | 563 |  |  | 2026-07-06 | 2026-07-07 | 2d | 15d | 0d |  | AUTOMAÇÃO E INSTRUMENTAÇÃO | Qua 01/07/26 | Qui 02/07/26 | Atendimento de comentários | Qua 01/07/26 | Qui 02/07/26 | Sprint 10 |
| 565 | 1.1.11.33.4 | Aprovação | 1d | 2026-07-01 | 2026-07-01 | 564 |  |  | 2026-07-08 | 2026-07-08 | 1d | 15d |  |  | AUTOMAÇÃO E INSTRUMENTAÇÃO | Sex 03/07/26 | Sex 03/07/26 | Aprovação | Sex 03/07/26 | Sex 03/07/26 | Sprint 10 |
| 566 | 1.1.11.34 | **FD-F0009-0306-MB-J-00015** | 10d | 2026-06-18 A | 2026-07-01 |  | 75% | 2.5d | 2026-06-24 | 2026-07-08 | 11d | 15d |  |  | AUTOMAÇÃO E INSTRUMENTAÇÃO | Ter 16/06/26 | Sex 03/07/26 | FD-F0009-0306-MB-J-00007 | Ter 16/06/26 | Sex 03/07/26 | Sprint 8 |
| 567 | 1.1.11.34.1 | Emissão inicial | 7d | 2026-06-18 A | 2026-06-26 A | 497SS | 100% |  | 2026-06-24 | 2026-07-02 | 7d |  |  |  | AUTOMAÇÃO E INSTRUMENTAÇÃO | Ter 16/06/26 | Seg 29/06/26 | Emissão inicial | Ter 16/06/26 | Seg 29/06/26 | Sprint 8 |
| 568 | 1.1.11.34.2 | Análise Tecnored | 1d | 2026-06-29 A | 2026-06-29 | 567 | 50% | 0.5d | 2026-07-03 | 2026-07-03 | 1d | 15d | 0d | finish no earlier than 2026-06-26 | AUTOMAÇÃO E INSTRUMENTAÇÃO | Ter 30/06/26 | Ter 30/06/26 | Análise Tecnored | Ter 30/06/26 | Ter 30/06/26 | Sprint 10 |
| 569 | 1.1.11.34.3 | Atendimento de comentários | 1d | 2026-06-30 | 2026-06-30 | 568 |  |  | 2026-07-06 | 2026-07-07 | 2d | 15d | 0d | start no earlier than 2026-06-29 | AUTOMAÇÃO E INSTRUMENTAÇÃO | Qua 01/07/26 | Qui 02/07/26 | Atendimento de comentários | Qua 01/07/26 | Qui 02/07/26 | Sprint 10 |
| 570 | 1.1.11.34.4 | Aprovação | 1d | 2026-07-01 | 2026-07-01 | 569 |  |  | 2026-07-08 | 2026-07-08 | 1d | 15d |  | start no earlier than 2026-06-30 | AUTOMAÇÃO E INSTRUMENTAÇÃO | Sex 03/07/26 | Sex 03/07/26 | Aprovação | Sex 03/07/26 | Sex 03/07/26 | Sprint 10 |
| 571 | 1.1.11.35 | **FD-F0009-0306-MB-J-00016** | 10d | 2026-06-18 A | 2026-07-01 |  | 70% | 3d | 2026-06-24 | 2026-07-08 | 11d | 15d |  |  | AUTOMAÇÃO E INSTRUMENTAÇÃO | Ter 16/06/26 | Sex 03/07/26 | FD-F0009-0306-MB-J-00008 | Ter 16/06/26 | Sex 03/07/26 | Sprint 8 |
| 572 | 1.1.11.35.1 | Emissão inicial | 7d | 2026-06-18 A | 2026-06-26 A | 497SS | 100% |  | 2026-06-24 | 2026-07-02 | 7d |  |  |  | AUTOMAÇÃO E INSTRUMENTAÇÃO | Ter 16/06/26 | Seg 29/06/26 | Emissão inicial | Ter 16/06/26 | Seg 29/06/26 | Sprint 8 |
| 573 | 1.1.11.35.2 | Análise Tecnored | 1d | 2026-06-29 | 2026-06-29 | 572 |  |  | 2026-07-03 | 2026-07-03 | 1d | 15d | 0d | finish no earlier than 2026-06-26 | AUTOMAÇÃO E INSTRUMENTAÇÃO | Ter 30/06/26 | Ter 30/06/26 | Análise Tecnored | Ter 30/06/26 | Ter 30/06/26 | Sprint 10 |
| 574 | 1.1.11.35.3 | Atendimento de comentários | 1d | 2026-06-30 | 2026-06-30 | 573 |  |  | 2026-07-06 | 2026-07-07 | 2d | 15d | 0d | start no earlier than 2026-06-29 | AUTOMAÇÃO E INSTRUMENTAÇÃO | Qua 01/07/26 | Qui 02/07/26 | Atendimento de comentários | Qua 01/07/26 | Qui 02/07/26 | Sprint 10 |
| 575 | 1.1.11.35.4 | Aprovação | 1d | 2026-07-01 | 2026-07-01 | 574 |  |  | 2026-07-08 | 2026-07-08 | 1d | 15d |  | finish no earlier than 2026-06-30 | AUTOMAÇÃO E INSTRUMENTAÇÃO | Sex 03/07/26 | Sex 03/07/26 | Aprovação | Sex 03/07/26 | Sex 03/07/26 | Sprint 10 |
| 576 | 1.1.11.36 | **LB-F0009-0306-MB-J-00001** | 7d | 2026-06-30 | 2026-07-08 |  |  |  | 2026-06-30 | 2026-07-08 | 7d | 10d |  |  | AUTOMAÇÃO E INSTRUMENTAÇÃO | Qua 24/06/26 | Qui 02/07/26 | FD-F0009-0306-MB-J-00009 | Ter 16/06/26 | Sex 03/07/26 | Sprint 10 |
| 577 | 1.1.11.36.1 | Emissão inicial | 3d | 2026-06-30 | 2026-07-02 | 472 |  |  | 2026-06-30 | 2026-07-02 | 3d | 10d | 0d | start no earlier than 2026-06-22 | AUTOMAÇÃO E INSTRUMENTAÇÃO | Qua 24/06/26 | Sex 26/06/26 | Emissão inicial | Ter 16/06/26 | Seg 29/06/26 | Sprint 10 |
| 578 | 1.1.11.36.2 | Análise Tecnored | 1d | 2026-07-03 | 2026-07-03 | 577 |  |  | 2026-07-03 | 2026-07-03 | 1d | 10d | 0d |  | AUTOMAÇÃO E INSTRUMENTAÇÃO | Seg 29/06/26 | Seg 29/06/26 | Análise Tecnored | Ter 30/06/26 | Ter 30/06/26 | Sprint 10 |
| 579 | 1.1.11.36.3 | Atendimento de comentários | 2d | 2026-07-06 | 2026-07-07 | 578 |  |  | 2026-07-06 | 2026-07-07 | 2d | 10d | 0d |  | AUTOMAÇÃO E INSTRUMENTAÇÃO | Ter 30/06/26 | Qua 01/07/26 | Atendimento de comentários | Qua 01/07/26 | Qui 02/07/26 | Sprint 11 |
| 580 | 1.1.11.36.4 | Aprovação | 1d | 2026-07-08 | 2026-07-08 | 579 |  |  | 2026-07-08 | 2026-07-08 | 1d | 10d |  |  | AUTOMAÇÃO E INSTRUMENTAÇÃO | Qui 02/07/26 | Qui 02/07/26 | Aprovação | Sex 03/07/26 | Sex 03/07/26 | Sprint 11 |
| 581 | 1.1.11.37 | **RE-F0009-0306-MB-J-00001** | 8d | 2026-06-16 A | 2026-06-25 |  | 75% | 2d | 2026-06-30 | 2026-07-08 | 7d | 19d |  |  | AUTOMAÇÃO E INSTRUMENTAÇÃO | Qua 24/06/26 | Qui 02/07/26 | FD-F0009-0306-MB-J-00009 | Ter 16/06/26 | Sex 03/07/26 | Sprint 8 |
| 582 | 1.1.11.37.1 | Emissão inicial | 4d | 2026-06-16 A | 2026-06-19 A |  | 100% |  | 2026-06-30 | 2026-07-02 | 3d |  |  | finish no earlier than 2026-06-19 | AUTOMAÇÃO E INSTRUMENTAÇÃO | Qua 24/06/26 | Sex 26/06/26 | Emissão inicial | Ter 16/06/26 | Seg 29/06/26 | Sprint 8 |
| 583 | 1.1.11.37.2 | Análise Tecnored | 1d | 2026-06-22 A | 2026-06-22 A | 582 | 100% |  | 2026-07-03 | 2026-07-03 | 1d |  |  |  | AUTOMAÇÃO E INSTRUMENTAÇÃO | Seg 29/06/26 | Seg 29/06/26 | Análise Tecnored | Ter 30/06/26 | Ter 30/06/26 | Sprint 9 |
| 584 | 1.1.11.37.3 | Atendimento de comentários | 2d | 2026-06-23 A | 2026-06-24 | 583 | 50% | 1d | 2026-07-06 | 2026-07-07 | 2d | 19d | 0d |  | AUTOMAÇÃO E INSTRUMENTAÇÃO | Ter 30/06/26 | Qua 01/07/26 | Atendimento de comentários | Qua 01/07/26 | Qui 02/07/26 | Sprint 9 |
| 585 | 1.1.11.37.4 | Aprovação | 1d | 2026-06-25 | 2026-06-25 | 584 |  |  | 2026-07-08 | 2026-07-08 | 1d | 19d |  |  | AUTOMAÇÃO E INSTRUMENTAÇÃO | Qui 02/07/26 | Qui 02/07/26 | Aprovação | Sex 03/07/26 | Sex 03/07/26 | Sprint 9 |

| ID | WBS | Task | Duration | Start | Finish | Predecessors | Complete | Remaining | Baseline start | Baseline finish | Baseline duration | Total slack | Free slack | Constraint | Disciplina | Início_LB_R0 | Término_LB_R0 | Text5 | ILB_2 | TLB_2 | Sprints |
| --- | --- | --- | --- | --- | --- | --- | --- | --- | --- | --- | --- | --- | --- | --- | --- | --- | --- | --- | --- | --- | --- |
| 586 | 1.1.11.38 | **DT-F0009-0306-MB-J-00001** | 8d | 2026-06-19 A | 2026-06-30 |  | 25% | 6d | 2026-06-30 | 2026-07-08 | 7d | 16d |  |  | AUTOMAÇÃO E INSTRUMENTAÇÃO | Qua 24/06/26 | Qui 02/07/26 | FD-F0009-0306-MB-J-00009 | Ter 16/06/26 | Sex 03/07/26 | Sprint 8 |
| 587 | 1.1.11.38.1 | Emissão inicial | 4d | 2026-06-19 A | 2026-06-24 |  | 50% | 2d | 2026-06-30 | 2026-07-02 | 3d | 16d | 0d | start no earlier than 2026-06-19 | AUTOMAÇÃO E INSTRUMENTAÇÃO | Qua 24/06/26 | Sex 26/06/26 | Emissão inicial | Ter 16/06/26 | Seg 29/06/26 | Sprint 8 |
| 588 | 1.1.11.38.2 | Análise Tecnored | 1d | 2026-06-25 | 2026-06-25 | 587 |  |  | 2026-07-03 | 2026-07-03 | 1d | 16d | 0d |  | AUTOMAÇÃO E INSTRUMENTAÇÃO | Seg 29/06/26 | Seg 29/06/26 | Análise Tecnored | Ter 30/06/26 | Ter 30/06/26 | Sprint 9 |
| 589 | 1.1.11.38.3 | Atendimento de comentários | 2d | 2026-06-26 | 2026-06-29 | 588 |  |  | 2026-07-06 | 2026-07-07 | 2d | 16d | 0d |  | AUTOMAÇÃO E INSTRUMENTAÇÃO | Ter 30/06/26 | Qua 01/07/26 | Atendimento de comentários | Qua 01/07/26 | Qui 02/07/26 | Sprint 9 |
| 590 | 1.1.11.38.4 | Aprovação | 1d | 2026-06-30 | 2026-06-30 | 589 |  |  | 2026-07-08 | 2026-07-08 | 1d | 16d |  |  | AUTOMAÇÃO E INSTRUMENTAÇÃO | Qui 02/07/26 | Qui 02/07/26 | Aprovação | Sex 03/07/26 | Sex 03/07/26 | Sprint 10 |
| 591 | 1.1.12 | **Civil** | 9d | 2026-06-22 | 2026-07-02 |  |  |  | 2026-06-16 | 2026-07-02 | 13d | 14d |  |  | CIVIL | Qua 03/06/26 | Sex 19/06/26 | FD-F0009-0306-MB-J-00010 | Ter 16/06/26 | Sex 03/07/26 | Sprint 9 |
| 592 | 1.1.12.1 | **MC-F0009-0306-MB-C-00001** | 8d | 2026-06-22 | 2026-07-01 |  |  |  | 2026-06-16 | 2026-07-01 | 12d | 14d |  |  | CIVIL | Qua 03/06/26 | Qui 18/06/26 | Emissão inicial | Ter 16/06/26 | Seg 29/06/26 | Sprint 9 |
| 593 | 1.1.12.1.1 | Emissão inicial | 5d | 2026-06-22 | 2026-06-26 | 255FS-2d |  |  | 2026-06-16 | 2026-06-25 | 8d | 14d | 0d | start no earlier than 2026-06-22 | CIVIL | Qua 03/06/26 | Sex 12/06/26 | Análise Tecnored | Ter 30/06/26 | Ter 30/06/26 | Sprint 9 |
| 594 | 1.1.12.1.2 | Análise Tecnored | 1d | 2026-06-29 | 2026-06-29 | 593 |  |  | 2026-06-26 | 2026-06-26 | 1d | 15d | 0d |  | CIVIL | Seg 15/06/26 | Seg 15/06/26 | Atendimento de comentários | Qua 01/07/26 | Qui 02/07/26 | Sprint 10 |
| 595 | 1.1.12.1.3 | Atendimento de comentários | 1d | 2026-06-30 | 2026-06-30 | 594 |  |  | 2026-06-29 | 2026-06-30 | 2d | 15d | 0d |  | CIVIL | Ter 16/06/26 | Qua 17/06/26 | Aprovação | Sex 03/07/26 | Sex 03/07/26 | Sprint 10 |
| 596 | 1.1.12.1.4 | Aprovação | 1d | 2026-07-01 | 2026-07-01 | 595 |  |  | 2026-07-01 | 2026-07-01 | 1d | 15d |  |  | CIVIL | Qui 18/06/26 | Qui 18/06/26 | FD-F0009-0306-MB-J-00011 | Ter 16/06/26 | Sex 03/07/26 | Sprint 10 |
| 597 | 1.1.12.2 | **PQ-F0009-0306-MB-C-00001** | 4d | 2026-06-29 | 2026-07-02 |  |  |  | 2026-06-26 | 2026-07-02 | 5d | 14d |  |  | CIVIL | Seg 15/06/26 | Sex 19/06/26 | Emissão inicial | Ter 16/06/26 | Seg 29/06/26 | Sprint 10 |
| 598 | 1.1.12.2.1 | Emissão inicial | 1d | 2026-06-29 | 2026-06-29 | 593 |  |  | 2026-06-26 | 2026-06-26 | 1d | 14d | 0d |  | CIVIL | Seg 15/06/26 | Seg 15/06/26 | Análise Tecnored | Ter 30/06/26 | Ter 30/06/26 | Sprint 10 |
| 599 | 1.1.12.2.2 | Análise Tecnored | 1d | 2026-06-30 | 2026-06-30 | 598 |  |  | 2026-06-29 | 2026-06-29 | 1d | 14d | 0d |  | CIVIL | Ter 16/06/26 | Ter 16/06/26 | Atendimento de comentários | Qua 01/07/26 | Qui 02/07/26 | Sprint 10 |
| 600 | 1.1.12.2.3 | Atendimento de comentários | 1d | 2026-07-01 | 2026-07-01 | 599 |  |  | 2026-06-30 | 2026-07-01 | 2d | 14d | 0d |  | CIVIL | Qua 17/06/26 | Qui 18/06/26 | Aprovação | Sex 03/07/26 | Sex 03/07/26 | Sprint 10 |
| 601 | 1.1.12.2.4 | Aprovação | 1d | 2026-07-02 | 2026-07-02 | 600 |  |  | 2026-07-02 | 2026-07-02 | 1d | 14d |  |  | CIVIL | Sex 19/06/26 | Sex 19/06/26 | FD-F0009-0306-MB-J-00012 | Ter 16/06/26 | Sex 03/07/26 | Sprint 10 |
