# CR-F0009-0305-MB-F-00001

Schedule from MS Project, 2026-04-27 to 2026-07-13, A marks actual dates.

## Calendars

- Padrão: Mon-Fri 09:00-12:00, 13:00-18:00; Sat-Sun off.

## Schedule

| ID | WBS | Task | Type | Duration | Start | Finish | Predecessors | Complete | Remaining | Baseline start | Baseline finish | Baseline duration | Total slack | Free slack | Constraint |
| --- | --- | --- | --- | --- | --- | --- | --- | --- | --- | --- | --- | --- | --- | --- | --- |
| 1 | 1 | **F0009 - Programa Marabá** |  | 53d | 2026-04-27 A | 2026-07-08 |  | 3% | 51.28d | 2026-04-27 | 2026-07-08 | 53d |  |  |  |
| 2 | 1.1 | **Área 0306 - Sopradores** |  | 53d | 2026-04-27 A | 2026-07-08 |  | 3% | 51.28d | 2026-04-27 | 2026-07-08 | 53d | 0d |  |  |
| 3 | 1.1.1 | KOM - Início de projeto | milestone | 0d | 2026-04-27 A | 2026-04-27 A |  | 100% |  | 2026-04-27 | 2026-04-27 | 0d |  |  | start no earlier than 2026-04-27 |
| 4 | 1.1.2 | **Marcos** |  | 13d | 2026-05-19 A | 2026-06-05 |  |  | 13d | 2026-05-19 | 2026-06-05 | 13d | 0d |  |  |
| 5 | 1.1.2.1 | Critério de Projeto de Processo | milestone, manual | 0d | 2026-06-05 | 2026-06-05 |  |  |  | 2026-06-05 | 2026-06-05 | 0d |  |  |  |
| 6 | 1.1.2.2 | Critério de Projeto de Mecânica | milestone, manual | 0d | 2026-05-19 A | 2026-05-19 A |  | 100% |  | 2026-05-19 | 2026-05-19 | 0d |  |  |  |
| 7 | 1.1.2.3 | Critério de Projeto de Elétrica | milestone, manual | 0d | 2026-06-05 | 2026-06-05 |  |  |  | 2026-06-05 | 2026-06-05 | 0d |  |  |  |
| 8 | 1.1.2.4 | Critério de Projeto de automação | milestone, manual | 0d | 2026-06-05 | 2026-06-05 |  |  |  | 2026-06-05 | 2026-06-05 | 0d |  |  |  |
| 9 | 1.1.2.5 | Critério de Projeto de Tubulação | milestone, manual | 0d | 2026-05-22 A | 2026-05-22 A |  | 100% |  | 2026-05-22 | 2026-05-22 | 0d |  |  |  |
| 10 | 1.1.2.6 | Critério de Projeto de Estrutura metálica | milestone, manual | 0d | 2026-06-05 | 2026-06-05 |  |  |  | 2026-06-05 | 2026-06-05 | 0d |  |  |  |
| 11 | 1.1.3 | **Pendências** |  | 0d | 2026-04-29 A | 2026-04-29 A |  | 100% |  | 2026-04-29 | 2026-04-29 | 0d |  |  |  |
| 12 | 1.1.3.1 | Recebimento de dados de entrada | milestone | 0d | 2026-04-29 A | 2026-04-29 A |  | 100% |  | 2026-04-29 | 2026-04-29 | 0d |  |  |  |
| 13 | 1.1.4 | **Planejamento** |  | 25.4d | 2026-04-27 A | 2026-06-01 |  | 86% | 3.63d | 2026-04-27 | 2026-06-01 | 25.4d | 27.6d |  |  |
| 14 | 1.1.4.1 | **LD-F0009-0306-MB-F-00001** |  | 25.4d | 2026-04-27 A | 2026-06-01 |  | 86% | 3.63d | 2026-04-27 | 2026-06-01 | 25.4d | 27.6d |  |  |
| 15 | 1.1.4.1.1 | Emissão inicial |  | 3d | 2026-04-27 A | 2026-04-29 A | 3 | 100% |  | 2026-04-27 | 2026-04-29 | 3d |  |  |  |
| 16 | 1.1.4.1.2 | Análise Tecnored |  | 1d | 2026-04-30 A | 2026-04-30 A | 15 | 100% |  | 2026-04-30 | 2026-04-30 | 1d |  |  |  |
| 17 | 1.1.4.1.3 | Atendimento de comentários |  | 2d | 2026-05-01 A | 2026-05-12 A | 16FS+7d | 100% |  | 2026-05-01 | 2026-05-12 | 2d |  |  |  |
| 18 | 1.1.4.1.4 | Aprovação |  | 1d | 2026-05-29 | 2026-06-01 | 17FS+13d |  |  | 2026-05-29 | 2026-06-01 | 1d | 27.6d |  |  |
| 19 | 1.1.4.2 | **CR-F0009-0306-MB-F-00001** |  | 21.4d | 2026-04-30 A | 2026-05-29 |  | 86% | 3.06d | 2026-04-30 | 2026-05-29 | 21.4d | 28.6d |  |  |
| 20 | 1.1.4.2.1 | Emissão inicial |  | 3d | 2026-04-30 A | 2026-05-04 A | 15 | 100% |  | 2026-04-30 | 2026-05-04 | 3d |  |  |  |
| 21 | 1.1.4.2.2 | Análise Tecnored |  | 1d | 2026-05-05 A | 2026-05-05 A | 20 | 100% |  | 2026-05-05 | 2026-05-05 | 1d |  |  |  |
| 22 | 1.1.4.2.3 | Atendimento de comentários |  | 2d | 2026-05-06 A | 2026-05-15 A | 21FS+7d | 100% |  | 2026-05-06 | 2026-05-15 | 2d |  |  |  |
| 23 | 1.1.4.2.4 | Aprovação |  | 1d | 2026-05-28 | 2026-05-29 | 22FS+9d |  |  | 2026-05-28 | 2026-05-29 | 1d | 28.6d |  |  |
| 24 | 1.1.5 | **Coordenação** |  | 52d | 2026-04-27 A | 2026-07-07 |  | 11% | 46.22d | 2026-04-27 | 2026-07-07 | 52d | 1d |  |  |
| 25 | 1.1.5.1 | **RM-F0009-0306-MB-G-00001** |  | 7d | 2026-06-01 | 2026-06-09 |  |  |  | 2026-06-01 | 2026-06-09 | 7d | 1d |  |  |
| 26 | 1.1.5.1.1 | Emissão inicial |  | 3d | 2026-06-01 | 2026-06-03 | 3FS+25d |  |  | 2026-06-01 | 2026-06-03 | 3d | 1d | 0d |  |
| 27 | 1.1.5.1.2 | Análise Tecnored |  | 1d | 2026-06-04 | 2026-06-04 | 26 |  |  | 2026-06-04 | 2026-06-04 | 1d | 21d | 0d |  |
| 28 | 1.1.5.1.3 | Atendimento de comentários |  | 2d | 2026-06-05 | 2026-06-08 | 27 |  |  | 2026-06-05 | 2026-06-08 | 2d | 21d | 0d |  |
| 29 | 1.1.5.1.4 | Aprovação |  | 1d | 2026-06-09 | 2026-06-09 | 28 |  |  | 2026-06-09 | 2026-06-09 | 1d | 21d |  |  |

| ID | WBS | Task | Type | Duration | Start | Finish | Predecessors | Complete | Remaining | Baseline start | Baseline finish | Baseline duration | Total slack | Free slack | Baseline cost |
| --- | --- | --- | --- | --- | --- | --- | --- | --- | --- | --- | --- | --- | --- | --- | --- |
| 30 | 1.1.5.2 | **RM-F0009-0306-MB-G-00002** |  | 7d | 2026-06-18 | 2026-06-26 |  |  |  | 2026-06-18 | 2026-06-26 | 7d | 1d |  |  |
| 31 | 1.1.5.2.1 | Emissão inicial |  | 3d | 2026-06-18 | 2026-06-22 | 26FS+10d |  |  | 2026-06-18 | 2026-06-22 | 3d | 1d | 0d |  |
| 32 | 1.1.5.2.2 | Análise Tecnored |  | 1d | 2026-06-23 | 2026-06-23 | 31 |  |  | 2026-06-23 | 2026-06-23 | 1d | 8d | 0d |  |
| 33 | 1.1.5.2.3 | Atendimento de comentários |  | 2d | 2026-06-24 | 2026-06-25 | 32 |  |  | 2026-06-24 | 2026-06-25 | 2d | 8d | 0d |  |
| 34 | 1.1.5.2.4 | Aprovação |  | 1d | 2026-06-26 | 2026-06-26 | 33 |  |  | 2026-06-26 | 2026-06-26 | 1d | 8d |  |  |
| 35 | 1.1.5.3 | **RL-F0009-0306-MB-G-00001** |  | 6d | 2026-06-30 | 2026-07-07 |  |  |  | 2026-06-30 | 2026-07-07 | 6d | 1d |  |  |
| 36 | 1.1.5.3.1 | Emissão inicial |  | 2d | 2026-06-30 | 2026-07-01 | 31FS+5d |  |  | 2026-06-30 | 2026-07-01 | 2d | 1d | 0d |  |
| 37 | 1.1.5.3.2 | Análise Tecnored |  | 1d | 2026-07-02 | 2026-07-02 | 36 |  |  | 2026-07-02 | 2026-07-02 | 1d | 1d | 0d |  |
| 38 | 1.1.5.3.3 | Atendimento de comentários |  | 2d | 2026-07-03 | 2026-07-06 | 37 |  |  | 2026-07-03 | 2026-07-06 | 2d | 1d | 0d |  |
| 39 | 1.1.5.3.4 | Aprovação |  | 1d | 2026-07-07 | 2026-07-07 | 38 |  |  | 2026-07-07 | 2026-07-07 | 1d | 1d |  |  |
| 40 | 1.1.5.4 | **LP-F0009-0306-MB-G-00001** |  | 47d | 2026-04-27 A | 2026-06-30 |  | 43% | 26.86d | 2026-04-27 | 2026-06-30 | 47d | 6d |  |  |
| 41 | 1.1.5.4.1 | Emissão inicial |  | 3d | 2026-04-27 A | 2026-04-29 A | 3 | 100% |  | 2026-04-27 | 2026-04-29 | 3d |  |  |  |
| 42 | 1.1.5.4.2 | Análise Tecnored |  | 1d | 2026-06-11 | 2026-06-11 | 41FS+30d |  |  | 2026-06-11 | 2026-06-11 | 1d | 6d | 0d |  |
| 43 | 1.1.5.4.3 | Atendimento de comentários |  | 2d | 2026-06-26 | 2026-06-29 | 42FS+10d |  |  | 2026-06-26 | 2026-06-29 | 2d | 6d | 0d |  |
| 44 | 1.1.5.4.4 | Aprovação |  | 1d | 2026-06-30 | 2026-06-30 | 43 |  |  | 2026-06-30 | 2026-06-30 | 1d | 6d |  |  |
| 45 | 1.1.6 | **Processo** |  | 5d | 2026-06-05 A | 2026-06-11 |  | 80% | 1d | 2026-06-05 | 2026-06-11 | 5d | 19d |  |  |
| 46 | 1.1.6.1 | **CP-F0009-0306-MB-P-00001** | inactive | 27d | 2026-05-05 | 2026-06-10 |  |  |  |  |  |  | 20d |  | -0 |
| 47 | 1.1.6.1.1 | Emissão inicial | inactive | 7d | 2026-05-05 | 2026-05-13 | 20 |  |  |  |  |  | 36d | 16d | -0 |
| 48 | 1.1.6.1.2 | Análise Tecnored | inactive | 1d | 2026-06-05 | 2026-06-05 | 47, 5 |  |  |  |  |  | 20d | 0d | -0 |
| 49 | 1.1.6.1.3 | Atendimento de comentários | inactive | 2d | 2026-06-08 | 2026-06-09 | 48 |  |  |  |  |  | 20d | 0d | -0 |
| 50 | 1.1.6.1.4 | Aprovação | inactive | 1d | 2026-06-10 | 2026-06-10 | 49 |  |  |  |  |  | 20d |  | -0 |
| 51 | 1.1.6.2 | **MD-F0009-0306-MB-P-00001** | inactive | 7d | 2026-06-22 | 2026-06-30 |  |  |  |  |  |  | 6d |  | -0 |
| 52 | 1.1.6.2.1 | Emissão inicial | inactive | 3d | 2026-06-22 | 2026-06-24 | 57FS+10d |  |  |  |  |  | 6d | 0d | -0 |
| 53 | 1.1.6.2.2 | Análise Tecnored | inactive | 1d | 2026-06-25 | 2026-06-25 | 52 |  |  |  |  |  | 6d | 0d | -0 |
| 54 | 1.1.6.2.3 | Atendimento de comentários | inactive | 2d | 2026-06-26 | 2026-06-29 | 53 |  |  |  |  |  | 6d | 0d | -0 |
| 55 | 1.1.6.2.4 | Aprovação | inactive | 1d | 2026-06-30 | 2026-06-30 | 54 |  |  |  |  |  | 6d |  | -0 |

| ID | WBS | Task | Type | Duration | Start | Finish | Predecessors | Complete | Remaining | Baseline start | Baseline finish | Baseline duration | Total slack | Free slack | Baseline cost |
| --- | --- | --- | --- | --- | --- | --- | --- | --- | --- | --- | --- | --- | --- | --- | --- |
| 56 | 1.1.6.3 | **FG-F0009-0306-MB-P-00001** |  | 5d | 2026-06-05 A | 2026-06-11 |  | 80% | 1d | 2026-06-05 | 2026-06-11 | 5d | 19d |  |  |
| 57 | 1.1.6.3.1 | Emissão inicial |  | 1d | 2026-06-05 A | 2026-06-05 A | 47, 5 | 100% |  | 2026-06-05 | 2026-06-05 | 1d |  |  |  |
| 58 | 1.1.6.3.2 | Análise Tecnored |  | 1d | 2026-06-08 A | 2026-06-08 A | 57 | 100% |  | 2026-06-08 | 2026-06-08 | 1d |  |  |  |
| 59 | 1.1.6.3.3 | Atendimento de comentários |  | 2d | 2026-06-09 A | 2026-06-10 A | 58 | 100% |  | 2026-06-09 | 2026-06-10 | 2d |  |  |  |
| 60 | 1.1.6.3.4 | Aprovação |  | 1d | 2026-06-11 | 2026-06-11 | 59 |  |  | 2026-06-11 | 2026-06-11 | 1d | 19d |  |  |
| 61 | 1.1.7 | **Mecânica** |  | 26d | 2026-05-26 A | 2026-06-30 |  | 7% | 24.27d | 2026-05-26 | 2026-06-30 | 26d | 6d |  |  |
| 62 | 1.1.7.1 | **CP-F0009-0306-MB-M-00001** | inactive | 14d | 2026-05-05 | 2026-05-22 |  |  |  |  |  |  | 0d |  | -0 |
| 63 | 1.1.7.1.1 | Emissão inicial | inactive | 7d | 2026-05-05 | 2026-05-13 | 20 |  |  |  |  |  | 0d |  | -0 |
| 64 | 1.1.7.1.2 | Análise Tecnored | inactive | 1d | 2026-05-19 | 2026-05-19 | 63, 6 |  |  |  |  |  | 33d | 0d | -0 |
| 65 | 1.1.7.1.3 | Atendimento de comentários | inactive | 2d | 2026-05-20 | 2026-05-21 | 64 |  |  |  |  |  | 33d | 0d | -0 |
| 66 | 1.1.7.1.4 | Aprovação | inactive | 1d | 2026-05-22 | 2026-05-22 | 65 |  |  |  |  |  | 33d |  | -0 |
| 67 | 1.1.7.2 | **MD-F0009-0306-MB-M-00001** | inactive | 7d | 2026-06-02 | 2026-06-10 |  |  |  |  |  |  | -13d | 0d | -0 |
| 68 | 1.1.7.2.1 | Emissão inicial | inactive | 3d | 2026-06-02 | 2026-06-04 | 63, 75, 6 |  |  |  |  |  | -13d | 0d | -0 |
| 69 | 1.1.7.2.2 | Análise Tecnored | inactive | 1d | 2026-06-05 | 2026-06-05 | 68 |  |  |  |  |  | 20d | 0d | -0 |
| 70 | 1.1.7.2.3 | Atendimento de comentários | inactive | 2d | 2026-06-08 | 2026-06-09 | 69 |  |  |  |  |  | 20d | 0d | -0 |
| 71 | 1.1.7.2.4 | Aprovação | inactive | 1d | 2026-06-10 | 2026-06-10 | 70 |  |  |  |  |  | 20d |  | -0 |
| 72 | 1.1.7.3 | **LE-F0009-0306-MB-M-00001** |  | 6d | 2026-05-26 A | 2026-06-02 |  | 33% | 4d | 2026-05-26 | 2026-06-02 | 6d | 26d |  |  |
| 73 | 1.1.7.3.1 | Emissão inicial |  | 2d | 2026-05-26 A | 2026-05-27 A | 63, 6FS+5d | 100% |  | 2026-05-26 | 2026-05-27 | 2d |  |  |  |
| 74 | 1.1.7.3.2 | Análise Tecnored |  | 1d | 2026-05-28 | 2026-05-28 | 73 |  |  | 2026-05-28 | 2026-05-28 | 1d | -10d | 0d |  |
| 75 | 1.1.7.3.3 | Atendimento de comentários |  | 2d | 2026-05-29 | 2026-06-01 | 74 |  |  | 2026-05-29 | 2026-06-01 | 2d | -10d | 0d |  |
| 76 | 1.1.7.3.4 | Aprovação |  | 1d | 2026-06-02 | 2026-06-02 | 75 |  |  | 2026-06-02 | 2026-06-02 | 1d | 26d |  |  |
| 77 | 1.1.7.4 | **PQ-F0009-0306-MB-M-00001** |  | 7d | 2026-06-02 | 2026-06-10 |  |  |  | 2026-06-02 | 2026-06-10 | 7d | 20d |  |  |
| 78 | 1.1.7.4.1 | Emissão inicial |  | 3d | 2026-06-02 | 2026-06-04 | 68FS+30d |  |  | 2026-06-02 | 2026-06-04 | 3d | 20d | 0d |  |
| 79 | 1.1.7.4.2 | Análise Tecnored |  | 1d | 2026-06-05 | 2026-06-05 | 78 |  |  | 2026-06-05 | 2026-06-05 | 1d | 20d | 0d |  |
| 80 | 1.1.7.4.3 | Atendimento de comentários |  | 2d | 2026-06-08 | 2026-06-09 | 79 |  |  | 2026-06-08 | 2026-06-09 | 2d | 20d | 0d |  |
| 81 | 1.1.7.4.4 | Aprovação |  | 1d | 2026-06-10 | 2026-06-10 | 80 |  |  | 2026-06-10 | 2026-06-10 | 1d | 20d |  |  |

| ID | WBS | Task | Duration | Start | Finish | Predecessors | Baseline start | Baseline finish | Baseline duration | Total slack | Free slack |
| --- | --- | --- | --- | --- | --- | --- | --- | --- | --- | --- | --- |
| 82 | 1.1.7.5 | **AG-F0009-0306-MB-L-00001** | 9d | 2026-06-18 | 2026-06-30 |  | 2026-06-18 | 2026-06-30 | 9d | 6d |  |
| 83 | 1.1.7.5.1 | Emissão inicial | 5d | 2026-06-18 | 2026-06-24 | 230 | 2026-06-18 | 2026-06-24 | 5d | 6d | 0d |
| 84 | 1.1.7.5.2 | Análise Tecnored | 1d | 2026-06-25 | 2026-06-25 | 83 | 2026-06-25 | 2026-06-25 | 1d | 6d | 0d |
| 85 | 1.1.7.5.3 | Atendimento de comentários | 2d | 2026-06-26 | 2026-06-29 | 84 | 2026-06-26 | 2026-06-29 | 2d | 6d | 0d |
| 86 | 1.1.7.5.4 | Aprovação | 1d | 2026-06-30 | 2026-06-30 | 85 | 2026-06-30 | 2026-06-30 | 1d | 6d |  |
| 87 | 1.1.7.6 | **AG-F0009-0306-MB-L-00002** | 9d | 2026-06-18 | 2026-06-30 |  | 2026-06-18 | 2026-06-30 | 9d | 6d |  |
| 88 | 1.1.7.6.1 | Emissão inicial | 5d | 2026-06-18 | 2026-06-24 | 230 | 2026-06-18 | 2026-06-24 | 5d | 6d | 0d |
| 89 | 1.1.7.6.2 | Análise Tecnored | 1d | 2026-06-25 | 2026-06-25 | 88 | 2026-06-25 | 2026-06-25 | 1d | 6d | 0d |
| 90 | 1.1.7.6.3 | Atendimento de comentários | 2d | 2026-06-26 | 2026-06-29 | 89 | 2026-06-26 | 2026-06-29 | 2d | 6d | 0d |
| 91 | 1.1.7.6.4 | Aprovação | 1d | 2026-06-30 | 2026-06-30 | 90 | 2026-06-30 | 2026-06-30 | 1d | 6d |  |
| 92 | 1.1.7.7 | **AG-F0009-0306-MB-L-00003** | 9d | 2026-06-18 | 2026-06-30 |  | 2026-06-18 | 2026-06-30 | 9d | 6d |  |
| 93 | 1.1.7.7.1 | Emissão inicial | 5d | 2026-06-18 | 2026-06-24 | 230 | 2026-06-18 | 2026-06-24 | 5d | 6d | 0d |
| 94 | 1.1.7.7.2 | Análise Tecnored | 1d | 2026-06-25 | 2026-06-25 | 93 | 2026-06-25 | 2026-06-25 | 1d | 6d | 0d |
| 95 | 1.1.7.7.3 | Atendimento de comentários | 2d | 2026-06-26 | 2026-06-29 | 94 | 2026-06-26 | 2026-06-29 | 2d | 6d | 0d |
| 96 | 1.1.7.7.4 | Aprovação | 1d | 2026-06-30 | 2026-06-30 | 95 | 2026-06-30 | 2026-06-30 | 1d | 6d |  |
| 97 | 1.1.7.8 | **AG-F0009-0306-MB-L-00004** | 9d | 2026-06-18 | 2026-06-30 |  | 2026-06-18 | 2026-06-30 | 9d | 6d |  |
| 98 | 1.1.7.8.1 | Emissão inicial | 5d | 2026-06-18 | 2026-06-24 | 230 | 2026-06-18 | 2026-06-24 | 5d | 6d | 0d |
| 99 | 1.1.7.8.2 | Análise Tecnored | 1d | 2026-06-25 | 2026-06-25 | 98 | 2026-06-25 | 2026-06-25 | 1d | 6d | 0d |
| 100 | 1.1.7.8.3 | Atendimento de comentários | 2d | 2026-06-26 | 2026-06-29 | 99 | 2026-06-26 | 2026-06-29 | 2d | 6d | 0d |
| 101 | 1.1.7.8.4 | Aprovação | 1d | 2026-06-30 | 2026-06-30 | 100 | 2026-06-30 | 2026-06-30 | 1d | 6d |  |
| 102 | 1.1.7.9 | **PL-F0009-0306-MB-M-00001** | 12d | 2026-06-03 | 2026-06-18 |  | 2026-06-03 | 2026-06-18 | 12d | 14d |  |
| 103 | 1.1.7.9.1 | Emissão inicial | 8d | 2026-06-03 | 2026-06-12 | 119 | 2026-06-03 | 2026-06-12 | 8d | 14d | 0d |
| 104 | 1.1.7.9.2 | Análise Tecnored | 1d | 2026-06-15 | 2026-06-15 | 103 | 2026-06-15 | 2026-06-15 | 1d | 14d | 0d |
| 105 | 1.1.7.9.3 | Atendimento de comentários | 2d | 2026-06-16 | 2026-06-17 | 104 | 2026-06-16 | 2026-06-17 | 2d | 14d | 0d |
| 106 | 1.1.7.9.4 | Aprovação | 1d | 2026-06-18 | 2026-06-18 | 105 | 2026-06-18 | 2026-06-18 | 1d | 14d |  |

| ID | WBS | Task | Duration | Start | Finish | Predecessors | Complete | Remaining | Baseline start | Baseline finish | Baseline duration | Total slack | Free slack |
| --- | --- | --- | --- | --- | --- | --- | --- | --- | --- | --- | --- | --- | --- |
| 107 | 1.1.7.10 | **PL-F0009-0306-MB-M-00002** | 12d | 2026-06-03 | 2026-06-18 |  |  |  | 2026-06-03 | 2026-06-18 | 12d | 14d |  |
| 108 | 1.1.7.10.1 | Emissão inicial | 8d | 2026-06-03 | 2026-06-12 | 119 |  |  | 2026-06-03 | 2026-06-12 | 8d | 14d | 0d |
| 109 | 1.1.7.10.2 | Análise Tecnored | 1d | 2026-06-15 | 2026-06-15 | 108 |  |  | 2026-06-15 | 2026-06-15 | 1d | 14d | 0d |
| 110 | 1.1.7.10.3 | Atendimento de comentários | 2d | 2026-06-16 | 2026-06-17 | 109 |  |  | 2026-06-16 | 2026-06-17 | 2d | 14d | 0d |
| 111 | 1.1.7.10.4 | Aprovação | 1d | 2026-06-18 | 2026-06-18 | 110 |  |  | 2026-06-18 | 2026-06-18 | 1d | 14d |  |
| 112 | 1.1.7.11 | **MC-F0009-0306-MB-M-00001** | 9d | 2026-06-03 | 2026-06-15 |  |  |  | 2026-06-03 | 2026-06-15 | 9d | 1d |  |
| 113 | 1.1.7.11.1 | Emissão inicial | 5d | 2026-06-03 | 2026-06-09 | 119 |  |  | 2026-06-03 | 2026-06-09 | 5d | 1d | 0d |
| 114 | 1.1.7.11.2 | Análise Tecnored | 1d | 2026-06-10 | 2026-06-10 | 113 |  |  | 2026-06-10 | 2026-06-10 | 1d | 1d | 0d |
| 115 | 1.1.7.11.3 | Atendimento de comentários | 2d | 2026-06-11 | 2026-06-12 | 114 |  |  | 2026-06-11 | 2026-06-12 | 2d | 17d | 0d |
| 116 | 1.1.7.11.4 | Aprovação | 1d | 2026-06-15 | 2026-06-15 | 115 |  |  | 2026-06-15 | 2026-06-15 | 1d | 17d |  |
| 117 | 1.1.7.12 | **ML-F0009-0306-MB-M-00001** | 9d | 2026-05-26 A | 2026-06-05 |  | 56% | 4d | 2026-05-26 | 2026-06-05 | 9d | 23d |  |
| 118 | 1.1.7.12.1 | Emissão inicial | 5d | 2026-05-26 A | 2026-06-01 A | 63, 6FS+5d | 100% |  | 2026-05-26 | 2026-06-01 | 5d |  |  |
| 119 | 1.1.7.12.2 | Análise Tecnored | 1d | 2026-06-02 | 2026-06-02 | 118 |  |  | 2026-06-02 | 2026-06-02 | 1d | 1d | 0d |
| 120 | 1.1.7.12.3 | Atendimento de comentários | 2d | 2026-06-03 | 2026-06-04 | 119 |  |  | 2026-06-03 | 2026-06-04 | 2d | 6d | 0d |
| 121 | 1.1.7.12.4 | Aprovação | 1d | 2026-06-05 | 2026-06-05 | 120 |  |  | 2026-06-05 | 2026-06-05 | 1d | 23d |  |
| 122 | 1.1.7.13 | **FD-F0009-0306-MB-M-00001** | 7d | 2026-06-10 | 2026-06-18 |  |  |  | 2026-06-10 | 2026-06-18 | 7d | 14d |  |
| 123 | 1.1.7.13.1 | Emissão inicial | 3d | 2026-06-10 | 2026-06-12 | 113 |  |  | 2026-06-10 | 2026-06-12 | 3d | 14d | 0d |
| 124 | 1.1.7.13.2 | Análise Tecnored | 1d | 2026-06-15 | 2026-06-15 | 123 |  |  | 2026-06-15 | 2026-06-15 | 1d | 14d | 0d |
| 125 | 1.1.7.13.3 | Atendimento de comentários | 2d | 2026-06-16 | 2026-06-17 | 124 |  |  | 2026-06-16 | 2026-06-17 | 2d | 14d | 0d |
| 126 | 1.1.7.13.4 | Aprovação | 1d | 2026-06-18 | 2026-06-18 | 125 |  |  | 2026-06-18 | 2026-06-18 | 1d | 14d |  |
| 127 | 1.1.7.14 | **FD-F0009-0306-MB-M-00002** | 7d | 2026-06-10 | 2026-06-18 |  |  |  | 2026-06-10 | 2026-06-18 | 7d | 14d |  |
| 128 | 1.1.7.14.1 | Emissão inicial | 3d | 2026-06-10 | 2026-06-12 | 113 |  |  | 2026-06-10 | 2026-06-12 | 3d | 14d | 0d |
| 129 | 1.1.7.14.2 | Análise Tecnored | 1d | 2026-06-15 | 2026-06-15 | 128 |  |  | 2026-06-15 | 2026-06-15 | 1d | 14d | 0d |
| 130 | 1.1.7.14.3 | Atendimento de comentários | 2d | 2026-06-16 | 2026-06-17 | 129 |  |  | 2026-06-16 | 2026-06-17 | 2d | 14d | 0d |
| 131 | 1.1.7.14.4 | Aprovação | 1d | 2026-06-18 | 2026-06-18 | 130 |  |  | 2026-06-18 | 2026-06-18 | 1d | 14d |  |

| ID | WBS | Task | Type | Duration | Start | Finish | Predecessors | Baseline start | Baseline finish | Baseline duration | Total slack | Free slack | Baseline cost |
| --- | --- | --- | --- | --- | --- | --- | --- | --- | --- | --- | --- | --- | --- |
| 132 | 1.1.8 | **Tubulação/Utilidades** |  | 18d | 2026-06-11 | 2026-07-06 |  | 2026-06-02 | 2026-06-29 | 20d | 2d |  |  |
| 133 | 1.1.8.1 | **CP-F0009-0306-MB-T-00001** | inactive | 17d | 2026-05-05 | 2026-05-27 |  |  |  |  | 30d |  | -0 |
| 134 | 1.1.8.1.1 | Emissão inicial | inactive | 7d | 2026-05-05 | 2026-05-13 | 20 |  |  |  | 36d | 6d | -0 |
| 135 | 1.1.8.1.2 | Análise Tecnored | inactive | 1d | 2026-05-22 | 2026-05-22 | 134, 9 |  |  |  | 30d | 0d | -0 |
| 136 | 1.1.8.1.3 | Atendimento de comentários | inactive | 2d | 2026-05-25 | 2026-05-26 | 135 |  |  |  | 30d | 0d | -0 |
| 137 | 1.1.8.1.4 | Aprovação | inactive | 1d | 2026-05-27 | 2026-05-27 | 136 |  |  |  | 30d |  | -0 |
| 138 | 1.1.8.2 | **MD-F0009-0306-MB-U-00001** | inactive | 7d | 2026-07-03 | 2026-07-13 |  | 2026-06-16 | 2026-06-24 | 7d | -3d | 0d |  |
| 139 | 1.1.8.2.1 | Emissão inicial | inactive | 3d | 2026-07-03 | 2026-07-07 | 183 | 2026-06-16 | 2026-06-18 | 3d | -3d | 0d |  |
| 140 | 1.1.8.2.2 | Análise Tecnored | inactive | 1d | 2026-07-08 | 2026-07-08 | 139 | 2026-06-19 | 2026-06-19 | 1d | -3d | 0d |  |
| 141 | 1.1.8.2.3 | Atendimento de comentários | inactive | 2d | 2026-07-09 | 2026-07-10 | 140 | 2026-06-22 | 2026-06-23 | 2d | -3d | 0d |  |
| 142 | 1.1.8.2.4 | Aprovação | inactive | 1d | 2026-07-13 | 2026-07-13 | 141 | 2026-06-24 | 2026-06-24 | 1d | -3d | 0d |  |
| 143 | 1.1.8.3 | **ML-F0009-0306-MB-T-00001** |  | 7d | 2026-06-15 | 2026-06-23 |  | 2026-06-02 | 2026-06-10 | 7d | 4d |  |  |
| 144 | 1.1.8.3.1 | Emissão inicial |  | 3d | 2026-06-15 | 2026-06-17 | 118FS+9d | 2026-06-02 | 2026-06-04 | 3d | 4d | 0d |  |
| 145 | 1.1.8.3.2 | Análise Tecnored |  | 1d | 2026-06-18 | 2026-06-18 | 144 | 2026-06-05 | 2026-06-05 | 1d | 4d | 0d |  |
| 146 | 1.1.8.3.3 | Atendimento de comentários |  | 2d | 2026-06-19 | 2026-06-22 | 145 | 2026-06-08 | 2026-06-09 | 2d | 4d | 0d |  |
| 147 | 1.1.8.3.4 | Aprovação |  | 1d | 2026-06-23 | 2026-06-23 | 146 | 2026-06-10 | 2026-06-10 | 1d | 4d | 0d |  |
| 148 | 1.1.8.4 | **ET-F0009-0306-MB-T-00001** | inactive | 7d | 2026-06-25 | 2026-07-03 |  | 2026-06-10 | 2026-06-18 | 7d | 3d |  |  |
| 149 | 1.1.8.4.1 | Emissão inicial | inactive | 3d | 2026-06-25 | 2026-06-29 | 154 | 2026-06-10 | 2026-06-12 | 3d | 3d | 0d |  |
| 150 | 1.1.8.4.2 | Análise Tecnored | inactive | 1d | 2026-06-30 | 2026-06-30 | 149 | 2026-06-15 | 2026-06-15 | 1d | 3d | 0d |  |
| 151 | 1.1.8.4.3 | Atendimento de comentários | inactive | 2d | 2026-07-01 | 2026-07-02 | 150 | 2026-06-16 | 2026-06-17 | 2d | 3d | 0d |  |
| 152 | 1.1.8.4.4 | Aprovação | inactive | 1d | 2026-07-03 | 2026-07-03 | 151 | 2026-06-18 | 2026-06-18 | 1d | 3d |  |  |
| 153 | 1.1.8.5 | **FD-F0009-0306-MB-T-00001** |  | 7d | 2026-06-22 | 2026-06-30 |  | 2026-06-05 | 2026-06-15 | 7d | 6d |  |  |
| 154 | 1.1.8.5.1 | Emissão inicial |  | 3d | 2026-06-22 | 2026-06-24 | 169, 57FS+3d | 2026-06-05 | 2026-06-09 | 3d | 6d | 0d |  |
| 155 | 1.1.8.5.2 | Análise Tecnored |  | 1d | 2026-06-25 | 2026-06-25 | 154 | 2026-06-10 | 2026-06-10 | 1d | 6d | 0d |  |
| 156 | 1.1.8.5.3 | Atendimento de comentários |  | 2d | 2026-06-26 | 2026-06-29 | 155 | 2026-06-11 | 2026-06-12 | 2d | 6d | 0d |  |
| 157 | 1.1.8.5.4 | Aprovação |  | 1d | 2026-06-30 | 2026-06-30 | 156 | 2026-06-15 | 2026-06-15 | 1d | 6d |  |  |

| ID | WBS | Task | Type | Duration | Start | Finish | Predecessors | Baseline start | Baseline finish | Baseline duration | Total slack | Free slack |
| --- | --- | --- | --- | --- | --- | --- | --- | --- | --- | --- | --- | --- |
| 158 | 1.1.8.6 | **FD-F0009-0306-MB-T-00002** | inactive | 7d | 2026-06-22 | 2026-06-30 |  | 2026-06-05 | 2026-06-15 | 7d | 6d |  |
| 159 | 1.1.8.6.1 | Emissão inicial | inactive | 3d | 2026-06-22 | 2026-06-24 | 169 | 2026-06-05 | 2026-06-09 | 3d | 6d | 0d |
| 160 | 1.1.8.6.2 | Análise Tecnored | inactive | 1d | 2026-06-25 | 2026-06-25 | 159 | 2026-06-10 | 2026-06-10 | 1d | 6d | 0d |
| 161 | 1.1.8.6.3 | Atendimento de comentários | inactive | 2d | 2026-06-26 | 2026-06-29 | 160 | 2026-06-11 | 2026-06-12 | 2d | 6d | 0d |
| 162 | 1.1.8.6.4 | Aprovação | inactive | 1d | 2026-06-30 | 2026-06-30 | 161 | 2026-06-15 | 2026-06-15 | 1d | 6d |  |
| 163 | 1.1.8.7 | **PQ-F0009-0306-MB-T-00001** |  | 7d | 2026-06-23 | 2026-07-01 |  | 2026-06-19 | 2026-06-29 | 7d | 5d |  |
| 164 | 1.1.8.7.1 | Emissão inicial |  | 3d | 2026-06-23 | 2026-06-25 | 170 | 2026-06-19 | 2026-06-23 | 3d | 5d | 0d |
| 165 | 1.1.8.7.2 | Análise Tecnored |  | 1d | 2026-06-26 | 2026-06-26 | 164 | 2026-06-24 | 2026-06-24 | 1d | 5d | 0d |
| 166 | 1.1.8.7.3 | Atendimento de comentários |  | 2d | 2026-06-29 | 2026-06-30 | 165 | 2026-06-25 | 2026-06-26 | 2d | 5d | 0d |
| 167 | 1.1.8.7.4 | Aprovação |  | 1d | 2026-07-01 | 2026-07-01 | 166 | 2026-06-29 | 2026-06-29 | 1d | 5d |  |
| 168 | 1.1.8.8 | **MC-F0009-0306-MB-T-00001** |  | 7d | 2026-06-17 | 2026-06-25 |  | 2026-06-02 | 2026-06-10 | 7d | 2d |  |
| 169 | 1.1.8.8.1 | Emissão inicial |  | 3d | 2026-06-17 | 2026-06-19 | 118, 175 | 2026-06-02 | 2026-06-04 | 3d | 2d | 0d |
| 170 | 1.1.8.8.2 | Análise Tecnored |  | 1d | 2026-06-22 | 2026-06-22 | 169 | 2026-06-05 | 2026-06-05 | 1d | 2d | 0d |
| 171 | 1.1.8.8.3 | Atendimento de comentários |  | 2d | 2026-06-23 | 2026-06-24 | 170 | 2026-06-08 | 2026-06-09 | 2d | 2d | 0d |
| 172 | 1.1.8.8.4 | Aprovação |  | 1d | 2026-06-25 | 2026-06-25 | 171 | 2026-06-10 | 2026-06-10 | 1d | 2d | 0d |
| 173 | 1.1.8.9 | **FG-F0009-0306-MB-T-00001** |  | 7d | 2026-06-11 | 2026-06-19 |  | 2026-06-08 | 2026-06-25 | 14d | 2d |  |
| 174 | 1.1.8.9.1 | Emissão inicial |  | 3d | 2026-06-11 | 2026-06-15 | 57FS+3d | 2026-06-08 | 2026-06-19 | 10d | 2d | 0d |
| 175 | 1.1.8.9.2 | Análise Tecnored |  | 1d | 2026-06-16 | 2026-06-16 | 174 | 2026-06-22 | 2026-06-22 | 1d | 2d | 0d |
| 176 | 1.1.8.9.3 | Atendimento de comentários |  | 2d | 2026-06-17 | 2026-06-18 | 175 | 2026-06-23 | 2026-06-24 | 2d | 13d | 0d |
| 177 | 1.1.8.9.4 | Aprovação |  | 1d | 2026-06-19 | 2026-06-19 | 176 | 2026-06-25 | 2026-06-25 | 1d | 13d |  |
| 178 | 1.1.8.10 | **FG-F0009-0306-MB-T-00002** | inactive | 14d | 2026-06-08 | 2026-06-25 |  | 2026-06-08 | 2026-06-25 | 14d | 9d |  |
| 179 | 1.1.8.10.1 | Emissão inicial | inactive | 10d | 2026-06-08 | 2026-06-19 | 57 | 2026-06-08 | 2026-06-19 | 10d | 9d | 0d |
| 180 | 1.1.8.10.2 | Análise Tecnored | inactive | 1d | 2026-06-22 | 2026-06-22 | 179 | 2026-06-22 | 2026-06-22 | 1d | 9d | 0d |
| 181 | 1.1.8.10.3 | Atendimento de comentários | inactive | 2d | 2026-06-23 | 2026-06-24 | 180 | 2026-06-23 | 2026-06-24 | 2d | 9d | 0d |
| 182 | 1.1.8.10.4 | Aprovação | inactive | 1d | 2026-06-25 | 2026-06-25 | 181 | 2026-06-25 | 2026-06-25 | 1d | 9d |  |

| ID | WBS | Task | Type | Duration | Start | Finish | Predecessors | Baseline start | Baseline finish | Baseline duration | Total slack | Free slack |
| --- | --- | --- | --- | --- | --- | --- | --- | --- | --- | --- | --- | --- |
| 183 | 1.1.8.11 | **AG-F0009-0306-MB-T-00001** |  | 7d | 2026-06-24 | 2026-07-02 |  | 2026-06-05 | 2026-06-15 | 7d | 4d | 0d |
| 184 | 1.1.8.11.1 | Emissão inicial |  | 3d | 2026-06-24 | 2026-06-26 | 147 | 2026-06-05 | 2026-06-09 | 3d | 4d | 0d |
| 185 | 1.1.8.11.2 | Análise Tecnored |  | 1d | 2026-06-29 | 2026-06-29 | 184 | 2026-06-10 | 2026-06-10 | 1d | 4d | 0d |
| 186 | 1.1.8.11.3 | Atendimento de comentários |  | 2d | 2026-06-30 | 2026-07-01 | 185 | 2026-06-11 | 2026-06-12 | 2d | 4d | 0d |
| 187 | 1.1.8.11.4 | Aprovação |  | 1d | 2026-07-02 | 2026-07-02 | 186 | 2026-06-15 | 2026-06-15 | 1d | 4d |  |
| 188 | 1.1.8.12 | **AG-F0009-0306-MB-T-00002** |  | 7d | 2026-06-24 | 2026-07-02 |  | 2026-06-05 | 2026-06-15 | 7d | 4d |  |
| 189 | 1.1.8.12.1 | Emissão inicial |  | 3d | 2026-06-24 | 2026-06-26 | 147 | 2026-06-05 | 2026-06-09 | 3d | 4d | 0d |
| 190 | 1.1.8.12.2 | Análise Tecnored |  | 1d | 2026-06-29 | 2026-06-29 | 189 | 2026-06-10 | 2026-06-10 | 1d | 4d | 0d |
| 191 | 1.1.8.12.3 | Atendimento de comentários |  | 2d | 2026-06-30 | 2026-07-01 | 190 | 2026-06-11 | 2026-06-12 | 2d | 4d | 0d |
| 192 | 1.1.8.12.4 | Aprovação |  | 1d | 2026-07-02 | 2026-07-02 | 191 | 2026-06-15 | 2026-06-15 | 1d | 4d |  |
| 193 | 1.1.8.13 | **AG-F0009-0306-MB-T-00003** |  | 7d | 2026-06-24 | 2026-07-02 |  | 2026-06-05 | 2026-06-15 | 7d | 4d |  |
| 194 | 1.1.8.13.1 | Emissão inicial |  | 3d | 2026-06-24 | 2026-06-26 | 147 | 2026-06-05 | 2026-06-09 | 3d | 4d | 0d |
| 195 | 1.1.8.13.2 | Análise Tecnored |  | 1d | 2026-06-29 | 2026-06-29 | 194 | 2026-06-10 | 2026-06-10 | 1d | 4d | 0d |
| 196 | 1.1.8.13.3 | Atendimento de comentários |  | 2d | 2026-06-30 | 2026-07-01 | 195 | 2026-06-11 | 2026-06-12 | 2d | 4d | 0d |
| 197 | 1.1.8.13.4 | Aprovação |  | 1d | 2026-07-02 | 2026-07-02 | 196 | 2026-06-15 | 2026-06-15 | 1d | 4d |  |
| 198 | 1.1.8.14 | **AG-F0009-0306-MB-T-00004** | inactive | 7d | 2026-06-05 | 2026-06-15 |  | 2026-06-05 | 2026-06-15 | 7d | 17d |  |
| 199 | 1.1.8.14.1 | Emissão inicial | inactive | 3d | 2026-06-05 | 2026-06-09 | 120 | 2026-06-05 | 2026-06-09 | 3d | 17d | 0d |
| 200 | 1.1.8.14.2 | Análise Tecnored | inactive | 1d | 2026-06-10 | 2026-06-10 | 199 | 2026-06-10 | 2026-06-10 | 1d | 17d | 0d |
| 201 | 1.1.8.14.3 | Atendimento de comentários | inactive | 2d | 2026-06-11 | 2026-06-12 | 200 | 2026-06-11 | 2026-06-12 | 2d | 17d | 0d |
| 202 | 1.1.8.14.4 | Aprovação | inactive | 1d | 2026-06-15 | 2026-06-15 | 201 | 2026-06-15 | 2026-06-15 | 1d | 17d |  |
| 203 | 1.1.8.15 | **AG-F0009-0306-MB-T-00005** | inactive | 7d | 2026-06-05 | 2026-06-15 |  | 2026-06-05 | 2026-06-15 | 7d | 17d |  |
| 204 | 1.1.8.15.1 | Emissão inicial | inactive | 3d | 2026-06-05 | 2026-06-09 | 120 | 2026-06-05 | 2026-06-09 | 3d | 17d | 0d |
| 205 | 1.1.8.15.2 | Análise Tecnored | inactive | 1d | 2026-06-10 | 2026-06-10 | 204 | 2026-06-10 | 2026-06-10 | 1d | 17d | 0d |
| 206 | 1.1.8.15.3 | Atendimento de comentários | inactive | 2d | 2026-06-11 | 2026-06-12 | 205 | 2026-06-11 | 2026-06-12 | 2d | 17d | 0d |
| 207 | 1.1.8.15.4 | Aprovação | inactive | 1d | 2026-06-15 | 2026-06-15 | 206 | 2026-06-15 | 2026-06-15 | 1d | 17d |  |

| ID | WBS | Task | Type | Duration | Start | Finish | Predecessors | Baseline start | Baseline finish | Baseline duration | Total slack | Free slack | Baseline cost |
| --- | --- | --- | --- | --- | --- | --- | --- | --- | --- | --- | --- | --- | --- |
| 208 | 1.1.8.16 | **AG-F0009-0306-MB-T-00006** | inactive | 7d | 2026-06-05 | 2026-06-15 |  | 2026-06-05 | 2026-06-15 | 7d | 17d |  |  |
| 209 | 1.1.8.16.1 | Emissão inicial | inactive | 3d | 2026-06-05 | 2026-06-09 | 120 | 2026-06-05 | 2026-06-09 | 3d | 17d | 0d |  |
| 210 | 1.1.8.16.2 | Análise Tecnored | inactive | 1d | 2026-06-10 | 2026-06-10 | 209 | 2026-06-10 | 2026-06-10 | 1d | 17d | 0d |  |
| 211 | 1.1.8.16.3 | Atendimento de comentários | inactive | 2d | 2026-06-11 | 2026-06-12 | 210 | 2026-06-11 | 2026-06-12 | 2d | 17d | 0d |  |
| 212 | 1.1.8.16.4 | Aprovação | inactive | 1d | 2026-06-15 | 2026-06-15 | 211 | 2026-06-15 | 2026-06-15 | 1d | 17d |  |  |
| 213 | 1.1.8.17 | **LK-F0009-0306-MB-T-00001** |  | 7d | 2026-06-26 | 2026-07-06 |  | 2026-06-05 | 2026-06-15 | 7d | 2d |  |  |
| 214 | 1.1.8.17.1 | Emissão inicial |  | 3d | 2026-06-26 | 2026-06-30 | 172 | 2026-06-05 | 2026-06-09 | 3d | 2d | 0d |  |
| 215 | 1.1.8.17.2 | Análise Tecnored |  | 1d | 2026-07-01 | 2026-07-01 | 214 | 2026-06-10 | 2026-06-10 | 1d | 2d | 0d |  |
| 216 | 1.1.8.17.3 | Atendimento de comentários |  | 2d | 2026-07-02 | 2026-07-03 | 215 | 2026-06-11 | 2026-06-12 | 2d | 2d | 0d |  |
| 217 | 1.1.8.17.4 | Aprovação |  | 1d | 2026-07-06 | 2026-07-06 | 216 | 2026-06-15 | 2026-06-15 | 1d | 2d |  |  |
| 218 | 1.1.8.18 | **MC-F0009-0306-MB-T-00002** | inactive | 14d | 2026-06-02 | 2026-06-19 |  | 2026-06-02 | 2026-06-19 | 14d | 13d |  |  |
| 219 | 1.1.8.18.1 | Emissão inicial | inactive | 10d | 2026-06-02 | 2026-06-15 | 118 | 2026-06-02 | 2026-06-15 | 10d | 13d | 0d |  |
| 220 | 1.1.8.18.2 | Análise Tecnored | inactive | 1d | 2026-06-16 | 2026-06-16 | 219 | 2026-06-16 | 2026-06-16 | 1d | 13d | 0d |  |
| 221 | 1.1.8.18.3 | Atendimento de comentários | inactive | 2d | 2026-06-17 | 2026-06-18 | 220 | 2026-06-17 | 2026-06-18 | 2d | 13d | 0d |  |
| 222 | 1.1.8.18.4 | Aprovação | inactive | 1d | 2026-06-19 | 2026-06-19 | 221 | 2026-06-19 | 2026-06-19 | 1d | 13d |  |  |
| 223 | 1.1.9 | **Estrutura metálica** |  | 19d | 2026-06-11 | 2026-07-07 |  | 2026-06-11 | 2026-07-07 | 19d | 1d |  |  |
| 224 | 1.1.9.1 | **CP-F0009-0306-MB-S-00001** | inactive | 12d | 2026-06-05 | 2026-06-22 |  |  |  |  | 12d |  | -0 |
| 225 | 1.1.9.1.1 | Emissão inicial | inactive | 8d | 2026-06-05 | 2026-06-16 | 20, 10 |  |  |  | 12d | 0d | -0 |
| 226 | 1.1.9.1.2 | Análise Tecnored | inactive | 1d | 2026-06-17 | 2026-06-17 | 225 |  |  |  | 12d | 0d | -0 |
| 227 | 1.1.9.1.3 | Atendimento de comentários | inactive | 2d | 2026-06-18 | 2026-06-19 | 226 |  |  |  | 12d | 0d | -0 |
| 228 | 1.1.9.1.4 | Aprovação | inactive | 1d | 2026-06-22 | 2026-06-22 | 227 |  |  |  | 12d |  | -0 |
| 229 | 1.1.9.2 | **ML-F0009-0306-MB-S-00001** |  | 9d | 2026-06-11 | 2026-06-23 |  | 2026-06-11 | 2026-06-23 | 9d | 1d |  |  |
| 230 | 1.1.9.2.1 | Emissão inicial |  | 5d | 2026-06-11 | 2026-06-17 | 245FS-3d | 2026-06-11 | 2026-06-17 | 5d | 1d | 0d |  |
| 231 | 1.1.9.2.2 | Análise Tecnored |  | 1d | 2026-06-18 | 2026-06-18 | 230 | 2026-06-18 | 2026-06-18 | 1d | 1d | 0d |  |
| 232 | 1.1.9.2.3 | Atendimento de comentários |  | 2d | 2026-06-19 | 2026-06-22 | 231 | 2026-06-19 | 2026-06-22 | 2d | 1d | 0d |  |
| 233 | 1.1.9.2.4 | Aprovação |  | 1d | 2026-06-23 | 2026-06-23 | 232 | 2026-06-23 | 2026-06-23 | 1d | 1d | 0d |  |

| ID | WBS | Task | Duration | Start | Finish | Predecessors | Baseline start | Baseline finish | Baseline duration | Total slack | Free slack |
| --- | --- | --- | --- | --- | --- | --- | --- | --- | --- | --- | --- |
| 234 | 1.1.9.3 | **PQ-F0009-0306-MB-S-00001** | 7d | 2026-06-29 | 2026-07-07 |  | 2026-06-29 | 2026-07-07 | 7d | 1d |  |
| 235 | 1.1.9.3.1 | Emissão inicial | 3d | 2026-06-29 | 2026-07-01 | 240 | 2026-06-29 | 2026-07-01 | 3d | 1d | 0d |
| 236 | 1.1.9.3.2 | Análise Tecnored | 1d | 2026-07-02 | 2026-07-02 | 235 | 2026-07-02 | 2026-07-02 | 1d | 1d | 0d |
| 237 | 1.1.9.3.3 | Atendimento de comentários | 2d | 2026-07-03 | 2026-07-06 | 236 | 2026-07-03 | 2026-07-06 | 2d | 1d | 0d |
| 238 | 1.1.9.3.4 | Aprovação | 1d | 2026-07-07 | 2026-07-07 | 237 | 2026-07-07 | 2026-07-07 | 1d | 1d |  |
| 239 | 1.1.9.4 | **LM-F0009-0306-MB-S-00001** | 7d | 2026-06-24 | 2026-07-02 |  | 2026-06-24 | 2026-07-02 | 7d | 1d |  |
| 240 | 1.1.9.4.1 | Emissão inicial | 3d | 2026-06-24 | 2026-06-26 | 233 | 2026-06-24 | 2026-06-26 | 3d | 1d | 0d |
| 241 | 1.1.9.4.2 | Análise Tecnored | 1d | 2026-06-29 | 2026-06-29 | 240 | 2026-06-29 | 2026-06-29 | 1d | 4d | 0d |
| 242 | 1.1.9.4.3 | Atendimento de comentários | 2d | 2026-06-30 | 2026-07-01 | 241 | 2026-06-30 | 2026-07-01 | 2d | 4d | 0d |
| 243 | 1.1.9.4.4 | Aprovação | 1d | 2026-07-02 | 2026-07-02 | 242 | 2026-07-02 | 2026-07-02 | 1d | 4d |  |
| 244 | 1.1.9.5 | **MC-F0009-0306-MB-S-00001** | 7d | 2026-06-11 | 2026-06-19 |  | 2026-06-11 | 2026-06-19 | 7d | 1d |  |
| 245 | 1.1.9.5.1 | Emissão inicial | 3d | 2026-06-11 | 2026-06-15 | 114 | 2026-06-11 | 2026-06-15 | 3d | 1d | 0d |
| 246 | 1.1.9.5.2 | Análise Tecnored | 1d | 2026-06-16 | 2026-06-16 | 245 | 2026-06-16 | 2026-06-16 | 1d | 13d | 0d |
| 247 | 1.1.9.5.3 | Atendimento de comentários | 2d | 2026-06-17 | 2026-06-18 | 246 | 2026-06-17 | 2026-06-18 | 2d | 13d | 0d |
| 248 | 1.1.9.5.4 | Aprovação | 1d | 2026-06-19 | 2026-06-19 | 247 | 2026-06-19 | 2026-06-19 | 1d | 13d |  |
| 249 | 1.1.9.6 | **AG-F0009-0306-MB-S-00001** | 9d | 2026-06-23 | 2026-07-03 |  | 2026-06-23 | 2026-07-03 | 9d | 3d |  |
| 250 | 1.1.9.6.1 | Emissão inicial | 5d | 2026-06-23 | 2026-06-29 | 232 | 2026-06-23 | 2026-06-29 | 5d | 3d | 0d |
| 251 | 1.1.9.6.2 | Análise Tecnored | 1d | 2026-06-30 | 2026-06-30 | 250 | 2026-06-30 | 2026-06-30 | 1d | 3d | 0d |
| 252 | 1.1.9.6.3 | Atendimento de comentários | 2d | 2026-07-01 | 2026-07-02 | 251 | 2026-07-01 | 2026-07-02 | 2d | 3d | 0d |
| 253 | 1.1.9.6.4 | Aprovação | 1d | 2026-07-03 | 2026-07-03 | 252 | 2026-07-03 | 2026-07-03 | 1d | 3d |  |
| 254 | 1.1.9.7 | **AG-F0009-0306-MB-S-00002** | 9d | 2026-06-23 | 2026-07-03 |  | 2026-06-23 | 2026-07-03 | 9d | 3d |  |
| 255 | 1.1.9.7.1 | Emissão inicial | 5d | 2026-06-23 | 2026-06-29 | 232 | 2026-06-23 | 2026-06-29 | 5d | 3d | 0d |
| 256 | 1.1.9.7.2 | Análise Tecnored | 1d | 2026-06-30 | 2026-06-30 | 255 | 2026-06-30 | 2026-06-30 | 1d | 3d | 0d |
| 257 | 1.1.9.7.3 | Atendimento de comentários | 2d | 2026-07-01 | 2026-07-02 | 256 | 2026-07-01 | 2026-07-02 | 2d | 3d | 0d |
| 258 | 1.1.9.7.4 | Aprovação | 1d | 2026-07-03 | 2026-07-03 | 257 | 2026-07-03 | 2026-07-03 | 1d | 3d |  |

| ID | WBS | Task | Type | Duration | Start | Finish | Predecessors | Baseline start | Baseline finish | Baseline duration | Total slack | Free slack | Baseline cost |
| --- | --- | --- | --- | --- | --- | --- | --- | --- | --- | --- | --- | --- | --- |
| 259 | 1.1.9.8 | **AG-F0009-0306-MB-S-00003** |  | 9d | 2026-06-23 | 2026-07-03 |  | 2026-06-23 | 2026-07-03 | 9d | 3d |  |  |
| 260 | 1.1.9.8.1 | Emissão inicial |  | 5d | 2026-06-23 | 2026-06-29 | 232 | 2026-06-23 | 2026-06-29 | 5d | 3d | 0d |  |
| 261 | 1.1.9.8.2 | Análise Tecnored |  | 1d | 2026-06-30 | 2026-06-30 | 260 | 2026-06-30 | 2026-06-30 | 1d | 3d | 0d |  |
| 262 | 1.1.9.8.3 | Atendimento de comentários |  | 2d | 2026-07-01 | 2026-07-02 | 261 | 2026-07-01 | 2026-07-02 | 2d | 3d | 0d |  |
| 263 | 1.1.9.8.4 | Aprovação |  | 1d | 2026-07-03 | 2026-07-03 | 262 | 2026-07-03 | 2026-07-03 | 1d | 3d |  |  |
| 264 | 1.1.9.9 | **AG-F0009-0306-MB-S-00004** |  | 9d | 2026-06-23 | 2026-07-03 |  | 2026-06-23 | 2026-07-03 | 9d | 3d |  |  |
| 265 | 1.1.9.9.1 | Emissão inicial |  | 5d | 2026-06-23 | 2026-06-29 | 232 | 2026-06-23 | 2026-06-29 | 5d | 3d | 0d |  |
| 266 | 1.1.9.9.2 | Análise Tecnored |  | 1d | 2026-06-30 | 2026-06-30 | 265 | 2026-06-30 | 2026-06-30 | 1d | 3d | 0d |  |
| 267 | 1.1.9.9.3 | Atendimento de comentários |  | 2d | 2026-07-01 | 2026-07-02 | 266 | 2026-07-01 | 2026-07-02 | 2d | 3d | 0d |  |
| 268 | 1.1.9.9.4 | Aprovação |  | 1d | 2026-07-03 | 2026-07-03 | 267 | 2026-07-03 | 2026-07-03 | 1d | 3d |  |  |
| 269 | 1.1.9.10 | **AG-F0009-0306-MB-S-00005** |  | 9d | 2026-06-23 | 2026-07-03 |  | 2026-06-23 | 2026-07-03 | 9d | 3d |  |  |
| 270 | 1.1.9.10.1 | Emissão inicial |  | 5d | 2026-06-23 | 2026-06-29 | 232 | 2026-06-23 | 2026-06-29 | 5d | 3d | 0d |  |
| 271 | 1.1.9.10.2 | Análise Tecnored |  | 1d | 2026-06-30 | 2026-06-30 | 270 | 2026-06-30 | 2026-06-30 | 1d | 3d | 0d |  |
| 272 | 1.1.9.10.3 | Atendimento de comentários |  | 2d | 2026-07-01 | 2026-07-02 | 271 | 2026-07-01 | 2026-07-02 | 2d | 3d | 0d |  |
| 273 | 1.1.9.10.4 | Aprovação |  | 1d | 2026-07-03 | 2026-07-03 | 272 | 2026-07-03 | 2026-07-03 | 1d | 3d |  |  |
| 274 | 1.1.9.11 | **PL-F0009-0306-MB-S-00001** |  | 9d | 2026-06-23 | 2026-07-03 |  | 2026-06-23 | 2026-07-03 | 9d | 3d |  |  |
| 275 | 1.1.9.11.1 | Emissão inicial |  | 5d | 2026-06-23 | 2026-06-29 | 232 | 2026-06-23 | 2026-06-29 | 5d | 3d | 0d |  |
| 276 | 1.1.9.11.2 | Análise Tecnored |  | 1d | 2026-06-30 | 2026-06-30 | 275 | 2026-06-30 | 2026-06-30 | 1d | 3d | 0d |  |
| 277 | 1.1.9.11.3 | Atendimento de comentários |  | 2d | 2026-07-01 | 2026-07-02 | 276 | 2026-07-01 | 2026-07-02 | 2d | 3d | 0d |  |
| 278 | 1.1.9.11.4 | Aprovação |  | 1d | 2026-07-03 | 2026-07-03 | 277 | 2026-07-03 | 2026-07-03 | 1d | 3d |  |  |
| 279 | 1.1.10 | **Elétrica** |  | 28d | 2026-05-28 | 2026-07-06 |  | 2026-05-28 | 2026-07-07 | 29d | 2d |  |  |
| 280 | 1.1.10.1 | **CP-F0009-0306-MB-E-00001** | inactive | 27d | 2026-05-05 | 2026-06-10 |  |  |  |  | 20d |  | -0 |
| 281 | 1.1.10.1.1 | Emissão inicial | inactive | 7d | 2026-05-05 | 2026-05-13 | 20 |  |  |  | 36d | 16d | -0 |
| 282 | 1.1.10.1.2 | Análise Tecnored | inactive | 1d | 2026-06-05 | 2026-06-05 | 281, 7 |  |  |  | 20d | 0d | -0 |
| 283 | 1.1.10.1.3 | Atendimento de comentários | inactive | 2d | 2026-06-08 | 2026-06-09 | 282 |  |  |  | 20d | 0d | -0 |
| 284 | 1.1.10.1.4 | Aprovação | inactive | 1d | 2026-06-10 | 2026-06-10 | 283 |  |  |  | 20d |  | -0 |

| ID | WBS | Task | Duration | Start | Finish | Predecessors | Baseline start | Baseline finish | Baseline duration | Total slack | Free slack |
| --- | --- | --- | --- | --- | --- | --- | --- | --- | --- | --- | --- |
| 285 | 1.1.10.2 | **ML-F0009-0306-MB-E-00001** | 9d | 2026-06-05 | 2026-06-17 |  | 2026-06-12 | 2026-06-24 | 9d | 6d |  |
| 286 | 1.1.10.2.1 | Emissão inicial | 5d | 2026-06-05 | 2026-06-11 | 120 | 2026-06-12 | 2026-06-18 | 5d | 6d | 0d |
| 287 | 1.1.10.2.2 | Análise Tecnored | 1d | 2026-06-12 | 2026-06-12 | 286 | 2026-06-19 | 2026-06-19 | 1d | 15d | 0d |
| 288 | 1.1.10.2.3 | Atendimento de comentários | 2d | 2026-06-15 | 2026-06-16 | 287 | 2026-06-22 | 2026-06-23 | 2d | 15d | 0d |
| 289 | 1.1.10.2.4 | Aprovação | 1d | 2026-06-17 | 2026-06-17 | 288 | 2026-06-24 | 2026-06-24 | 1d | 15d |  |
| 290 | 1.1.10.3 | **RL-F0009-0306-MB-E-00001** | 7d | 2026-06-02 | 2026-06-10 |  | 2026-06-02 | 2026-06-10 | 7d | 2d |  |
| 291 | 1.1.10.3.1 | Emissão inicial | 3d | 2026-06-02 | 2026-06-04 | 301 | 2026-06-02 | 2026-06-04 | 3d | 2d | 0d |
| 292 | 1.1.10.3.2 | Análise Tecnored | 1d | 2026-06-05 | 2026-06-05 | 291 | 2026-06-05 | 2026-06-05 | 1d | 20d | 0d |
| 293 | 1.1.10.3.3 | Atendimento de comentários | 2d | 2026-06-08 | 2026-06-09 | 292 | 2026-06-08 | 2026-06-09 | 2d | 20d | 0d |
| 294 | 1.1.10.3.4 | Aprovação | 1d | 2026-06-10 | 2026-06-10 | 293 | 2026-06-10 | 2026-06-10 | 1d | 20d |  |
| 295 | 1.1.10.4 | **LE-F0009-0306-MB-E-00001** | 7d | 2026-06-24 | 2026-07-02 |  | 2026-06-24 | 2026-07-02 | 7d | 4d |  |
| 296 | 1.1.10.4.1 | Emissão inicial | 3d | 2026-06-24 | 2026-06-26 | 321, 326 | 2026-06-24 | 2026-06-26 | 3d | 4d | 0d |
| 297 | 1.1.10.4.2 | Análise Tecnored | 1d | 2026-06-29 | 2026-06-29 | 296 | 2026-06-29 | 2026-06-29 | 1d | 4d | 0d |
| 298 | 1.1.10.4.3 | Atendimento de comentários | 2d | 2026-06-30 | 2026-07-01 | 297 | 2026-06-30 | 2026-07-01 | 2d | 4d | 0d |
| 299 | 1.1.10.4.4 | Aprovação | 1d | 2026-07-02 | 2026-07-02 | 298 | 2026-07-02 | 2026-07-02 | 1d | 4d |  |
| 300 | 1.1.10.5 | **LR-F0009-0306-MB-E-00001** | 7d | 2026-05-28 | 2026-06-05 |  | 2026-05-28 | 2026-06-05 | 7d | 2d |  |
| 301 | 1.1.10.5.1 | Emissão inicial | 3d | 2026-05-28 | 2026-06-01 | 73 | 2026-05-28 | 2026-06-01 | 3d | 2d | 0d |
| 302 | 1.1.10.5.2 | Análise Tecnored | 1d | 2026-06-02 | 2026-06-02 | 301 | 2026-06-02 | 2026-06-02 | 1d | 23d | 0d |
| 303 | 1.1.10.5.3 | Atendimento de comentários | 2d | 2026-06-03 | 2026-06-04 | 302 | 2026-06-03 | 2026-06-04 | 2d | 23d | 0d |
| 304 | 1.1.10.5.4 | Aprovação | 1d | 2026-06-05 | 2026-06-05 | 303 | 2026-06-05 | 2026-06-05 | 1d | 23d |  |
| 305 | 1.1.10.6 | **LM-F0009-0306-MB-E-00001** | 5d | 2026-06-19 | 2026-06-25 |  | 2026-06-26 | 2026-07-02 | 5d | 6d |  |
| 306 | 1.1.10.6.1 | Emissão inicial | 1d | 2026-06-19 | 2026-06-19 | 332 | 2026-06-26 | 2026-06-26 | 1d | 6d | 0d |
| 307 | 1.1.10.6.2 | Análise Tecnored | 1d | 2026-06-22 | 2026-06-22 | 306 | 2026-06-29 | 2026-06-29 | 1d | 9d | 0d |
| 308 | 1.1.10.6.3 | Atendimento de comentários | 2d | 2026-06-23 | 2026-06-24 | 307 | 2026-06-30 | 2026-07-01 | 2d | 9d | 0d |
| 309 | 1.1.10.6.4 | Aprovação | 1d | 2026-06-25 | 2026-06-25 | 308 | 2026-07-02 | 2026-07-02 | 1d | 9d |  |

| ID | WBS | Task | Type | Duration | Start | Finish | Predecessors | Baseline start | Baseline finish | Baseline duration | Total slack | Free slack | Baseline cost |
| --- | --- | --- | --- | --- | --- | --- | --- | --- | --- | --- | --- | --- | --- |
| 310 | 1.1.10.7 | **PQ-F0009-0306-MB-E-00001** |  | 7d | 2026-06-22 | 2026-06-30 |  | 2026-06-29 | 2026-07-07 | 7d | 6d |  |  |
| 311 | 1.1.10.7.1 | Emissão inicial |  | 3d | 2026-06-22 | 2026-06-24 | 306 | 2026-06-29 | 2026-07-01 | 3d | 6d | 0d |  |
| 312 | 1.1.10.7.2 | Análise Tecnored |  | 1d | 2026-06-25 | 2026-06-25 | 311 | 2026-07-02 | 2026-07-02 | 1d | 6d | 0d |  |
| 313 | 1.1.10.7.3 | Atendimento de comentários |  | 2d | 2026-06-26 | 2026-06-29 | 312 | 2026-07-03 | 2026-07-06 | 2d | 6d | 0d |  |
| 314 | 1.1.10.7.4 | Aprovação |  | 1d | 2026-06-30 | 2026-06-30 | 313 | 2026-07-07 | 2026-07-07 | 1d | 6d |  |  |
| 315 | 1.1.10.8 | **MD-F0009-0306-MB-E-00001** | inactive | 6d | 2026-06-22 | 2026-06-29 |  |  |  |  | 7d |  | -0 |
| 316 | 1.1.10.8.1 | Emissão inicial | inactive | 2d | 2026-06-22 | 2026-06-23 | 306 |  |  |  | 7d | 0d | -0 |
| 317 | 1.1.10.8.2 | Análise Tecnored | inactive | 1d | 2026-06-24 | 2026-06-24 | 316 |  |  |  | 7d | 0d | -0 |
| 318 | 1.1.10.8.3 | Atendimento de comentários | inactive | 2d | 2026-06-25 | 2026-06-26 | 317 |  |  |  | 7d | 0d | -0 |
| 319 | 1.1.10.8.4 | Aprovação | inactive | 1d | 2026-06-29 | 2026-06-29 | 318 |  |  |  | 7d |  | -0 |
| 320 | 1.1.10.9 | **MC-F0009-0306-MB-E-00001** |  | 9d | 2026-06-17 | 2026-06-29 |  | 2026-06-17 | 2026-06-26 | 8d | 4d |  |  |
| 321 | 1.1.10.9.1 | Emissão inicial |  | 5d | 2026-06-17 | 2026-06-23 | 386 | 2026-06-17 | 2026-06-22 | 4d | 4d | 0d |  |
| 322 | 1.1.10.9.2 | Análise Tecnored |  | 1d | 2026-06-24 | 2026-06-24 | 321 | 2026-06-23 | 2026-06-23 | 1d | 7d | 0d |  |
| 323 | 1.1.10.9.3 | Atendimento de comentários |  | 2d | 2026-06-25 | 2026-06-26 | 322 | 2026-06-24 | 2026-06-25 | 2d | 7d | 0d |  |
| 324 | 1.1.10.9.4 | Aprovação |  | 1d | 2026-06-29 | 2026-06-29 | 323 | 2026-06-26 | 2026-06-26 | 1d | 7d |  |  |
| 325 | 1.1.10.10 | **MC-F0009-0306-MB-E-00002** |  | 9d | 2026-06-17 | 2026-06-29 |  | 2026-06-17 | 2026-06-29 | 9d | 2d |  |  |
| 326 | 1.1.10.10.1 | Emissão inicial |  | 5d | 2026-06-17 | 2026-06-23 | 386 | 2026-06-17 | 2026-06-23 | 5d | 2d | 0d |  |
| 327 | 1.1.10.10.2 | Análise Tecnored |  | 1d | 2026-06-24 | 2026-06-24 | 326 | 2026-06-24 | 2026-06-24 | 1d | 7d | 0d |  |
| 328 | 1.1.10.10.3 | Atendimento de comentários |  | 2d | 2026-06-25 | 2026-06-26 | 327 | 2026-06-25 | 2026-06-26 | 2d | 7d | 0d |  |
| 329 | 1.1.10.10.4 | Aprovação |  | 1d | 2026-06-29 | 2026-06-29 | 328 | 2026-06-29 | 2026-06-29 | 1d | 7d |  |  |
| 330 | 1.1.10.11 | **AG-F0009-0306-MB-E-00001** |  | 8d | 2026-06-12 | 2026-06-23 |  | 2026-06-19 | 2026-06-30 | 8d | 6d |  |  |
| 331 | 1.1.10.11.1 | Emissão inicial |  | 4d | 2026-06-12 | 2026-06-17 | 286 | 2026-06-19 | 2026-06-24 | 4d | 6d | 0d |  |
| 332 | 1.1.10.11.2 | Análise Tecnored |  | 1d | 2026-06-18 | 2026-06-18 | 331 | 2026-06-25 | 2026-06-25 | 1d | 6d | 0d |  |
| 333 | 1.1.10.11.3 | Atendimento de comentários |  | 2d | 2026-06-19 | 2026-06-22 | 332 | 2026-06-26 | 2026-06-29 | 2d | 11d | 0d |  |
| 334 | 1.1.10.11.4 | Aprovação |  | 1d | 2026-06-23 | 2026-06-23 | 333 | 2026-06-30 | 2026-06-30 | 1d | 11d |  |  |

| ID | WBS | Task | Duration | Start | Finish | Predecessors | Baseline start | Baseline finish | Baseline duration | Total slack | Free slack |
| --- | --- | --- | --- | --- | --- | --- | --- | --- | --- | --- | --- |
| 335 | 1.1.10.12 | **DU-F0009-0306-MB-E-00001** | 7d | 2026-06-05 | 2026-06-15 |  | 2026-06-05 | 2026-06-15 | 7d | 2d |  |
| 336 | 1.1.10.12.1 | Emissão inicial | 3d | 2026-06-05 | 2026-06-09 | 291 | 2026-06-05 | 2026-06-09 | 3d | 2d | 0d |
| 337 | 1.1.10.12.2 | Análise Tecnored | 1d | 2026-06-10 | 2026-06-10 | 336 | 2026-06-10 | 2026-06-10 | 1d | 17d | 0d |
| 338 | 1.1.10.12.3 | Atendimento de comentários | 2d | 2026-06-11 | 2026-06-12 | 337 | 2026-06-11 | 2026-06-12 | 2d | 17d | 0d |
| 339 | 1.1.10.12.4 | Aprovação | 1d | 2026-06-15 | 2026-06-15 | 338 | 2026-06-15 | 2026-06-15 | 1d | 17d |  |
| 340 | 1.1.10.13 | **DU-F0009-0306-MB-E-00002** | 6d | 2026-06-24 | 2026-07-01 |  | 2026-06-24 | 2026-07-01 | 6d | 5d |  |
| 341 | 1.1.10.13.1 | Emissão inicial | 2d | 2026-06-24 | 2026-06-25 | 326 | 2026-06-24 | 2026-06-25 | 2d | 5d | 0d |
| 342 | 1.1.10.13.2 | Análise Tecnored | 1d | 2026-06-26 | 2026-06-26 | 341 | 2026-06-26 | 2026-06-26 | 1d | 5d | 0d |
| 343 | 1.1.10.13.3 | Atendimento de comentários | 2d | 2026-06-29 | 2026-06-30 | 342 | 2026-06-29 | 2026-06-30 | 2d | 5d | 0d |
| 344 | 1.1.10.13.4 | Aprovação | 1d | 2026-07-01 | 2026-07-01 | 343 | 2026-07-01 | 2026-07-01 | 1d | 5d |  |
| 345 | 1.1.10.14 | **DU-F0009-0306-MB-E-00003** | 9d | 2026-06-24 | 2026-07-06 |  | 2026-06-24 | 2026-07-06 | 9d | 2d |  |
| 346 | 1.1.10.14.1 | Emissão inicial | 5d | 2026-06-24 | 2026-06-30 | 326 | 2026-06-24 | 2026-06-30 | 5d | 2d | 0d |
| 347 | 1.1.10.14.2 | Análise Tecnored | 1d | 2026-07-01 | 2026-07-01 | 346 | 2026-07-01 | 2026-07-01 | 1d | 2d | 0d |
| 348 | 1.1.10.14.3 | Atendimento de comentários | 2d | 2026-07-02 | 2026-07-03 | 347 | 2026-07-02 | 2026-07-03 | 2d | 2d | 0d |
| 349 | 1.1.10.14.4 | Aprovação | 1d | 2026-07-06 | 2026-07-06 | 348 | 2026-07-06 | 2026-07-06 | 1d | 2d |  |
| 350 | 1.1.10.15 | **DU-F0009-0306-MB-E-00004** | 17d | 2026-06-05 | 2026-06-29 |  | 2026-06-05 | 2026-06-29 | 17d | 7d |  |
| 351 | 1.1.10.15.1 | Emissão inicial | 5d | 2026-06-05 | 2026-06-11 | 291 | 2026-06-05 | 2026-06-11 | 5d | 19d |  |
| 352 | 1.1.10.15.2 | Análise Tecnored | 1d | 2026-06-24 | 2026-06-24 | 326 | 2026-06-24 | 2026-06-24 | 1d | 7d | 0d |
| 353 | 1.1.10.15.3 | Atendimento de comentários | 2d | 2026-06-25 | 2026-06-26 | 352 | 2026-06-25 | 2026-06-26 | 2d | 7d | 0d |
| 354 | 1.1.10.15.4 | Aprovação | 1d | 2026-06-29 | 2026-06-29 | 353 | 2026-06-29 | 2026-06-29 | 1d | 7d |  |
| 355 | 1.1.10.16 | **AG-F0009-0306-MB-E-00002** | 8d | 2026-06-12 | 2026-06-23 |  | 2026-06-19 | 2026-06-30 | 8d | 11d |  |
| 356 | 1.1.10.16.1 | Emissão inicial | 4d | 2026-06-12 | 2026-06-17 | 286 | 2026-06-19 | 2026-06-24 | 4d | 11d | 0d |
| 357 | 1.1.10.16.2 | Análise Tecnored | 1d | 2026-06-18 | 2026-06-18 | 356 | 2026-06-25 | 2026-06-25 | 1d | 11d | 0d |
| 358 | 1.1.10.16.3 | Atendimento de comentários | 2d | 2026-06-19 | 2026-06-22 | 357 | 2026-06-26 | 2026-06-29 | 2d | 11d | 0d |
| 359 | 1.1.10.16.4 | Aprovação | 1d | 2026-06-23 | 2026-06-23 | 358 | 2026-06-30 | 2026-06-30 | 1d | 11d |  |

| ID | WBS | Task | Duration | Start | Finish | Predecessors | Baseline start | Baseline finish | Baseline duration | Total slack | Free slack |
| --- | --- | --- | --- | --- | --- | --- | --- | --- | --- | --- | --- |
| 360 | 1.1.10.17 | **AG-F0009-0306-MB-E-00003** | 8d | 2026-06-12 | 2026-06-23 |  | 2026-06-19 | 2026-06-30 | 8d | 11d |  |
| 361 | 1.1.10.17.1 | Emissão inicial | 4d | 2026-06-12 | 2026-06-17 | 286 | 2026-06-19 | 2026-06-24 | 4d | 11d | 0d |
| 362 | 1.1.10.17.2 | Análise Tecnored | 1d | 2026-06-18 | 2026-06-18 | 361 | 2026-06-25 | 2026-06-25 | 1d | 11d | 0d |
| 363 | 1.1.10.17.3 | Atendimento de comentários | 2d | 2026-06-19 | 2026-06-22 | 362 | 2026-06-26 | 2026-06-29 | 2d | 11d | 0d |
| 364 | 1.1.10.17.4 | Aprovação | 1d | 2026-06-23 | 2026-06-23 | 363 | 2026-06-30 | 2026-06-30 | 1d | 11d |  |
| 365 | 1.1.10.18 | **FD-F0009-0306-MB-E-00001** | 9d | 2026-06-10 | 2026-06-22 |  | 2026-06-10 | 2026-06-22 | 9d | 12d |  |
| 366 | 1.1.10.18.1 | Emissão inicial | 5d | 2026-06-10 | 2026-06-16 | 336 | 2026-06-10 | 2026-06-16 | 5d | 12d | 0d |
| 367 | 1.1.10.18.2 | Análise Tecnored | 1d | 2026-06-17 | 2026-06-17 | 366 | 2026-06-17 | 2026-06-17 | 1d | 12d | 0d |
| 368 | 1.1.10.18.3 | Atendimento de comentários | 2d | 2026-06-18 | 2026-06-19 | 367 | 2026-06-18 | 2026-06-19 | 2d | 12d | 0d |
| 369 | 1.1.10.18.4 | Aprovação | 1d | 2026-06-22 | 2026-06-22 | 368 | 2026-06-22 | 2026-06-22 | 1d | 12d |  |
| 370 | 1.1.10.19 | **FD-F0009-0306-MB-E-00002** | 9d | 2026-06-10 | 2026-06-22 |  | 2026-06-10 | 2026-06-22 | 9d | 12d |  |
| 371 | 1.1.10.19.1 | Emissão inicial | 5d | 2026-06-10 | 2026-06-16 | 336 | 2026-06-10 | 2026-06-16 | 5d | 12d | 0d |
| 372 | 1.1.10.19.2 | Análise Tecnored | 1d | 2026-06-17 | 2026-06-17 | 371 | 2026-06-17 | 2026-06-17 | 1d | 12d | 0d |
| 373 | 1.1.10.19.3 | Atendimento de comentários | 2d | 2026-06-18 | 2026-06-19 | 372 | 2026-06-18 | 2026-06-19 | 2d | 12d | 0d |
| 374 | 1.1.10.19.4 | Aprovação | 1d | 2026-06-22 | 2026-06-22 | 373 | 2026-06-22 | 2026-06-22 | 1d | 12d |  |
| 375 | 1.1.10.20 | **FD-F0009-0306-MB-E-00003** | 9d | 2026-06-10 | 2026-06-22 |  | 2026-06-10 | 2026-06-22 | 9d | 12d |  |
| 376 | 1.1.10.20.1 | Emissão inicial | 5d | 2026-06-10 | 2026-06-16 | 336 | 2026-06-10 | 2026-06-16 | 5d | 12d | 0d |
| 377 | 1.1.10.20.2 | Análise Tecnored | 1d | 2026-06-17 | 2026-06-17 | 376 | 2026-06-17 | 2026-06-17 | 1d | 12d | 0d |
| 378 | 1.1.10.20.3 | Atendimento de comentários | 2d | 2026-06-18 | 2026-06-19 | 377 | 2026-06-18 | 2026-06-19 | 2d | 12d | 0d |
| 379 | 1.1.10.20.4 | Aprovação | 1d | 2026-06-22 | 2026-06-22 | 378 | 2026-06-22 | 2026-06-22 | 1d | 12d |  |
| 380 | 1.1.10.21 | **FD-F0009-0306-MB-E-00004** | 9d | 2026-06-10 | 2026-06-22 |  | 2026-06-10 | 2026-06-22 | 9d | 12d |  |
| 381 | 1.1.10.21.1 | Emissão inicial | 5d | 2026-06-10 | 2026-06-16 | 336 | 2026-06-10 | 2026-06-16 | 5d | 12d | 0d |
| 382 | 1.1.10.21.2 | Análise Tecnored | 1d | 2026-06-17 | 2026-06-17 | 381 | 2026-06-17 | 2026-06-17 | 1d | 12d | 0d |
| 383 | 1.1.10.21.3 | Atendimento de comentários | 2d | 2026-06-18 | 2026-06-19 | 382 | 2026-06-18 | 2026-06-19 | 2d | 12d | 0d |
| 384 | 1.1.10.21.4 | Aprovação | 1d | 2026-06-22 | 2026-06-22 | 383 | 2026-06-22 | 2026-06-22 | 1d | 12d |  |

| ID | WBS | Task | Type | Duration | Start | Finish | Predecessors | Baseline start | Baseline finish | Baseline duration | Total slack | Free slack | Baseline cost |
| --- | --- | --- | --- | --- | --- | --- | --- | --- | --- | --- | --- | --- | --- |
| 385 | 1.1.10.22 | **FD-F0009-0306-MB-E-00005** |  | 9d | 2026-06-10 | 2026-06-22 |  | 2026-06-10 | 2026-06-22 | 9d | 2d |  |  |
| 386 | 1.1.10.22.1 | Emissão inicial |  | 5d | 2026-06-10 | 2026-06-16 | 336 | 2026-06-10 | 2026-06-16 | 5d | 2d | 0d |  |
| 387 | 1.1.10.22.2 | Análise Tecnored |  | 1d | 2026-06-17 | 2026-06-17 | 386 | 2026-06-17 | 2026-06-17 | 1d | 12d | 0d |  |
| 388 | 1.1.10.22.3 | Atendimento de comentários |  | 2d | 2026-06-18 | 2026-06-19 | 387 | 2026-06-18 | 2026-06-19 | 2d | 12d | 0d |  |
| 389 | 1.1.10.22.4 | Aprovação |  | 1d | 2026-06-22 | 2026-06-22 | 388 | 2026-06-22 | 2026-06-22 | 1d | 12d |  |  |
| 390 | 1.1.11 | **Automação e instrumentação** |  | 27d | 2026-06-02 | 2026-07-08 |  | 2026-06-02 | 2026-07-08 | 27d | 0d |  |  |
| 391 | 1.1.11.1 | **CP-F0009-0306-MB-J-00001** | inactive | 27d | 2026-05-05 | 2026-06-10 |  |  |  |  | 20d |  | -0 |
| 392 | 1.1.11.1.1 | Emissão inicial | inactive | 7d | 2026-05-05 | 2026-05-13 | 20 |  |  |  | 36d | 16d | -0 |
| 393 | 1.1.11.1.2 | Análise Tecnored | inactive | 1d | 2026-06-05 | 2026-06-05 | 392, 8 |  |  |  | 20d | 0d | -0 |
| 394 | 1.1.11.1.3 | Atendimento de comentários | inactive | 2d | 2026-06-08 | 2026-06-09 | 393 |  |  |  | 20d | 0d | -0 |
| 395 | 1.1.11.1.4 | Aprovação | inactive | 1d | 2026-06-10 | 2026-06-10 | 394 |  |  |  | 20d |  | -0 |
| 396 | 1.1.11.2 | **LI-F0009-0306-MB-J-00001** |  | 7d | 2026-06-05 | 2026-06-15 |  | 2026-06-05 | 2026-06-15 | 7d | 0d |  |  |
| 397 | 1.1.11.2.1 | Emissão inicial |  | 3d | 2026-06-05 | 2026-06-09 | 427 | 2026-06-05 | 2026-06-09 | 3d | 0d |  |  |
| 398 | 1.1.11.2.2 | Análise Tecnored |  | 1d | 2026-06-10 | 2026-06-10 | 397 | 2026-06-10 | 2026-06-10 | 1d | 17d | 0d |  |
| 399 | 1.1.11.2.3 | Atendimento de comentários |  | 2d | 2026-06-11 | 2026-06-12 | 398 | 2026-06-11 | 2026-06-12 | 2d | 17d | 0d |  |
| 400 | 1.1.11.2.4 | Aprovação |  | 1d | 2026-06-15 | 2026-06-15 | 399 | 2026-06-15 | 2026-06-15 | 1d | 17d |  |  |
| 401 | 1.1.11.3 | **LE-F0009-0306-MB-J-00001** |  | 6d | 2026-06-26 | 2026-07-03 |  | 2026-06-26 | 2026-07-03 | 6d | 3d |  |  |
| 402 | 1.1.11.3.1 | Emissão inicial |  | 2d | 2026-06-26 | 2026-06-29 | 477 | 2026-06-26 | 2026-06-29 | 2d | 3d | 0d |  |
| 403 | 1.1.11.3.2 | Análise Tecnored |  | 1d | 2026-06-30 | 2026-06-30 | 402 | 2026-06-30 | 2026-06-30 | 1d | 3d | 0d |  |
| 404 | 1.1.11.3.3 | Atendimento de comentários |  | 2d | 2026-07-01 | 2026-07-02 | 403 | 2026-07-01 | 2026-07-02 | 2d | 3d | 0d |  |
| 405 | 1.1.11.3.4 | Aprovação |  | 1d | 2026-07-03 | 2026-07-03 | 404 | 2026-07-03 | 2026-07-03 | 1d | 3d |  |  |
| 406 | 1.1.11.4 | **LZ-F0009-0306-MB-J-00001** |  | 6d | 2026-06-22 | 2026-06-29 |  | 2026-06-22 | 2026-06-29 | 6d | 0d |  |  |
| 407 | 1.1.11.4.1 | Emissão inicial |  | 2d | 2026-06-22 | 2026-06-23 | 457FS-5d | 2026-06-22 | 2026-06-23 | 2d | 0d |  |  |
| 408 | 1.1.11.4.2 | Análise Tecnored |  | 1d | 2026-06-24 | 2026-06-24 | 407 | 2026-06-24 | 2026-06-24 | 1d | 7d | 0d |  |
| 409 | 1.1.11.4.3 | Atendimento de comentários |  | 2d | 2026-06-25 | 2026-06-26 | 408 | 2026-06-25 | 2026-06-26 | 2d | 7d | 0d |  |
| 410 | 1.1.11.4.4 | Aprovação |  | 1d | 2026-06-29 | 2026-06-29 | 409 | 2026-06-29 | 2026-06-29 | 1d | 7d |  |  |

| ID | WBS | Task | Duration | Start | Finish | Predecessors | Baseline start | Baseline finish | Baseline duration | Total slack | Free slack |
| --- | --- | --- | --- | --- | --- | --- | --- | --- | --- | --- | --- |
| 411 | 1.1.11.5 | **LE-F0009-0306-MB-J-00002** | 7d | 2026-06-22 | 2026-06-30 |  | 2026-06-22 | 2026-06-30 | 7d | 6d |  |
| 412 | 1.1.11.5.1 | Emissão inicial | 3d | 2026-06-22 | 2026-06-24 | 477FS-4d | 2026-06-22 | 2026-06-24 | 3d | 6d | 0d |
| 413 | 1.1.11.5.2 | Análise Tecnored | 1d | 2026-06-25 | 2026-06-25 | 412 | 2026-06-25 | 2026-06-25 | 1d | 6d | 0d |
| 414 | 1.1.11.5.3 | Atendimento de comentários | 2d | 2026-06-26 | 2026-06-29 | 413 | 2026-06-26 | 2026-06-29 | 2d | 6d | 0d |
| 415 | 1.1.11.5.4 | Aprovação | 1d | 2026-06-30 | 2026-06-30 | 414 | 2026-06-30 | 2026-06-30 | 1d | 6d |  |
| 416 | 1.1.11.6 | **PQ-F0009-0306-MB-J-00001** | 5d | 2026-06-23 | 2026-06-29 |  | 2026-06-23 | 2026-06-29 | 5d | 7d |  |
| 417 | 1.1.11.6.1 | Emissão inicial | 1d | 2026-06-23 | 2026-06-23 | 472FS-5d | 2026-06-23 | 2026-06-23 | 1d | 7d | 0d |
| 418 | 1.1.11.6.2 | Análise Tecnored | 1d | 2026-06-24 | 2026-06-24 | 417 | 2026-06-24 | 2026-06-24 | 1d | 7d | 0d |
| 419 | 1.1.11.6.3 | Atendimento de comentários | 2d | 2026-06-25 | 2026-06-26 | 418 | 2026-06-25 | 2026-06-26 | 2d | 7d | 0d |
| 420 | 1.1.11.6.4 | Aprovação | 1d | 2026-06-29 | 2026-06-29 | 419 | 2026-06-29 | 2026-06-29 | 1d | 7d |  |
| 421 | 1.1.11.7 | **FG-F0009-0306-MB-J-00001** | 9d | 2026-06-02 | 2026-06-12 |  | 2026-06-02 | 2026-06-12 | 9d | 18d |  |
| 422 | 1.1.11.7.1 | Emissão inicial | 5d | 2026-06-02 | 2026-06-08 | 57FS-4d | 2026-06-02 | 2026-06-08 | 5d | 18d | 0d |
| 423 | 1.1.11.7.2 | Análise Tecnored | 1d | 2026-06-09 | 2026-06-09 | 422 | 2026-06-09 | 2026-06-09 | 1d | 18d | 0d |
| 424 | 1.1.11.7.3 | Atendimento de comentários | 2d | 2026-06-10 | 2026-06-11 | 423 | 2026-06-10 | 2026-06-11 | 2d | 18d | 0d |
| 425 | 1.1.11.7.4 | Aprovação | 1d | 2026-06-12 | 2026-06-12 | 424 | 2026-06-12 | 2026-06-12 | 1d | 18d |  |
| 426 | 1.1.11.8 | **FG-F0009-0306-MB-J-00002** | 7d | 2026-06-02 | 2026-06-10 |  | 2026-06-02 | 2026-06-10 | 7d | 0d |  |
| 427 | 1.1.11.8.1 | Emissão inicial | 3d | 2026-06-02 | 2026-06-04 | 57FS-4d | 2026-06-02 | 2026-06-04 | 3d | 0d |  |
| 428 | 1.1.11.8.2 | Análise Tecnored | 1d | 2026-06-05 | 2026-06-05 | 427 | 2026-06-05 | 2026-06-05 | 1d | 20d | 0d |
| 429 | 1.1.11.8.3 | Atendimento de comentários | 2d | 2026-06-08 | 2026-06-09 | 428 | 2026-06-08 | 2026-06-09 | 2d | 20d | 0d |
| 430 | 1.1.11.8.4 | Aprovação | 1d | 2026-06-10 | 2026-06-10 | 429 | 2026-06-10 | 2026-06-10 | 1d | 20d |  |
| 431 | 1.1.11.9 | **FG-F0009-0306-MB-J-00003** | 9d | 2026-06-02 | 2026-06-12 |  | 2026-06-02 | 2026-06-12 | 9d | 18d |  |
| 432 | 1.1.11.9.1 | Emissão inicial | 5d | 2026-06-02 | 2026-06-08 | 57FS-4d | 2026-06-02 | 2026-06-08 | 5d | 18d | 0d |
| 433 | 1.1.11.9.2 | Análise Tecnored | 1d | 2026-06-09 | 2026-06-09 | 432 | 2026-06-09 | 2026-06-09 | 1d | 18d | 0d |
| 434 | 1.1.11.9.3 | Atendimento de comentários | 2d | 2026-06-10 | 2026-06-11 | 433 | 2026-06-10 | 2026-06-11 | 2d | 18d | 0d |
| 435 | 1.1.11.9.4 | Aprovação | 1d | 2026-06-12 | 2026-06-12 | 434 | 2026-06-12 | 2026-06-12 | 1d | 18d |  |

| ID | WBS | Task | Duration | Start | Finish | Predecessors | Baseline start | Baseline finish | Baseline duration | Total slack | Free slack |
| --- | --- | --- | --- | --- | --- | --- | --- | --- | --- | --- | --- |
| 436 | 1.1.11.10 | **AG-F0009-0306-MB-J-00001** | 14d | 2026-06-10 | 2026-06-29 |  | 2026-06-10 | 2026-06-29 | 14d | 7d |  |
| 437 | 1.1.11.10.1 | Emissão inicial | 10d | 2026-06-10 | 2026-06-23 | 397 | 2026-06-10 | 2026-06-23 | 10d | 7d | 0d |
| 438 | 1.1.11.10.2 | Análise Tecnored | 1d | 2026-06-24 | 2026-06-24 | 437 | 2026-06-24 | 2026-06-24 | 1d | 7d | 0d |
| 439 | 1.1.11.10.3 | Atendimento de comentários | 2d | 2026-06-25 | 2026-06-26 | 438 | 2026-06-25 | 2026-06-26 | 2d | 7d | 0d |
| 440 | 1.1.11.10.4 | Aprovação | 1d | 2026-06-29 | 2026-06-29 | 439 | 2026-06-29 | 2026-06-29 | 1d | 7d |  |
| 441 | 1.1.11.11 | **AG-F0009-0306-MB-J-00002** | 14d | 2026-06-10 | 2026-06-29 |  | 2026-06-10 | 2026-06-29 | 14d | 7d |  |
| 442 | 1.1.11.11.1 | Emissão inicial | 10d | 2026-06-10 | 2026-06-23 | 397 | 2026-06-10 | 2026-06-23 | 10d | 7d | 0d |
| 443 | 1.1.11.11.2 | Análise Tecnored | 1d | 2026-06-24 | 2026-06-24 | 442 | 2026-06-24 | 2026-06-24 | 1d | 7d | 0d |
| 444 | 1.1.11.11.3 | Atendimento de comentários | 2d | 2026-06-25 | 2026-06-26 | 443 | 2026-06-25 | 2026-06-26 | 2d | 7d | 0d |
| 445 | 1.1.11.11.4 | Aprovação | 1d | 2026-06-29 | 2026-06-29 | 444 | 2026-06-29 | 2026-06-29 | 1d | 7d |  |
| 446 | 1.1.11.12 | **AG-F0009-0306-MB-J-00003** | 14d | 2026-06-10 | 2026-06-29 |  | 2026-06-10 | 2026-06-29 | 14d | 0d |  |
| 447 | 1.1.11.12.1 | Emissão inicial | 10d | 2026-06-10 | 2026-06-23 | 397 | 2026-06-10 | 2026-06-23 | 10d | 0d |  |
| 448 | 1.1.11.12.2 | Análise Tecnored | 1d | 2026-06-24 | 2026-06-24 | 447 | 2026-06-24 | 2026-06-24 | 1d | 7d | 0d |
| 449 | 1.1.11.12.3 | Atendimento de comentários | 2d | 2026-06-25 | 2026-06-26 | 448 | 2026-06-25 | 2026-06-26 | 2d | 7d | 0d |
| 450 | 1.1.11.12.4 | Aprovação | 1d | 2026-06-29 | 2026-06-29 | 449 | 2026-06-29 | 2026-06-29 | 1d | 7d |  |
| 451 | 1.1.11.13 | **AG-F0009-0306-MB-J-00004** | 14d | 2026-06-10 | 2026-06-29 |  | 2026-06-10 | 2026-06-29 | 14d | 7d |  |
| 452 | 1.1.11.13.1 | Emissão inicial | 10d | 2026-06-10 | 2026-06-23 | 397 | 2026-06-10 | 2026-06-23 | 10d | 7d | 0d |
| 453 | 1.1.11.13.2 | Análise Tecnored | 1d | 2026-06-24 | 2026-06-24 | 452 | 2026-06-24 | 2026-06-24 | 1d | 7d | 0d |
| 454 | 1.1.11.13.3 | Atendimento de comentários | 2d | 2026-06-25 | 2026-06-26 | 453 | 2026-06-25 | 2026-06-26 | 2d | 7d | 0d |
| 455 | 1.1.11.13.4 | Aprovação | 1d | 2026-06-29 | 2026-06-29 | 454 | 2026-06-29 | 2026-06-29 | 1d | 7d |  |
| 456 | 1.1.11.14 | **DI-F0009-0306-MB-J-00001** | 7d | 2026-06-24 | 2026-07-02 |  | 2026-06-24 | 2026-07-02 | 7d | 0d |  |
| 457 | 1.1.11.14.1 | Emissão inicial | 3d | 2026-06-24 | 2026-06-26 | 447 | 2026-06-24 | 2026-06-26 | 3d | 0d |  |
| 458 | 1.1.11.14.2 | Análise Tecnored | 1d | 2026-06-29 | 2026-06-29 | 457 | 2026-06-29 | 2026-06-29 | 1d | 4d | 0d |
| 459 | 1.1.11.14.3 | Atendimento de comentários | 2d | 2026-06-30 | 2026-07-01 | 458 | 2026-06-30 | 2026-07-01 | 2d | 4d | 0d |
| 460 | 1.1.11.14.4 | Aprovação | 1d | 2026-07-02 | 2026-07-02 | 459 | 2026-07-02 | 2026-07-02 | 1d | 4d |  |

| ID | WBS | Task | Duration | Start | Finish | Predecessors | Baseline start | Baseline finish | Baseline duration | Total slack | Free slack |
| --- | --- | --- | --- | --- | --- | --- | --- | --- | --- | --- | --- |
| 461 | 1.1.11.15 | **LI-F0009-0306-MB-J-00002** | 7d | 2026-06-26 | 2026-07-06 |  | 2026-06-26 | 2026-07-06 | 7d | 2d |  |
| 462 | 1.1.11.15.1 | Emissão inicial | 3d | 2026-06-26 | 2026-06-30 | 477 | 2026-06-26 | 2026-06-30 | 3d | 2d | 0d |
| 463 | 1.1.11.15.2 | Análise Tecnored | 1d | 2026-07-01 | 2026-07-01 | 462 | 2026-07-01 | 2026-07-01 | 1d | 2d | 0d |
| 464 | 1.1.11.15.3 | Atendimento de comentários | 2d | 2026-07-02 | 2026-07-03 | 463 | 2026-07-02 | 2026-07-03 | 2d | 2d | 0d |
| 465 | 1.1.11.15.4 | Aprovação | 1d | 2026-07-06 | 2026-07-06 | 464 | 2026-07-06 | 2026-07-06 | 1d | 2d |  |
| 466 | 1.1.11.16 | **LI-F0009-0306-MB-J-00003** | 6d | 2026-06-26 | 2026-07-03 |  | 2026-06-26 | 2026-07-03 | 6d | 0d |  |
| 467 | 1.1.11.16.1 | Emissão inicial | 2d | 2026-06-26 | 2026-06-29 | 477 | 2026-06-26 | 2026-06-29 | 2d | 0d |  |
| 468 | 1.1.11.16.2 | Análise Tecnored | 1d | 2026-06-30 | 2026-06-30 | 467 | 2026-06-30 | 2026-06-30 | 1d | 3d | 0d |
| 469 | 1.1.11.16.3 | Atendimento de comentários | 2d | 2026-07-01 | 2026-07-02 | 468 | 2026-07-01 | 2026-07-02 | 2d | 3d | 0d |
| 470 | 1.1.11.16.4 | Aprovação | 1d | 2026-07-03 | 2026-07-03 | 469 | 2026-07-03 | 2026-07-03 | 1d | 3d |  |
| 471 | 1.1.11.17 | **LM-F0009-0306-MB-J-00001** | 6d | 2026-06-26 | 2026-07-03 |  | 2026-06-26 | 2026-07-03 | 6d | 3d |  |
| 472 | 1.1.11.17.1 | Emissão inicial | 2d | 2026-06-26 | 2026-06-29 | 562FS-5d | 2026-06-26 | 2026-06-29 | 2d | 3d | 0d |
| 473 | 1.1.11.17.2 | Análise Tecnored | 1d | 2026-06-30 | 2026-06-30 | 472 | 2026-06-30 | 2026-06-30 | 1d | 3d | 0d |
| 474 | 1.1.11.17.3 | Atendimento de comentários | 2d | 2026-07-01 | 2026-07-02 | 473 | 2026-07-01 | 2026-07-02 | 2d | 3d | 0d |
| 475 | 1.1.11.17.4 | Aprovação | 1d | 2026-07-03 | 2026-07-03 | 474 | 2026-07-03 | 2026-07-03 | 1d | 3d |  |
| 476 | 1.1.11.18 | **ET-F0009-0306-MB-J-00001** | 6d | 2026-06-24 | 2026-07-01 |  | 2026-06-24 | 2026-07-01 | 6d | 0d |  |
| 477 | 1.1.11.18.1 | Emissão inicial | 2d | 2026-06-24 | 2026-06-25 | 407 | 2026-06-24 | 2026-06-25 | 2d | 0d |  |
| 478 | 1.1.11.18.2 | Análise Tecnored | 1d | 2026-06-26 | 2026-06-26 | 477 | 2026-06-26 | 2026-06-26 | 1d | 5d | 0d |
| 479 | 1.1.11.18.3 | Atendimento de comentários | 2d | 2026-06-29 | 2026-06-30 | 478 | 2026-06-29 | 2026-06-30 | 2d | 5d | 0d |
| 480 | 1.1.11.18.4 | Aprovação | 1d | 2026-07-01 | 2026-07-01 | 479 | 2026-07-01 | 2026-07-01 | 1d | 5d |  |
| 481 | 1.1.11.19 | **FD-F0009-0306-MB-J-00001** | 11d | 2026-06-24 | 2026-07-08 |  | 2026-06-24 | 2026-07-08 | 11d | 0d |  |
| 482 | 1.1.11.19.1 | Emissão inicial | 7d | 2026-06-24 | 2026-07-02 | 407 | 2026-06-24 | 2026-07-02 | 7d | 0d |  |
| 483 | 1.1.11.19.2 | Análise Tecnored | 1d | 2026-07-03 | 2026-07-03 | 482 | 2026-07-03 | 2026-07-03 | 1d | 0d |  |
| 484 | 1.1.11.19.3 | Atendimento de comentários | 2d | 2026-07-06 | 2026-07-07 | 483 | 2026-07-06 | 2026-07-07 | 2d | 0d |  |
| 485 | 1.1.11.19.4 | Aprovação | 1d | 2026-07-08 | 2026-07-08 | 484 | 2026-07-08 | 2026-07-08 | 1d | 0d |  |

| ID | WBS | Task | Duration | Start | Finish | Predecessors | Baseline start | Baseline finish | Baseline duration | Total slack |
| --- | --- | --- | --- | --- | --- | --- | --- | --- | --- | --- |
| 486 | 1.1.11.20 | **FD-F0009-0306-MB-J-00002** | 11d | 2026-06-24 | 2026-07-08 |  | 2026-06-24 | 2026-07-08 | 11d | 0d |
| 487 | 1.1.11.20.1 | Emissão inicial | 7d | 2026-06-24 | 2026-07-02 | 407 | 2026-06-24 | 2026-07-02 | 7d | 0d |
| 488 | 1.1.11.20.2 | Análise Tecnored | 1d | 2026-07-03 | 2026-07-03 | 487 | 2026-07-03 | 2026-07-03 | 1d | 0d |
| 489 | 1.1.11.20.3 | Atendimento de comentários | 2d | 2026-07-06 | 2026-07-07 | 488 | 2026-07-06 | 2026-07-07 | 2d | 0d |
| 490 | 1.1.11.20.4 | Aprovação | 1d | 2026-07-08 | 2026-07-08 | 489 | 2026-07-08 | 2026-07-08 | 1d | 0d |
| 491 | 1.1.11.21 | **FD-F0009-0306-MB-J-00003** | 11d | 2026-06-24 | 2026-07-08 |  | 2026-06-24 | 2026-07-08 | 11d | 0d |
| 492 | 1.1.11.21.1 | Emissão inicial | 7d | 2026-06-24 | 2026-07-02 | 407 | 2026-06-24 | 2026-07-02 | 7d | 0d |
| 493 | 1.1.11.21.2 | Análise Tecnored | 1d | 2026-07-03 | 2026-07-03 | 492 | 2026-07-03 | 2026-07-03 | 1d | 0d |
| 494 | 1.1.11.21.3 | Atendimento de comentários | 2d | 2026-07-06 | 2026-07-07 | 493 | 2026-07-06 | 2026-07-07 | 2d | 0d |
| 495 | 1.1.11.21.4 | Aprovação | 1d | 2026-07-08 | 2026-07-08 | 494 | 2026-07-08 | 2026-07-08 | 1d | 0d |
| 496 | 1.1.11.22 | **FD-F0009-0306-MB-J-00004** | 11d | 2026-06-24 | 2026-07-08 |  | 2026-06-24 | 2026-07-08 | 11d | 0d |
| 497 | 1.1.11.22.1 | Emissão inicial | 7d | 2026-06-24 | 2026-07-02 | 407 | 2026-06-24 | 2026-07-02 | 7d | 0d |
| 498 | 1.1.11.22.2 | Análise Tecnored | 1d | 2026-07-03 | 2026-07-03 | 497 | 2026-07-03 | 2026-07-03 | 1d | 0d |
| 499 | 1.1.11.22.3 | Atendimento de comentários | 2d | 2026-07-06 | 2026-07-07 | 498 | 2026-07-06 | 2026-07-07 | 2d | 0d |
| 500 | 1.1.11.22.4 | Aprovação | 1d | 2026-07-08 | 2026-07-08 | 499 | 2026-07-08 | 2026-07-08 | 1d | 0d |
| 501 | 1.1.11.23 | **FD-F0009-0306-MB-J-00005** | 11d | 2026-06-24 | 2026-07-08 |  | 2026-06-24 | 2026-07-08 | 11d | 0d |
| 502 | 1.1.11.23.1 | Emissão inicial | 7d | 2026-06-24 | 2026-07-02 | 407 | 2026-06-24 | 2026-07-02 | 7d | 0d |
| 503 | 1.1.11.23.2 | Análise Tecnored | 1d | 2026-07-03 | 2026-07-03 | 502 | 2026-07-03 | 2026-07-03 | 1d | 0d |
| 504 | 1.1.11.23.3 | Atendimento de comentários | 2d | 2026-07-06 | 2026-07-07 | 503 | 2026-07-06 | 2026-07-07 | 2d | 0d |
| 505 | 1.1.11.23.4 | Aprovação | 1d | 2026-07-08 | 2026-07-08 | 504 | 2026-07-08 | 2026-07-08 | 1d | 0d |
| 506 | 1.1.11.24 | **FD-F0009-0306-MB-J-00006** | 11d | 2026-06-24 | 2026-07-08 |  | 2026-06-24 | 2026-07-08 | 11d | 0d |
| 507 | 1.1.11.24.1 | Emissão inicial | 7d | 2026-06-24 | 2026-07-02 | 407 | 2026-06-24 | 2026-07-02 | 7d | 0d |
| 508 | 1.1.11.24.2 | Análise Tecnored | 1d | 2026-07-03 | 2026-07-03 | 507 | 2026-07-03 | 2026-07-03 | 1d | 0d |
| 509 | 1.1.11.24.3 | Atendimento de comentários | 2d | 2026-07-06 | 2026-07-07 | 508 | 2026-07-06 | 2026-07-07 | 2d | 0d |
| 510 | 1.1.11.24.4 | Aprovação | 1d | 2026-07-08 | 2026-07-08 | 509 | 2026-07-08 | 2026-07-08 | 1d | 0d |

| ID | WBS | Task | Duration | Start | Finish | Predecessors | Baseline start | Baseline finish | Baseline duration | Total slack |
| --- | --- | --- | --- | --- | --- | --- | --- | --- | --- | --- |
| 511 | 1.1.11.25 | **FD-F0009-0306-MB-J-00007** | 11d | 2026-06-24 | 2026-07-08 |  | 2026-06-24 | 2026-07-08 | 11d | 0d |
| 512 | 1.1.11.25.1 | Emissão inicial | 7d | 2026-06-24 | 2026-07-02 | 407 | 2026-06-24 | 2026-07-02 | 7d | 0d |
| 513 | 1.1.11.25.2 | Análise Tecnored | 1d | 2026-07-03 | 2026-07-03 | 512 | 2026-07-03 | 2026-07-03 | 1d | 0d |
| 514 | 1.1.11.25.3 | Atendimento de comentários | 2d | 2026-07-06 | 2026-07-07 | 513 | 2026-07-06 | 2026-07-07 | 2d | 0d |
| 515 | 1.1.11.25.4 | Aprovação | 1d | 2026-07-08 | 2026-07-08 | 514 | 2026-07-08 | 2026-07-08 | 1d | 0d |
| 516 | 1.1.11.26 | **FD-F0009-0306-MB-J-00008** | 11d | 2026-06-24 | 2026-07-08 |  | 2026-06-24 | 2026-07-08 | 11d | 0d |
| 517 | 1.1.11.26.1 | Emissão inicial | 7d | 2026-06-24 | 2026-07-02 | 407 | 2026-06-24 | 2026-07-02 | 7d | 0d |
| 518 | 1.1.11.26.2 | Análise Tecnored | 1d | 2026-07-03 | 2026-07-03 | 517 | 2026-07-03 | 2026-07-03 | 1d | 0d |
| 519 | 1.1.11.26.3 | Atendimento de comentários | 2d | 2026-07-06 | 2026-07-07 | 518 | 2026-07-06 | 2026-07-07 | 2d | 0d |
| 520 | 1.1.11.26.4 | Aprovação | 1d | 2026-07-08 | 2026-07-08 | 519 | 2026-07-08 | 2026-07-08 | 1d | 0d |
| 521 | 1.1.11.27 | **FD-F0009-0306-MB-J-00009** | 11d | 2026-06-24 | 2026-07-08 |  | 2026-06-24 | 2026-07-08 | 11d | 0d |
| 522 | 1.1.11.27.1 | Emissão inicial | 7d | 2026-06-24 | 2026-07-02 | 407 | 2026-06-24 | 2026-07-02 | 7d | 0d |
| 523 | 1.1.11.27.2 | Análise Tecnored | 1d | 2026-07-03 | 2026-07-03 | 522 | 2026-07-03 | 2026-07-03 | 1d | 0d |
| 524 | 1.1.11.27.3 | Atendimento de comentários | 2d | 2026-07-06 | 2026-07-07 | 523 | 2026-07-06 | 2026-07-07 | 2d | 0d |
| 525 | 1.1.11.27.4 | Aprovação | 1d | 2026-07-08 | 2026-07-08 | 524 | 2026-07-08 | 2026-07-08 | 1d | 0d |
| 526 | 1.1.11.28 | **FD-F0009-0306-MB-J-00010** | 11d | 2026-06-24 | 2026-07-08 |  | 2026-06-24 | 2026-07-08 | 11d | 0d |
| 527 | 1.1.11.28.1 | Emissão inicial | 7d | 2026-06-24 | 2026-07-02 | 407 | 2026-06-24 | 2026-07-02 | 7d | 0d |
| 528 | 1.1.11.28.2 | Análise Tecnored | 1d | 2026-07-03 | 2026-07-03 | 527 | 2026-07-03 | 2026-07-03 | 1d | 0d |
| 529 | 1.1.11.28.3 | Atendimento de comentários | 2d | 2026-07-06 | 2026-07-07 | 528 | 2026-07-06 | 2026-07-07 | 2d | 0d |
| 530 | 1.1.11.28.4 | Aprovação | 1d | 2026-07-08 | 2026-07-08 | 529 | 2026-07-08 | 2026-07-08 | 1d | 0d |
| 531 | 1.1.11.29 | **FD-F0009-0306-MB-J-00011** | 11d | 2026-06-24 | 2026-07-08 |  | 2026-06-24 | 2026-07-08 | 11d | 0d |
| 532 | 1.1.11.29.1 | Emissão inicial | 7d | 2026-06-24 | 2026-07-02 | 407 | 2026-06-24 | 2026-07-02 | 7d | 0d |
| 533 | 1.1.11.29.2 | Análise Tecnored | 1d | 2026-07-03 | 2026-07-03 | 532 | 2026-07-03 | 2026-07-03 | 1d | 0d |
| 534 | 1.1.11.29.3 | Atendimento de comentários | 2d | 2026-07-06 | 2026-07-07 | 533 | 2026-07-06 | 2026-07-07 | 2d | 0d |
| 535 | 1.1.11.29.4 | Aprovação | 1d | 2026-07-08 | 2026-07-08 | 534 | 2026-07-08 | 2026-07-08 | 1d | 0d |

| ID | WBS | Task | Duration | Start | Finish | Predecessors | Baseline start | Baseline finish | Baseline duration | Total slack |
| --- | --- | --- | --- | --- | --- | --- | --- | --- | --- | --- |
| 536 | 1.1.11.30 | **FD-F0009-0306-MB-J-00012** | 11d | 2026-06-24 | 2026-07-08 |  | 2026-06-24 | 2026-07-08 | 11d | 0d |
| 537 | 1.1.11.30.1 | Emissão inicial | 7d | 2026-06-24 | 2026-07-02 | 407 | 2026-06-24 | 2026-07-02 | 7d | 0d |
| 538 | 1.1.11.30.2 | Análise Tecnored | 1d | 2026-07-03 | 2026-07-03 | 537 | 2026-07-03 | 2026-07-03 | 1d | 0d |
| 539 | 1.1.11.30.3 | Atendimento de comentários | 2d | 2026-07-06 | 2026-07-07 | 538 | 2026-07-06 | 2026-07-07 | 2d | 0d |
| 540 | 1.1.11.30.4 | Aprovação | 1d | 2026-07-08 | 2026-07-08 | 539 | 2026-07-08 | 2026-07-08 | 1d | 0d |
| 541 | 1.1.11.31 | **FD-F0009-0306-MB-J-00013** | 11d | 2026-06-24 | 2026-07-08 |  | 2026-06-24 | 2026-07-08 | 11d | 0d |
| 542 | 1.1.11.31.1 | Emissão inicial | 7d | 2026-06-24 | 2026-07-02 | 407 | 2026-06-24 | 2026-07-02 | 7d | 0d |
| 543 | 1.1.11.31.2 | Análise Tecnored | 1d | 2026-07-03 | 2026-07-03 | 542 | 2026-07-03 | 2026-07-03 | 1d | 0d |
| 544 | 1.1.11.31.3 | Atendimento de comentários | 2d | 2026-07-06 | 2026-07-07 | 543 | 2026-07-06 | 2026-07-07 | 2d | 0d |
| 545 | 1.1.11.31.4 | Aprovação | 1d | 2026-07-08 | 2026-07-08 | 544 | 2026-07-08 | 2026-07-08 | 1d | 0d |
| 546 | 1.1.11.32 | **FD-F0009-0306-MB-J-00014** | 11d | 2026-06-24 | 2026-07-08 |  | 2026-06-24 | 2026-07-08 | 11d | 0d |
| 547 | 1.1.11.32.1 | Emissão inicial | 7d | 2026-06-24 | 2026-07-02 | 407 | 2026-06-24 | 2026-07-02 | 7d | 0d |
| 548 | 1.1.11.32.2 | Análise Tecnored | 1d | 2026-07-03 | 2026-07-03 | 547 | 2026-07-03 | 2026-07-03 | 1d | 0d |
| 549 | 1.1.11.32.3 | Atendimento de comentários | 2d | 2026-07-06 | 2026-07-07 | 548 | 2026-07-06 | 2026-07-07 | 2d | 0d |
| 550 | 1.1.11.32.4 | Aprovação | 1d | 2026-07-08 | 2026-07-08 | 549 | 2026-07-08 | 2026-07-08 | 1d | 0d |
| 551 | 1.1.11.33 | **FD-F0009-0306-MB-J-00015** | 11d | 2026-06-24 | 2026-07-08 |  | 2026-06-24 | 2026-07-08 | 11d | 0d |
| 552 | 1.1.11.33.1 | Emissão inicial | 7d | 2026-06-24 | 2026-07-02 | 407 | 2026-06-24 | 2026-07-02 | 7d | 0d |
| 553 | 1.1.11.33.2 | Análise Tecnored | 1d | 2026-07-03 | 2026-07-03 | 552 | 2026-07-03 | 2026-07-03 | 1d | 0d |
| 554 | 1.1.11.33.3 | Atendimento de comentários | 2d | 2026-07-06 | 2026-07-07 | 553 | 2026-07-06 | 2026-07-07 | 2d | 0d |
| 555 | 1.1.11.33.4 | Aprovação | 1d | 2026-07-08 | 2026-07-08 | 554 | 2026-07-08 | 2026-07-08 | 1d | 0d |
| 556 | 1.1.11.34 | **FD-F0009-0306-MB-J-00016** | 11d | 2026-06-24 | 2026-07-08 |  | 2026-06-24 | 2026-07-08 | 11d | 0d |
| 557 | 1.1.11.34.1 | Emissão inicial | 7d | 2026-06-24 | 2026-07-02 | 407 | 2026-06-24 | 2026-07-02 | 7d | 0d |
| 558 | 1.1.11.34.2 | Análise Tecnored | 1d | 2026-07-03 | 2026-07-03 | 557 | 2026-07-03 | 2026-07-03 | 1d | 0d |
| 559 | 1.1.11.34.3 | Atendimento de comentários | 2d | 2026-07-06 | 2026-07-07 | 558 | 2026-07-06 | 2026-07-07 | 2d | 0d |
| 560 | 1.1.11.34.4 | Aprovação | 1d | 2026-07-08 | 2026-07-08 | 559 | 2026-07-08 | 2026-07-08 | 1d | 0d |

| ID | WBS | Task | Duration | Start | Finish | Predecessors | Baseline start | Baseline finish | Baseline duration | Total slack | Free slack |
| --- | --- | --- | --- | --- | --- | --- | --- | --- | --- | --- | --- |
| 561 | 1.1.11.35 | **DT-F0009-0306-MB-J-00001** | 7d | 2026-06-30 | 2026-07-08 |  | 2026-06-30 | 2026-07-08 | 7d | 0d |  |
| 562 | 1.1.11.35.1 | Emissão inicial | 3d | 2026-06-30 | 2026-07-02 | 467 | 2026-06-30 | 2026-07-02 | 3d | 0d |  |
| 563 | 1.1.11.35.2 | Análise Tecnored | 1d | 2026-07-03 | 2026-07-03 | 562 | 2026-07-03 | 2026-07-03 | 1d | 0d |  |
| 564 | 1.1.11.35.3 | Atendimento de comentários | 2d | 2026-07-06 | 2026-07-07 | 563 | 2026-07-06 | 2026-07-07 | 2d | 0d |  |
| 565 | 1.1.11.35.4 | Aprovação | 1d | 2026-07-08 | 2026-07-08 | 564 | 2026-07-08 | 2026-07-08 | 1d | 0d |  |
| 566 | 1.1.12 | **Civil** | 13d | 2026-06-16 | 2026-07-02 |  | 2026-06-16 | 2026-07-02 | 13d | 4d |  |
| 567 | 1.1.12.1 | **MC-F0009-0306-MB-C-00001** | 12d | 2026-06-16 | 2026-07-01 |  | 2026-06-16 | 2026-07-01 | 12d | 4d |  |
| 568 | 1.1.12.1.1 | Emissão inicial | 8d | 2026-06-16 | 2026-06-25 | 245 | 2026-06-16 | 2026-06-25 | 8d | 4d | 0d |
| 569 | 1.1.12.1.2 | Análise Tecnored | 1d | 2026-06-26 | 2026-06-26 | 568 | 2026-06-26 | 2026-06-26 | 1d | 5d | 0d |
| 570 | 1.1.12.1.3 | Atendimento de comentários | 2d | 2026-06-29 | 2026-06-30 | 569 | 2026-06-29 | 2026-06-30 | 2d | 5d | 0d |
| 571 | 1.1.12.1.4 | Aprovação | 1d | 2026-07-01 | 2026-07-01 | 570 | 2026-07-01 | 2026-07-01 | 1d | 5d |  |
| 572 | 1.1.12.2 | **PQ-F0009-0306-MB-C-00001** | 5d | 2026-06-26 | 2026-07-02 |  | 2026-06-26 | 2026-07-02 | 5d | 4d |  |
| 573 | 1.1.12.2.1 | Emissão inicial | 1d | 2026-06-26 | 2026-06-26 | 568 | 2026-06-26 | 2026-06-26 | 1d | 4d | 0d |
| 574 | 1.1.12.2.2 | Análise Tecnored | 1d | 2026-06-29 | 2026-06-29 | 573 | 2026-06-29 | 2026-06-29 | 1d | 4d | 0d |
| 575 | 1.1.12.2.3 | Atendimento de comentários | 2d | 2026-06-30 | 2026-07-01 | 574 | 2026-06-30 | 2026-07-01 | 2d | 4d | 0d |
| 576 | 1.1.12.2.4 | Aprovação | 1d | 2026-07-02 | 2026-07-02 | 575 | 2026-07-02 | 2026-07-02 | 1d | 4d |  |
