# CR-F0008-0000-GE-F-00001 23042026

Schedule from MS Project, 2026-03-31 to 2026-10-30, status date 2026-07-07, A marks actual dates.

## Calendars

- Padrão: Mon-Fri 09:00-12:00, 13:00-18:00; Sat-Sun off.

## Schedule

| ID | WBS | Task | Type | Duration | Start | Finish | Predecessors | Complete | Remaining | Baseline start | Baseline finish | Baseline duration | Total slack | Free slack | Constraint | Término_LB_R0 | Início_LB_R0 | Tipo de documento | Área | Sub-área | Disciplina | Título | Formato | Quantidade | Agrupamento Cecal |
| --- | --- | --- | --- | --- | --- | --- | --- | --- | --- | --- | --- | --- | --- | --- | --- | --- | --- | --- | --- | --- | --- | --- | --- | --- | --- |
| 1 | 1 | **F0008 - COM 0023 - CECAL** |  | 153.88d? | 2026-03-31 A | 2026-10-30 |  | 6% | 144.5d? | 2026-03-31 | 2026-09-29 | 130.88d? | 0d |  |  | Ter 29/09/26 | Ter 31/03/26 |  |  |  |  |  |  |  |  |
| 2 | 1.1 | **MARCOS 309** |  | 113d? | 2026-03-31 A | 2026-09-03 |  | 95% | 5.51d? | 2026-03-31 | 2026-09-03 | 113d? | 40.88d |  |  | Qui 03/09/26 | Ter 31/03/26 |  |  |  |  |  |  |  |  |
| 3 | 1.1.1 | Reunião de kick-off | milestone | 36d | 2026-03-31 A | 2026-05-27 A |  | 100% |  | 2026-03-31 | 2026-03-31 | 1d |  |  | start no earlier than 2026-03-31 | Ter 31/03/26 | Ter 31/03/26 |  |  |  |  |  |  |  |  |
| 4 | 1.1.2 | Reunião Design Review 1 | milestone | 1d? | 2026-05-01 A | 2026-05-01 A | 3FS+30ed | 100% |  | 2026-05-01 | 2026-05-01 | 1d? |  |  |  | Sex 01/05/26 | Sex 01/05/26 |  |  |  |  |  |  |  |  |
| 5 | 1.1.3 | Reunião Design Review 2 | milestone | 1d? | 2026-06-01 A | 2026-06-01 A | 4FS+30ed | 100% |  | 2026-06-01 | 2026-06-01 | 1d? |  |  |  | Seg 01/06/26 | Seg 01/06/26 |  |  |  |  |  |  |  |  |
| 6 | 1.1.4 | Reunião Design Review 3 | milestone | 1d? | 2026-07-02 A | 2026-07-02 A | 5FS+30ed | 100% |  | 2026-07-02 | 2026-07-02 | 1d? |  |  |  | Qui 02/07/26 | Qui 02/07/26 |  |  |  |  |  |  |  |  |
| 7 | 1.1.5 | Reunião Design Review 4 | milestone | 1d? | 2026-08-03 | 2026-08-03 | 6FS+30ed |  |  | 2026-08-03 | 2026-08-03 | 1d? | 40.88d | 0d |  | Seg 03/08/26 | Seg 03/08/26 |  |  |  |  |  |  |  |  |
| 8 | 1.1.6 | Reunião Design Review 5 | milestone | 1d? | 2026-09-03 | 2026-09-03 | 7FS+30ed |  |  | 2026-09-03 | 2026-09-03 | 1d? | 40.88d |  |  | Qui 03/09/26 | Qui 03/09/26 |  |  |  |  |  |  |  |  |
| 9 | 1.2 | **PENDÊNCIAS 309** |  | 65.88d? | 2026-03-31 A | 2026-06-30 |  | 93% | 4.6d? | 2026-03-31 | 2026-06-23 | 60.88d? | 57d | 0d |  | Ter 23/06/26 | Ter 31/03/26 |  |  |  |  |  |  |  |  |
| 10 | 1.2.1 | LD dos documentos Multitec |  | 1d? | 2026-04-23 A | 2026-04-23 A |  | 100% |  | 2026-04-23 | 2026-04-23 | 1d? |  |  |  | Qui 23/04/26 | Qui 23/04/26 |  |  |  |  |  |  |  |  |
| 11 | 1.2.2 | Revisão do cronograma nas tarefas da Engenharia Básica |  | 1d? | 2026-04-23 A | 2026-04-23 A |  | 100% |  | 2026-04-23 | 2026-04-23 | 1d? |  |  |  | Qui 23/04/26 | Qui 23/04/26 |  |  |  |  |  |  |  |  |
| 12 | 1.2.3 | Definição do comprimento do forno |  | 65.88d? | 2026-03-31 A | 2026-06-30 A |  | 100% |  | 2026-03-31 | 2026-06-02 | 25.88d? |  |  | finish no earlier than 2026-06-30 | Ter 02/06/26 | Ter 31/03/26 |  |  |  |  |  |  |  |  |
| 13 | 1.2.4 | Avaliação do aumento largura da cuba de BAR e cadinho |  | 49.88d? | 2026-04-22 A | 2026-06-30 A |  | 100% |  | 2026-04-22 | 2026-06-02 | 19.88d? |  |  | finish no earlier than 2026-06-30 | Ter 02/06/26 | Qua 22/04/26 |  |  |  |  |  |  |  |  |
| 14 | 1.2.5 | Avaliação de compatibilidade com carregamento, utilidades e instrumentação |  | 41.88d? | 2026-05-04 A | 2026-06-30 |  | 90% | 4.19d? | 2026-05-04 | 2026-06-02 | 14.88d? | 57d |  | finish no earlier than 2026-06-30 | Ter 02/06/26 | Seg 04/05/26 |  |  |  |  |  |  |  |  |
| 15 | 1.2.6 | Avaliação de novas tecnologias (ventaneira lateral, injeção de gás V1 e V2, passagem de gás pela cuba) |  | 34.88d? | 2026-05-13 A | 2026-06-30 |  | 85% | 5.23d? | 2026-05-13 | 2026-06-09 | 19.88d? | 57d |  | finish no earlier than 2026-06-30 | Ter 09/06/26 | Qua 13/05/26 |  |  |  |  |  |  |  |  |
| 16 | 1.2.7 | Incorporação das novas tecnologias no modelo |  | 29.88d? | 2026-05-20 A | 2026-06-30 |  | 85% | 4.48d? | 2026-05-20 | 2026-06-16 | 19.88d? | 57d |  | finish no earlier than 2026-06-30 | Ter 16/06/26 | Qua 20/05/26 |  |  |  |  |  |  |  |  |
| 17 | 1.2.8 | Aprovação da geometria básica |  | 9.88d? | 2026-06-17 A | 2026-06-30 |  | 75% | 2.47d? | 2026-06-17 | 2026-06-23 | 4.88d? | 18d | 0d | finish no earlier than 2026-06-30 | Ter 23/06/26 | Qua 17/06/26 |  |  |  |  |  |  |  |  |
| 18 | 1.3 | **GERAL/ COORDENAÇÃO 309** |  | 62d | 2026-07-01 | 2026-09-25 | 9FS+1d |  |  | 2026-06-24 | 2026-09-24 | 66d | 25d |  |  | Qui 24/09/26 | Qua 24/06/26 |  |  |  |  |  |  |  |  |
| 19 | 1.3.1 | **3DT-F0008-0309-MB-G-00001** |  | 15d | 2026-09-04 | 2026-09-25 |  |  |  | 2026-09-03 | 2026-09-24 | 15d | 25d |  |  | Qui 24/09/26 | Qui 03/09/26 | 3DT - Desenho 3d | 03 - REDUÇÃO | 09 - FORNO TECNORED | G - GERAL/ COORDENAÇÃO | MODELO 3D FORNO - CONJUNTO | OUTROS | 01 | Revisão do projeto do forno - carcaça e refratário |
| 20 | 1.3.1.1 | Emissão inicial |  | 5d | 2026-09-04 | 2026-09-11 | 406 |  |  | 2026-09-03 | 2026-09-10 | 5d | 25d | 0d |  | Qui 10/09/26 |  |  |  |  |  |  |  |  |  |
| 21 | 1.3.1.2 | Avaliação do Cliente |  | 5d | 2026-09-11 | 2026-09-18 | 20 |  |  | 2026-09-10 | 2026-09-17 | 5d | 25d | 0d |  | Qui 17/09/26 |  |  |  |  |  |  |  |  |  |
| 22 | 1.3.1.3 | Atendimento de Comentário |  | 3d | 2026-09-18 | 2026-09-23 | 21 |  |  | 2026-09-17 | 2026-09-22 | 3d | 25d | 0d |  | Ter 22/09/26 |  |  |  |  |  |  |  |  |  |
| 23 | 1.3.1.4 | Aprovação |  | 2d | 2026-09-23 | 2026-09-25 | 22 |  |  | 2026-09-22 | 2026-09-24 | 2d | 25d |  |  | Qui 24/09/26 |  |  |  |  |  |  |  |  |  |
| 24 | 1.3.2 | **3DT-F0008-0309-MB-G-00002** |  | 15d | 2026-09-04 | 2026-09-25 |  |  |  | 2026-09-03 | 2026-09-24 | 15d | 25d |  |  | Qui 24/09/26 | Qui 03/09/26 | 3DT - Desenho 3d | 03 - REDUÇÃO | 09 - FORNO TECNORED | G - GERAL/ COORDENAÇÃO | MODELO 3D FORNO TUBULAÇÕES E CARREGAMENTO | OUTROS | 01 | Revisão do sistema de carregamento |
| 25 | 1.3.2.1 | Emissão inicial |  | 5d | 2026-09-04 | 2026-09-11 | 406 |  |  | 2026-09-03 | 2026-09-10 | 5d | 25d | 0d |  | Qui 10/09/26 |  |  |  |  |  |  |  |  |  |
| 26 | 1.3.2.2 | Avaliação do Cliente |  | 5d | 2026-09-11 | 2026-09-18 | 25 |  |  | 2026-09-10 | 2026-09-17 | 5d | 25d | 0d |  | Qui 17/09/26 |  |  |  |  |  |  |  |  |  |
| 27 | 1.3.2.3 | Atendimento de Comentário |  | 3d | 2026-09-18 | 2026-09-23 | 26 |  |  | 2026-09-17 | 2026-09-22 | 3d | 25d | 0d |  | Ter 22/09/26 |  |  |  |  |  |  |  |  |  |
| 28 | 1.3.2.4 | Aprovação |  | 2d | 2026-09-23 | 2026-09-25 | 27 |  |  | 2026-09-22 | 2026-09-24 | 2d | 25d |  |  | Qui 24/09/26 |  |  |  |  |  |  |  |  |  |

| ID | WBS | Task | Duration | Start | Finish | Predecessors | Baseline start | Baseline finish | Baseline duration | Total slack | Free slack | Constraint | Tipo de documento | Área | Sub-área | Disciplina | Título | Formato | Quantidade | Agrupamento Cecal | Término_LB_R0 | Início_LB_R0 |
| --- | --- | --- | --- | --- | --- | --- | --- | --- | --- | --- | --- | --- | --- | --- | --- | --- | --- | --- | --- | --- | --- | --- |
| 29 | 1.3.3 | **3DT-F0008-0309-MB-G-00003** | 15d | 2026-09-04 | 2026-09-25 |  | 2026-09-03 | 2026-09-24 | 15d | 25d |  |  | 3DT - Desenho 3d | 03 - REDUÇÃO | 09 - FORNO TECNORED | G - GERAL/ COORDENAÇÃO | MODELO 3D GERAL DOS SISTEMAS | OUTROS | 01 | Planilha de quantitativos e utilidades | Qui 24/09/26 | Qui 03/09/26 |
| 30 | 1.3.3.1 | Emissão inicial | 5d | 2026-09-04 | 2026-09-11 | 406 | 2026-09-03 | 2026-09-10 | 5d | 25d | 0d |  |  |  |  |  |  |  |  |  | Qui 10/09/26 |  |
| 31 | 1.3.3.2 | Avaliação do Cliente | 5d | 2026-09-11 | 2026-09-18 | 30 | 2026-09-10 | 2026-09-17 | 5d | 25d | 0d |  |  |  |  |  |  |  |  |  | Qui 17/09/26 |  |
| 32 | 1.3.3.3 | Atendimento de Comentário | 3d | 2026-09-18 | 2026-09-23 | 31 | 2026-09-17 | 2026-09-22 | 3d | 25d | 0d |  |  |  |  |  |  |  |  |  | Ter 22/09/26 |  |
| 33 | 1.3.3.4 | Aprovação | 2d | 2026-09-23 | 2026-09-25 | 32 | 2026-09-22 | 2026-09-24 | 2d | 25d |  |  |  |  |  |  |  |  |  |  | Qui 24/09/26 |  |
| 34 | 1.3.4 | **BK-F0008-0300-MB-G-00001** | 30d | 2026-07-01 | 2026-08-12 |  | 2026-06-24 | 2026-08-05 | 30d | 57d |  |  | BK - Data Book | 03 - REDUÇÃO | 00 - GERAL | G - GERAL/ COORDENAÇÃO | DATABOOK DO PROJETO | OUTROS | 01 | Planilha de quantitativos e utilidades | Qua 05/08/26 | Qua 24/06/26 |
| 35 | 1.3.4.1 | Emissão inicial | 15d | 2026-07-01 | 2026-07-22 |  | 2026-06-24 | 2026-07-15 | 15d | 57d | 0d |  |  |  |  |  |  |  |  |  | Qua 15/07/26 |  |
| 36 | 1.3.4.2 | Avaliação do Cliente | 5d | 2026-07-22 | 2026-07-29 | 35 | 2026-07-15 | 2026-07-22 | 5d | 57d | 0d |  |  |  |  |  |  |  |  |  | Qua 22/07/26 |  |
| 37 | 1.3.4.3 | Atendimento de Comentário | 5d | 2026-07-29 | 2026-08-05 | 36 | 2026-07-22 | 2026-07-29 | 5d | 57d | 0d |  |  |  |  |  |  |  |  |  | Qua 29/07/26 |  |
| 38 | 1.3.4.4 | Aprovação | 5d | 2026-08-05 | 2026-08-12 | 37 | 2026-07-29 | 2026-08-05 | 5d | 57d |  |  |  |  |  |  |  |  |  |  | Qua 05/08/26 |  |
| 39 | 1.3.5 | **EG-F0008-0309-MB-G-00001** | 30d | 2026-08-14 | 2026-09-25 |  | 2026-08-13 | 2026-09-24 | 30d | 25d |  |  | EG - Especificação Geral | 03 - REDUÇÃO | 09 - FORNO TECNORED | G - GERAL/ COORDENAÇÃO | PARÂMETROS PARA DESIGN FREEZE | OUTROS | 01 | Parâmetros para design freeze | Qui 24/09/26 | Qui 13/08/26 |
| 40 | 1.3.5.1 | Emissão inicial | 15d | 2026-08-14 | 2026-09-04 | 20SF | 2026-08-13 | 2026-09-03 | 15d | 25d | 0d |  |  |  |  |  |  |  |  |  | Qui 03/09/26 |  |
| 41 | 1.3.5.2 | Avaliação do Cliente | 5d | 2026-09-04 | 2026-09-11 | 40 | 2026-09-03 | 2026-09-10 | 5d | 25d | 0d |  |  |  |  |  |  |  |  |  | Qui 10/09/26 |  |
| 42 | 1.3.5.3 | Atendimento de Comentário | 5d | 2026-09-11 | 2026-09-18 | 41 | 2026-09-10 | 2026-09-17 | 5d | 25d | 0d |  |  |  |  |  |  |  |  |  | Qui 17/09/26 |  |
| 43 | 1.3.5.4 | Aprovação | 5d | 2026-09-18 | 2026-09-25 | 42 | 2026-09-17 | 2026-09-24 | 5d | 25d |  |  |  |  |  |  |  |  |  |  | Qui 24/09/26 |  |
| 44 | 1.4 | **MECÂNICA / ARRANJOS 309** | 71d | 2026-06-30 | 2026-10-07 |  | 2026-06-24 | 2026-09-29 | 69.88d |  |  |  |  |  |  |  |  |  |  |  | Ter 29/09/26 | Qua 24/06/26 |
| 45 | 1.4.1 | **AG-F0008-0302-MB-L-00001** | 23d | 2026-06-30 | 2026-07-31 |  | 2026-06-24 | 2026-07-24 | 23d | 20d |  | start no earlier than 2026-06-24 | AG - Arranjo (AG) | 03 - REDUÇÃO | 02 - CARREGAMENTO | L - MECÂNICA / ARRANJOS | PLANTA BÁSICA - SISTEMA DE CARREGAMENTO | A1 (841x594mm) | 01 | Revisão do sistema de carregamento | Sex 24/07/26 | Qua 24/06/26 |
| 46 | 1.4.1.1 | Emissão inicial | 10d | 2026-06-30 | 2026-07-14 | 17 | 2026-06-24 | 2026-07-07 | 10d | 20d | 0d | start no earlier than 2026-06-24 |  |  |  |  |  |  |  |  | Ter 07/07/26 |  |
| 47 | 1.4.1.2 | Avaliação do Cliente | 5d | 2026-07-14 | 2026-07-21 | 46 | 2026-07-08 | 2026-07-14 | 5d | 65d | 0d | finish no earlier than 2026-07-07 |  |  |  |  |  |  |  |  | Ter 14/07/26 |  |
| 48 | 1.4.1.3 | Atendimento de Comentário | 3d | 2026-07-21 | 2026-07-24 | 47 | 2026-07-15 | 2026-07-17 | 3d | 65d | 0d | finish no earlier than 2026-07-07 |  |  |  |  |  |  |  |  | Sex 17/07/26 |  |
| 49 | 1.4.1.4 | Aprovação | 5d | 2026-07-24 | 2026-07-31 | 48 | 2026-07-20 | 2026-07-24 | 5d | 65d |  | finish no earlier than 2026-07-07 |  |  |  |  |  |  |  |  | Sex 24/07/26 |  |
| 50 | 1.4.2 | **AG-F0008-0302-MB-L-00002** | 20d | 2026-07-14 | 2026-08-11 |  | 2026-07-08 | 2026-08-04 | 20d | 58d |  |  | AG - Arranjo (AG) | 03 - REDUÇÃO | 02 - CARREGAMENTO | L - MECÂNICA / ARRANJOS | SISTEMA LINHA BAR | A1 (841x594mm) | 01 | Revisão do sistema de carregamento | Ter 04/08/26 | Qua 08/07/26 |
| 51 | 1.4.2.1 | Emissão inicial | 10d | 2026-07-14 | 2026-07-28 | 46 | 2026-07-08 | 2026-07-21 | 10d | 58d | 0d | finish no earlier than 2026-07-21 |  |  |  |  |  |  |  |  | Ter 21/07/26 |  |
| 52 | 1.4.2.2 | Avaliação do Cliente | 5d | 2026-07-28 | 2026-08-04 | 51 | 2026-07-22 | 2026-07-28 | 5d | 58d | 0d | finish no earlier than 2026-07-21 |  |  |  |  |  |  |  |  | Ter 28/07/26 |  |
| 53 | 1.4.2.3 | Atendimento de Comentário | 3d | 2026-08-04 | 2026-08-07 | 52 | 2026-07-29 | 2026-07-31 | 3d | 58d | 0d | finish no earlier than 2026-07-21 |  |  |  |  |  |  |  |  | Sex 31/07/26 |  |
| 54 | 1.4.2.4 | Aprovação | 2d | 2026-08-07 | 2026-08-11 | 53 | 2026-08-03 | 2026-08-04 | 2d | 58d |  | finish no earlier than 2026-07-21 |  |  |  |  |  |  |  |  | Ter 04/08/26 |  |

| ID | WBS | Task | Duration | Start | Finish | Predecessors | Baseline start | Baseline finish | Baseline duration | Total slack | Free slack | Constraint | Tipo de documento | Área | Sub-área | Disciplina | Título | Formato | Quantidade | Agrupamento Cecal | Término_LB_R0 | Início_LB_R0 |
| --- | --- | --- | --- | --- | --- | --- | --- | --- | --- | --- | --- | --- | --- | --- | --- | --- | --- | --- | --- | --- | --- | --- |
| 55 | 1.4.3 | **AG-F0008-0302-MB-L-00003** | 16d | 2026-07-14 | 2026-08-05 |  | 2026-07-08 | 2026-07-29 | 16d | 62d |  |  | AG - Arranjo (AG) | 03 - REDUÇÃO | 02 - CARREGAMENTO | L - MECÂNICA / ARRANJOS | SISTEMA LINHA COMBUSTÍVEL LATERAL | A1 (841x594mm) | 01 | Revisão do sistema de carregamento | Qua 29/07/26 | Qua 08/07/26 |
| 56 | 1.4.3.1 | Emissão inicial | 10d | 2026-07-14 | 2026-07-28 | 46 | 2026-07-08 | 2026-07-21 | 10d | 62d | 0d | finish no earlier than 2026-07-21 |  |  |  |  |  |  |  |  | Ter 21/07/26 |  |
| 57 | 1.4.3.2 | Avaliação do Cliente | 1d | 2026-07-28 | 2026-07-29 | 56 | 2026-07-22 | 2026-07-22 | 1d | 62d | 0d | finish no earlier than 2026-07-21 |  |  |  |  |  |  |  |  | Qua 22/07/26 |  |
| 58 | 1.4.3.3 | Atendimento de Comentário | 3d | 2026-07-29 | 2026-08-03 | 57 | 2026-07-23 | 2026-07-27 | 3d | 62d | 0d | finish no earlier than 2026-07-21 |  |  |  |  |  |  |  |  | Seg 27/07/26 |  |
| 59 | 1.4.3.4 | Aprovação | 2d | 2026-08-03 | 2026-08-05 | 58 | 2026-07-28 | 2026-07-29 | 2d | 62d |  | finish no earlier than 2026-07-21 |  |  |  |  |  |  |  |  | Qua 29/07/26 |  |
| 60 | 1.4.4 | **AG-F0008-0302-MB-L-00004** | 20d | 2026-07-14 | 2026-08-11 |  | 2026-07-08 | 2026-08-04 | 20d | 58d |  |  | AG - Arranjo (AG) | 03 - REDUÇÃO | 02 - CARREGAMENTO | L - MECÂNICA / ARRANJOS | SISTEMA LINHA BOOSTER | A1 (841x594mm) | 01 | Revisão do sistema de carregamento | Ter 04/08/26 | Qua 08/07/26 |
| 61 | 1.4.4.1 | Emissão inicial | 10d | 2026-07-14 | 2026-07-28 | 46 | 2026-07-08 | 2026-07-21 | 10d | 58d | 0d | finish no earlier than 2026-07-21 |  |  |  |  |  |  |  |  | Ter 21/07/26 |  |
| 62 | 1.4.4.2 | Avaliação do Cliente | 5d | 2026-07-28 | 2026-08-04 | 61 | 2026-07-22 | 2026-07-28 | 5d | 58d | 0d | finish no earlier than 2026-07-21 |  |  |  |  |  |  |  |  | Ter 28/07/26 |  |
| 63 | 1.4.4.3 | Atendimento de Comentário | 3d | 2026-08-04 | 2026-08-07 | 62 | 2026-07-29 | 2026-07-31 | 3d | 58d | 0d | finish no earlier than 2026-07-21 |  |  |  |  |  |  |  |  | Sex 31/07/26 |  |
| 64 | 1.4.4.4 | Aprovação | 2d | 2026-08-07 | 2026-08-11 | 63 | 2026-08-03 | 2026-08-04 | 2d | 58d |  | finish no earlier than 2026-07-21 |  |  |  |  |  |  |  |  | Ter 04/08/26 |  |
| 65 | 1.4.5 | **AG-F0008-0302-MB-L-00005** | 20d | 2026-07-14 | 2026-08-11 |  | 2026-07-08 | 2026-08-04 | 20d | 58d |  |  | AG - Arranjo (AG) | 03 - REDUÇÃO | 02 - CARREGAMENTO | L - MECÂNICA / ARRANJOS | LOCAÇÃO SUPORTE TUBULACOES BAR | A1 (841x594mm) | 01 | Revisão do sistema de carregamento | Ter 04/08/26 | Qua 08/07/26 |
| 66 | 1.4.5.1 | Emissão inicial | 10d | 2026-07-14 | 2026-07-28 | 46 | 2026-07-08 | 2026-07-21 | 10d | 58d | 0d | finish no earlier than 2026-07-21 |  |  |  |  |  |  |  |  | Ter 21/07/26 |  |
| 67 | 1.4.5.2 | Avaliação do Cliente | 5d | 2026-07-28 | 2026-08-04 | 66 | 2026-07-22 | 2026-07-28 | 5d | 58d | 0d | finish no earlier than 2026-07-21 |  |  |  |  |  |  |  |  | Ter 28/07/26 |  |
| 68 | 1.4.5.3 | Atendimento de Comentário | 3d | 2026-08-04 | 2026-08-07 | 67 | 2026-07-29 | 2026-07-31 | 3d | 58d | 0d | finish no earlier than 2026-07-21 |  |  |  |  |  |  |  |  | Sex 31/07/26 |  |
| 69 | 1.4.5.4 | Aprovação | 2d | 2026-08-07 | 2026-08-11 | 68 | 2026-08-03 | 2026-08-04 | 2d | 58d |  | finish no earlier than 2026-07-21 |  |  |  |  |  |  |  |  | Ter 04/08/26 |  |
| 70 | 1.4.6 | **AG-F0008-0302-MB-L-00006** | 23d | 2026-07-14 | 2026-08-14 |  | 2026-07-08 | 2026-08-07 | 23d | 55d |  |  | AG - Arranjo (AG) | 03 - REDUÇÃO | 02 - CARREGAMENTO | L - MECÂNICA / ARRANJOS | LOCAÇÃO SUPORTE TUBULACOES BAR DETALHES | A1 (841x594mm) | 01 | Revisão do sistema de carregamento | Sex 07/08/26 | Qua 08/07/26 |
| 71 | 1.4.6.1 | Emissão inicial | 10d | 2026-07-14 | 2026-07-28 | 46 | 2026-07-08 | 2026-07-21 | 10d | 55d | 0d | finish no earlier than 2026-07-21 |  |  |  |  |  |  |  |  | Ter 21/07/26 |  |
| 72 | 1.4.6.2 | Avaliação do Cliente | 5d | 2026-07-28 | 2026-08-04 | 71 | 2026-07-22 | 2026-07-28 | 5d | 55d | 0d | finish no earlier than 2026-07-21 |  |  |  |  |  |  |  |  | Ter 28/07/26 |  |
| 73 | 1.4.6.3 | Atendimento de Comentário | 3d | 2026-08-04 | 2026-08-07 | 72 | 2026-07-29 | 2026-07-31 | 3d | 55d | 0d | finish no earlier than 2026-07-21 |  |  |  |  |  |  |  |  | Sex 31/07/26 |  |
| 74 | 1.4.6.4 | Aprovação | 5d | 2026-08-07 | 2026-08-14 | 73 | 2026-08-03 | 2026-08-07 | 5d | 55d |  | finish no earlier than 2026-07-21 |  |  |  |  |  |  |  |  | Sex 07/08/26 |  |
| 75 | 1.4.7 | **AG-F0008-0302-MB-L-00007** | 20d | 2026-07-14 | 2026-08-11 |  | 2026-07-08 | 2026-08-04 | 20d | 58d |  |  | AG - Arranjo (AG) | 03 - REDUÇÃO | 02 - CARREGAMENTO | L - MECÂNICA / ARRANJOS | LOCAÇÃO SUPORTE TUBULACOES COMBUSTIVEL LATERAL | A1 (841x594mm) | 01 | Revisão do sistema de carregamento | Ter 04/08/26 | Qua 08/07/26 |
| 76 | 1.4.7.1 | Emissão inicial | 10d | 2026-07-14 | 2026-07-28 | 46 | 2026-07-08 | 2026-07-21 | 10d | 58d | 0d | finish no earlier than 2026-07-21 |  |  |  |  |  |  |  |  | Ter 21/07/26 |  |
| 77 | 1.4.7.2 | Avaliação do Cliente | 5d | 2026-07-28 | 2026-08-04 | 76 | 2026-07-22 | 2026-07-28 | 5d | 58d | 0d | finish no earlier than 2026-07-21 |  |  |  |  |  |  |  |  | Ter 28/07/26 |  |
| 78 | 1.4.7.3 | Atendimento de Comentário | 3d | 2026-08-04 | 2026-08-07 | 77 | 2026-07-29 | 2026-07-31 | 3d | 58d | 0d | finish no earlier than 2026-07-21 |  |  |  |  |  |  |  |  | Sex 31/07/26 |  |
| 79 | 1.4.7.4 | Aprovação | 2d | 2026-08-07 | 2026-08-11 | 78 | 2026-08-03 | 2026-08-04 | 2d | 58d |  | finish no earlier than 2026-07-21 |  |  |  |  |  |  |  |  | Ter 04/08/26 |  |

| ID | WBS | Task | Duration | Start | Finish | Predecessors | Baseline start | Baseline finish | Baseline duration | Total slack | Free slack | Constraint | Tipo de documento | Área | Sub-área | Disciplina | Título | Formato | Quantidade | Agrupamento Cecal | Término_LB_R0 | Início_LB_R0 |
| --- | --- | --- | --- | --- | --- | --- | --- | --- | --- | --- | --- | --- | --- | --- | --- | --- | --- | --- | --- | --- | --- | --- |
| 80 | 1.4.8 | **AG-F0008-0302-MB-L-00008** | 20d | 2026-07-14 | 2026-08-11 |  | 2026-07-08 | 2026-08-04 | 20d | 58d |  |  | AG - Arranjo (AG) | 03 - REDUÇÃO | 02 - CARREGAMENTO | L - MECÂNICA / ARRANJOS | LOCAÇÃO SUPORTE TUBULACOES COMBUSTIVEL LATERAL | A1 (841x594mm) | 01 | Revisão do sistema de carregamento | Ter 04/08/26 | Qua 08/07/26 |
| 81 | 1.4.8.1 | Emissão inicial | 10d | 2026-07-14 | 2026-07-28 | 46 | 2026-07-08 | 2026-07-21 | 10d | 58d | 0d | finish no earlier than 2026-07-21 |  |  |  |  |  |  |  |  | Ter 21/07/26 |  |
| 82 | 1.4.8.2 | Avaliação do Cliente | 5d | 2026-07-28 | 2026-08-04 | 81 | 2026-07-22 | 2026-07-28 | 5d | 58d | 0d | finish no earlier than 2026-07-21 |  |  |  |  |  |  |  |  | Ter 28/07/26 |  |
| 83 | 1.4.8.3 | Atendimento de Comentário | 3d | 2026-08-04 | 2026-08-07 | 82 | 2026-07-29 | 2026-07-31 | 3d | 58d | 0d | finish no earlier than 2026-07-21 |  |  |  |  |  |  |  |  | Sex 31/07/26 |  |
| 84 | 1.4.8.4 | Aprovação | 2d | 2026-08-07 | 2026-08-11 | 83 | 2026-08-03 | 2026-08-04 | 2d | 58d |  | finish no earlier than 2026-07-21 |  |  |  |  |  |  |  |  | Ter 04/08/26 |  |
| 85 | 1.4.9 | **AG-F0008-0302-MB-L-00009** | 20d | 2026-07-14 | 2026-08-11 |  | 2026-07-08 | 2026-08-04 | 20d | 58d |  |  | AG - Arranjo (AG) | 03 - REDUÇÃO | 02 - CARREGAMENTO | L - MECÂNICA / ARRANJOS | LOCAÇÃO SUPORTE TUBULACOES BOOSTER | A1 (841x594mm) | 01 | Revisão do sistema de carregamento | Ter 04/08/26 | Qua 08/07/26 |
| 86 | 1.4.9.1 | Emissão inicial | 10d | 2026-07-14 | 2026-07-28 | 46 | 2026-07-08 | 2026-07-21 | 10d | 58d | 0d | finish no earlier than 2026-07-21 |  |  |  |  |  |  |  |  | Ter 21/07/26 |  |
| 87 | 1.4.9.2 | Avaliação do Cliente | 5d | 2026-07-28 | 2026-08-04 | 86 | 2026-07-22 | 2026-07-28 | 5d | 58d | 0d | finish no earlier than 2026-07-21 |  |  |  |  |  |  |  |  | Ter 28/07/26 |  |
| 88 | 1.4.9.3 | Atendimento de Comentário | 3d | 2026-08-04 | 2026-08-07 | 87 | 2026-07-29 | 2026-07-31 | 3d | 58d | 0d | finish no earlier than 2026-07-21 |  |  |  |  |  |  |  |  | Sex 31/07/26 |  |
| 89 | 1.4.9.4 | Aprovação | 2d | 2026-08-07 | 2026-08-11 | 88 | 2026-08-03 | 2026-08-04 | 2d | 58d |  | finish no earlier than 2026-07-21 |  |  |  |  |  |  |  |  | Ter 04/08/26 |  |
| 90 | 1.4.10 | **AG-F0008-0302-MB-L-00010** | 20d | 2026-07-14 | 2026-08-11 |  | 2026-07-08 | 2026-08-04 | 20d | 20d |  |  | AG - Arranjo (AG) | 03 - REDUÇÃO | 02 - CARREGAMENTO | L - MECÂNICA / ARRANJOS | LOCAÇÃO SUPORTE TUBULACOES BOOSTER DETALHES | A1 (841x594mm) | 01 | Revisão do sistema de carregamento | Ter 04/08/26 | Qua 08/07/26 |
| 91 | 1.4.10.1 | Emissão inicial | 10d | 2026-07-14 | 2026-07-28 | 46 | 2026-07-08 | 2026-07-21 | 10d | 20d | 0d | finish no earlier than 2026-07-21 |  |  |  |  |  |  |  |  | Ter 21/07/26 |  |
| 92 | 1.4.10.2 | Avaliação do Cliente | 5d | 2026-07-28 | 2026-08-04 | 91 | 2026-07-22 | 2026-07-28 | 5d | 58d | 0d | finish no earlier than 2026-07-21 |  |  |  |  |  |  |  |  | Ter 28/07/26 |  |
| 93 | 1.4.10.3 | Atendimento de Comentário | 3d | 2026-08-04 | 2026-08-07 | 92 | 2026-07-29 | 2026-07-31 | 3d | 58d | 0d | finish no earlier than 2026-07-21 |  |  |  |  |  |  |  |  | Sex 31/07/26 |  |
| 94 | 1.4.10.4 | Aprovação | 2d | 2026-08-07 | 2026-08-11 | 93 | 2026-08-03 | 2026-08-04 | 2d | 58d |  | finish no earlier than 2026-07-21 |  |  |  |  |  |  |  |  | Ter 04/08/26 |  |
| 95 | 1.4.11 | **DT-F0008-0302-MB-L-00001** | 20d | 2026-07-14 | 2026-08-11 |  | 2026-07-08 | 2026-08-04 | 20d | 28d |  |  | DT - Detalhe Típico | 03 - REDUÇÃO | 02 - CARREGAMENTO | L - MECÂNICA / ARRANJOS | MOEGA DE RECEBIMENTO | A1 (841x594mm) | 01 | Revisão do sistema de carregamento | Ter 04/08/26 | Qua 08/07/26 |
| 96 | 1.4.11.1 | Emissão inicial | 10d | 2026-07-14 | 2026-07-28 | 46 | 2026-07-08 | 2026-07-21 | 10d | 28d | 0d |  |  |  |  |  |  |  |  |  | Ter 21/07/26 |  |
| 97 | 1.4.11.2 | Avaliação do Cliente | 5d | 2026-07-28 | 2026-08-04 | 96 | 2026-07-22 | 2026-07-28 | 5d | 28d | 0d |  |  |  |  |  |  |  |  |  | Ter 28/07/26 |  |
| 98 | 1.4.11.3 | Atendimento de Comentário | 3d | 2026-08-04 | 2026-08-07 | 97 | 2026-07-29 | 2026-07-31 | 3d | 58d | 0d |  |  |  |  |  |  |  |  |  | Sex 31/07/26 |  |
| 99 | 1.4.11.4 | Aprovação | 2d | 2026-08-07 | 2026-08-11 | 98 | 2026-08-03 | 2026-08-04 | 2d | 58d |  |  |  |  |  |  |  |  |  |  | Ter 04/08/26 |  |
| 100 | 1.4.12 | **DT-F0008-0302-MB-L-00002** | 20d | 2026-07-14 | 2026-08-11 |  | 2026-07-08 | 2026-08-04 | 20d | 58d |  |  | DT - Detalhe Típico | 03 - REDUÇÃO | 02 - CARREGAMENTO | L - MECÂNICA / ARRANJOS | CORREIA REVERSÍVEL E MÓVEL - LIMITES DE OPERAÇÃO | A1 (841x594mm) | 01 | Revisão do sistema de carregamento | Ter 04/08/26 | Qua 08/07/26 |
| 101 | 1.4.12.1 | Emissão inicial | 10d | 2026-07-14 | 2026-07-28 | 46 | 2026-07-08 | 2026-07-21 | 10d | 58d | 0d |  |  |  |  |  |  |  |  |  | Ter 21/07/26 |  |
| 102 | 1.4.12.2 | Avaliação do Cliente | 5d | 2026-07-28 | 2026-08-04 | 101 | 2026-07-22 | 2026-07-28 | 5d | 58d | 0d |  |  |  |  |  |  |  |  |  | Ter 28/07/26 |  |
| 103 | 1.4.12.3 | Atendimento de Comentário | 3d | 2026-08-04 | 2026-08-07 | 102 | 2026-07-29 | 2026-07-31 | 3d | 58d | 0d |  |  |  |  |  |  |  |  |  | Sex 31/07/26 |  |
| 104 | 1.4.12.4 | Aprovação | 2d | 2026-08-07 | 2026-08-11 | 103 | 2026-08-03 | 2026-08-04 | 2d | 58d |  |  |  |  |  |  |  |  |  |  | Ter 04/08/26 |  |

| ID | WBS | Task | Duration | Start | Finish | Predecessors | Baseline start | Baseline finish | Baseline duration | Total slack | Free slack | Tipo de documento | Área | Sub-área | Disciplina | Título | Formato | Quantidade | Agrupamento Cecal | Término_LB_R0 | Início_LB_R0 |
| --- | --- | --- | --- | --- | --- | --- | --- | --- | --- | --- | --- | --- | --- | --- | --- | --- | --- | --- | --- | --- | --- |
| 105 | 1.4.13 | **DT-F0008-0302-MB-L-00003** | 20d | 2026-07-14 | 2026-08-11 |  | 2026-07-08 | 2026-08-04 | 20d | 58d |  | DT - Detalhe Típico | 03 - REDUÇÃO | 02 - CARREGAMENTO | L - MECÂNICA / ARRANJOS | CORREIA REVERSÍVEL E MÓVEL - DADOS GERAIS | A1 (841x594mm) | 01 | Revisão do sistema de carregamento | Ter 04/08/26 | Qua 08/07/26 |
| 106 | 1.4.13.1 | Emissão inicial | 10d | 2026-07-14 | 2026-07-28 | 46 | 2026-07-08 | 2026-07-21 | 10d | 58d | 0d |  |  |  |  |  |  |  |  | Ter 21/07/26 |  |
| 107 | 1.4.13.2 | Avaliação do Cliente | 5d | 2026-07-28 | 2026-08-04 | 106 | 2026-07-22 | 2026-07-28 | 5d | 58d | 0d |  |  |  |  |  |  |  |  | Ter 28/07/26 |  |
| 108 | 1.4.13.3 | Atendimento de Comentário | 3d | 2026-08-04 | 2026-08-07 | 107 | 2026-07-29 | 2026-07-31 | 3d | 58d | 0d |  |  |  |  |  |  |  |  | Sex 31/07/26 |  |
| 109 | 1.4.13.4 | Aprovação | 2d | 2026-08-07 | 2026-08-11 | 108 | 2026-08-03 | 2026-08-04 | 2d | 58d |  |  |  |  |  |  |  |  |  | Ter 04/08/26 |  |
| 110 | 1.4.14 | **DT-F0008-0302-MB-L-00004** | 20d | 2026-07-14 | 2026-08-11 |  | 2026-07-08 | 2026-08-04 | 20d | 58d |  | DT - Detalhe Típico | 03 - REDUÇÃO | 02 - CARREGAMENTO | L - MECÂNICA / ARRANJOS | CORREIA REVERSÍVEL E MÓVEL ARRANJOS ROLETES | A1 (841x594mm) | 01 | Revisão do sistema de carregamento | Ter 04/08/26 | Qua 08/07/26 |
| 111 | 1.4.14.1 | Emissão inicial | 10d | 2026-07-14 | 2026-07-28 | 46 | 2026-07-08 | 2026-07-21 | 10d | 58d | 0d |  |  |  |  |  |  |  |  | Ter 21/07/26 |  |
| 112 | 1.4.14.2 | Avaliação do Cliente | 5d | 2026-07-28 | 2026-08-04 | 111 | 2026-07-22 | 2026-07-28 | 5d | 58d | 0d |  |  |  |  |  |  |  |  | Ter 28/07/26 |  |
| 113 | 1.4.14.3 | Atendimento de Comentário | 3d | 2026-08-04 | 2026-08-07 | 112 | 2026-07-29 | 2026-07-31 | 3d | 58d | 0d |  |  |  |  |  |  |  |  | Sex 31/07/26 |  |
| 114 | 1.4.14.4 | Aprovação | 2d | 2026-08-07 | 2026-08-11 | 113 | 2026-08-03 | 2026-08-04 | 2d | 58d |  |  |  |  |  |  |  |  |  | Ter 04/08/26 |  |
| 115 | 1.4.15 | **DT-F0008-0302-MB-L-00005** | 20d | 2026-07-14 | 2026-08-11 |  | 2026-07-08 | 2026-08-04 | 20d | 58d |  | DT - Detalhe Típico | 03 - REDUÇÃO | 02 - CARREGAMENTO | L - MECÂNICA / ARRANJOS | CORREIA REVERSÍVEL E MÓVEL - SEÇÕES | A1 (841x594mm) | 01 | Revisão do sistema de carregamento | Ter 04/08/26 | Qua 08/07/26 |
| 116 | 1.4.15.1 | Emissão inicial | 10d | 2026-07-14 | 2026-07-28 | 46 | 2026-07-08 | 2026-07-21 | 10d | 58d | 0d |  |  |  |  |  |  |  |  | Ter 21/07/26 |  |
| 117 | 1.4.15.2 | Avaliação do Cliente | 5d | 2026-07-28 | 2026-08-04 | 116 | 2026-07-22 | 2026-07-28 | 5d | 58d | 0d |  |  |  |  |  |  |  |  | Ter 28/07/26 |  |
| 118 | 1.4.15.3 | Atendimento de Comentário | 3d | 2026-08-04 | 2026-08-07 | 117 | 2026-07-29 | 2026-07-31 | 3d | 58d | 0d |  |  |  |  |  |  |  |  | Sex 31/07/26 |  |
| 119 | 1.4.15.4 | Aprovação | 2d | 2026-08-07 | 2026-08-11 | 118 | 2026-08-03 | 2026-08-04 | 2d | 58d |  |  |  |  |  |  |  |  |  | Ter 04/08/26 |  |
| 120 | 1.4.16 | **DT-F0008-0302-MB-L-00006** | 20d | 2026-07-14 | 2026-08-11 |  | 2026-07-08 | 2026-08-04 | 20d | 23d |  | DT - Detalhe Típico | 03 - REDUÇÃO | 02 - CARREGAMENTO | L - MECÂNICA / ARRANJOS | SILO DE PROCESSOS BAR FORNO 1 E 2 | A1 (841x594mm) | 01 | Revisão do sistema de carregamento | Ter 04/08/26 | Qua 08/07/26 |
| 121 | 1.4.16.1 | Emissão inicial | 10d | 2026-07-14 | 2026-07-28 | 46 | 2026-07-08 | 2026-07-21 | 10d | 23d | 0d |  |  |  |  |  |  |  |  | Ter 21/07/26 |  |
| 122 | 1.4.16.2 | Avaliação do Cliente | 5d | 2026-07-28 | 2026-08-04 | 121 | 2026-07-22 | 2026-07-28 | 5d | 58d | 0d |  |  |  |  |  |  |  |  | Ter 28/07/26 |  |
| 123 | 1.4.16.3 | Atendimento de Comentário | 3d | 2026-08-04 | 2026-08-07 | 122 | 2026-07-29 | 2026-07-31 | 3d | 58d | 0d |  |  |  |  |  |  |  |  | Sex 31/07/26 |  |
| 124 | 1.4.16.4 | Aprovação | 2d | 2026-08-07 | 2026-08-11 | 123 | 2026-08-03 | 2026-08-04 | 2d | 58d |  |  |  |  |  |  |  |  |  | Ter 04/08/26 |  |
| 125 | 1.4.17 | **DT-F0008-0302-MB-L-00007** | 20d | 2026-07-28 | 2026-08-25 |  | 2026-07-22 | 2026-08-18 | 20d | 48d |  | DT - Detalhe Típico | 03 - REDUÇÃO | 02 - CARREGAMENTO | L - MECÂNICA / ARRANJOS | SILO DE PROCESSOS COMBUSTÍVEL LATERAL FORNO 1 E 2 | A1 (841x594mm) | 01 | Revisão do sistema de carregamento | Ter 18/08/26 | Qua 22/07/26 |
| 126 | 1.4.17.1 | Emissão inicial | 10d | 2026-07-28 | 2026-08-11 | 121 | 2026-07-22 | 2026-08-04 | 10d | 48d | 0d |  |  |  |  |  |  |  |  | Ter 04/08/26 |  |
| 127 | 1.4.17.2 | Avaliação do Cliente | 5d | 2026-08-11 | 2026-08-18 | 126 | 2026-08-05 | 2026-08-11 | 5d | 48d | 0d |  |  |  |  |  |  |  |  | Ter 11/08/26 |  |
| 128 | 1.4.17.3 | Atendimento de Comentário | 3d | 2026-08-18 | 2026-08-21 | 127 | 2026-08-12 | 2026-08-14 | 3d | 48d | 0d |  |  |  |  |  |  |  |  | Sex 14/08/26 |  |
| 129 | 1.4.17.4 | Aprovação | 2d | 2026-08-21 | 2026-08-25 | 128 | 2026-08-17 | 2026-08-18 | 2d | 48d |  |  |  |  |  |  |  |  |  | Ter 18/08/26 |  |

| ID | WBS | Task | Duration | Start | Finish | Predecessors | Baseline start | Baseline finish | Baseline duration | Total slack | Free slack | Tipo de documento | Área | Sub-área | Disciplina | Título | Formato | Quantidade | Agrupamento Cecal | Término_LB_R0 | Início_LB_R0 |
| --- | --- | --- | --- | --- | --- | --- | --- | --- | --- | --- | --- | --- | --- | --- | --- | --- | --- | --- | --- | --- | --- |
| 130 | 1.4.18 | **DT-F0008-0302-MB-L-00008** | 20d | 2026-07-28 | 2026-08-25 |  | 2026-07-22 | 2026-08-18 | 20d | 48d |  | DT - Detalhe Típico | 03 - REDUÇÃO | 02 - CARREGAMENTO | L - MECÂNICA / ARRANJOS | SILO DE PROCESSOS BOOSTER FORNO 1 E 2 | A1 (841x594mm) | 01 | Revisão do sistema de carregamento | Ter 18/08/26 | Qua 22/07/26 |
| 131 | 1.4.18.1 | Emissão inicial | 10d | 2026-07-28 | 2026-08-11 | 121 | 2026-07-22 | 2026-08-04 | 10d | 48d | 0d |  |  |  |  |  |  |  |  | Ter 04/08/26 |  |
| 132 | 1.4.18.2 | Avaliação do Cliente | 5d | 2026-08-11 | 2026-08-18 | 131 | 2026-08-05 | 2026-08-11 | 5d | 48d | 0d |  |  |  |  |  |  |  |  | Ter 11/08/26 |  |
| 133 | 1.4.18.3 | Atendimento de Comentário | 3d | 2026-08-18 | 2026-08-21 | 132 | 2026-08-12 | 2026-08-14 | 3d | 48d | 0d |  |  |  |  |  |  |  |  | Sex 14/08/26 |  |
| 134 | 1.4.18.4 | Aprovação | 2d | 2026-08-21 | 2026-08-25 | 133 | 2026-08-17 | 2026-08-18 | 2d | 48d |  |  |  |  |  |  |  |  |  | Ter 18/08/26 |  |
| 135 | 1.4.19 | **DT-F0008-0302-MB-L-00009** | 20d | 2026-07-28 | 2026-08-25 |  | 2026-07-22 | 2026-08-18 | 20d | 48d |  | DT - Detalhe Típico | 03 - REDUÇÃO | 02 - CARREGAMENTO | L - MECÂNICA / ARRANJOS | SILO DE BUFFER BAR FORNO 1 E 2 | A1 (841x594mm) | 01 | Revisão do sistema de carregamento | Ter 18/08/26 | Qua 22/07/26 |
| 136 | 1.4.19.1 | Emissão inicial | 10d | 2026-07-28 | 2026-08-11 | 121 | 2026-07-22 | 2026-08-04 | 10d | 48d | 0d |  |  |  |  |  |  |  |  | Ter 04/08/26 |  |
| 137 | 1.4.19.2 | Avaliação do Cliente | 5d | 2026-08-11 | 2026-08-18 | 136 | 2026-08-05 | 2026-08-11 | 5d | 48d | 0d |  |  |  |  |  |  |  |  | Ter 11/08/26 |  |
| 138 | 1.4.19.3 | Atendimento de Comentário | 3d | 2026-08-18 | 2026-08-21 | 137 | 2026-08-12 | 2026-08-14 | 3d | 48d | 0d |  |  |  |  |  |  |  |  | Sex 14/08/26 |  |
| 139 | 1.4.19.4 | Aprovação | 2d | 2026-08-21 | 2026-08-25 | 138 | 2026-08-17 | 2026-08-18 | 2d | 48d |  |  |  |  |  |  |  |  |  | Ter 18/08/26 |  |
| 140 | 1.4.20 | **DT-F0008-0302-MB-L-00010** | 20d | 2026-07-28 | 2026-08-25 |  | 2026-07-22 | 2026-08-18 | 20d | 48d |  | DT - Detalhe Típico | 03 - REDUÇÃO | 02 - CARREGAMENTO | L - MECÂNICA / ARRANJOS | SILO DE BUFFER COMBUSTÍVEL LATERAL FORNO 1 E 2 | A1 (841x594mm) | 01 | Revisão do sistema de carregamento | Ter 18/08/26 | Qua 22/07/26 |
| 141 | 1.4.20.1 | Emissão inicial | 10d | 2026-07-28 | 2026-08-11 | 121 | 2026-07-22 | 2026-08-04 | 10d | 48d | 0d |  |  |  |  |  |  |  |  | Ter 04/08/26 |  |
| 142 | 1.4.20.2 | Avaliação do Cliente | 5d | 2026-08-11 | 2026-08-18 | 141 | 2026-08-05 | 2026-08-11 | 5d | 48d | 0d |  |  |  |  |  |  |  |  | Ter 11/08/26 |  |
| 143 | 1.4.20.3 | Atendimento de Comentário | 3d | 2026-08-18 | 2026-08-21 | 142 | 2026-08-12 | 2026-08-14 | 3d | 48d | 0d |  |  |  |  |  |  |  |  | Sex 14/08/26 |  |
| 144 | 1.4.20.4 | Aprovação | 2d | 2026-08-21 | 2026-08-25 | 143 | 2026-08-17 | 2026-08-18 | 2d | 48d |  |  |  |  |  |  |  |  |  | Ter 18/08/26 |  |
| 145 | 1.4.21 | **DT-F0008-0302-MB-L-00011** | 25d | 2026-07-28 | 2026-09-01 |  | 2026-07-22 | 2026-08-25 | 25d | 23d |  | DT - Detalhe Típico | 03 - REDUÇÃO | 02 - CARREGAMENTO | L - MECÂNICA / ARRANJOS | SILO DE BUFFER BOOSTER FORNO 1 E 2 | A1 (841x594mm) | 01 | Revisão do sistema de carregamento | Ter 25/08/26 | Qua 22/07/26 |
| 146 | 1.4.21.1 | Emissão inicial | 10d | 2026-07-28 | 2026-08-11 | 121 | 2026-07-22 | 2026-08-04 | 10d | 23d | 0d |  |  |  |  |  |  |  |  | Ter 04/08/26 |  |
| 147 | 1.4.21.2 | Avaliação do Cliente | 5d | 2026-08-11 | 2026-08-18 | 146 | 2026-08-05 | 2026-08-11 | 5d | 43d | 0d |  |  |  |  |  |  |  |  | Ter 11/08/26 |  |
| 148 | 1.4.21.3 | Atendimento de Comentário | 5d | 2026-08-18 | 2026-08-25 | 147 | 2026-08-12 | 2026-08-18 | 5d | 43d | 0d |  |  |  |  |  |  |  |  | Ter 18/08/26 |  |
| 149 | 1.4.21.4 | Aprovação | 5d | 2026-08-25 | 2026-09-01 | 148 | 2026-08-19 | 2026-08-25 | 5d | 43d |  |  |  |  |  |  |  |  |  | Ter 25/08/26 |  |
| 150 | 1.4.22 | **DT-F0008-0302-MB-L-00012** | 20d | 2026-08-11 | 2026-09-08 |  | 2026-08-05 | 2026-09-01 | 20d | 23d |  | DT - Detalhe Típico | 03 - REDUÇÃO | 02 - CARREGAMENTO | L - MECÂNICA / ARRANJOS | TUBULACOES DE DESCARGA SISTEMA DE CARREGAMENTO | A1 (841x594mm) | 01 | Revisão do sistema de carregamento | Ter 01/09/26 | Qua 05/08/26 |
| 151 | 1.4.22.1 | Emissão inicial | 10d | 2026-08-11 | 2026-08-25 | 146 | 2026-08-05 | 2026-08-18 | 10d | 23d | 0d |  |  |  |  |  |  |  |  | Ter 18/08/26 |  |
| 152 | 1.4.22.2 | Avaliação do Cliente | 5d | 2026-08-25 | 2026-09-01 | 151 | 2026-08-19 | 2026-08-25 | 5d | 38d | 0d |  |  |  |  |  |  |  |  | Ter 25/08/26 |  |
| 153 | 1.4.22.3 | Atendimento de Comentário | 3d | 2026-09-01 | 2026-09-04 | 152 | 2026-08-26 | 2026-08-28 | 3d | 38d | 0d |  |  |  |  |  |  |  |  | Sex 28/08/26 |  |
| 154 | 1.4.22.4 | Aprovação | 2d | 2026-09-04 | 2026-09-08 | 153 | 2026-08-31 | 2026-09-01 | 2d | 38d |  |  |  |  |  |  |  |  |  | Ter 01/09/26 |  |

| ID | WBS | Task | Duration | Start | Finish | Predecessors | Baseline start | Baseline finish | Baseline duration | Total slack | Free slack | Tipo de documento | Área | Sub-área | Disciplina | Título | Formato | Quantidade | Agrupamento Cecal | Término_LB_R0 | Início_LB_R0 |
| --- | --- | --- | --- | --- | --- | --- | --- | --- | --- | --- | --- | --- | --- | --- | --- | --- | --- | --- | --- | --- | --- |
| 155 | 1.4.23 | **DT-F0008-0302-MB-L-00013** | 20d | 2026-08-11 | 2026-09-08 |  | 2026-08-05 | 2026-09-01 | 20d | 38d |  | DT - Detalhe Típico | 03 - REDUÇÃO | 02 - CARREGAMENTO | L - MECÂNICA / ARRANJOS | BAR SYSTEM - CALHAS ARRENGEMENT | A1 (841x594mm) | 01 | Revisão do sistema de carregamento | Ter 01/09/26 | Qua 05/08/26 |
| 156 | 1.4.23.1 | Emissão inicial | 10d | 2026-08-11 | 2026-08-25 | 146 | 2026-08-05 | 2026-08-18 | 10d | 38d | 0d |  |  |  |  |  |  |  |  | Ter 18/08/26 |  |
| 157 | 1.4.23.2 | Avaliação do Cliente | 5d | 2026-08-25 | 2026-09-01 | 156 | 2026-08-19 | 2026-08-25 | 5d | 38d | 0d |  |  |  |  |  |  |  |  | Ter 25/08/26 |  |
| 158 | 1.4.23.3 | Atendimento de Comentário | 3d | 2026-09-01 | 2026-09-04 | 157 | 2026-08-26 | 2026-08-28 | 3d | 38d | 0d |  |  |  |  |  |  |  |  | Sex 28/08/26 |  |
| 159 | 1.4.23.4 | Aprovação | 2d | 2026-09-04 | 2026-09-08 | 158 | 2026-08-31 | 2026-09-01 | 2d | 38d |  |  |  |  |  |  |  |  |  | Ter 01/09/26 |  |
| 160 | 1.4.24 | **DT-F0008-0302-MB-L-00014** | 20d | 2026-08-11 | 2026-09-08 |  | 2026-08-05 | 2026-09-01 | 20d | 38d |  | DT - Detalhe Típico | 03 - REDUÇÃO | 02 - CARREGAMENTO | L - MECÂNICA / ARRANJOS | BAR CALHAS - MARCA A | A1 (841x594mm) | 01 | Revisão do sistema de carregamento | Ter 01/09/26 | Qua 05/08/26 |
| 161 | 1.4.24.1 | Emissão inicial | 10d | 2026-08-11 | 2026-08-25 | 146 | 2026-08-05 | 2026-08-18 | 10d | 38d | 0d |  |  |  |  |  |  |  |  | Ter 18/08/26 |  |
| 162 | 1.4.24.2 | Avaliação do Cliente | 5d | 2026-08-25 | 2026-09-01 | 161 | 2026-08-19 | 2026-08-25 | 5d | 38d | 0d |  |  |  |  |  |  |  |  | Ter 25/08/26 |  |
| 163 | 1.4.24.3 | Atendimento de Comentário | 3d | 2026-09-01 | 2026-09-04 | 162 | 2026-08-26 | 2026-08-28 | 3d | 38d | 0d |  |  |  |  |  |  |  |  | Sex 28/08/26 |  |
| 164 | 1.4.24.4 | Aprovação | 2d | 2026-09-04 | 2026-09-08 | 163 | 2026-08-31 | 2026-09-01 | 2d | 38d |  |  |  |  |  |  |  |  |  | Ter 01/09/26 |  |
| 165 | 1.4.25 | **DT-F0008-0302-MB-L-00015** | 20d | 2026-08-11 | 2026-09-08 |  | 2026-08-05 | 2026-09-01 | 20d | 38d |  | DT - Detalhe Típico | 03 - REDUÇÃO | 02 - CARREGAMENTO | L - MECÂNICA / ARRANJOS | BAR CALHAS - MARCA B | A1 (841x594mm) | 01 | Revisão do sistema de carregamento | Ter 01/09/26 | Qua 05/08/26 |
| 166 | 1.4.25.1 | Emissão inicial | 10d | 2026-08-11 | 2026-08-25 | 146 | 2026-08-05 | 2026-08-18 | 10d | 38d | 0d |  |  |  |  |  |  |  |  | Ter 18/08/26 |  |
| 167 | 1.4.25.2 | Avaliação do Cliente | 5d | 2026-08-25 | 2026-09-01 | 166 | 2026-08-19 | 2026-08-25 | 5d | 38d | 0d |  |  |  |  |  |  |  |  | Ter 25/08/26 |  |
| 168 | 1.4.25.3 | Atendimento de Comentário | 3d | 2026-09-01 | 2026-09-04 | 167 | 2026-08-26 | 2026-08-28 | 3d | 38d | 0d |  |  |  |  |  |  |  |  | Sex 28/08/26 |  |
| 169 | 1.4.25.4 | Aprovação | 2d | 2026-09-04 | 2026-09-08 | 168 | 2026-08-31 | 2026-09-01 | 2d | 38d |  |  |  |  |  |  |  |  |  | Ter 01/09/26 |  |
| 170 | 1.4.26 | **DT-F0008-0302-MB-L-00016** | 20d | 2026-08-11 | 2026-09-08 |  | 2026-08-05 | 2026-09-01 | 20d | 38d |  | DT - Detalhe Típico | 03 - REDUÇÃO | 02 - CARREGAMENTO | L - MECÂNICA / ARRANJOS | BAR CALHAS - MARCA C | A1 (841x594mm) | 01 | Revisão do sistema de carregamento | Ter 01/09/26 | Qua 05/08/26 |
| 171 | 1.4.26.1 | Emissão inicial | 10d | 2026-08-11 | 2026-08-25 | 146 | 2026-08-05 | 2026-08-18 | 10d | 38d | 0d |  |  |  |  |  |  |  |  | Ter 18/08/26 |  |
| 172 | 1.4.26.2 | Avaliação do Cliente | 5d | 2026-08-25 | 2026-09-01 | 171 | 2026-08-19 | 2026-08-25 | 5d | 38d | 0d |  |  |  |  |  |  |  |  | Ter 25/08/26 |  |
| 173 | 1.4.26.3 | Atendimento de Comentário | 3d | 2026-09-01 | 2026-09-04 | 172 | 2026-08-26 | 2026-08-28 | 3d | 38d | 0d |  |  |  |  |  |  |  |  | Sex 28/08/26 |  |
| 174 | 1.4.26.4 | Aprovação | 2d | 2026-09-04 | 2026-09-08 | 173 | 2026-08-31 | 2026-09-01 | 2d | 38d |  |  |  |  |  |  |  |  |  | Ter 01/09/26 |  |
| 175 | 1.4.27 | **DT-F0008-0302-MB-L-00017** | 20d | 2026-08-11 | 2026-09-08 |  | 2026-08-05 | 2026-09-01 | 20d | 38d |  | DT - Detalhe Típico | 03 - REDUÇÃO | 02 - CARREGAMENTO | L - MECÂNICA / ARRANJOS | BAR CALHAS - MARCA D | A1 (841x594mm) | 01 | Revisão do sistema de carregamento | Ter 01/09/26 | Qua 05/08/26 |
| 176 | 1.4.27.1 | Emissão inicial | 10d | 2026-08-11 | 2026-08-25 | 146 | 2026-08-05 | 2026-08-18 | 10d | 38d | 0d |  |  |  |  |  |  |  |  | Ter 18/08/26 |  |
| 177 | 1.4.27.2 | Avaliação do Cliente | 5d | 2026-08-25 | 2026-09-01 | 176 | 2026-08-19 | 2026-08-25 | 5d | 38d | 0d |  |  |  |  |  |  |  |  | Ter 25/08/26 |  |
| 178 | 1.4.27.3 | Atendimento de Comentário | 3d | 2026-09-01 | 2026-09-04 | 177 | 2026-08-26 | 2026-08-28 | 3d | 38d | 0d |  |  |  |  |  |  |  |  | Sex 28/08/26 |  |
| 179 | 1.4.27.4 | Aprovação | 2d | 2026-09-04 | 2026-09-08 | 178 | 2026-08-31 | 2026-09-01 | 2d | 38d |  |  |  |  |  |  |  |  |  | Ter 01/09/26 |  |

| ID | WBS | Task | Duration | Start | Finish | Predecessors | Baseline start | Baseline finish | Baseline duration | Total slack | Free slack | Tipo de documento | Área | Sub-área | Disciplina | Título | Formato | Quantidade | Agrupamento Cecal | Término_LB_R0 | Início_LB_R0 |
| --- | --- | --- | --- | --- | --- | --- | --- | --- | --- | --- | --- | --- | --- | --- | --- | --- | --- | --- | --- | --- | --- |
| 180 | 1.4.28 | **DT-F0008-0302-MB-L-00018** | 20d | 2026-08-11 | 2026-09-08 |  | 2026-08-05 | 2026-09-01 | 20d | 38d |  | DT - Detalhe Típico | 03 - REDUÇÃO | 02 - CARREGAMENTO | L - MECÂNICA / ARRANJOS | BAR CALHAS - DETAIL TUBES | A1 (841x594mm) | 01 | Revisão do sistema de carregamento | Ter 01/09/26 | Qua 05/08/26 |
| 181 | 1.4.28.1 | Emissão inicial | 10d | 2026-08-11 | 2026-08-25 | 146 | 2026-08-05 | 2026-08-18 | 10d | 38d | 0d |  |  |  |  |  |  |  |  | Ter 18/08/26 |  |
| 182 | 1.4.28.2 | Avaliação do Cliente | 5d | 2026-08-25 | 2026-09-01 | 181 | 2026-08-19 | 2026-08-25 | 5d | 38d | 0d |  |  |  |  |  |  |  |  | Ter 25/08/26 |  |
| 183 | 1.4.28.3 | Atendimento de Comentário | 3d | 2026-09-01 | 2026-09-04 | 182 | 2026-08-26 | 2026-08-28 | 3d | 38d | 0d |  |  |  |  |  |  |  |  | Sex 28/08/26 |  |
| 184 | 1.4.28.4 | Aprovação | 2d | 2026-09-04 | 2026-09-08 | 183 | 2026-08-31 | 2026-09-01 | 2d | 38d |  |  |  |  |  |  |  |  |  | Ter 01/09/26 |  |
| 185 | 1.4.29 | **DT-F0008-0302-MB-L-00019** | 20d | 2026-08-11 | 2026-09-08 |  | 2026-08-05 | 2026-09-01 | 20d | 38d |  | DT - Detalhe Típico | 03 - REDUÇÃO | 02 - CARREGAMENTO | L - MECÂNICA / ARRANJOS | BAR CALHAS - DETAIL TUBES 2 | A1 (841x594mm) | 01 | Revisão do sistema de carregamento | Ter 01/09/26 | Qua 05/08/26 |
| 186 | 1.4.29.1 | Emissão inicial | 10d | 2026-08-11 | 2026-08-25 | 146 | 2026-08-05 | 2026-08-18 | 10d | 38d | 0d |  |  |  |  |  |  |  |  | Ter 18/08/26 |  |
| 187 | 1.4.29.2 | Avaliação do Cliente | 5d | 2026-08-25 | 2026-09-01 | 186 | 2026-08-19 | 2026-08-25 | 5d | 38d | 0d |  |  |  |  |  |  |  |  | Ter 25/08/26 |  |
| 188 | 1.4.29.3 | Atendimento de Comentário | 3d | 2026-09-01 | 2026-09-04 | 187 | 2026-08-26 | 2026-08-28 | 3d | 38d | 0d |  |  |  |  |  |  |  |  | Sex 28/08/26 |  |
| 189 | 1.4.29.4 | Aprovação | 2d | 2026-09-04 | 2026-09-08 | 188 | 2026-08-31 | 2026-09-01 | 2d | 38d |  |  |  |  |  |  |  |  |  | Ter 01/09/26 |  |
| 190 | 1.4.30 | **DT-F0008-0302-MB-L-00020** | 20d | 2026-08-11 | 2026-09-08 |  | 2026-08-05 | 2026-09-01 | 20d | 28d |  | DT - Detalhe Típico | 03 - REDUÇÃO | 02 - CARREGAMENTO | L - MECÂNICA / ARRANJOS | COMBUSTÍVEL LATERAL - TUBULAÇÃO | A1 (841x594mm) | 01 | Revisão do sistema de carregamento | Ter 01/09/26 | Qua 05/08/26 |
| 191 | 1.4.30.1 | Emissão inicial | 10d | 2026-08-11 | 2026-08-25 | 146 | 2026-08-05 | 2026-08-18 | 10d | 28d | 0d |  |  |  |  |  |  |  |  | Ter 18/08/26 |  |
| 192 | 1.4.30.2 | Avaliação do Cliente | 5d | 2026-08-25 | 2026-09-01 | 191 | 2026-08-19 | 2026-08-25 | 5d | 38d | 0d |  |  |  |  |  |  |  |  | Ter 25/08/26 |  |
| 193 | 1.4.30.3 | Atendimento de Comentário | 3d | 2026-09-01 | 2026-09-04 | 192 | 2026-08-26 | 2026-08-28 | 3d | 38d | 0d |  |  |  |  |  |  |  |  | Sex 28/08/26 |  |
| 194 | 1.4.30.4 | Aprovação | 2d | 2026-09-04 | 2026-09-08 | 193 | 2026-08-31 | 2026-09-01 | 2d | 38d |  |  |  |  |  |  |  |  |  | Ter 01/09/26 |  |
| 195 | 1.4.31 | **DT-F0008-0302-MB-L-00021** | 20d | 2026-08-11 | 2026-09-08 |  | 2026-08-05 | 2026-09-01 | 20d | 38d |  | DT - Detalhe Típico | 03 - REDUÇÃO | 02 - CARREGAMENTO | L - MECÂNICA / ARRANJOS | COMBUSTÍVEL LATERAL CALHAS - MARCA A | A1 (841x594mm) | 01 | Revisão do sistema de carregamento | Ter 01/09/26 | Qua 05/08/26 |
| 196 | 1.4.31.1 | Emissão inicial | 10d | 2026-08-11 | 2026-08-25 | 146 | 2026-08-05 | 2026-08-18 | 10d | 38d | 0d |  |  |  |  |  |  |  |  | Ter 18/08/26 |  |
| 197 | 1.4.31.2 | Avaliação do Cliente | 5d | 2026-08-25 | 2026-09-01 | 196 | 2026-08-19 | 2026-08-25 | 5d | 38d | 0d |  |  |  |  |  |  |  |  | Ter 25/08/26 |  |
| 198 | 1.4.31.3 | Atendimento de Comentário | 3d | 2026-09-01 | 2026-09-04 | 197 | 2026-08-26 | 2026-08-28 | 3d | 38d | 0d |  |  |  |  |  |  |  |  | Sex 28/08/26 |  |
| 199 | 1.4.31.4 | Aprovação | 2d | 2026-09-04 | 2026-09-08 | 198 | 2026-08-31 | 2026-09-01 | 2d | 38d |  |  |  |  |  |  |  |  |  | Ter 01/09/26 |  |
| 200 | 1.4.32 | **DT-F0008-0302-MB-L-00022** | 20d | 2026-08-25 | 2026-09-22 |  | 2026-08-19 | 2026-09-15 | 20d | 28d |  | DT - Detalhe Típico | 03 - REDUÇÃO | 02 - CARREGAMENTO | L - MECÂNICA / ARRANJOS | COMBUSTÍVEL LATERAL CALHAS - MARCA B | A1 (841x594mm) | 01 | Revisão do sistema de carregamento | Ter 15/09/26 | Qua 19/08/26 |
| 201 | 1.4.32.1 | Emissão inicial | 10d | 2026-08-25 | 2026-09-08 | 191 | 2026-08-19 | 2026-09-01 | 10d | 28d | 0d |  |  |  |  |  |  |  |  | Ter 01/09/26 |  |
| 202 | 1.4.32.2 | Avaliação do Cliente | 5d | 2026-09-08 | 2026-09-15 | 201 | 2026-09-02 | 2026-09-08 | 5d | 28d | 0d |  |  |  |  |  |  |  |  | Ter 08/09/26 |  |
| 203 | 1.4.32.3 | Atendimento de Comentário | 3d | 2026-09-15 | 2026-09-18 | 202 | 2026-09-09 | 2026-09-11 | 3d | 28d | 0d |  |  |  |  |  |  |  |  | Sex 11/09/26 |  |
| 204 | 1.4.32.4 | Aprovação | 2d | 2026-09-18 | 2026-09-22 | 203 | 2026-09-14 | 2026-09-15 | 2d | 28d |  |  |  |  |  |  |  |  |  | Ter 15/09/26 |  |

| ID | WBS | Task | Duration | Start | Finish | Predecessors | Baseline start | Baseline finish | Baseline duration | Total slack | Free slack | Tipo de documento | Área | Sub-área | Disciplina | Título | Formato | Quantidade | Agrupamento Cecal | Término_LB_R0 | Início_LB_R0 |
| --- | --- | --- | --- | --- | --- | --- | --- | --- | --- | --- | --- | --- | --- | --- | --- | --- | --- | --- | --- | --- | --- |
| 205 | 1.4.33 | **DT-F0008-0302-MB-L-00023** | 20d | 2026-08-25 | 2026-09-22 |  | 2026-08-19 | 2026-09-15 | 20d | 28d |  | DT - Detalhe Típico | 03 - REDUÇÃO | 02 - CARREGAMENTO | L - MECÂNICA / ARRANJOS | COMBUSTÍVEL LATERAL CALHAS - MARCA C | A1 (841x594mm) | 01 | Revisão do sistema de carregamento | Ter 15/09/26 | Qua 19/08/26 |
| 206 | 1.4.33.1 | Emissão inicial | 10d | 2026-08-25 | 2026-09-08 | 191 | 2026-08-19 | 2026-09-01 | 10d | 28d | 0d |  |  |  |  |  |  |  |  | Ter 01/09/26 |  |
| 207 | 1.4.33.2 | Avaliação do Cliente | 5d | 2026-09-08 | 2026-09-15 | 206 | 2026-09-02 | 2026-09-08 | 5d | 28d | 0d |  |  |  |  |  |  |  |  | Ter 08/09/26 |  |
| 208 | 1.4.33.3 | Atendimento de Comentário | 3d | 2026-09-15 | 2026-09-18 | 207 | 2026-09-09 | 2026-09-11 | 3d | 28d | 0d |  |  |  |  |  |  |  |  | Sex 11/09/26 |  |
| 209 | 1.4.33.4 | Aprovação | 2d | 2026-09-18 | 2026-09-22 | 208 | 2026-09-14 | 2026-09-15 | 2d | 28d |  |  |  |  |  |  |  |  |  | Ter 15/09/26 |  |
| 210 | 1.4.34 | **DT-F0008-0302-MB-L-00024** | 20d | 2026-08-25 | 2026-09-22 |  | 2026-08-19 | 2026-09-15 | 20d | 28d |  | DT - Detalhe Típico | 03 - REDUÇÃO | 02 - CARREGAMENTO | L - MECÂNICA / ARRANJOS | COMBUSTÍVEL LATERAL CALHAS - MARCA D | A1 (841x594mm) | 01 | Revisão do sistema de carregamento | Ter 15/09/26 | Qua 19/08/26 |
| 211 | 1.4.34.1 | Emissão inicial | 10d | 2026-08-25 | 2026-09-08 | 191 | 2026-08-19 | 2026-09-01 | 10d | 28d | 0d |  |  |  |  |  |  |  |  | Ter 01/09/26 |  |
| 212 | 1.4.34.2 | Avaliação do Cliente | 5d | 2026-09-08 | 2026-09-15 | 211 | 2026-09-02 | 2026-09-08 | 5d | 28d | 0d |  |  |  |  |  |  |  |  | Ter 08/09/26 |  |
| 213 | 1.4.34.3 | Atendimento de Comentário | 3d | 2026-09-15 | 2026-09-18 | 212 | 2026-09-09 | 2026-09-11 | 3d | 28d | 0d |  |  |  |  |  |  |  |  | Sex 11/09/26 |  |
| 214 | 1.4.34.4 | Aprovação | 2d | 2026-09-18 | 2026-09-22 | 213 | 2026-09-14 | 2026-09-15 | 2d | 28d |  |  |  |  |  |  |  |  |  | Ter 15/09/26 |  |
| 215 | 1.4.35 | **DT-F0008-0302-MB-L-00025** | 20d | 2026-08-25 | 2026-09-22 |  | 2026-08-19 | 2026-09-15 | 20d | 28d |  | DT - Detalhe Típico | 03 - REDUÇÃO | 02 - CARREGAMENTO | L - MECÂNICA / ARRANJOS | COMBUSTÍVEL LATERAL - DETALHES DOS TUBOS 1 | A1 (841x594mm) | 01 | Revisão do sistema de carregamento | Ter 15/09/26 | Qua 19/08/26 |
| 216 | 1.4.35.1 | Emissão inicial | 10d | 2026-08-25 | 2026-09-08 | 191 | 2026-08-19 | 2026-09-01 | 10d | 28d | 0d |  |  |  |  |  |  |  |  | Ter 01/09/26 |  |
| 217 | 1.4.35.2 | Avaliação do Cliente | 5d | 2026-09-08 | 2026-09-15 | 216 | 2026-09-02 | 2026-09-08 | 5d | 28d | 0d |  |  |  |  |  |  |  |  | Ter 08/09/26 |  |
| 218 | 1.4.35.3 | Atendimento de Comentário | 3d | 2026-09-15 | 2026-09-18 | 217 | 2026-09-09 | 2026-09-11 | 3d | 28d | 0d |  |  |  |  |  |  |  |  | Sex 11/09/26 |  |
| 219 | 1.4.35.4 | Aprovação | 2d | 2026-09-18 | 2026-09-22 | 218 | 2026-09-14 | 2026-09-15 | 2d | 28d |  |  |  |  |  |  |  |  |  | Ter 15/09/26 |  |
| 220 | 1.4.36 | **DT-F0008-0302-MB-L-00026** | 20d | 2026-08-25 | 2026-09-22 |  | 2026-08-19 | 2026-09-15 | 20d | 28d |  | DT - Detalhe Típico | 03 - REDUÇÃO | 02 - CARREGAMENTO | L - MECÂNICA / ARRANJOS | COMBUSTÍVEL LATERAL - DETALHES DOS TUBOS 2 | A1 (841x594mm) | 01 | Revisão do sistema de carregamento | Ter 15/09/26 | Qua 19/08/26 |
| 221 | 1.4.36.1 | Emissão inicial | 10d | 2026-08-25 | 2026-09-08 | 191 | 2026-08-19 | 2026-09-01 | 10d | 28d | 0d |  |  |  |  |  |  |  |  | Ter 01/09/26 |  |
| 222 | 1.4.36.2 | Avaliação do Cliente | 5d | 2026-09-08 | 2026-09-15 | 221 | 2026-09-02 | 2026-09-08 | 5d | 28d | 0d |  |  |  |  |  |  |  |  | Ter 08/09/26 |  |
| 223 | 1.4.36.3 | Atendimento de Comentário | 3d | 2026-09-15 | 2026-09-18 | 222 | 2026-09-09 | 2026-09-11 | 3d | 28d | 0d |  |  |  |  |  |  |  |  | Sex 11/09/26 |  |
| 224 | 1.4.36.4 | Aprovação | 2d | 2026-09-18 | 2026-09-22 | 223 | 2026-09-14 | 2026-09-15 | 2d | 28d |  |  |  |  |  |  |  |  |  | Ter 15/09/26 |  |
| 225 | 1.4.37 | **DT-F0008-0302-MB-L-00027** | 20d | 2026-08-25 | 2026-09-22 |  | 2026-08-19 | 2026-09-15 | 20d | 28d |  | DT - Detalhe Típico | 03 - REDUÇÃO | 02 - CARREGAMENTO | L - MECÂNICA / ARRANJOS | BOOSTER SYSTEM - CALHAS ARRENGEMENT | A1 (841x594mm) | 01 | Revisão do sistema de carregamento | Ter 15/09/26 | Qua 19/08/26 |
| 226 | 1.4.37.1 | Emissão inicial | 10d | 2026-08-25 | 2026-09-08 | 191 | 2026-08-19 | 2026-09-01 | 10d | 28d | 0d |  |  |  |  |  |  |  |  | Ter 01/09/26 |  |
| 227 | 1.4.37.2 | Avaliação do Cliente | 5d | 2026-09-08 | 2026-09-15 | 226 | 2026-09-02 | 2026-09-08 | 5d | 28d | 0d |  |  |  |  |  |  |  |  | Ter 08/09/26 |  |
| 228 | 1.4.37.3 | Atendimento de Comentário | 3d | 2026-09-15 | 2026-09-18 | 227 | 2026-09-09 | 2026-09-11 | 3d | 28d | 0d |  |  |  |  |  |  |  |  | Sex 11/09/26 |  |
| 229 | 1.4.37.4 | Aprovação | 2d | 2026-09-18 | 2026-09-22 | 228 | 2026-09-14 | 2026-09-15 | 2d | 28d |  |  |  |  |  |  |  |  |  | Ter 15/09/26 |  |

| ID | WBS | Task | Duration | Start | Finish | Predecessors | Baseline start | Baseline finish | Baseline duration | Total slack | Free slack | Constraint | Tipo de documento | Área | Sub-área | Disciplina | Título | Formato | Quantidade | Agrupamento Cecal | Término_LB_R0 | Início_LB_R0 |
| --- | --- | --- | --- | --- | --- | --- | --- | --- | --- | --- | --- | --- | --- | --- | --- | --- | --- | --- | --- | --- | --- | --- |
| 230 | 1.4.38 | **DT-F0008-0302-MB-L-00028** | 20d | 2026-08-25 | 2026-09-22 |  | 2026-08-19 | 2026-09-15 | 20d | 28d |  |  | DT - Detalhe Típico | 03 - REDUÇÃO | 02 - CARREGAMENTO | L - MECÂNICA / ARRANJOS | BOOSTER CALHAS - MARCAS A | A1 (841x594mm) | 01 | Revisão do sistema de carregamento | Ter 15/09/26 | Qua 19/08/26 |
| 231 | 1.4.38.1 | Emissão inicial | 10d | 2026-08-25 | 2026-09-08 | 191 | 2026-08-19 | 2026-09-01 | 10d | 28d | 0d |  |  |  |  |  |  |  |  |  | Ter 01/09/26 |  |
| 232 | 1.4.38.2 | Avaliação do Cliente | 5d | 2026-09-08 | 2026-09-15 | 231 | 2026-09-02 | 2026-09-08 | 5d | 28d | 0d |  |  |  |  |  |  |  |  |  | Ter 08/09/26 |  |
| 233 | 1.4.38.3 | Atendimento de Comentário | 3d | 2026-09-15 | 2026-09-18 | 232 | 2026-09-09 | 2026-09-11 | 3d | 28d | 0d |  |  |  |  |  |  |  |  |  | Sex 11/09/26 |  |
| 234 | 1.4.38.4 | Aprovação | 2d | 2026-09-18 | 2026-09-22 | 233 | 2026-09-14 | 2026-09-15 | 2d | 28d |  |  |  |  |  |  |  |  |  |  | Ter 15/09/26 |  |
| 235 | 1.4.39 | **DT-F0008-0302-MB-L-00029** | 20d | 2026-08-25 | 2026-09-22 |  | 2026-08-19 | 2026-09-15 | 20d | 28d |  |  | DT - Detalhe Típico | 03 - REDUÇÃO | 02 - CARREGAMENTO | L - MECÂNICA / ARRANJOS | BOOSTER CALHAS - MARCAS B | A1 (841x594mm) | 01 | Revisão do sistema de carregamento | Ter 15/09/26 | Qua 19/08/26 |
| 236 | 1.4.39.1 | Emissão inicial | 10d | 2026-08-25 | 2026-09-08 | 191 | 2026-08-19 | 2026-09-01 | 10d | 28d | 0d |  |  |  |  |  |  |  |  |  | Ter 01/09/26 |  |
| 237 | 1.4.39.2 | Avaliação do Cliente | 5d | 2026-09-08 | 2026-09-15 | 236 | 2026-09-02 | 2026-09-08 | 5d | 28d | 0d |  |  |  |  |  |  |  |  |  | Ter 08/09/26 |  |
| 238 | 1.4.39.3 | Atendimento de Comentário | 3d | 2026-09-15 | 2026-09-18 | 237 | 2026-09-09 | 2026-09-11 | 3d | 28d | 0d |  |  |  |  |  |  |  |  |  | Sex 11/09/26 |  |
| 239 | 1.4.39.4 | Aprovação | 2d | 2026-09-18 | 2026-09-22 | 238 | 2026-09-14 | 2026-09-15 | 2d | 28d |  |  |  |  |  |  |  |  |  |  | Ter 15/09/26 |  |
| 240 | 1.4.40 | **DT-F0008-0302-MB-L-00030** | 20d | 2026-08-25 | 2026-09-22 |  | 2026-08-19 | 2026-09-15 | 20d | 28d |  |  | DT - Detalhe Típico | 03 - REDUÇÃO | 02 - CARREGAMENTO | L - MECÂNICA / ARRANJOS | BOOSTER CALHAS - MARCAS C | A1 (841x594mm) | 01 | Revisão do sistema de carregamento | Ter 15/09/26 | Qua 19/08/26 |
| 241 | 1.4.40.1 | Emissão inicial | 10d | 2026-08-25 | 2026-09-08 | 191 | 2026-08-19 | 2026-09-01 | 10d | 28d | 0d |  |  |  |  |  |  |  |  |  | Ter 01/09/26 |  |
| 242 | 1.4.40.2 | Avaliação do Cliente | 5d | 2026-09-08 | 2026-09-15 | 241 | 2026-09-02 | 2026-09-08 | 5d | 28d | 0d |  |  |  |  |  |  |  |  |  | Ter 08/09/26 |  |
| 243 | 1.4.40.3 | Atendimento de Comentário | 3d | 2026-09-15 | 2026-09-18 | 242 | 2026-09-09 | 2026-09-11 | 3d | 28d | 0d |  |  |  |  |  |  |  |  |  | Sex 11/09/26 |  |
| 244 | 1.4.40.4 | Aprovação | 2d | 2026-09-18 | 2026-09-22 | 243 | 2026-09-14 | 2026-09-15 | 2d | 28d |  |  |  |  |  |  |  |  |  |  | Ter 15/09/26 |  |
| 245 | 1.4.41 | **DT-F0008-0302-MB-L-00031** | 20d | 2026-08-25 | 2026-09-22 |  | 2026-08-19 | 2026-09-15 | 20d | 28d |  |  | DT - Detalhe Típico | 03 - REDUÇÃO | 02 - CARREGAMENTO | L - MECÂNICA / ARRANJOS | BOOSTER CALHAS - DETAIL TUBES | A1 (841x594mm) | 01 | Revisão do sistema de carregamento | Ter 15/09/26 | Qua 19/08/26 |
| 246 | 1.4.41.1 | Emissão inicial | 10d | 2026-08-25 | 2026-09-08 | 191 | 2026-08-19 | 2026-09-01 | 10d | 28d | 0d |  |  |  |  |  |  |  |  |  | Ter 01/09/26 |  |
| 247 | 1.4.41.2 | Avaliação do Cliente | 5d | 2026-09-08 | 2026-09-15 | 246 | 2026-09-02 | 2026-09-08 | 5d | 28d | 0d |  |  |  |  |  |  |  |  |  | Ter 08/09/26 |  |
| 248 | 1.4.41.3 | Atendimento de Comentário | 3d | 2026-09-15 | 2026-09-18 | 247 | 2026-09-09 | 2026-09-11 | 3d | 28d | 0d |  |  |  |  |  |  |  |  |  | Sex 11/09/26 |  |
| 249 | 1.4.41.4 | Aprovação | 2d | 2026-09-18 | 2026-09-22 | 248 | 2026-09-14 | 2026-09-15 | 2d | 28d |  |  |  |  |  |  |  |  |  |  | Ter 15/09/26 |  |
| 250 | 1.4.42 | **AG-F0008-0309-MB-L-00001** | 20d | 2026-07-24 | 2026-08-21 | 17 | 2026-07-23 | 2026-08-20 | 20d | 50d |  |  | AG - Arranjo (AG) | 03 - REDUÇÃO | 09 - FORNO TECNORED | L - MECÂNICA / ARRANJOS | ARRANJO GERAL DOS FORNOS E FUNDAÇÃO | A1 (841x594mm) | 01 | Readequação da fundação | Qui 20/08/26 | Qui 23/07/26 |
| 251 | 1.4.42.1 | Emissão inicial | 10d | 2026-07-24 | 2026-08-07 | 897 | 2026-07-23 | 2026-08-06 | 10d | 50d | 0d | finish no earlier than 2026-07-07 |  |  |  |  |  |  |  |  | Qui 06/08/26 |  |
| 252 | 1.4.42.2 | Avaliação do Cliente | 5d | 2026-08-07 | 2026-08-14 | 251 | 2026-08-06 | 2026-08-13 | 5d | 50d | 0d | finish no earlier than 2026-07-07 |  |  |  |  |  |  |  |  | Qui 13/08/26 |  |
| 253 | 1.4.42.3 | Atendimento de Comentário | 3d | 2026-08-14 | 2026-08-19 | 252 | 2026-08-13 | 2026-08-18 | 3d | 50d | 0d | finish no earlier than 2026-07-07 |  |  |  |  |  |  |  |  | Ter 18/08/26 |  |
| 254 | 1.4.42.4 | Aprovação | 2d | 2026-08-19 | 2026-08-21 | 253 | 2026-08-18 | 2026-08-20 | 2d | 50d |  | finish no earlier than 2026-07-07 |  |  |  |  |  |  |  |  | Qui 20/08/26 |  |

| ID | WBS | Task | Duration | Start | Finish | Predecessors | Baseline start | Baseline finish | Baseline duration | Total slack | Free slack | Constraint | Tipo de documento | Área | Sub-área | Disciplina | Título | Formato | Quantidade | Agrupamento Cecal | Término_LB_R0 | Início_LB_R0 |
| --- | --- | --- | --- | --- | --- | --- | --- | --- | --- | --- | --- | --- | --- | --- | --- | --- | --- | --- | --- | --- | --- | --- |
| 255 | 1.4.43 | **AG-F0008-0309-MB-L-00002** | 20d | 2026-07-10 | 2026-08-07 |  | 2026-07-09 | 2026-08-06 | 20d | 60d |  |  | AG - Arranjo (AG) | 03 - REDUÇÃO | 09 - FORNO TECNORED | L - MECÂNICA / ARRANJOS | FR-400A FORNO PRÓPRIO | A1 (841x594mm) | 01 | Revisão do projeto do forno - carcaça e refratário | Qui 06/08/26 | Qui 09/07/26 |
| 256 | 1.4.43.1 | Emissão inicial | 10d | 2026-07-10 | 2026-07-24 | 251SF | 2026-07-09 | 2026-07-23 | 10d | 60d | 0d | finish no earlier than 2026-07-21 |  |  |  |  |  |  |  |  | Qui 23/07/26 |  |
| 257 | 1.4.43.2 | Avaliação do Cliente | 5d | 2026-07-24 | 2026-07-31 | 256 | 2026-07-23 | 2026-07-30 | 5d | 60d | 0d | finish no earlier than 2026-07-21 |  |  |  |  |  |  |  |  | Qui 30/07/26 |  |
| 258 | 1.4.43.3 | Atendimento de Comentário | 3d | 2026-07-31 | 2026-08-05 | 257 | 2026-07-30 | 2026-08-04 | 3d | 60d | 0d | finish no earlier than 2026-07-21 |  |  |  |  |  |  |  |  | Ter 04/08/26 |  |
| 259 | 1.4.43.4 | Aprovação | 2d | 2026-08-05 | 2026-08-07 | 258 | 2026-08-04 | 2026-08-06 | 2d | 60d |  | finish no earlier than 2026-07-21 |  |  |  |  |  |  |  |  | Qui 06/08/26 |  |
| 260 | 1.4.44 | **AG-F0008-0309-MB-L-00003** | 20d | 2026-07-10 | 2026-08-07 |  | 2026-07-09 | 2026-08-06 | 20d | 60d |  |  | AG - Arranjo (AG) | 03 - REDUÇÃO | 09 - FORNO TECNORED | L - MECÂNICA / ARRANJOS | FR-400A GEOMETRIA INTERNA | A1 (841x594mm) | 01 | Revisão do projeto do forno - carcaça e refratário | Qui 06/08/26 | Qui 09/07/26 |
| 261 | 1.4.44.1 | Emissão inicial | 10d | 2026-07-10 | 2026-07-24 | 251SF | 2026-07-09 | 2026-07-23 | 10d | 60d | 0d | finish no earlier than 2026-07-21 |  |  |  |  |  |  |  |  | Qui 23/07/26 |  |
| 262 | 1.4.44.2 | Avaliação do Cliente | 5d | 2026-07-24 | 2026-07-31 | 261 | 2026-07-23 | 2026-07-30 | 5d | 60d | 0d | finish no earlier than 2026-07-21 |  |  |  |  |  |  |  |  | Qui 30/07/26 |  |
| 263 | 1.4.44.3 | Atendimento de Comentário | 3d | 2026-07-31 | 2026-08-05 | 262 | 2026-07-30 | 2026-08-04 | 3d | 60d | 0d | finish no earlier than 2026-07-21 |  |  |  |  |  |  |  |  | Ter 04/08/26 |  |
| 264 | 1.4.44.4 | Aprovação | 2d | 2026-08-05 | 2026-08-07 | 263 | 2026-08-04 | 2026-08-06 | 2d | 60d |  | finish no earlier than 2026-07-21 |  |  |  |  |  |  |  |  | Qui 06/08/26 |  |
| 265 | 1.4.45 | **AG-F0008-0309-MB-L-00004** | 20d | 2026-07-10 | 2026-08-07 |  | 2026-07-09 | 2026-08-06 | 20d | 60d |  |  | AG - Arranjo (AG) | 03 - REDUÇÃO | 09 - FORNO TECNORED | L - MECÂNICA / ARRANJOS | FORNOS COMPONENTES PRINCIPAIS | A1 (841x594mm) | 01 | Revisão do projeto do forno - carcaça e refratário | Qui 06/08/26 | Qui 09/07/26 |
| 266 | 1.4.45.1 | Emissão inicial | 10d | 2026-07-10 | 2026-07-24 | 251SF | 2026-07-09 | 2026-07-23 | 10d | 60d | 0d | finish no earlier than 2026-07-21 |  |  |  |  |  |  |  |  | Qui 23/07/26 |  |
| 267 | 1.4.45.2 | Avaliação do Cliente | 5d | 2026-07-24 | 2026-07-31 | 266 | 2026-07-23 | 2026-07-30 | 5d | 60d | 0d | finish no earlier than 2026-07-21 |  |  |  |  |  |  |  |  | Qui 30/07/26 |  |
| 268 | 1.4.45.3 | Atendimento de Comentário | 3d | 2026-07-31 | 2026-08-05 | 267 | 2026-07-30 | 2026-08-04 | 3d | 60d | 0d | finish no earlier than 2026-07-21 |  |  |  |  |  |  |  |  | Ter 04/08/26 |  |
| 269 | 1.4.45.4 | Aprovação | 2d | 2026-08-05 | 2026-08-07 | 268 | 2026-08-04 | 2026-08-06 | 2d | 60d |  | finish no earlier than 2026-07-21 |  |  |  |  |  |  |  |  | Qui 06/08/26 |  |
| 270 | 1.4.46 | **AG-F0008-0309-MB-L-00005** | 20d | 2026-07-10 | 2026-08-07 |  | 2026-07-09 | 2026-08-06 | 20d | 60d |  |  | AG - Arranjo (AG) | 03 - REDUÇÃO | 09 - FORNO TECNORED | L - MECÂNICA / ARRANJOS | FR-400B FORNO PROPRIO | A1 (841x594mm) | 01 | Revisão do projeto do forno - carcaça e refratário | Qui 06/08/26 | Qui 09/07/26 |
| 271 | 1.4.46.1 | Emissão inicial | 10d | 2026-07-10 | 2026-07-24 | 251SF | 2026-07-09 | 2026-07-23 | 10d | 60d | 0d | finish no earlier than 2026-07-21 |  |  |  |  |  |  |  |  | Qui 23/07/26 |  |
| 272 | 1.4.46.2 | Avaliação do Cliente | 5d | 2026-07-24 | 2026-07-31 | 271 | 2026-07-23 | 2026-07-30 | 5d | 60d | 0d | finish no earlier than 2026-07-21 |  |  |  |  |  |  |  |  | Qui 30/07/26 |  |
| 273 | 1.4.46.3 | Atendimento de Comentário | 3d | 2026-07-31 | 2026-08-05 | 272 | 2026-07-30 | 2026-08-04 | 3d | 60d | 0d | finish no earlier than 2026-07-21 |  |  |  |  |  |  |  |  | Ter 04/08/26 |  |
| 274 | 1.4.46.4 | Aprovação | 2d | 2026-08-05 | 2026-08-07 | 273 | 2026-08-04 | 2026-08-06 | 2d | 60d |  | finish no earlier than 2026-07-21 |  |  |  |  |  |  |  |  | Qui 06/08/26 |  |
| 275 | 1.4.47 | **AG-F0008-0309-MB-L-00006** | 20d | 2026-07-10 | 2026-08-07 |  | 2026-07-09 | 2026-08-06 | 20d | 60d |  |  | AG - Arranjo (AG) | 03 - REDUÇÃO | 09 - FORNO TECNORED | L - MECÂNICA / ARRANJOS | FR-400B GEOMETRIA INTERNA | A1 (841x594mm) | 01 | Revisão do projeto do forno - carcaça e refratário | Qui 06/08/26 | Qui 09/07/26 |
| 276 | 1.4.47.1 | Emissão inicial | 10d | 2026-07-10 | 2026-07-24 | 251SF | 2026-07-09 | 2026-07-23 | 10d | 60d | 0d | finish no earlier than 2026-07-21 |  |  |  |  |  |  |  |  | Qui 23/07/26 |  |
| 277 | 1.4.47.2 | Avaliação do Cliente | 5d | 2026-07-24 | 2026-07-31 | 276 | 2026-07-23 | 2026-07-30 | 5d | 60d | 0d | finish no earlier than 2026-07-21 |  |  |  |  |  |  |  |  | Qui 30/07/26 |  |
| 278 | 1.4.47.3 | Atendimento de Comentário | 3d | 2026-07-31 | 2026-08-05 | 277 | 2026-07-30 | 2026-08-04 | 3d | 60d | 0d | finish no earlier than 2026-07-21 |  |  |  |  |  |  |  |  | Ter 04/08/26 |  |
| 279 | 1.4.47.4 | Aprovação | 2d | 2026-08-05 | 2026-08-07 | 278 | 2026-08-04 | 2026-08-06 | 2d | 60d |  | finish no earlier than 2026-07-21 |  |  |  |  |  |  |  |  | Qui 06/08/26 |  |

| ID | WBS | Task | Duration | Start | Finish | Predecessors | Baseline start | Baseline finish | Baseline duration | Total slack | Free slack | Constraint | Tipo de documento | Área | Sub-área | Disciplina | Título | Formato | Quantidade | Agrupamento Cecal | Término_LB_R0 | Início_LB_R0 |
| --- | --- | --- | --- | --- | --- | --- | --- | --- | --- | --- | --- | --- | --- | --- | --- | --- | --- | --- | --- | --- | --- | --- |
| 280 | 1.4.48 | **AG-F0008-0309-MB-L-00007** | 20d | 2026-07-10 | 2026-08-07 |  | 2026-07-09 | 2026-08-06 | 20d | 60d |  |  | AG - Arranjo (AG) | 03 - REDUÇÃO | 09 - FORNO TECNORED | L - MECÂNICA / ARRANJOS | ELEVAÇÃO FORNO E SISTEMA DE CARREGAMENTO | A1 (841x594mm) | 01 | Revisão do sistema de carregamento | Qui 06/08/26 | Qui 09/07/26 |
| 281 | 1.4.48.1 | Emissão inicial | 10d | 2026-07-10 | 2026-07-24 | 251SF | 2026-07-09 | 2026-07-23 | 10d | 60d | 0d | finish no earlier than 2026-07-21 |  |  |  |  |  |  |  |  | Qui 23/07/26 |  |
| 282 | 1.4.48.2 | Avaliação do Cliente | 5d | 2026-07-24 | 2026-07-31 | 281 | 2026-07-23 | 2026-07-30 | 5d | 60d | 0d | finish no earlier than 2026-07-21 |  |  |  |  |  |  |  |  | Qui 30/07/26 |  |
| 283 | 1.4.48.3 | Atendimento de Comentário | 3d | 2026-07-31 | 2026-08-05 | 282 | 2026-07-30 | 2026-08-04 | 3d | 60d | 0d | finish no earlier than 2026-07-21 |  |  |  |  |  |  |  |  | Ter 04/08/26 |  |
| 284 | 1.4.48.4 | Aprovação | 2d | 2026-08-05 | 2026-08-07 | 283 | 2026-08-04 | 2026-08-06 | 2d | 60d |  | finish no earlier than 2026-07-21 |  |  |  |  |  |  |  |  | Qui 06/08/26 |  |
| 285 | 1.4.49 | **AG-F0008-0309-MB-L-00008** | 20d | 2026-07-10 | 2026-08-07 |  | 2026-07-09 | 2026-08-06 | 20d | 22d |  |  | AG - Arranjo (AG) | 03 - REDUÇÃO | 09 - FORNO TECNORED | L - MECÂNICA / ARRANJOS | ELEVAÇÃO FORNO E SISTEMA DE CARREGAMENTO | A1 (841x594mm) | 01 | Revisão do sistema de carregamento | Qui 06/08/26 | Qui 09/07/26 |
| 286 | 1.4.49.1 | Emissão inicial | 10d | 2026-07-10 | 2026-07-24 | 251SF | 2026-07-09 | 2026-07-23 | 10d | 22d | 0d | finish no earlier than 2026-07-21 |  |  |  |  |  |  |  |  | Qui 23/07/26 |  |
| 287 | 1.4.49.2 | Avaliação do Cliente | 5d | 2026-07-24 | 2026-07-31 | 286 | 2026-07-23 | 2026-07-30 | 5d | 60d | 0d | finish no earlier than 2026-07-21 |  |  |  |  |  |  |  |  | Qui 30/07/26 |  |
| 288 | 1.4.49.3 | Atendimento de Comentário | 3d | 2026-07-31 | 2026-08-05 | 287 | 2026-07-30 | 2026-08-04 | 3d | 60d | 0d | finish no earlier than 2026-07-21 |  |  |  |  |  |  |  |  | Ter 04/08/26 |  |
| 289 | 1.4.49.4 | Aprovação | 2d | 2026-08-05 | 2026-08-07 | 288 | 2026-08-04 | 2026-08-06 | 2d | 60d |  | finish no earlier than 2026-07-21 |  |  |  |  |  |  |  |  | Qui 06/08/26 |  |
| 290 | 1.4.50 | **DT-F0008-0309-MB-L-00001** | 20d | 2026-07-24 | 2026-08-21 |  | 2026-07-23 | 2026-08-20 | 20d | 50d |  |  | DT - Detalhe Típico | 03 - REDUÇÃO | 09 - FORNO TECNORED | L - MECÂNICA / ARRANJOS | MECANISMO CURTAIN WALL | A1 (841x594mm) | 01 | Revisão do projeto do forno - carcaça e refratário | Qui 20/08/26 | Qui 23/07/26 |
| 291 | 1.4.50.1 | Emissão inicial | 10d | 2026-07-24 | 2026-08-07 | 286 | 2026-07-23 | 2026-08-06 | 10d | 50d | 0d |  |  |  |  |  |  |  |  |  | Qui 06/08/26 |  |
| 292 | 1.4.50.2 | Avaliação do Cliente | 5d | 2026-08-07 | 2026-08-14 | 291 | 2026-08-06 | 2026-08-13 | 5d | 50d | 0d |  |  |  |  |  |  |  |  |  | Qui 13/08/26 |  |
| 293 | 1.4.50.3 | Atendimento de Comentário | 3d | 2026-08-14 | 2026-08-19 | 292 | 2026-08-13 | 2026-08-18 | 3d | 50d | 0d |  |  |  |  |  |  |  |  |  | Ter 18/08/26 |  |
| 294 | 1.4.50.4 | Aprovação | 2d | 2026-08-19 | 2026-08-21 | 293 | 2026-08-18 | 2026-08-20 | 2d | 50d |  |  |  |  |  |  |  |  |  |  | Qui 20/08/26 |  |
| 295 | 1.4.51 | **DT-F0008-0309-MB-L-00002** | 20d | 2026-07-24 | 2026-08-21 |  | 2026-07-23 | 2026-08-20 | 20d | 50d |  |  | DT - Detalhe Típico | 03 - REDUÇÃO | 09 - FORNO TECNORED | L - MECÂNICA / ARRANJOS | CONJUNTO VENTANEIRA ALGARAVIZ | A1 (841x594mm) | 01 | Revisão do projeto do forno - carcaça e refratário | Qui 20/08/26 | Qui 23/07/26 |
| 296 | 1.4.51.1 | Emissão inicial | 10d | 2026-07-24 | 2026-08-07 | 286 | 2026-07-23 | 2026-08-06 | 10d | 50d | 0d |  |  |  |  |  |  |  |  |  | Qui 06/08/26 |  |
| 297 | 1.4.51.2 | Avaliação do Cliente | 5d | 2026-08-07 | 2026-08-14 | 296 | 2026-08-06 | 2026-08-13 | 5d | 50d | 0d |  |  |  |  |  |  |  |  |  | Qui 13/08/26 |  |
| 298 | 1.4.51.3 | Atendimento de Comentário | 3d | 2026-08-14 | 2026-08-19 | 297 | 2026-08-13 | 2026-08-18 | 3d | 50d | 0d |  |  |  |  |  |  |  |  |  | Ter 18/08/26 |  |
| 299 | 1.4.51.4 | Aprovação | 2d | 2026-08-19 | 2026-08-21 | 298 | 2026-08-18 | 2026-08-20 | 2d | 50d |  |  |  |  |  |  |  |  |  |  | Qui 20/08/26 |  |
| 300 | 1.4.52 | **DT-F0008-0309-MB-L-00003** | 20d | 2026-07-24 | 2026-08-21 |  | 2026-07-23 | 2026-08-20 | 20d | 50d |  |  | DT - Detalhe Típico | 03 - REDUÇÃO | 09 - FORNO TECNORED | L - MECÂNICA / ARRANJOS | VENTANEIRAS E COOLING BOX | A1 (841x594mm) | 01 | Revisão do projeto de cobre refrigerado | Qui 20/08/26 | Qui 23/07/26 |
| 301 | 1.4.52.1 | Emissão inicial | 10d | 2026-07-24 | 2026-08-07 | 286 | 2026-07-23 | 2026-08-06 | 10d | 50d | 0d |  |  |  |  |  |  |  |  |  | Qui 06/08/26 |  |
| 302 | 1.4.52.2 | Avaliação do Cliente | 5d | 2026-08-07 | 2026-08-14 | 301 | 2026-08-06 | 2026-08-13 | 5d | 50d | 0d |  |  |  |  |  |  |  |  |  | Qui 13/08/26 |  |
| 303 | 1.4.52.3 | Atendimento de Comentário | 3d | 2026-08-14 | 2026-08-19 | 302 | 2026-08-13 | 2026-08-18 | 3d | 50d | 0d |  |  |  |  |  |  |  |  |  | Ter 18/08/26 |  |
| 304 | 1.4.52.4 | Aprovação | 2d | 2026-08-19 | 2026-08-21 | 303 | 2026-08-18 | 2026-08-20 | 2d | 50d |  |  |  |  |  |  |  |  |  |  | Qui 20/08/26 |  |

| ID | WBS | Task | Duration | Start | Finish | Predecessors | Baseline start | Baseline finish | Baseline duration | Total slack | Free slack | Tipo de documento | Área | Sub-área | Disciplina | Título | Formato | Quantidade | Agrupamento Cecal | Término_LB_R0 | Início_LB_R0 |
| --- | --- | --- | --- | --- | --- | --- | --- | --- | --- | --- | --- | --- | --- | --- | --- | --- | --- | --- | --- | --- | --- |
| 305 | 1.4.53 | **DT-F0008-0309-MB-L-00004** | 20d | 2026-07-24 | 2026-08-21 |  | 2026-07-23 | 2026-08-20 | 20d | 22d |  | DT - Detalhe Típico | 03 - REDUÇÃO | 09 - FORNO TECNORED | L - MECÂNICA / ARRANJOS | STAVES DE COBRE | A1 (841x594mm) | 01 | Revisão do projeto de cobre refrigerado | Qui 20/08/26 | Qui 23/07/26 |
| 306 | 1.4.53.1 | Emissão inicial | 10d | 2026-07-24 | 2026-08-07 | 286 | 2026-07-23 | 2026-08-06 | 10d | 22d | 0d |  |  |  |  |  |  |  |  | Qui 06/08/26 |  |
| 307 | 1.4.53.2 | Avaliação do Cliente | 5d | 2026-08-07 | 2026-08-14 | 306 | 2026-08-06 | 2026-08-13 | 5d | 50d | 0d |  |  |  |  |  |  |  |  | Qui 13/08/26 |  |
| 308 | 1.4.53.3 | Atendimento de Comentário | 3d | 2026-08-14 | 2026-08-19 | 307 | 2026-08-13 | 2026-08-18 | 3d | 50d | 0d |  |  |  |  |  |  |  |  | Ter 18/08/26 |  |
| 309 | 1.4.53.4 | Aprovação | 2d | 2026-08-19 | 2026-08-21 | 308 | 2026-08-18 | 2026-08-20 | 2d | 50d |  |  |  |  |  |  |  |  |  | Qui 20/08/26 |  |
| 310 | 1.4.54 | **DT-F0008-0309-MB-L-00005** | 20d | 2026-08-07 | 2026-09-04 |  | 2026-08-06 | 2026-09-03 | 20d | 40d |  | DT - Detalhe Típico | 03 - REDUÇÃO | 09 - FORNO TECNORED | L - MECÂNICA / ARRANJOS | STAVES DE FERRO FUNDIDO | A1 (841x594mm) | 01 | Revisão do projeto de cobre refrigerado | Qui 03/09/26 | Qui 06/08/26 |
| 311 | 1.4.54.1 | Emissão inicial | 10d | 2026-08-07 | 2026-08-21 | 306 | 2026-08-06 | 2026-08-20 | 10d | 40d | 0d |  |  |  |  |  |  |  |  | Qui 20/08/26 |  |
| 312 | 1.4.54.2 | Avaliação do Cliente | 5d | 2026-08-21 | 2026-08-28 | 311 | 2026-08-20 | 2026-08-27 | 5d | 40d | 0d |  |  |  |  |  |  |  |  | Qui 27/08/26 |  |
| 313 | 1.4.54.3 | Atendimento de Comentário | 3d | 2026-08-28 | 2026-09-02 | 312 | 2026-08-27 | 2026-09-01 | 3d | 40d | 0d |  |  |  |  |  |  |  |  | Ter 01/09/26 |  |
| 314 | 1.4.54.4 | Aprovação | 2d | 2026-09-02 | 2026-09-04 | 313 | 2026-09-01 | 2026-09-03 | 2d | 40d |  |  |  |  |  |  |  |  |  | Qui 03/09/26 |  |
| 315 | 1.4.55 | **DT-F0008-0309-MB-L-00006** | 20d | 2026-08-07 | 2026-09-04 |  | 2026-08-06 | 2026-09-03 | 20d | 40d |  | DT - Detalhe Típico | 03 - REDUÇÃO | 09 - FORNO TECNORED | L - MECÂNICA / ARRANJOS | VENTANEIRAS V2 | A1 (841x594mm) | 01 | Revisão do projeto do forno - carcaça e refratário | Qui 03/09/26 | Qui 06/08/26 |
| 316 | 1.4.55.1 | Emissão inicial | 10d | 2026-08-07 | 2026-08-21 | 306 | 2026-08-06 | 2026-08-20 | 10d | 40d | 0d |  |  |  |  |  |  |  |  | Qui 20/08/26 |  |
| 317 | 1.4.55.2 | Avaliação do Cliente | 5d | 2026-08-21 | 2026-08-28 | 316 | 2026-08-20 | 2026-08-27 | 5d | 40d | 0d |  |  |  |  |  |  |  |  | Qui 27/08/26 |  |
| 318 | 1.4.55.3 | Atendimento de Comentário | 3d | 2026-08-28 | 2026-09-02 | 317 | 2026-08-27 | 2026-09-01 | 3d | 40d | 0d |  |  |  |  |  |  |  |  | Ter 01/09/26 |  |
| 319 | 1.4.55.4 | Aprovação | 2d | 2026-09-02 | 2026-09-04 | 318 | 2026-09-01 | 2026-09-03 | 2d | 40d |  |  |  |  |  |  |  |  |  | Qui 03/09/26 |  |
| 320 | 1.4.56 | **DT-F0008-0309-MB-L-00007** | 20d | 2026-08-07 | 2026-09-04 |  | 2026-08-06 | 2026-09-03 | 20d | 23d | 14d | DT - Detalhe Típico | 03 - REDUÇÃO | 09 - FORNO TECNORED | L - MECÂNICA / ARRANJOS | CARCAÇA FORNO | A1 (841x594mm) | 01 | Revisão do projeto do forno - carcaça e refratário | Qui 03/09/26 | Qui 06/08/26 |
| 321 | 1.4.56.1 | Emissão inicial | 10d | 2026-08-07 | 2026-08-21 | 306 | 2026-08-06 | 2026-08-20 | 10d | 23d | 0d |  |  |  |  |  |  |  |  | Qui 20/08/26 |  |
| 322 | 1.4.56.2 | Avaliação do Cliente | 5d | 2026-08-21 | 2026-08-28 | 321 | 2026-08-20 | 2026-08-27 | 5d | 23d | 0d |  |  |  |  |  |  |  |  | Qui 27/08/26 |  |
| 323 | 1.4.56.3 | Atendimento de Comentário | 3d | 2026-08-28 | 2026-09-02 | 322 | 2026-08-27 | 2026-09-01 | 3d | 23d | 0d |  |  |  |  |  |  |  |  | Ter 01/09/26 |  |
| 324 | 1.4.56.4 | Aprovação | 2d | 2026-09-02 | 2026-09-04 | 323 | 2026-09-01 | 2026-09-03 | 2d | 23d |  |  |  |  |  |  |  |  |  | Qui 03/09/26 |  |
| 325 | 1.4.57 | **DT-F0008-0309-MB-L-00008** | 20d | 2026-08-07 | 2026-09-04 |  | 2026-08-06 | 2026-09-03 | 20d | 40d |  | DT - Detalhe Típico | 03 - REDUÇÃO | 09 - FORNO TECNORED | L - MECÂNICA / ARRANJOS | FURO DE GUSA E CANHÃO DE LAMA | A1 (841x594mm) | 01 | Revisão do projeto do forno - carcaça e refratário | Qui 03/09/26 | Qui 06/08/26 |
| 326 | 1.4.57.1 | Emissão inicial | 10d | 2026-08-07 | 2026-08-21 | 306 | 2026-08-06 | 2026-08-20 | 10d | 40d | 0d |  |  |  |  |  |  |  |  | Qui 20/08/26 |  |
| 327 | 1.4.57.2 | Avaliação do Cliente | 5d | 2026-08-21 | 2026-08-28 | 326 | 2026-08-20 | 2026-08-27 | 5d | 40d | 0d |  |  |  |  |  |  |  |  | Qui 27/08/26 |  |
| 328 | 1.4.57.3 | Atendimento de Comentário | 3d | 2026-08-28 | 2026-09-02 | 327 | 2026-08-27 | 2026-09-01 | 3d | 40d | 0d |  |  |  |  |  |  |  |  | Ter 01/09/26 |  |
| 329 | 1.4.57.4 | Aprovação | 2d | 2026-09-02 | 2026-09-04 | 328 | 2026-09-01 | 2026-09-03 | 2d | 40d |  |  |  |  |  |  |  |  |  | Qui 03/09/26 |  |

| ID | WBS | Task | Duration | Start | Finish | Predecessors | Baseline start | Baseline finish | Baseline duration | Total slack | Free slack | Tipo de documento | Área | Sub-área | Disciplina | Título | Formato | Quantidade | Agrupamento Cecal | Término_LB_R0 | Início_LB_R0 |
| --- | --- | --- | --- | --- | --- | --- | --- | --- | --- | --- | --- | --- | --- | --- | --- | --- | --- | --- | --- | --- | --- |
| 330 | 1.4.58 | **DT-F0008-0309-MB-L-00009** | 20d | 2026-08-07 | 2026-09-04 |  | 2026-08-06 | 2026-09-03 | 20d | 40d |  | DT - Detalhe Típico | 03 - REDUÇÃO | 09 - FORNO TECNORED | L - MECÂNICA / ARRANJOS | REFRATARIO FORNO PROPRIO | A1 (841x594mm) | 01 | Revisão do projeto do forno - carcaça e refratário | Qui 03/09/26 | Qui 06/08/26 |
| 331 | 1.4.58.1 | Emissão inicial | 10d | 2026-08-07 | 2026-08-21 | 306 | 2026-08-06 | 2026-08-20 | 10d | 40d | 0d |  |  |  |  |  |  |  |  | Qui 20/08/26 |  |
| 332 | 1.4.58.2 | Avaliação do Cliente | 5d | 2026-08-21 | 2026-08-28 | 331 | 2026-08-20 | 2026-08-27 | 5d | 40d | 0d |  |  |  |  |  |  |  |  | Qui 27/08/26 |  |
| 333 | 1.4.58.3 | Atendimento de Comentário | 3d | 2026-08-28 | 2026-09-02 | 332 | 2026-08-27 | 2026-09-01 | 3d | 40d | 0d |  |  |  |  |  |  |  |  | Ter 01/09/26 |  |
| 334 | 1.4.58.4 | Aprovação | 2d | 2026-09-02 | 2026-09-04 | 333 | 2026-09-01 | 2026-09-03 | 2d | 40d |  |  |  |  |  |  |  |  |  | Qui 03/09/26 |  |
| 335 | 1.4.59 | **DT-F0008-0309-MB-L-00010** | 20d | 2026-08-07 | 2026-09-04 |  | 2026-08-06 | 2026-09-03 | 20d | 40d |  | DT - Detalhe Típico | 03 - REDUÇÃO | 09 - FORNO TECNORED | L - MECÂNICA / ARRANJOS | REFRATARIO TUBULACOES | A1 (841x594mm) | 01 | Revisão do projeto do forno - carcaça e refratário | Qui 03/09/26 | Qui 06/08/26 |
| 336 | 1.4.59.1 | Emissão inicial | 10d | 2026-08-07 | 2026-08-21 | 306 | 2026-08-06 | 2026-08-20 | 10d | 40d | 0d |  |  |  |  |  |  |  |  | Qui 20/08/26 |  |
| 337 | 1.4.59.2 | Avaliação do Cliente | 5d | 2026-08-21 | 2026-08-28 | 336 | 2026-08-20 | 2026-08-27 | 5d | 40d | 0d |  |  |  |  |  |  |  |  | Qui 27/08/26 |  |
| 338 | 1.4.59.3 | Atendimento de Comentário | 3d | 2026-08-28 | 2026-09-02 | 337 | 2026-08-27 | 2026-09-01 | 3d | 40d | 0d |  |  |  |  |  |  |  |  | Ter 01/09/26 |  |
| 339 | 1.4.59.4 | Aprovação | 2d | 2026-09-02 | 2026-09-04 | 338 | 2026-09-01 | 2026-09-03 | 2d | 40d |  |  |  |  |  |  |  |  |  | Qui 03/09/26 |  |
| 340 | 1.4.60 | **DT-F0008-0309-MB-L-00011** | 20d | 2026-08-07 | 2026-09-04 |  | 2026-08-06 | 2026-09-03 | 20d | 40d |  | DT - Detalhe Típico | 03 - REDUÇÃO | 09 - FORNO TECNORED | L - MECÂNICA / ARRANJOS | SUPORTE H DE VENTO V1 | A1 (841x594mm) | 01 | Revisão do projeto do forno - carcaça e refratário | Qui 03/09/26 | Qui 06/08/26 |
| 341 | 1.4.60.1 | Emissão inicial | 10d | 2026-08-07 | 2026-08-21 | 306 | 2026-08-06 | 2026-08-20 | 10d | 40d | 0d |  |  |  |  |  |  |  |  | Qui 20/08/26 |  |
| 342 | 1.4.60.2 | Avaliação do Cliente | 5d | 2026-08-21 | 2026-08-28 | 341 | 2026-08-20 | 2026-08-27 | 5d | 40d | 0d |  |  |  |  |  |  |  |  | Qui 27/08/26 |  |
| 343 | 1.4.60.3 | Atendimento de Comentário | 3d | 2026-08-28 | 2026-09-02 | 342 | 2026-08-27 | 2026-09-01 | 3d | 40d | 0d |  |  |  |  |  |  |  |  | Ter 01/09/26 |  |
| 344 | 1.4.60.4 | Aprovação | 2d | 2026-09-02 | 2026-09-04 | 343 | 2026-09-01 | 2026-09-03 | 2d | 40d |  |  |  |  |  |  |  |  |  | Qui 03/09/26 |  |
| 345 | 1.4.61 | **DT-F0008-0309-MB-L-00012** | 20d | 2026-08-07 | 2026-09-04 |  | 2026-08-06 | 2026-09-03 | 20d | 40d |  | DT - Detalhe Típico | 03 - REDUÇÃO | 09 - FORNO TECNORED | L - MECÂNICA / ARRANJOS | INSTRUMENTOS CADINHO | A1 (841x594mm) | 01 | Revisão da instrumentação | Qui 03/09/26 | Qui 06/08/26 |
| 346 | 1.4.61.1 | Emissão inicial | 10d | 2026-08-07 | 2026-08-21 | 306 | 2026-08-06 | 2026-08-20 | 10d | 40d | 0d |  |  |  |  |  |  |  |  | Qui 20/08/26 |  |
| 347 | 1.4.61.2 | Avaliação do Cliente | 5d | 2026-08-21 | 2026-08-28 | 346 | 2026-08-20 | 2026-08-27 | 5d | 40d | 0d |  |  |  |  |  |  |  |  | Qui 27/08/26 |  |
| 348 | 1.4.61.3 | Atendimento de Comentário | 3d | 2026-08-28 | 2026-09-02 | 347 | 2026-08-27 | 2026-09-01 | 3d | 40d | 0d |  |  |  |  |  |  |  |  | Ter 01/09/26 |  |
| 349 | 1.4.61.4 | Aprovação | 2d | 2026-09-02 | 2026-09-04 | 348 | 2026-09-01 | 2026-09-03 | 2d | 40d |  |  |  |  |  |  |  |  |  | Qui 03/09/26 |  |
| 350 | 1.4.62 | **DT-F0008-0309-MB-L-00013** | 20d | 2026-08-07 | 2026-09-04 |  | 2026-08-06 | 2026-09-03 | 20d | 40d |  | DT - Detalhe Típico | 03 - REDUÇÃO | 09 - FORNO TECNORED | L - MECÂNICA / ARRANJOS | INSTRUMENTOS CORPO E TOPO | A1 (841x594mm) | 01 | Revisão da instrumentação | Qui 03/09/26 | Qui 06/08/26 |
| 351 | 1.4.62.1 | Emissão inicial | 10d | 2026-08-07 | 2026-08-21 | 306 | 2026-08-06 | 2026-08-20 | 10d | 40d | 0d |  |  |  |  |  |  |  |  | Qui 20/08/26 |  |
| 352 | 1.4.62.2 | Avaliação do Cliente | 5d | 2026-08-21 | 2026-08-28 | 351 | 2026-08-20 | 2026-08-27 | 5d | 40d | 0d |  |  |  |  |  |  |  |  | Qui 27/08/26 |  |
| 353 | 1.4.62.3 | Atendimento de Comentário | 3d | 2026-08-28 | 2026-09-02 | 352 | 2026-08-27 | 2026-09-01 | 3d | 40d | 0d |  |  |  |  |  |  |  |  | Ter 01/09/26 |  |
| 354 | 1.4.62.4 | Aprovação | 2d | 2026-09-02 | 2026-09-04 | 353 | 2026-09-01 | 2026-09-03 | 2d | 40d |  |  |  |  |  |  |  |  |  | Qui 03/09/26 |  |

| ID | WBS | Task | Duration | Start | Finish | Predecessors | Baseline start | Baseline finish | Baseline duration | Total slack | Free slack | Tipo de documento | Área | Sub-área | Disciplina | Título | Formato | Quantidade | Agrupamento Cecal | Término_LB_R0 | Início_LB_R0 |
| --- | --- | --- | --- | --- | --- | --- | --- | --- | --- | --- | --- | --- | --- | --- | --- | --- | --- | --- | --- | --- | --- |
| 355 | 1.4.63 | **DT-F0008-0309-MB-L-00014** | 20d | 2026-08-07 | 2026-09-04 |  | 2026-08-06 | 2026-09-03 | 20d | 40d |  | DT - Detalhe Típico | 03 - REDUÇÃO | 09 - FORNO TECNORED | L - MECÂNICA / ARRANJOS | OFF TAKE | A1 (841x594mm) | 01 | Revisão da exaustão | Qui 03/09/26 | Qui 06/08/26 |
| 356 | 1.4.63.1 | Emissão inicial | 10d | 2026-08-07 | 2026-08-21 | 306 | 2026-08-06 | 2026-08-20 | 10d | 40d | 0d |  |  |  |  |  |  |  |  | Qui 20/08/26 |  |
| 357 | 1.4.63.2 | Avaliação do Cliente | 5d | 2026-08-21 | 2026-08-28 | 356 | 2026-08-20 | 2026-08-27 | 5d | 40d | 0d |  |  |  |  |  |  |  |  | Qui 27/08/26 |  |
| 358 | 1.4.63.3 | Atendimento de Comentário | 3d | 2026-08-28 | 2026-09-02 | 357 | 2026-08-27 | 2026-09-01 | 3d | 40d | 0d |  |  |  |  |  |  |  |  | Ter 01/09/26 |  |
| 359 | 1.4.63.4 | Aprovação | 2d | 2026-09-02 | 2026-09-04 | 358 | 2026-09-01 | 2026-09-03 | 2d | 40d |  |  |  |  |  |  |  |  |  | Qui 03/09/26 |  |
| 360 | 1.4.64 | **DT-F0008-0309-MB-L-00015** | 20d | 2026-08-07 | 2026-09-04 |  | 2026-08-06 | 2026-09-03 | 20d | 22d |  | DT - Detalhe Típico | 03 - REDUÇÃO | 09 - FORNO TECNORED | L - MECÂNICA / ARRANJOS | LIGAÇÃO VÁLVULAS SHUT-OFF | A1 (841x594mm) | 01 | Revisão da exaustão | Qui 03/09/26 | Qui 06/08/26 |
| 361 | 1.4.64.1 | Emissão inicial | 10d | 2026-08-07 | 2026-08-21 | 306 | 2026-08-06 | 2026-08-20 | 10d | 22d | 0d |  |  |  |  |  |  |  |  | Qui 20/08/26 |  |
| 362 | 1.4.64.2 | Avaliação do Cliente | 5d | 2026-08-21 | 2026-08-28 | 361 | 2026-08-20 | 2026-08-27 | 5d | 40d | 0d |  |  |  |  |  |  |  |  | Qui 27/08/26 |  |
| 363 | 1.4.64.3 | Atendimento de Comentário | 3d | 2026-08-28 | 2026-09-02 | 362 | 2026-08-27 | 2026-09-01 | 3d | 40d | 0d |  |  |  |  |  |  |  |  | Ter 01/09/26 |  |
| 364 | 1.4.64.4 | Aprovação | 2d | 2026-09-02 | 2026-09-04 | 363 | 2026-09-01 | 2026-09-03 | 2d | 40d |  |  |  |  |  |  |  |  |  | Qui 03/09/26 |  |
| 365 | 1.4.65 | **DT-F0008-0309-MB-L-00016** | 20d | 2026-08-21 | 2026-09-18 |  | 2026-08-20 | 2026-09-17 | 20d | 30d |  | DT - Detalhe Típico | 03 - REDUÇÃO | 09 - FORNO TECNORED | L - MECÂNICA / ARRANJOS | DOWNCOMER FORNOS E LIGAÇÃO SLG | A1 (841x594mm) | 01 | Revisão da exaustão | Qui 17/09/26 | Qui 20/08/26 |
| 366 | 1.4.65.1 | Emissão inicial | 10d | 2026-08-21 | 2026-09-04 | 361 | 2026-08-20 | 2026-09-03 | 10d | 30d | 0d |  |  |  |  |  |  |  |  | Qui 03/09/26 |  |
| 367 | 1.4.65.2 | Avaliação do Cliente | 5d | 2026-09-04 | 2026-09-11 | 366 | 2026-09-03 | 2026-09-10 | 5d | 30d | 0d |  |  |  |  |  |  |  |  | Qui 10/09/26 |  |
| 368 | 1.4.65.3 | Atendimento de Comentário | 3d | 2026-09-11 | 2026-09-16 | 367 | 2026-09-10 | 2026-09-15 | 3d | 30d | 0d |  |  |  |  |  |  |  |  | Ter 15/09/26 |  |
| 369 | 1.4.65.4 | Aprovação | 2d | 2026-09-16 | 2026-09-18 | 368 | 2026-09-15 | 2026-09-17 | 2d | 30d |  |  |  |  |  |  |  |  |  | Qui 17/09/26 |  |
| 370 | 1.4.66 | **DT-F0008-0309-MB-L-00017** | 20d | 2026-08-21 | 2026-09-18 |  | 2026-08-20 | 2026-09-17 | 20d | 30d |  | DT - Detalhe Típico | 03 - REDUÇÃO | 09 - FORNO TECNORED | L - MECÂNICA / ARRANJOS | INSTRUMENTOS TOPO DO FORNO E OFF-TAKE | A1 (841x594mm) | 01 | Revisão da exaustão | Qui 17/09/26 | Qui 20/08/26 |
| 371 | 1.4.66.1 | Emissão inicial | 10d | 2026-08-21 | 2026-09-04 | 361 | 2026-08-20 | 2026-09-03 | 10d | 30d | 0d |  |  |  |  |  |  |  |  | Qui 03/09/26 |  |
| 372 | 1.4.66.2 | Avaliação do Cliente | 5d | 2026-09-04 | 2026-09-11 | 371 | 2026-09-03 | 2026-09-10 | 5d | 30d | 0d |  |  |  |  |  |  |  |  | Qui 10/09/26 |  |
| 373 | 1.4.66.3 | Atendimento de Comentário | 3d | 2026-09-11 | 2026-09-16 | 372 | 2026-09-10 | 2026-09-15 | 3d | 30d | 0d |  |  |  |  |  |  |  |  | Ter 15/09/26 |  |
| 374 | 1.4.66.4 | Aprovação | 2d | 2026-09-16 | 2026-09-18 | 373 | 2026-09-15 | 2026-09-17 | 2d | 30d |  |  |  |  |  |  |  |  |  | Qui 17/09/26 |  |
| 375 | 1.4.67 | **DT-F0008-0309-MB-L-00018** | 20d | 2026-08-21 | 2026-09-18 |  | 2026-08-20 | 2026-09-17 | 20d | 30d |  | DT - Detalhe Típico | 03 - REDUÇÃO | 09 - FORNO TECNORED | L - MECÂNICA / ARRANJOS | INSTRUMENTOS ALGARAVIZES E H DE VENTO | A1 (841x594mm) | 01 | Revisão da instrumentação | Qui 17/09/26 | Qui 20/08/26 |
| 376 | 1.4.67.1 | Emissão inicial | 10d | 2026-08-21 | 2026-09-04 | 361 | 2026-08-20 | 2026-09-03 | 10d | 30d | 0d |  |  |  |  |  |  |  |  | Qui 03/09/26 |  |
| 377 | 1.4.67.2 | Avaliação do Cliente | 5d | 2026-09-04 | 2026-09-11 | 376 | 2026-09-03 | 2026-09-10 | 5d | 30d | 0d |  |  |  |  |  |  |  |  | Qui 10/09/26 |  |
| 378 | 1.4.67.3 | Atendimento de Comentário | 3d | 2026-09-11 | 2026-09-16 | 377 | 2026-09-10 | 2026-09-15 | 3d | 30d | 0d |  |  |  |  |  |  |  |  | Ter 15/09/26 |  |
| 379 | 1.4.67.4 | Aprovação | 2d | 2026-09-16 | 2026-09-18 | 378 | 2026-09-15 | 2026-09-17 | 2d | 30d |  |  |  |  |  |  |  |  |  | Qui 17/09/26 |  |

| ID | WBS | Task | Duration | Start | Finish | Predecessors | Baseline start | Baseline finish | Baseline duration | Total slack | Free slack | Tipo de documento | Área | Sub-área | Disciplina | Título | Formato | Quantidade | Agrupamento Cecal | Término_LB_R0 | Início_LB_R0 |
| --- | --- | --- | --- | --- | --- | --- | --- | --- | --- | --- | --- | --- | --- | --- | --- | --- | --- | --- | --- | --- | --- |
| 380 | 1.4.68 | **DT-F0008-0309-MB-L-00019** | 20d | 2026-08-21 | 2026-09-18 |  | 2026-08-20 | 2026-09-17 | 20d | 30d |  | DT - Detalhe Típico | 03 - REDUÇÃO | 09 - FORNO TECNORED | L - MECÂNICA / ARRANJOS | LIGACAO H DE VENTO FORNOS 1 E 2 | A1 (841x594mm) | 01 | Revisão do projeto do forno - carcaça e refratário | Qui 17/09/26 | Qui 20/08/26 |
| 381 | 1.4.68.1 | Emissão inicial | 10d | 2026-08-21 | 2026-09-04 | 361 | 2026-08-20 | 2026-09-03 | 10d | 30d | 0d |  |  |  |  |  |  |  |  | Qui 03/09/26 |  |
| 382 | 1.4.68.2 | Avaliação do Cliente | 5d | 2026-09-04 | 2026-09-11 | 381 | 2026-09-03 | 2026-09-10 | 5d | 30d | 0d |  |  |  |  |  |  |  |  | Qui 10/09/26 |  |
| 383 | 1.4.68.3 | Atendimento de Comentário | 3d | 2026-09-11 | 2026-09-16 | 382 | 2026-09-10 | 2026-09-15 | 3d | 30d | 0d |  |  |  |  |  |  |  |  | Ter 15/09/26 |  |
| 384 | 1.4.68.4 | Aprovação | 2d | 2026-09-16 | 2026-09-18 | 383 | 2026-09-15 | 2026-09-17 | 2d | 30d |  |  |  |  |  |  |  |  |  | Qui 17/09/26 |  |
| 385 | 1.4.69 | **DT-F0008-0309-MB-L-00020** | 20d | 2026-08-21 | 2026-09-18 |  | 2026-08-20 | 2026-09-17 | 20d | 30d |  | DT - Detalhe Típico | 03 - REDUÇÃO | 09 - FORNO TECNORED | L - MECÂNICA / ARRANJOS | INSTRUMENTOS STAVES DE COBRE | A1 (841x594mm) | 01 | Revisão da instrumentação | Qui 17/09/26 | Qui 20/08/26 |
| 386 | 1.4.69.1 | Emissão inicial | 10d | 2026-08-21 | 2026-09-04 | 361 | 2026-08-20 | 2026-09-03 | 10d | 30d | 0d |  |  |  |  |  |  |  |  | Qui 03/09/26 |  |
| 387 | 1.4.69.2 | Avaliação do Cliente | 5d | 2026-09-04 | 2026-09-11 | 386 | 2026-09-03 | 2026-09-10 | 5d | 30d | 0d |  |  |  |  |  |  |  |  | Qui 10/09/26 |  |
| 388 | 1.4.69.3 | Atendimento de Comentário | 3d | 2026-09-11 | 2026-09-16 | 387 | 2026-09-10 | 2026-09-15 | 3d | 30d | 0d |  |  |  |  |  |  |  |  | Ter 15/09/26 |  |
| 389 | 1.4.69.4 | Aprovação | 2d | 2026-09-16 | 2026-09-18 | 388 | 2026-09-15 | 2026-09-17 | 2d | 30d |  |  |  |  |  |  |  |  |  | Qui 17/09/26 |  |
| 390 | 1.4.70 | **DT-F0008-0309-MB-L-00021** | 20d | 2026-08-21 | 2026-09-18 |  | 2026-08-20 | 2026-09-17 | 20d | 30d |  | DT - Detalhe Típico | 03 - REDUÇÃO | 09 - FORNO TECNORED | L - MECÂNICA / ARRANJOS | INSTRUMENTOS CURTAIN-WALL | A1 (841x594mm) | 01 | Revisão da instrumentação | Qui 17/09/26 | Qui 20/08/26 |
| 391 | 1.4.70.1 | Emissão inicial | 10d | 2026-08-21 | 2026-09-04 | 361 | 2026-08-20 | 2026-09-03 | 10d | 30d | 0d |  |  |  |  |  |  |  |  | Qui 03/09/26 |  |
| 392 | 1.4.70.2 | Avaliação do Cliente | 5d | 2026-09-04 | 2026-09-11 | 391 | 2026-09-03 | 2026-09-10 | 5d | 30d | 0d |  |  |  |  |  |  |  |  | Qui 10/09/26 |  |
| 393 | 1.4.70.3 | Atendimento de Comentário | 3d | 2026-09-11 | 2026-09-16 | 392 | 2026-09-10 | 2026-09-15 | 3d | 30d | 0d |  |  |  |  |  |  |  |  | Ter 15/09/26 |  |
| 394 | 1.4.70.4 | Aprovação | 2d | 2026-09-16 | 2026-09-18 | 393 | 2026-09-15 | 2026-09-17 | 2d | 30d |  |  |  |  |  |  |  |  |  | Qui 17/09/26 |  |
| 395 | 1.4.71 | **DT-F0008-0309-MB-L-00022** | 20d | 2026-08-21 | 2026-09-18 |  | 2026-08-20 | 2026-09-17 | 20d | 30d |  | DT - Detalhe Típico | 03 - REDUÇÃO | 09 - FORNO TECNORED | L - MECÂNICA / ARRANJOS | VÁLVULA DE AR QUENTE | A1 (841x594mm) | 01 | Revisão da instrumentação | Qui 17/09/26 | Qui 20/08/26 |
| 396 | 1.4.71.1 | Emissão inicial | 10d | 2026-08-21 | 2026-09-04 | 361 | 2026-08-20 | 2026-09-03 | 10d | 30d | 0d |  |  |  |  |  |  |  |  | Qui 03/09/26 |  |
| 397 | 1.4.71.2 | Avaliação do Cliente | 5d | 2026-09-04 | 2026-09-11 | 396 | 2026-09-03 | 2026-09-10 | 5d | 30d | 0d |  |  |  |  |  |  |  |  | Qui 10/09/26 |  |
| 398 | 1.4.71.3 | Atendimento de Comentário | 3d | 2026-09-11 | 2026-09-16 | 397 | 2026-09-10 | 2026-09-15 | 3d | 30d | 0d |  |  |  |  |  |  |  |  | Ter 15/09/26 |  |
| 399 | 1.4.71.4 | Aprovação | 2d | 2026-09-16 | 2026-09-18 | 398 | 2026-09-15 | 2026-09-17 | 2d | 30d |  |  |  |  |  |  |  |  |  | Qui 17/09/26 |  |
| 400 | 1.4.72 | **DT-F0008-0309-MB-L-00023** | 20d | 2026-08-21 | 2026-09-18 |  | 2026-08-20 | 2026-09-17 | 20d | 30d |  | DT - Detalhe Típico | 03 - REDUÇÃO | 09 - FORNO TECNORED | L - MECÂNICA / ARRANJOS | VÁLVULA DE TIRAGEM AR QUENTE | A1 (841x594mm) | 01 | Revisão da instrumentação | Qui 17/09/26 | Qui 20/08/26 |
| 401 | 1.4.72.1 | Emissão inicial | 10d | 2026-08-21 | 2026-09-04 | 361 | 2026-08-20 | 2026-09-03 | 10d | 30d | 0d |  |  |  |  |  |  |  |  | Qui 03/09/26 |  |
| 402 | 1.4.72.2 | Avaliação do Cliente | 5d | 2026-09-04 | 2026-09-11 | 401 | 2026-09-03 | 2026-09-10 | 5d | 30d | 0d |  |  |  |  |  |  |  |  | Qui 10/09/26 |  |
| 403 | 1.4.72.3 | Atendimento de Comentário | 3d | 2026-09-11 | 2026-09-16 | 402 | 2026-09-10 | 2026-09-15 | 3d | 30d | 0d |  |  |  |  |  |  |  |  | Ter 15/09/26 |  |
| 404 | 1.4.72.4 | Aprovação | 2d | 2026-09-16 | 2026-09-18 | 403 | 2026-09-15 | 2026-09-17 | 2d | 30d |  |  |  |  |  |  |  |  |  | Qui 17/09/26 |  |

| ID | WBS | Task | Duration | Start | Finish | Predecessors | Baseline start | Baseline finish | Baseline duration | Total slack | Free slack | Tipo de documento | Área | Sub-área | Disciplina | Título | Formato | Quantidade | Agrupamento Cecal | Término_LB_R0 | Início_LB_R0 |
| --- | --- | --- | --- | --- | --- | --- | --- | --- | --- | --- | --- | --- | --- | --- | --- | --- | --- | --- | --- | --- | --- |
| 405 | 1.4.73 | **DT-F0008-0309-MB-L-00024** | 20d | 2026-08-21 | 2026-09-18 |  | 2026-08-20 | 2026-09-17 | 20d | 22d |  | DT - Detalhe Típico | 03 - REDUÇÃO | 09 - FORNO TECNORED | L - MECÂNICA / ARRANJOS | VÁLVULA BLEEDER | A1 (841x594mm) | 01 | Revisão da instrumentação | Qui 17/09/26 | Qui 20/08/26 |
| 406 | 1.4.73.1 | Emissão inicial | 10d | 2026-08-21 | 2026-09-04 | 361 | 2026-08-20 | 2026-09-03 | 10d | 22d | 0d |  |  |  |  |  |  |  |  | Qui 03/09/26 |  |
| 407 | 1.4.73.2 | Avaliação do Cliente | 5d | 2026-09-04 | 2026-09-11 | 406 | 2026-09-03 | 2026-09-10 | 5d | 30d | 0d |  |  |  |  |  |  |  |  | Qui 10/09/26 |  |
| 408 | 1.4.73.3 | Atendimento de Comentário | 3d | 2026-09-11 | 2026-09-16 | 407 | 2026-09-10 | 2026-09-15 | 3d | 30d | 0d |  |  |  |  |  |  |  |  | Ter 15/09/26 |  |
| 409 | 1.4.73.4 | Aprovação | 2d | 2026-09-16 | 2026-09-18 | 408 | 2026-09-15 | 2026-09-17 | 2d | 30d |  |  |  |  |  |  |  |  |  | Qui 17/09/26 |  |
| 410 | 1.4.74 | **RT-F0008-0309-MB-L-00001** | 18d | 2026-09-04 | 2026-09-30 |  | 2026-09-03 | 2026-09-29 | 18d | 22d |  | RT - Relatório Técnico | 03 - REDUÇÃO | 09 - FORNO TECNORED | L - MECÂNICA / ARRANJOS | PLANO DE CARGAS FORNO | A1 (841x594mm) | 01 | Readequação da fundação | Ter 29/09/26 | Qui 03/09/26 |
| 411 | 1.4.74.1 | Emissão inicial | 8d | 2026-09-04 | 2026-09-16 | 406 | 2026-09-03 | 2026-09-15 | 8d | 22d | 0d |  |  |  |  |  |  |  |  | Ter 15/09/26 |  |
| 412 | 1.4.74.2 | Avaliação do Cliente | 5d | 2026-09-16 | 2026-09-23 | 411 | 2026-09-15 | 2026-09-22 | 5d | 22d | 0d |  |  |  |  |  |  |  |  | Ter 22/09/26 |  |
| 413 | 1.4.74.3 | Atendimento de Comentário | 3d | 2026-09-23 | 2026-09-28 | 412 | 2026-09-22 | 2026-09-25 | 3d | 22d | 0d |  |  |  |  |  |  |  |  | Sex 25/09/26 |  |
| 414 | 1.4.74.4 | Aprovação | 2d | 2026-09-28 | 2026-09-30 | 413 | 2026-09-25 | 2026-09-29 | 2d | 22d |  |  |  |  |  |  |  |  |  | Ter 29/09/26 |  |
| 415 | 1.5 | **MECÂNICA / EQUIPAMENTOS 309** | 71d | 2026-06-30 | 2026-10-07 |  | 2026-06-23 | 2026-09-29 | 70d |  |  |  |  |  |  |  |  |  |  | Ter 29/09/26 | Ter 23/06/26 |
| 416 | 1.5.1 | **CP-F0008-0309-MB-M-00001** | 62d | 2026-06-30 | 2026-09-24 |  | 2026-06-23 | 2026-07-14 | 15d |  |  | CP - Critério de Projeto | 03 - REDUÇÃO | 09 - FORNO TECNORED | M - MECÂNICA / EQUIPAMENTOS | CRITÉRIO DE PROJETO MECÂNICO | A4 (210x297mm) | 20 | Revisão dos balanços de massa e energia utilidades | Ter 14/07/26 | Ter 23/06/26 |
| 417 | 1.5.1.1 | Emissão inicial | 5d | 2026-06-30 | 2026-07-07 | 17 | 2026-06-23 | 2026-06-30 | 5d | 48d | 0d |  |  |  |  |  |  |  |  | Ter 30/06/26 |  |
| 418 | 1.5.1.2 | Avaliação do Cliente | 5d | 2026-07-07 | 2026-07-14 | 417 | 2026-06-30 | 2026-07-07 | 5d | 48d | 0d |  |  |  |  |  |  |  |  | Ter 07/07/26 |  |
| 419 | 1.5.1.3 | Atendimento de Comentário | 3d | 2026-07-14 | 2026-07-17 | 418 | 2026-07-07 | 2026-07-10 | 3d | 48d | 0d |  |  |  |  |  |  |  |  | Sex 10/07/26 |  |
| 420 | 1.5.1.4 | Aprovação | 2d | 2026-07-17 | 2026-07-21 | 419 | 2026-07-10 | 2026-07-14 | 2d | 48d |  |  |  |  |  |  |  |  |  | Ter 14/07/26 |  |
| 421 | 1.5.2 | **ET-F0008-0309-MB-M-00001** | 17d | 2026-09-24 | 2026-10-19 | 416 | 2026-09-03 | 2026-09-28 | 17d | 9d |  | ET - Especificação Técnica | 03 - REDUÇÃO | 09 - FORNO TECNORED | M - MECÂNICA / EQUIPAMENTOS | ESPECIFICAÇÃO TÉCNICA STAVES DE COBRE | A4 (210x297mm) | 02 | Revisão do projeto de cobre refrigerado | Seg 28/09/26 | Qui 03/09/26 |
| 422 | 1.5.2.1 | Emissão inicial | 7d | 2026-09-24 | 2026-10-05 | 320 | 2026-09-03 | 2026-09-14 | 7d | 9d | 0d |  |  |  |  |  |  |  |  | Seg 14/09/26 |  |
| 423 | 1.5.2.2 | Avaliação do Cliente | 5d | 2026-10-05 | 2026-10-12 | 422 | 2026-09-14 | 2026-09-21 | 5d | 9d | 0d |  |  |  |  |  |  |  |  | Seg 21/09/26 |  |
| 424 | 1.5.2.3 | Atendimento de Comentário | 3d | 2026-10-12 | 2026-10-15 | 423 | 2026-09-21 | 2026-09-24 | 3d | 9d | 0d |  |  |  |  |  |  |  |  | Qui 24/09/26 |  |
| 425 | 1.5.2.4 | Aprovação | 2d | 2026-10-15 | 2026-10-19 | 424 | 2026-09-24 | 2026-09-28 | 2d | 9d |  |  |  |  |  |  |  |  |  | Seg 28/09/26 |  |
| 426 | 1.5.3 | **ET-F0008-0309-MB-M-00002** | 17d | 2026-09-24 | 2026-10-19 | 416 | 2026-09-03 | 2026-09-28 | 17d | 9d |  | ET - Especificação Técnica | 03 - REDUÇÃO | 09 - FORNO TECNORED | M - MECÂNICA / EQUIPAMENTOS | ESPECIFICAÇÃO TÉCNICA STAVES DE FERRO FUNDIDO | A4 (210x297mm) | 02 | Revisão do projeto de cobre refrigerado | Seg 28/09/26 | Qui 03/09/26 |
| 427 | 1.5.3.1 | Emissão inicial | 7d | 2026-09-24 | 2026-10-05 | 320 | 2026-09-03 | 2026-09-14 | 7d | 9d | 0d |  |  |  |  |  |  |  |  | Seg 14/09/26 |  |
| 428 | 1.5.3.2 | Avaliação do Cliente | 5d | 2026-10-05 | 2026-10-12 | 427 | 2026-09-14 | 2026-09-21 | 5d | 9d | 0d |  |  |  |  |  |  |  |  | Seg 21/09/26 |  |
| 429 | 1.5.3.3 | Atendimento de Comentário | 3d | 2026-10-12 | 2026-10-15 | 428 | 2026-09-21 | 2026-09-24 | 3d | 9d | 0d |  |  |  |  |  |  |  |  | Qui 24/09/26 |  |
| 430 | 1.5.3.4 | Aprovação | 2d | 2026-10-15 | 2026-10-19 | 429 | 2026-09-24 | 2026-09-28 | 2d | 9d |  |  |  |  |  |  |  |  |  | Seg 28/09/26 |  |

| ID | WBS | Task | Duration | Start | Finish | Predecessors | Baseline start | Baseline finish | Baseline duration | Total slack | Free slack | Tipo de documento | Área | Sub-área | Disciplina | Título | Formato | Quantidade | Agrupamento Cecal | Término_LB_R0 | Início_LB_R0 |
| --- | --- | --- | --- | --- | --- | --- | --- | --- | --- | --- | --- | --- | --- | --- | --- | --- | --- | --- | --- | --- | --- |
| 431 | 1.5.4 | **ET-F0008-0309-MB-M-00003** | 17d | 2026-09-24 | 2026-10-19 | 416 | 2026-09-03 | 2026-09-28 | 17d | 9d |  | ET - Especificação Técnica | 03 - REDUÇÃO | 09 - FORNO TECNORED | M - MECÂNICA / EQUIPAMENTOS | ESPECIFICAÇÃO TÉCNICA VENTANEIRAS E COOLING BOX | A4 (210x297mm) | 02 | Revisão do projeto de cobre refrigerado | Seg 28/09/26 | Qui 03/09/26 |
| 432 | 1.5.4.1 | Emissão inicial | 7d | 2026-09-24 | 2026-10-05 | 320 | 2026-09-03 | 2026-09-14 | 7d | 9d | 0d |  |  |  |  |  |  |  |  | Seg 14/09/26 |  |
| 433 | 1.5.4.2 | Avaliação do Cliente | 5d | 2026-10-05 | 2026-10-12 | 432 | 2026-09-14 | 2026-09-21 | 5d | 9d | 0d |  |  |  |  |  |  |  |  | Seg 21/09/26 |  |
| 434 | 1.5.4.3 | Atendimento de Comentário | 3d | 2026-10-12 | 2026-10-15 | 433 | 2026-09-21 | 2026-09-24 | 3d | 9d | 0d |  |  |  |  |  |  |  |  | Qui 24/09/26 |  |
| 435 | 1.5.4.4 | Aprovação | 2d | 2026-10-15 | 2026-10-19 | 434 | 2026-09-24 | 2026-09-28 | 2d | 9d |  |  |  |  |  |  |  |  |  | Seg 28/09/26 |  |
| 436 | 1.5.5 | **ET-F0008-0309-MB-M-00004** | 17d | 2026-09-24 | 2026-10-19 | 416 | 2026-09-03 | 2026-09-28 | 17d | 9d |  | ET - Especificação Técnica | 03 - REDUÇÃO | 09 - FORNO TECNORED | M - MECÂNICA / EQUIPAMENTOS | ESPECIFICAÇÃO TÉCNICA CURTAIN WALL | A4 (210x297mm) | 02 | Revisão do projeto de cobre refrigerado | Seg 28/09/26 | Qui 03/09/26 |
| 437 | 1.5.5.1 | Emissão inicial | 7d | 2026-09-24 | 2026-10-05 | 320 | 2026-09-03 | 2026-09-14 | 7d | 9d | 0d |  |  |  |  |  |  |  |  | Seg 14/09/26 |  |
| 438 | 1.5.5.2 | Avaliação do Cliente | 5d | 2026-10-05 | 2026-10-12 | 437 | 2026-09-14 | 2026-09-21 | 5d | 9d | 0d |  |  |  |  |  |  |  |  | Seg 21/09/26 |  |
| 439 | 1.5.5.3 | Atendimento de Comentário | 3d | 2026-10-12 | 2026-10-15 | 438 | 2026-09-21 | 2026-09-24 | 3d | 9d | 0d |  |  |  |  |  |  |  |  | Qui 24/09/26 |  |
| 440 | 1.5.5.4 | Aprovação | 2d | 2026-10-15 | 2026-10-19 | 439 | 2026-09-24 | 2026-09-28 | 2d | 9d |  |  |  |  |  |  |  |  |  | Seg 28/09/26 |  |
| 441 | 1.5.6 | **FD-F0008-0309-MB-M-00001** | 15d | 2026-07-30 | 2026-08-20 |  | 2026-08-04 | 2026-09-10 | 27d |  |  | FD - Folha de Dados | 03 - REDUÇÃO | 09 - FORNO TECNORED | M - MECÂNICA / EQUIPAMENTOS | FOLHA DE DADOS ESPECIFICAÇÃO TÉCNICA TORRES DE RESFRIAMENTO | A4 (210x297mm) | 10 | Revisão do projeto de cobre refrigerado | Qui 10/09/26 | Ter 04/08/26 |
| 442 | 1.5.6.1 | Emissão inicial | 15d | 2026-07-30 | 2026-08-20 | 1007, 17 | 2026-08-04 | 2026-08-25 | 15d | 39d | 0d |  |  |  |  |  |  |  |  | Ter 25/08/26 |  |
| 443 | 1.5.6.2 | Avaliação do Cliente | 5d | 2026-08-20 | 2026-08-27 | 442 | 2026-08-25 | 2026-09-01 | 5d | 39d | 0d |  |  |  |  |  |  |  |  | Ter 01/09/26 |  |
| 444 | 1.5.6.3 | Atendimento de Comentário | 5d | 2026-08-27 | 2026-09-03 | 443 | 2026-09-01 | 2026-09-08 | 5d | 39d | 0d |  |  |  |  |  |  |  |  | Ter 08/09/26 |  |
| 445 | 1.5.6.4 | Aprovação | 2d | 2026-09-03 | 2026-09-07 | 444 | 2026-09-08 | 2026-09-10 | 2d | 39d |  |  |  |  |  |  |  |  |  | Qui 10/09/26 |  |
| 446 | 1.5.7 | **FD-F0008-0309-MB-M-00002** | 0d | 2026-08-25 | 2026-08-25 |  | 2026-09-01 | 2026-09-29 | 20d |  |  | FD - Folha de Dados | 03 - REDUÇÃO | 09 - FORNO TECNORED | M - MECÂNICA / EQUIPAMENTOS | FOLHA DE DADOS ESPECIFICAÇÃO TÉCNICA BOMBAS | A4 (210x297mm) | 10 | Revisão do projeto de cobre refrigerado | Ter 29/09/26 | Ter 01/09/26 |
| 447 | 1.5.7.1 | Emissão inicial | 10d | 2026-09-08 | 2026-09-22 | 1053 | 2026-09-01 | 2026-09-15 | 10d | 18d | 0d |  |  |  |  |  |  |  |  | Ter 15/09/26 |  |
| 448 | 1.5.7.2 | Avaliação do Cliente | 5d | 2026-09-22 | 2026-09-29 | 447 | 2026-09-15 | 2026-09-22 | 5d | 18d | 0d |  |  |  |  |  |  |  |  | Ter 22/09/26 |  |
| 449 | 1.5.7.3 | Atendimento de Comentário | 3d | 2026-09-29 | 2026-10-02 | 448 | 2026-09-22 | 2026-09-25 | 3d | 18d | 0d |  |  |  |  |  |  |  |  | Sex 25/09/26 |  |
| 450 | 1.5.7.4 | Aprovação | 2d | 2026-10-02 | 2026-10-06 | 449 | 2026-09-25 | 2026-09-29 | 2d | 18d |  |  |  |  |  |  |  |  |  | Ter 29/09/26 |  |
| 451 | 1.5.8 | **FD-F0008-0309-MB-M-00003** | 7d | 2026-08-18 | 2026-08-27 |  | 2026-08-11 | 2026-09-15 | 25d |  |  | FD - Folha de Dados | 03 - REDUÇÃO | 09 - FORNO TECNORED | M - MECÂNICA / EQUIPAMENTOS | FOLHA DE DADOS TROCADORES DE CALOR | A4 (210x297mm) | 10 | Revisão do projeto de cobre refrigerado | Ter 15/09/26 | Ter 11/08/26 |
| 452 | 1.5.8.1 | Emissão inicial | 15d | 2026-08-18 | 2026-09-08 | 447SF | 2026-08-11 | 2026-09-01 | 15d | 28d | 0d |  |  |  |  |  |  |  |  | Ter 01/09/26 |  |
| 453 | 1.5.8.2 | Avaliação do Cliente | 5d | 2026-09-08 | 2026-09-15 | 452 | 2026-09-01 | 2026-09-08 | 5d | 28d | 0d |  |  |  |  |  |  |  |  | Ter 08/09/26 |  |
| 454 | 1.5.8.3 | Atendimento de Comentário | 3d | 2026-09-15 | 2026-09-18 | 453 | 2026-09-08 | 2026-09-11 | 3d | 28d | 0d |  |  |  |  |  |  |  |  | Sex 11/09/26 |  |
| 455 | 1.5.8.4 | Aprovação | 2d | 2026-09-18 | 2026-09-22 | 454 | 2026-09-11 | 2026-09-15 | 2d | 28d |  |  |  |  |  |  |  |  |  | Ter 15/09/26 |  |

| ID | WBS | Task | Duration | Start | Finish | Predecessors | Baseline start | Baseline finish | Baseline duration | Total slack | Free slack | Tipo de documento | Área | Sub-área | Disciplina | Título | Formato | Quantidade | Agrupamento Cecal | Término_LB_R0 | Início_LB_R0 |
| --- | --- | --- | --- | --- | --- | --- | --- | --- | --- | --- | --- | --- | --- | --- | --- | --- | --- | --- | --- | --- | --- |
| 456 | 1.5.9 | **FD-F0008-0309-MB-M-00004** | 27d | 2026-08-18 | 2026-09-24 |  | 2026-08-11 | 2026-09-17 | 27d | 26d |  | FD - Folha de Dados | 03 - REDUÇÃO | 09 - FORNO TECNORED | M - MECÂNICA / EQUIPAMENTOS | FOLHA DE DADOS BICOS SPRAY DE CARGA | A4 (210x297mm) | 05 | Revisão do projeto de cobre refrigerado | Qui 17/09/26 | Ter 11/08/26 |
| 457 | 1.5.9.1 | Emissão inicial | 15d | 2026-08-18 | 2026-09-08 | 447SF | 2026-08-11 | 2026-09-01 | 15d | 26d | 0d |  |  |  |  |  |  |  |  | Ter 01/09/26 |  |
| 458 | 1.5.9.2 | Avaliação do Cliente | 5d | 2026-09-08 | 2026-09-15 | 457 | 2026-09-01 | 2026-09-08 | 5d | 26d | 0d |  |  |  |  |  |  |  |  | Ter 08/09/26 |  |
| 459 | 1.5.9.3 | Atendimento de Comentário | 5d | 2026-09-15 | 2026-09-22 | 458 | 2026-09-08 | 2026-09-15 | 5d | 26d | 0d |  |  |  |  |  |  |  |  | Ter 15/09/26 |  |
| 460 | 1.5.9.4 | Aprovação | 2d | 2026-09-22 | 2026-09-24 | 459 | 2026-09-15 | 2026-09-17 | 2d | 26d |  |  |  |  |  |  |  |  |  | Qui 17/09/26 |  |
| 461 | 1.5.10 | **FD-F0008-0309-MB-M-00005** | 9d | 2026-08-18 | 2026-08-31 |  | 2026-08-11 | 2026-09-15 | 25d |  |  | FD - Folha de Dados | 03 - REDUÇÃO | 09 - FORNO TECNORED | M - MECÂNICA / EQUIPAMENTOS | FOLHA DE DADOS FILTRO DUPLO CESTO | A4 (210x297mm) | 05 | Revisão do projeto de cobre refrigerado | Ter 15/09/26 | Ter 11/08/26 |
| 462 | 1.5.10.1 | Emissão inicial | 15d | 2026-08-18 | 2026-09-08 | 447SF | 2026-08-11 | 2026-09-01 | 15d | 28d | 0d |  |  |  |  |  |  |  |  | Ter 01/09/26 |  |
| 463 | 1.5.10.2 | Avaliação do Cliente | 5d | 2026-09-08 | 2026-09-15 | 462 | 2026-09-01 | 2026-09-08 | 5d | 28d | 0d |  |  |  |  |  |  |  |  | Ter 08/09/26 |  |
| 464 | 1.5.10.3 | Atendimento de Comentário | 3d | 2026-09-15 | 2026-09-18 | 463 | 2026-09-08 | 2026-09-11 | 3d | 28d | 0d |  |  |  |  |  |  |  |  | Sex 11/09/26 |  |
| 465 | 1.5.10.4 | Aprovação | 2d | 2026-09-18 | 2026-09-22 | 464 | 2026-09-11 | 2026-09-15 | 2d | 28d |  |  |  |  |  |  |  |  |  | Ter 15/09/26 |  |
| 466 | 1.5.11 | **FD-F0008-0309-MB-M-00006** | 11d | 2026-08-18 | 2026-09-02 |  | 2026-08-11 | 2026-09-15 | 25d |  |  | FD - Folha de Dados | 03 - REDUÇÃO | 09 - FORNO TECNORED | M - MECÂNICA / EQUIPAMENTOS | FOLHA DE DADOS BOMBAS PERISTÁLTICAS PARA TORRE RESFRIAMENTO | A4 (210x297mm) | 02 | Revisão do projeto de cobre refrigerado | Ter 15/09/26 | Ter 11/08/26 |
| 467 | 1.5.11.1 | Emissão inicial | 15d | 2026-08-18 | 2026-09-08 | 447SF | 2026-08-11 | 2026-09-01 | 15d | 28d | 0d |  |  |  |  |  |  |  |  | Ter 01/09/26 |  |
| 468 | 1.5.11.2 | Avaliação do Cliente | 5d | 2026-09-08 | 2026-09-15 | 467 | 2026-09-01 | 2026-09-08 | 5d | 28d | 0d |  |  |  |  |  |  |  |  | Ter 08/09/26 |  |
| 469 | 1.5.11.3 | Atendimento de Comentário | 3d | 2026-09-15 | 2026-09-18 | 468 | 2026-09-08 | 2026-09-11 | 3d | 28d | 0d |  |  |  |  |  |  |  |  | Sex 11/09/26 |  |
| 470 | 1.5.11.4 | Aprovação | 2d | 2026-09-18 | 2026-09-22 | 469 | 2026-09-11 | 2026-09-15 | 2d | 28d |  |  |  |  |  |  |  |  |  | Ter 15/09/26 |  |
| 471 | 1.5.12 | **FD-F0008-0309-MB-M-00007** | 13d | 2026-08-18 | 2026-09-04 |  | 2026-08-11 | 2026-09-15 | 25d |  |  | FD - Folha de Dados | 03 - REDUÇÃO | 09 - FORNO TECNORED | M - MECÂNICA / EQUIPAMENTOS | FOLHA DE DADOS UNIDADES HIDRÀULICAS PARA VÀLVULAS | A4 (210x297mm) | 02 | Readequação das utilidades no prédio do forno | Ter 15/09/26 | Ter 11/08/26 |
| 472 | 1.5.12.1 | Emissão inicial | 15d | 2026-08-18 | 2026-09-08 | 447SF | 2026-08-11 | 2026-09-01 | 15d | 28d | 0d |  |  |  |  |  |  |  |  | Ter 01/09/26 |  |
| 473 | 1.5.12.2 | Avaliação do Cliente | 5d | 2026-09-08 | 2026-09-15 | 472 | 2026-09-01 | 2026-09-08 | 5d | 28d | 0d |  |  |  |  |  |  |  |  | Ter 08/09/26 |  |
| 474 | 1.5.12.3 | Atendimento de Comentário | 3d | 2026-09-15 | 2026-09-18 | 473 | 2026-09-08 | 2026-09-11 | 3d | 28d | 0d |  |  |  |  |  |  |  |  | Sex 11/09/26 |  |
| 475 | 1.5.12.4 | Aprovação | 2d | 2026-09-18 | 2026-09-22 | 474 | 2026-09-11 | 2026-09-15 | 2d | 28d |  |  |  |  |  |  |  |  |  | Ter 15/09/26 |  |
| 476 | 1.5.13 | **FD-F0008-0309-MB-M-00008** | 16d | 2026-08-18 | 2026-09-09 |  | 2026-08-11 | 2026-09-15 | 25d |  |  | FD - Folha de Dados | 03 - REDUÇÃO | 09 - FORNO TECNORED | M - MECÂNICA / EQUIPAMENTOS | FOLHA DE DADOS VASO DE DESAREAÇÃO | A4 (210x297mm) | 02 | Readequação da casa de bombas | Ter 15/09/26 | Ter 11/08/26 |
| 477 | 1.5.13.1 | Emissão inicial | 15d | 2026-08-18 | 2026-09-08 | 447SF | 2026-08-11 | 2026-09-01 | 15d | 28d | 0d |  |  |  |  |  |  |  |  | Ter 01/09/26 |  |
| 478 | 1.5.13.2 | Avaliação do Cliente | 5d | 2026-09-08 | 2026-09-15 | 477 | 2026-09-01 | 2026-09-08 | 5d | 28d | 0d |  |  |  |  |  |  |  |  | Ter 08/09/26 |  |
| 479 | 1.5.13.3 | Atendimento de Comentário | 3d | 2026-09-15 | 2026-09-18 | 478 | 2026-09-08 | 2026-09-11 | 3d | 28d | 0d |  |  |  |  |  |  |  |  | Sex 11/09/26 |  |
| 480 | 1.5.13.4 | Aprovação | 2d | 2026-09-18 | 2026-09-22 | 479 | 2026-09-11 | 2026-09-15 | 2d | 28d |  |  |  |  |  |  |  |  |  | Ter 15/09/26 |  |

| ID | WBS | Task | Duration | Start | Finish | Predecessors | Baseline start | Baseline finish | Baseline duration | Total slack | Free slack | Tipo de documento | Área | Sub-área | Disciplina | Título | Formato | Quantidade | Agrupamento Cecal | Término_LB_R0 | Início_LB_R0 |
| --- | --- | --- | --- | --- | --- | --- | --- | --- | --- | --- | --- | --- | --- | --- | --- | --- | --- | --- | --- | --- | --- |
| 481 | 1.5.14 | **FD-F0008-0309-MB-M-00009** | 18d | 2026-08-18 | 2026-09-11 |  | 2026-08-11 | 2026-09-15 | 25d |  |  | FD - Folha de Dados | 03 - REDUÇÃO | 09 - FORNO TECNORED | M - MECÂNICA / EQUIPAMENTOS | FOLHA DE DADOS VASO DE EXPANSÃO | A4 (210x297mm) | 02 | Readequação da casa de bombas | Ter 15/09/26 | Ter 11/08/26 |
| 482 | 1.5.14.1 | Emissão inicial | 15d | 2026-08-18 | 2026-09-08 | 447SF | 2026-08-11 | 2026-09-01 | 15d | 28d | 0d |  |  |  |  |  |  |  |  | Ter 01/09/26 |  |
| 483 | 1.5.14.2 | Avaliação do Cliente | 5d | 2026-09-08 | 2026-09-15 | 482 | 2026-09-01 | 2026-09-08 | 5d | 28d | 0d |  |  |  |  |  |  |  |  | Ter 08/09/26 |  |
| 484 | 1.5.14.3 | Atendimento de Comentário | 3d | 2026-09-15 | 2026-09-18 | 483 | 2026-09-08 | 2026-09-11 | 3d | 28d | 0d |  |  |  |  |  |  |  |  | Sex 11/09/26 |  |
| 485 | 1.5.14.4 | Aprovação | 2d | 2026-09-18 | 2026-09-22 | 484 | 2026-09-11 | 2026-09-15 | 2d | 28d |  |  |  |  |  |  |  |  |  | Ter 15/09/26 |  |
| 486 | 1.5.15 | **FD-F0008-0309-MB-M-00010** | 20d | 2026-08-18 | 2026-09-15 |  | 2026-08-11 | 2026-09-15 | 25d |  |  | FD - Folha de Dados | 03 - REDUÇÃO | 09 - FORNO TECNORED | M - MECÂNICA / EQUIPAMENTOS | FOLHA DE DADOS VASOS DE EXPANSAO NITROGENIO | A4 (210x297mm) | 02 | Readequação da casa de bombas | Ter 15/09/26 | Ter 11/08/26 |
| 487 | 1.5.15.1 | Emissão inicial | 15d | 2026-08-18 | 2026-09-08 | 447SF | 2026-08-11 | 2026-09-01 | 15d | 28d | 0d |  |  |  |  |  |  |  |  | Ter 01/09/26 |  |
| 488 | 1.5.15.2 | Avaliação do Cliente | 5d | 2026-09-08 | 2026-09-15 | 487 | 2026-09-01 | 2026-09-08 | 5d | 28d | 0d |  |  |  |  |  |  |  |  | Ter 08/09/26 |  |
| 489 | 1.5.15.3 | Atendimento de Comentário | 3d | 2026-09-15 | 2026-09-18 | 488 | 2026-09-08 | 2026-09-11 | 3d | 28d | 0d |  |  |  |  |  |  |  |  | Sex 11/09/26 |  |
| 490 | 1.5.15.4 | Aprovação | 2d | 2026-09-18 | 2026-09-22 | 489 | 2026-09-11 | 2026-09-15 | 2d | 28d |  |  |  |  |  |  |  |  |  | Ter 15/09/26 |  |
| 491 | 1.5.16 | **FD-F0008-0309-MB-M-00011** | 22d | 2026-08-18 | 2026-09-17 |  | 2026-08-11 | 2026-09-15 | 25d |  |  | FD - Folha de Dados | 03 - REDUÇÃO | 09 - FORNO TECNORED | M - MECÂNICA / EQUIPAMENTOS | FOLHA DE DADOS FILTRO CHAPÉU DE BRUXA | A4 (210x297mm) | 02 | Readequação da casa de bombas | Ter 15/09/26 | Ter 11/08/26 |
| 492 | 1.5.16.1 | Emissão inicial | 15d | 2026-08-18 | 2026-09-08 | 447SF | 2026-08-11 | 2026-09-01 | 15d | 28d | 0d |  |  |  |  |  |  |  |  | Ter 01/09/26 |  |
| 493 | 1.5.16.2 | Avaliação do Cliente | 5d | 2026-09-08 | 2026-09-15 | 492 | 2026-09-01 | 2026-09-08 | 5d | 28d | 0d |  |  |  |  |  |  |  |  | Ter 08/09/26 |  |
| 494 | 1.5.16.3 | Atendimento de Comentário | 3d | 2026-09-15 | 2026-09-18 | 493 | 2026-09-08 | 2026-09-11 | 3d | 28d | 0d |  |  |  |  |  |  |  |  | Sex 11/09/26 |  |
| 495 | 1.5.16.4 | Aprovação | 2d | 2026-09-18 | 2026-09-22 | 494 | 2026-09-11 | 2026-09-15 | 2d | 28d |  |  |  |  |  |  |  |  |  | Ter 15/09/26 |  |
| 496 | 1.5.17 | **LE-F0008-0309-MB-M-00001** | 28d | 2026-08-18 | 2026-09-25 |  | 2026-08-11 | 2026-09-15 | 25d |  |  | LE - Lista de Equipamentos | 03 - REDUÇÃO | 09 - FORNO TECNORED | M - MECÂNICA / EQUIPAMENTOS | LISTA DE EQUIPAMENTOS MECÂNICOS | A4 (210x297mm) | 05 | Readequação da casa de bombas | Ter 15/09/26 | Ter 11/08/26 |
| 497 | 1.5.17.1 | Emissão inicial | 15d | 2026-08-18 | 2026-09-08 | 447SF | 2026-08-11 | 2026-09-01 | 15d | 28d | 0d |  |  |  |  |  |  |  |  | Ter 01/09/26 |  |
| 498 | 1.5.17.2 | Avaliação do Cliente | 5d | 2026-09-08 | 2026-09-15 | 497 | 2026-09-01 | 2026-09-08 | 5d | 28d | 0d |  |  |  |  |  |  |  |  | Ter 08/09/26 |  |
| 499 | 1.5.17.3 | Atendimento de Comentário | 3d | 2026-09-15 | 2026-09-18 | 498 | 2026-09-08 | 2026-09-11 | 3d | 28d | 0d |  |  |  |  |  |  |  |  | Sex 11/09/26 |  |
| 500 | 1.5.17.4 | Aprovação | 2d | 2026-09-18 | 2026-09-22 | 499 | 2026-09-11 | 2026-09-15 | 2d | 28d |  |  |  |  |  |  |  |  |  | Ter 15/09/26 |  |
| 501 | 1.5.18 | **LM-F0008-0309-MB-M-00001** | 25d | 2026-08-18 | 2026-09-22 |  | 2026-08-11 | 2026-09-15 | 25d | 28d |  | LM - Lista de Materiais | 03 - REDUÇÃO | 09 - FORNO TECNORED | M - MECÂNICA / EQUIPAMENTOS | LISTA DE MATERIAIS FORNO TECNORED | A4 (210x297mm) | 05 | Planilha de quantitativo do forno e carregamento | Ter 15/09/26 | Ter 11/08/26 |
| 502 | 1.5.18.1 | Emissão inicial | 15d | 2026-08-18 | 2026-09-08 | 447SF | 2026-08-11 | 2026-09-01 | 15d | 28d | 0d |  |  |  |  |  |  |  |  | Ter 01/09/26 |  |
| 503 | 1.5.18.2 | Avaliação do Cliente | 5d | 2026-09-08 | 2026-09-15 | 502 | 2026-09-01 | 2026-09-08 | 5d | 28d | 0d |  |  |  |  |  |  |  |  | Ter 08/09/26 |  |
| 504 | 1.5.18.3 | Atendimento de Comentário | 3d | 2026-09-15 | 2026-09-18 | 503 | 2026-09-08 | 2026-09-11 | 3d | 28d | 0d |  |  |  |  |  |  |  |  | Sex 11/09/26 |  |
| 505 | 1.5.18.4 | Aprovação | 2d | 2026-09-18 | 2026-09-22 | 504 | 2026-09-11 | 2026-09-15 | 2d | 28d |  |  |  |  |  |  |  |  |  | Ter 15/09/26 |  |

| ID | WBS | Task | Duration | Start | Finish | Predecessors | Baseline start | Baseline finish | Baseline duration | Total slack | Free slack | Tipo de documento | Área | Sub-área | Disciplina | Formato | Quantidade | Agrupamento Cecal | Término_LB_R0 | Início_LB_R0 |
| --- | --- | --- | --- | --- | --- | --- | --- | --- | --- | --- | --- | --- | --- | --- | --- | --- | --- | --- | --- | --- |
| 506 | 1.5.19 | **PQ-F0008-0309-MB-M-00001** | 25d | 2026-08-18 | 2026-09-22 |  | 2026-08-11 | 2026-09-15 | 25d | 28d |  | PQ - Planilha de Quantidades | 03 - REDUÇÃO | 09 - FORNO TECNORED | M - MECÂNICA / EQUIPAMENTOS | A4 (210x297mm) | 10 | Planilha de quantitativo do forno e carregamento | Ter 15/09/26 | Ter 11/08/26 |
| 507 | 1.5.19.1 | Emissão inicial | 15d | 2026-08-18 | 2026-09-08 | 447SF | 2026-08-11 | 2026-09-01 | 15d | 28d | 0d |  |  |  |  |  |  |  | Ter 01/09/26 |  |
| 508 | 1.5.19.2 | Avaliação do Cliente | 5d | 2026-09-08 | 2026-09-15 | 507 | 2026-09-01 | 2026-09-08 | 5d | 28d | 0d |  |  |  |  |  |  |  | Ter 08/09/26 |  |
| 509 | 1.5.19.3 | Atendimento de Comentário | 3d | 2026-09-15 | 2026-09-18 | 508 | 2026-09-08 | 2026-09-11 | 3d | 28d | 0d |  |  |  |  |  |  |  | Sex 11/09/26 |  |
| 510 | 1.5.19.4 | Aprovação | 2d | 2026-09-18 | 2026-09-22 | 509 | 2026-09-11 | 2026-09-15 | 2d | 28d |  |  |  |  |  |  |  |  | Ter 15/09/26 |  |
| 511 | 1.5.20 | **PQ-F0008-0309-MB-M-00002** | 25d | 2026-09-24 | 2026-10-29 | 416 | 2026-08-11 | 2026-09-15 | 25d | 1d |  | PQ - Planilha de Quantidades | 03 - REDUÇÃO | 09 - FORNO TECNORED | M - MECÂNICA / EQUIPAMENTOS | A1 (841x594mm) | 10 | Planilha de quantitativo do forno e carregamento | Ter 15/09/26 | Ter 11/08/26 |
| 512 | 1.5.20.1 | Emissão inicial | 15d | 2026-09-24 | 2026-10-15 | 508SF | 2026-08-11 | 2026-09-01 | 15d | 1d | 0d |  |  |  |  |  |  |  | Ter 01/09/26 |  |
| 513 | 1.5.20.2 | Avaliação do Cliente | 5d | 2026-10-15 | 2026-10-22 | 512 | 2026-09-01 | 2026-09-08 | 5d | 1d | 0d |  |  |  |  |  |  |  | Ter 08/09/26 |  |
| 514 | 1.5.20.3 | Atendimento de Comentário | 3d | 2026-10-22 | 2026-10-27 | 513 | 2026-09-08 | 2026-09-11 | 3d | 1d | 0d |  |  |  |  |  |  |  | Sex 11/09/26 |  |
| 515 | 1.5.20.4 | Aprovação | 2d | 2026-10-27 | 2026-10-29 | 514 | 2026-09-11 | 2026-09-15 | 2d | 1d |  |  |  |  |  |  |  |  | Ter 15/09/26 |  |
| 516 | 1.5.21 | **PQ-F0008-0309-MB-M-00003** | 25d | 2026-09-24 | 2026-10-29 | 416 | 2026-08-11 | 2026-09-15 | 25d | 1d |  | PQ - Planilha de Quantidades | 03 - REDUÇÃO | 09 - FORNO TECNORED | M - MECÂNICA / EQUIPAMENTOS | A4 (210x297mm) | 10 | Planilha de quantitativo do forno e carregamento | Ter 15/09/26 | Ter 11/08/26 |
| 517 | 1.5.21.1 | Emissão inicial | 15d | 2026-09-24 | 2026-10-15 | 508SF | 2026-08-11 | 2026-09-01 | 15d | 1d | 0d |  |  |  |  |  |  |  | Ter 01/09/26 |  |
| 518 | 1.5.21.2 | Avaliação do Cliente | 5d | 2026-10-15 | 2026-10-22 | 517 | 2026-09-01 | 2026-09-08 | 5d | 1d | 0d |  |  |  |  |  |  |  | Ter 08/09/26 |  |
| 519 | 1.5.21.3 | Atendimento de Comentário | 3d | 2026-10-22 | 2026-10-27 | 518 | 2026-09-08 | 2026-09-11 | 3d | 1d | 0d |  |  |  |  |  |  |  | Sex 11/09/26 |  |
| 520 | 1.5.21.4 | Aprovação | 2d | 2026-10-27 | 2026-10-29 | 519 | 2026-09-11 | 2026-09-15 | 2d | 1d |  |  |  |  |  |  |  |  | Ter 15/09/26 |  |
| 521 | 1.5.22 | **PQ-F0008-0309-MB-M-00004** | 25d | 2026-09-24 | 2026-10-29 | 416 | 2026-08-11 | 2026-09-15 | 25d | 1d |  | PQ - Planilha de Quantidades | 03 - REDUÇÃO | 09 - FORNO TECNORED | M - MECÂNICA / EQUIPAMENTOS | A4 (210x297mm) | 18 | Planilha de quantitativo do forno e carregamento | Ter 15/09/26 | Ter 11/08/26 |
| 522 | 1.5.22.1 | Emissão inicial | 15d | 2026-09-24 | 2026-10-15 | 508SF | 2026-08-11 | 2026-09-01 | 15d | 1d | 0d |  |  |  |  |  |  |  | Ter 01/09/26 |  |
| 523 | 1.5.22.2 | Avaliação do Cliente | 5d | 2026-10-15 | 2026-10-22 | 522 | 2026-09-01 | 2026-09-08 | 5d | 1d | 0d |  |  |  |  |  |  |  | Ter 08/09/26 |  |
| 524 | 1.5.22.3 | Atendimento de Comentário | 3d | 2026-10-22 | 2026-10-27 | 523 | 2026-09-08 | 2026-09-11 | 3d | 1d | 0d |  |  |  |  |  |  |  | Sex 11/09/26 |  |
| 525 | 1.5.22.4 | Aprovação | 2d | 2026-10-27 | 2026-10-29 | 524 | 2026-09-11 | 2026-09-15 | 2d | 1d |  |  |  |  |  |  |  |  | Ter 15/09/26 |  |
| 526 | 1.5.23 | **RT-F0008-0309-MB-M-00001** | 18d | 2026-09-04 | 2026-09-30 |  | 2026-09-03 | 2026-09-29 | 18d | 22d |  | RT - Relatório Técnico | 03 - REDUÇÃO | 09 - FORNO TECNORED | M - MECÂNICA / EQUIPAMENTOS | A4 (210x297mm) | 10 | Revisão do projeto do forno - carcaça e refratário | Ter 29/09/26 | Qui 03/09/26 |
| 527 | 1.5.23.1 | Emissão inicial | 8d | 2026-09-04 | 2026-09-16 | 406 | 2026-09-03 | 2026-09-15 | 8d | 22d | 0d |  |  |  |  |  |  |  | Ter 15/09/26 |  |
| 528 | 1.5.23.2 | Avaliação do Cliente | 5d | 2026-09-16 | 2026-09-23 | 527 | 2026-09-15 | 2026-09-22 | 5d | 22d | 0d |  |  |  |  |  |  |  | Ter 22/09/26 |  |
| 529 | 1.5.23.3 | Atendimento de Comentário | 3d | 2026-09-23 | 2026-09-28 | 528 | 2026-09-22 | 2026-09-25 | 3d | 22d | 0d |  |  |  |  |  |  |  | Sex 25/09/26 |  |
| 530 | 1.5.23.4 | Aprovação | 2d | 2026-09-28 | 2026-09-30 | 529 | 2026-09-25 | 2026-09-29 | 2d | 22d |  |  |  |  |  |  |  |  | Ter 29/09/26 |  |

Notes:
- 506: Título: PLANILHA QUANTITATIVO EQUIPAMENTOS UTILIDADES
- 511: Título: PLANILHA QUANTITATIVO DE EQUIPAMENTOS CARREGAMENTO
- 516: Título: PLANILHA QUANTITATIVO SISTEMA CARREGAMENTO
- 521: Título: PLANILHA QUANTITATIVO FORNO
- 526: Título: ANÁLISE DE FLEXIBILIDADE PRELIMINAR DA TUBULACAO DE AR QUENTE

| ID | WBS | Task | Duration | Start | Finish | Predecessors | Baseline start | Baseline finish | Baseline duration | Total slack | Free slack | Término_LB_R0 | Início_LB_R0 | Tipo de documento | Área | Sub-área | Disciplina | Título | Formato | Quantidade | Agrupamento Cecal |
| --- | --- | --- | --- | --- | --- | --- | --- | --- | --- | --- | --- | --- | --- | --- | --- | --- | --- | --- | --- | --- | --- |
| 531 | 1.6 | **TUBULAÇÃO E SISTEMAS 309** | 49d | 2026-08-11 | 2026-10-19 |  | 2026-08-04 | 2026-09-15 | 30d |  |  | Ter 15/09/26 | Ter 04/08/26 |  |  |  |  |  |  |  |  |
| 532 | 1.6.1 | **AG-F0008-0309-MB-T-00001** | 17d | 2026-08-18 | 2026-09-10 |  | 2026-08-11 | 2026-09-15 | 25d |  |  | Ter 15/09/26 | Ter 11/08/26 | AG - Arranjo (AG) | 03 - REDUÇÃO | 09 - FORNO TECNORED | T - TUBULAÇÃO E SISTEMAS | LAY-OUT DE EQUIPAMENTOS | A0 (1189x841mm) | 01 | Readequação das utilidades no prédio do forno |
| 533 | 1.6.1.1 | Emissão inicial | 10d | 2026-08-18 | 2026-09-01 | 1013 | 2026-08-11 | 2026-08-25 | 10d | 28d | 0d | Ter 25/08/26 |  |  |  |  |  |  |  |  |  |
| 534 | 1.6.1.2 | Avaliação do Cliente | 5d | 2026-09-01 | 2026-09-08 | 533 | 2026-08-25 | 2026-09-01 | 5d | 28d | 0d | Ter 01/09/26 |  |  |  |  |  |  |  |  |  |
| 535 | 1.6.1.3 | Atendimento de Comentário | 5d | 2026-09-08 | 2026-09-15 | 534 | 2026-09-01 | 2026-09-08 | 5d | 28d | 0d | Ter 08/09/26 |  |  |  |  |  |  |  |  |  |
| 536 | 1.6.1.4 | Aprovação | 5d | 2026-09-15 | 2026-09-22 | 535 | 2026-09-08 | 2026-09-15 | 5d | 28d |  | Ter 15/09/26 |  |  |  |  |  |  |  |  |  |
| 537 | 1.6.2 | **AG-F0008-0309-MB-T-00002** | 18d | 2026-08-18 | 2026-09-11 |  | 2026-08-11 | 2026-09-15 | 25d |  |  | Ter 15/09/26 | Ter 11/08/26 | AG - Arranjo (AG) | 03 - REDUÇÃO | 09 - FORNO TECNORED | T - TUBULAÇÃO E SISTEMAS | PLANTA BÁSICA CASA DE BOMBAS | A1 (841x594mm) | 01 | Readequação das utilidades no prédio do forno |
| 538 | 1.6.2.1 | Emissão inicial | 10d | 2026-08-18 | 2026-09-01 | 534SF | 2026-08-11 | 2026-08-25 | 10d | 28d | 0d | Ter 25/08/26 |  |  |  |  |  |  |  |  |  |
| 539 | 1.6.2.2 | Avaliação do Cliente | 5d | 2026-09-01 | 2026-09-08 | 538 | 2026-08-25 | 2026-09-01 | 5d | 28d | 0d | Ter 01/09/26 |  |  |  |  |  |  |  |  |  |
| 540 | 1.6.2.3 | Atendimento de Comentário | 5d | 2026-09-08 | 2026-09-15 | 539 | 2026-09-01 | 2026-09-08 | 5d | 28d | 0d | Ter 08/09/26 |  |  |  |  |  |  |  |  |  |
| 541 | 1.6.2.4 | Aprovação | 5d | 2026-09-15 | 2026-09-22 | 540 | 2026-09-08 | 2026-09-15 | 5d | 28d |  | Ter 15/09/26 |  |  |  |  |  |  |  |  |  |
| 542 | 1.6.3 | **AG-F0008-0309-MB-T-00003** | 19d | 2026-08-18 | 2026-09-14 |  | 2026-08-11 | 2026-09-15 | 25d |  |  | Ter 15/09/26 | Ter 11/08/26 | AG - Arranjo (AG) | 03 - REDUÇÃO | 09 - FORNO TECNORED | T - TUBULAÇÃO E SISTEMAS | PLANTA BÁSICA CORTE CASA DE BOMBAS | A1 (841x594mm) | 01 | Readequação das utilidades no prédio do forno |
| 543 | 1.6.3.1 | Emissão inicial | 10d | 2026-08-18 | 2026-09-01 | 534SF | 2026-08-11 | 2026-08-25 | 10d | 28d | 0d | Ter 25/08/26 |  |  |  |  |  |  |  |  |  |
| 544 | 1.6.3.2 | Avaliação do Cliente | 5d | 2026-09-01 | 2026-09-08 | 543 | 2026-08-25 | 2026-09-01 | 5d | 28d | 0d | Ter 01/09/26 |  |  |  |  |  |  |  |  |  |
| 545 | 1.6.3.3 | Atendimento de Comentário | 5d | 2026-09-08 | 2026-09-15 | 544 | 2026-09-01 | 2026-09-08 | 5d | 28d | 0d | Ter 08/09/26 |  |  |  |  |  |  |  |  |  |
| 546 | 1.6.3.4 | Aprovação | 5d | 2026-09-15 | 2026-09-22 | 545 | 2026-09-08 | 2026-09-15 | 5d | 28d |  | Ter 15/09/26 |  |  |  |  |  |  |  |  |  |
| 547 | 1.6.4 | **AG-F0008-0309-MB-T-00004** | 20d | 2026-08-18 | 2026-09-15 |  | 2026-08-11 | 2026-09-15 | 25d |  |  | Ter 15/09/26 | Ter 11/08/26 | AG - Arranjo (AG) | 03 - REDUÇÃO | 09 - FORNO TECNORED | T - TUBULAÇÃO E SISTEMAS | PLANTA BÁSICA PIPE-RACK DA CASA DE BOMBAS PLANTA E CORTE | A1 (841x594mm) | 01 | Readequação das utilidades no prédio do forno |
| 548 | 1.6.4.1 | Emissão inicial | 10d | 2026-08-18 | 2026-09-01 | 534SF | 2026-08-11 | 2026-08-25 | 10d | 28d | 0d | Ter 25/08/26 |  |  |  |  |  |  |  |  |  |
| 549 | 1.6.4.2 | Avaliação do Cliente | 5d | 2026-09-01 | 2026-09-08 | 548 | 2026-08-25 | 2026-09-01 | 5d | 28d | 0d | Ter 01/09/26 |  |  |  |  |  |  |  |  |  |
| 550 | 1.6.4.3 | Atendimento de Comentário | 5d | 2026-09-08 | 2026-09-15 | 549 | 2026-09-01 | 2026-09-08 | 5d | 28d | 0d | Ter 08/09/26 |  |  |  |  |  |  |  |  |  |
| 551 | 1.6.4.4 | Aprovação | 5d | 2026-09-15 | 2026-09-22 | 550 | 2026-09-08 | 2026-09-15 | 5d | 28d |  | Ter 15/09/26 |  |  |  |  |  |  |  |  |  |
| 552 | 1.6.5 | **AG-F0008-0309-MB-T-00005** | 25d | 2026-08-18 | 2026-09-22 |  | 2026-08-11 | 2026-09-15 | 25d | 28d |  | Ter 15/09/26 | Ter 11/08/26 | AG - Arranjo (AG) | 03 - REDUÇÃO | 09 - FORNO TECNORED | T - TUBULAÇÃO E SISTEMAS | PLANTA BÁSICA PIPE-RACK PARA FORNO PLANTA E CORTE | A1 (841x594mm) | 01 | Readequação das utilidades no prédio do forno |
| 553 | 1.6.5.1 | Emissão inicial | 10d | 2026-08-18 | 2026-09-01 | 534SF | 2026-08-11 | 2026-08-25 | 10d | 28d | 0d | Ter 25/08/26 |  |  |  |  |  |  |  |  |  |
| 554 | 1.6.5.2 | Avaliação do Cliente | 5d | 2026-09-01 | 2026-09-08 | 553 | 2026-08-25 | 2026-09-01 | 5d | 28d | 0d | Ter 01/09/26 |  |  |  |  |  |  |  |  |  |
| 555 | 1.6.5.3 | Atendimento de Comentário | 5d | 2026-09-08 | 2026-09-15 | 554 | 2026-09-01 | 2026-09-08 | 5d | 28d | 0d | Ter 08/09/26 |  |  |  |  |  |  |  |  |  |
| 556 | 1.6.5.4 | Aprovação | 5d | 2026-09-15 | 2026-09-22 | 555 | 2026-09-08 | 2026-09-15 | 5d | 28d |  | Ter 15/09/26 |  |  |  |  |  |  |  |  |  |

| ID | WBS | Task | Duration | Start | Finish | Predecessors | Baseline start | Baseline finish | Baseline duration | Total slack | Free slack | Tipo de documento | Área | Sub-área | Disciplina | Título | Formato | Quantidade | Agrupamento Cecal | Término_LB_R0 | Início_LB_R0 |
| --- | --- | --- | --- | --- | --- | --- | --- | --- | --- | --- | --- | --- | --- | --- | --- | --- | --- | --- | --- | --- | --- |
| 557 | 1.6.6 | **LK-F0008-0309-MB-T-00001** | 21d | 2026-08-25 | 2026-09-23 |  | 2026-08-18 | 2026-09-15 | 20d |  |  | LK - Lista de Tie in | 03 - REDUÇÃO | 09 - FORNO TECNORED | T - TUBULAÇÃO E SISTEMAS | LISTA DE TIE-INS | A4 (210x297mm) | 10 | Readequação das utilidades no prédio do forno | Ter 15/09/26 | Ter 18/08/26 |
| 558 | 1.6.6.1 | Emissão inicial | 5d | 2026-08-25 | 2026-09-01 | 534SF | 2026-08-18 | 2026-08-25 | 5d | 28d | 0d |  |  |  |  |  |  |  |  | Ter 25/08/26 |  |
| 559 | 1.6.6.2 | Avaliação do Cliente | 5d | 2026-09-01 | 2026-09-08 | 558 | 2026-08-25 | 2026-09-01 | 5d | 28d | 0d |  |  |  |  |  |  |  |  | Ter 01/09/26 |  |
| 560 | 1.6.6.3 | Atendimento de Comentário | 5d | 2026-09-08 | 2026-09-15 | 559 | 2026-09-01 | 2026-09-08 | 5d | 28d | 0d |  |  |  |  |  |  |  |  | Ter 08/09/26 |  |
| 561 | 1.6.6.4 | Aprovação | 5d | 2026-09-15 | 2026-09-22 | 560 | 2026-09-08 | 2026-09-15 | 5d | 28d |  |  |  |  |  |  |  |  |  | Ter 15/09/26 |  |
| 562 | 1.6.7 | **LM-F0008-0309-MB-T-00001** | 37d | 2026-08-11 | 2026-10-01 |  | 2026-08-04 | 2026-09-15 | 30d |  |  | LM - Lista de Materiais | 03 - REDUÇÃO | 09 - FORNO TECNORED | T - TUBULAÇÃO E SISTEMAS | LISTA DE MATERIAIS | A4 (210x297mm) | 10 | Readequação das utilidades no prédio do forno | Ter 15/09/26 | Ter 04/08/26 |
| 563 | 1.6.7.1 | Emissão inicial | 15d | 2026-08-11 | 2026-09-01 | 534SF | 2026-08-04 | 2026-08-25 | 15d | 28d | 0d |  |  |  |  |  |  |  |  | Ter 25/08/26 |  |
| 564 | 1.6.7.2 | Avaliação do Cliente | 5d | 2026-09-01 | 2026-09-08 | 563 | 2026-08-25 | 2026-09-01 | 5d | 28d | 0d |  |  |  |  |  |  |  |  | Ter 01/09/26 |  |
| 565 | 1.6.7.3 | Atendimento de Comentário | 5d | 2026-09-08 | 2026-09-15 | 564 | 2026-09-01 | 2026-09-08 | 5d | 28d | 0d |  |  |  |  |  |  |  |  | Ter 08/09/26 |  |
| 566 | 1.6.7.4 | Aprovação | 5d | 2026-09-15 | 2026-09-22 | 565 | 2026-09-08 | 2026-09-15 | 5d | 28d |  |  |  |  |  |  |  |  |  | Ter 15/09/26 |  |
| 567 | 1.6.8 | **LS-F0008-0309-MB-T-00001** | 31d | 2026-08-18 | 2026-09-30 |  | 2026-08-11 | 2026-09-15 | 25d |  |  | LS - Lista de Suportes | 03 - REDUÇÃO | 09 - FORNO TECNORED | T - TUBULAÇÃO E SISTEMAS | LISTA DE SUPORTES | A4 (210x297mm) | 10 | Readequação das utilidades no prédio do forno | Ter 15/09/26 | Ter 11/08/26 |
| 568 | 1.6.8.1 | Emissão inicial | 10d | 2026-08-18 | 2026-09-01 | 534SF | 2026-08-11 | 2026-08-25 | 10d | 28d | 0d |  |  |  |  |  |  |  |  | Ter 25/08/26 |  |
| 569 | 1.6.8.2 | Avaliação do Cliente | 5d | 2026-09-01 | 2026-09-08 | 568 | 2026-08-25 | 2026-09-01 | 5d | 28d | 0d |  |  |  |  |  |  |  |  | Ter 01/09/26 |  |
| 570 | 1.6.8.3 | Atendimento de Comentário | 5d | 2026-09-08 | 2026-09-15 | 569 | 2026-09-01 | 2026-09-08 | 5d | 28d | 0d |  |  |  |  |  |  |  |  | Ter 08/09/26 |  |
| 571 | 1.6.8.4 | Aprovação | 5d | 2026-09-15 | 2026-09-22 | 570 | 2026-09-08 | 2026-09-15 | 5d | 28d |  |  |  |  |  |  |  |  |  | Ter 15/09/26 |  |
| 572 | 1.6.9 | **MD-F0008-0309-MB-T-00001** | 39d | 2026-08-11 | 2026-10-05 |  | 2026-08-04 | 2026-09-15 | 30d |  |  | MD - Memorial Descritivo | 03 - REDUÇÃO | 09 - FORNO TECNORED | T - TUBULAÇÃO E SISTEMAS | MEMORIAL DESCRITIVO DE MONTAGEM MECÂNICA | A4 (210x297mm) | 10 | Readequação das utilidades no prédio do forno | Ter 15/09/26 | Ter 04/08/26 |
| 573 | 1.6.9.1 | Emissão inicial | 15d | 2026-08-11 | 2026-09-01 | 534SF | 2026-08-04 | 2026-08-25 | 15d | 28d | 0d |  |  |  |  |  |  |  |  | Ter 25/08/26 |  |
| 574 | 1.6.9.2 | Avaliação do Cliente | 5d | 2026-09-01 | 2026-09-08 | 573 | 2026-08-25 | 2026-09-01 | 5d | 28d | 0d |  |  |  |  |  |  |  |  | Ter 01/09/26 |  |
| 575 | 1.6.9.3 | Atendimento de Comentário | 5d | 2026-09-08 | 2026-09-15 | 574 | 2026-09-01 | 2026-09-08 | 5d | 28d | 0d |  |  |  |  |  |  |  |  | Ter 08/09/26 |  |
| 576 | 1.6.9.4 | Aprovação | 5d | 2026-09-15 | 2026-09-22 | 575 | 2026-09-08 | 2026-09-15 | 5d | 28d |  |  |  |  |  |  |  |  |  | Ter 15/09/26 |  |
| 577 | 1.6.10 | **MD-F0008-0309-MB-T-00002** | 30d | 2026-08-11 | 2026-09-22 |  | 2026-08-04 | 2026-09-15 | 30d | 28d |  | MD - Memorial Descritivo | 03 - REDUÇÃO | 09 - FORNO TECNORED | T - TUBULAÇÃO E SISTEMAS | MEMORIAL DESCRITIVO PESO DA TUBULAÇÃO DO FORNO | A4 (210x297mm) | 10 | Readequação das utilidades no prédio do forno | Ter 15/09/26 | Ter 04/08/26 |
| 578 | 1.6.10.1 | Emissão inicial | 15d | 2026-08-11 | 2026-09-01 | 534SF | 2026-08-04 | 2026-08-25 | 15d | 28d | 0d |  |  |  |  |  |  |  |  | Ter 25/08/26 |  |
| 579 | 1.6.10.2 | Avaliação do Cliente | 5d | 2026-09-01 | 2026-09-08 | 578 | 2026-08-25 | 2026-09-01 | 5d | 28d | 0d |  |  |  |  |  |  |  |  | Ter 01/09/26 |  |
| 580 | 1.6.10.3 | Atendimento de Comentário | 5d | 2026-09-08 | 2026-09-15 | 579 | 2026-09-01 | 2026-09-08 | 5d | 28d | 0d |  |  |  |  |  |  |  |  | Ter 08/09/26 |  |
| 581 | 1.6.10.4 | Aprovação | 5d | 2026-09-15 | 2026-09-22 | 580 | 2026-09-08 | 2026-09-15 | 5d | 28d |  |  |  |  |  |  |  |  |  | Ter 15/09/26 |  |

| ID | WBS | Task | Duration | Start | Finish | Predecessors | Baseline start | Baseline finish | Baseline duration | Total slack | Free slack | Término_LB_R0 | Início_LB_R0 | Tipo de documento | Área | Sub-área | Disciplina | Título | Formato | Quantidade | Agrupamento Cecal |
| --- | --- | --- | --- | --- | --- | --- | --- | --- | --- | --- | --- | --- | --- | --- | --- | --- | --- | --- | --- | --- | --- |
| 582 | 1.7 | **ARQUITETURA 309** | 56d | 2026-08-04 | 2026-10-21 |  | 2026-07-29 | 2026-09-15 | 35d |  |  | Ter 15/09/26 | Qua 29/07/26 |  |  |  |  |  |  |  |  |
| 583 | 1.7.1 | **AG-F0008-0309-MB-A-00001** | 25d | 2026-08-04 | 2026-09-08 |  | 2026-07-29 | 2026-09-01 | 25d | 28d |  | Ter 01/09/26 | Qua 29/07/26 | AG - Arranjo (AG) | 03 - REDUÇÃO | 09 - FORNO TECNORED | A - ARQUITETURA | ARQUITETURA PRÉDIO PRODUTIVO - BASE FORNO | A1 (841x594mm) | 01 | Readequação da fundação |
| 584 | 1.7.1.1 | Emissão inicial | 10d | 2026-08-04 | 2026-08-18 | 97, 286 | 2026-07-29 | 2026-08-11 | 10d | 28d | 0d | Ter 11/08/26 |  |  |  |  |  |  |  |  |  |
| 585 | 1.7.1.2 | Avaliação do Cliente | 5d | 2026-08-18 | 2026-08-25 | 584 | 2026-08-12 | 2026-08-18 | 5d | 38d | 0d | Ter 18/08/26 |  |  |  |  |  |  |  |  |  |
| 586 | 1.7.1.3 | Atendimento de Comentário | 5d | 2026-08-25 | 2026-09-01 | 585 | 2026-08-19 | 2026-08-25 | 5d | 38d | 0d | Ter 25/08/26 |  |  |  |  |  |  |  |  |  |
| 587 | 1.7.1.4 | Aprovação | 5d | 2026-09-01 | 2026-09-08 | 586 | 2026-08-26 | 2026-09-01 | 5d | 38d |  | Ter 01/09/26 |  |  |  |  |  |  |  |  |  |
| 588 | 1.7.2 | **AG-F0008-0309-MB-A-00002** | 25d | 2026-08-18 | 2026-09-22 |  | 2026-08-12 | 2026-09-15 | 25d | 28d |  | Ter 15/09/26 | Qua 12/08/26 | AG - Arranjo (AG) | 03 - REDUÇÃO | 09 - FORNO TECNORED | A - ARQUITETURA | ARQUITETURA PRÉDIO PRODUTIVO - BASE FORNO | A1 (841x594mm) | 01 | Readequação da fundação |
| 589 | 1.7.2.1 | Emissão inicial | 10d | 2026-08-18 | 2026-09-01 | 584 | 2026-08-12 | 2026-08-25 | 10d | 28d | 0d | Ter 25/08/26 |  |  |  |  |  |  |  |  |  |
| 590 | 1.7.2.2 | Avaliação do Cliente | 5d | 2026-09-01 | 2026-09-08 | 589 | 2026-08-26 | 2026-09-01 | 5d | 28d | 0d | Ter 01/09/26 |  |  |  |  |  |  |  |  |  |
| 591 | 1.7.2.3 | Atendimento de Comentário | 5d | 2026-09-08 | 2026-09-15 | 590 | 2026-09-02 | 2026-09-08 | 5d | 28d | 0d | Ter 08/09/26 |  |  |  |  |  |  |  |  |  |
| 592 | 1.7.2.4 | Aprovação | 5d | 2026-09-15 | 2026-09-22 | 591 | 2026-09-09 | 2026-09-15 | 5d | 28d |  | Ter 15/09/26 |  |  |  |  |  |  |  |  |  |
| 593 | 1.7.3 | **AG-F0008-0309-MB-A-00003** | 23d | 2026-08-18 | 2026-09-18 |  | 2026-08-12 | 2026-09-15 | 25d |  |  | Ter 15/09/26 | Qua 12/08/26 | AG - Arranjo (AG) | 03 - REDUÇÃO | 09 - FORNO TECNORED | A - ARQUITETURA | ARQUITETURA TORRE DE RESFRIAMENTO | A1 (841x594mm) | 01 | Revisão do projeto de cobre refrigerado |
| 594 | 1.7.3.1 | Emissão inicial | 10d | 2026-08-18 | 2026-09-01 | 590SF | 2026-08-12 | 2026-08-26 | 10d | 28d | 0d | Qua 26/08/26 |  |  |  |  |  |  |  |  |  |
| 595 | 1.7.3.2 | Avaliação do Cliente | 5d | 2026-09-01 | 2026-09-08 | 594 | 2026-08-26 | 2026-09-01 | 5d | 28d | 0d | Ter 01/09/26 |  |  |  |  |  |  |  |  |  |
| 596 | 1.7.3.3 | Atendimento de Comentário | 5d | 2026-09-08 | 2026-09-15 | 595 | 2026-09-02 | 2026-09-08 | 5d | 28d | 0d | Ter 08/09/26 |  |  |  |  |  |  |  |  |  |
| 597 | 1.7.3.4 | Aprovação | 5d | 2026-09-15 | 2026-09-22 | 596 | 2026-09-09 | 2026-09-15 | 5d | 28d |  | Ter 15/09/26 |  |  |  |  |  |  |  |  |  |
| 598 | 1.7.4 | **AG-F0008-0309-MB-A-00004** | 25d | 2026-08-18 | 2026-09-22 |  | 2026-08-12 | 2026-09-15 | 25d | 28d |  | Ter 15/09/26 | Qua 12/08/26 | AG - Arranjo (AG) | 03 - REDUÇÃO | 09 - FORNO TECNORED | A - ARQUITETURA | ARQUITETURA TORRE DE RESRIAMENTO E CASA DE BOMBAS | A1 (841x594mm) | 01 | Readequação da casa de bombas |
| 599 | 1.7.4.1 | Emissão inicial | 10d | 2026-08-18 | 2026-09-01 | 590SF | 2026-08-12 | 2026-08-26 | 10d | 28d | 0d | Qua 26/08/26 |  |  |  |  |  |  |  |  |  |
| 600 | 1.7.4.2 | Avaliação do Cliente | 5d | 2026-09-01 | 2026-09-08 | 599 | 2026-08-26 | 2026-09-01 | 5d | 28d | 0d | Ter 01/09/26 |  |  |  |  |  |  |  |  |  |
| 601 | 1.7.4.3 | Atendimento de Comentário | 5d | 2026-09-08 | 2026-09-15 | 600 | 2026-09-02 | 2026-09-08 | 5d | 28d | 0d | Ter 08/09/26 |  |  |  |  |  |  |  |  |  |
| 602 | 1.7.4.4 | Aprovação | 5d | 2026-09-15 | 2026-09-22 | 601 | 2026-09-09 | 2026-09-15 | 5d | 28d |  | Ter 15/09/26 |  |  |  |  |  |  |  |  |  |
| 603 | 1.7.5 | **MD-F0008-0309-MB-A-00001** | 41d | 2026-08-11 | 2026-10-07 |  | 2026-08-05 | 2026-09-15 | 30d |  |  | Ter 15/09/26 | Qua 05/08/26 | MD - Memorial Descritivo | 03 - REDUÇÃO | 09 - FORNO TECNORED | A - ARQUITETURA | MEMORIAL DESCRITIVO DOS SERVIÇOS DE CONSTRUÇÃO CIVIL | A4 (210x297mm) | 10 | Readequação da fundação |
| 604 | 1.7.5.1 | Emissão inicial | 15d | 2026-08-11 | 2026-09-01 | 590SF | 2026-08-05 | 2026-08-26 | 15d | 28d | 0d | Qua 26/08/26 |  |  |  |  |  |  |  |  |  |
| 605 | 1.7.5.2 | Avaliação do Cliente | 5d | 2026-09-01 | 2026-09-08 | 604 | 2026-08-26 | 2026-09-01 | 5d | 28d | 0d | Ter 01/09/26 |  |  |  |  |  |  |  |  |  |
| 606 | 1.7.5.3 | Atendimento de Comentário | 5d | 2026-09-08 | 2026-09-15 | 605 | 2026-09-02 | 2026-09-08 | 5d | 28d | 0d | Ter 08/09/26 |  |  |  |  |  |  |  |  |  |
| 607 | 1.7.5.4 | Aprovação | 5d | 2026-09-15 | 2026-09-22 | 606 | 2026-09-09 | 2026-09-15 | 5d | 28d |  | Ter 15/09/26 |  |  |  |  |  |  |  |  |  |

| ID | WBS | Task | Duration | Start | Finish | Predecessors | Baseline start | Baseline finish | Baseline duration | Total slack | Free slack | Constraint | Tipo de documento | Área | Sub-área | Disciplina | Título | Formato | Quantidade | Agrupamento Cecal | Término_LB_R0 | Início_LB_R0 |
| --- | --- | --- | --- | --- | --- | --- | --- | --- | --- | --- | --- | --- | --- | --- | --- | --- | --- | --- | --- | --- | --- | --- |
| 608 | 1.7.6 | **PQ-F0008-0309-MB-A-00001** | 38d | 2026-08-12 | 2026-10-05 |  | 2026-08-06 | 2026-09-15 | 29d |  |  |  | PQ - Planilha de Quantidades | 03 - REDUÇÃO | 09 - FORNO TECNORED | A - ARQUITETURA | PLANILHA DE QUANTITATIVOS PARA COMPOR CAPEX | A4 (210x297mm) | 10 | Planilha de quantitativo do forno e carregamento | Ter 15/09/26 | Qui 06/08/26 |
| 609 | 1.7.6.1 | Emissão inicial | 14d | 2026-08-12 | 2026-09-01 | 590SF | 2026-08-06 | 2026-08-26 | 14d | 28d | 0d | start no earlier than 2026-07-29 |  |  |  |  |  |  |  |  | Qua 26/08/26 |  |
| 610 | 1.7.6.2 | Avaliação do Cliente | 5d | 2026-09-01 | 2026-09-08 | 609 | 2026-08-26 | 2026-09-01 | 5d | 28d | 0d |  |  |  |  |  |  |  |  |  | Ter 01/09/26 |  |
| 611 | 1.7.6.3 | Atendimento de Comentário | 5d | 2026-09-08 | 2026-09-15 | 610 | 2026-09-02 | 2026-09-08 | 5d | 28d | 0d |  |  |  |  |  |  |  |  |  | Ter 08/09/26 |  |
| 612 | 1.7.6.4 | Aprovação | 5d | 2026-09-15 | 2026-09-22 | 611 | 2026-09-09 | 2026-09-15 | 5d | 28d |  | start no earlier than 2026-08-18 |  |  |  |  |  |  |  |  | Ter 15/09/26 |  |
| 613 | 1.8 | **CIVIL / INFRAESTRUTURA 309** | 56d | 2026-08-04 | 2026-10-21 |  | 2026-07-29 | 2026-09-01 | 25d |  |  |  |  |  |  |  |  |  |  |  | Ter 01/09/26 | Qua 29/07/26 |
| 614 | 1.8.1 | **AG-F0008-0309-MB-B-00001** | 19d | 2026-08-04 | 2026-08-31 |  | 2026-07-29 | 2026-09-01 | 25d |  |  |  | AG - Arranjo (AG) | 03 - REDUÇÃO | 09 - FORNO TECNORED | B - CIVIL / INFRAESTRUTURA | IMPLANTAÇÃO GERAL | A0 (1189x841mm) | 01 | Readequação da fundação | Ter 01/09/26 | Qua 29/07/26 |
| 615 | 1.8.1.1 | Emissão inicial | 10d | 2026-08-04 | 2026-08-18 | 97, 286 | 2026-07-29 | 2026-08-11 | 10d | 38d | 0d |  |  |  |  |  |  |  |  |  | Ter 11/08/26 |  |
| 616 | 1.8.1.2 | Avaliação do Cliente | 5d | 2026-08-18 | 2026-08-25 | 615 | 2026-08-12 | 2026-08-18 | 5d | 38d | 0d |  |  |  |  |  |  |  |  |  | Ter 18/08/26 |  |
| 617 | 1.8.1.3 | Atendimento de Comentário | 5d | 2026-08-25 | 2026-09-01 | 616 | 2026-08-19 | 2026-08-25 | 5d | 38d | 0d |  |  |  |  |  |  |  |  |  | Ter 25/08/26 |  |
| 618 | 1.8.1.4 | Aprovação | 5d | 2026-09-01 | 2026-09-08 | 617 | 2026-08-26 | 2026-09-01 | 5d | 38d |  |  |  |  |  |  |  |  |  |  | Ter 01/09/26 |  |
| 619 | 1.9 | **ELÉTRICA 309** | 81d | 2026-06-30 | 2026-10-21 |  | 2026-06-23 | 2026-09-17 | 62.12d |  |  |  |  |  |  |  |  |  |  |  | Qui 17/09/26 | Ter 23/06/26 |
| 620 | 1.9.1 | **CP-F0008-0309-MB-E-00001** | 20d | 2026-06-30 | 2026-07-28 |  | 2026-06-23 | 2026-07-21 | 20d | 68d |  |  | CP - Critério de Projeto | 03 - REDUÇÃO | 09 - FORNO TECNORED | E - ELÉTRICA | CRITERIO DE PROJETO BÁSICO | A4 (210x297mm) | 10 | Revisão das cargas elétricas | Ter 21/07/26 | Ter 23/06/26 |
| 621 | 1.9.1.1 | Emissão inicial | 10d | 2026-06-30 | 2026-07-14 | 17 | 2026-06-23 | 2026-07-07 | 10d | 68d | 0d |  |  |  |  |  |  |  |  |  | Ter 07/07/26 |  |
| 622 | 1.9.1.2 | Avaliação do Cliente | 5d | 2026-07-14 | 2026-07-21 | 621 | 2026-07-07 | 2026-07-14 | 5d | 68d | 0d |  |  |  |  |  |  |  |  |  | Ter 14/07/26 |  |
| 623 | 1.9.1.3 | Atendimento de Comentário | 3d | 2026-07-21 | 2026-07-24 | 622 | 2026-07-14 | 2026-07-17 | 3d | 68d | 0d |  |  |  |  |  |  |  |  |  | Sex 17/07/26 |  |
| 624 | 1.9.1.4 | Aprovação | 2d | 2026-07-24 | 2026-07-28 | 623 | 2026-07-17 | 2026-07-21 | 2d | 68d |  |  |  |  |  |  |  |  |  |  | Ter 21/07/26 |  |
| 625 | 1.9.2 | **AG-F0008-0309-MB-E-00001** | 32d | 2026-07-28 | 2026-09-10 |  | 2026-07-23 | 2026-08-20 | 20d |  |  |  | AG - Arranjo (AG) | 03 - REDUÇÃO | 09 - FORNO TECNORED | E - ELÉTRICA | LAY-OUT SALA ELETRICA / CCM's | A1 (841x594mm) | 01 | Revisão das cargas elétricas | Qui 20/08/26 | Qui 23/07/26 |
| 626 | 1.9.2.1 | Emissão inicial | 10d | 2026-07-28 | 2026-08-11 | 91, 286, 1008 | 2026-07-23 | 2026-08-06 | 10d | 29d | 0d |  |  |  |  |  |  |  |  |  | Qui 06/08/26 |  |
| 627 | 1.9.2.2 | Avaliação do Cliente | 5d | 2026-08-11 | 2026-08-18 | 626 | 2026-08-06 | 2026-08-13 | 5d | 29d | 0d |  |  |  |  |  |  |  |  |  | Qui 13/08/26 |  |
| 628 | 1.9.2.3 | Atendimento de Comentário | 3d | 2026-08-18 | 2026-08-21 | 627 | 2026-08-13 | 2026-08-18 | 3d | 48d | 0d |  |  |  |  |  |  |  |  |  | Ter 18/08/26 |  |
| 629 | 1.9.2.4 | Aprovação | 2d | 2026-08-21 | 2026-08-25 | 628 | 2026-08-18 | 2026-08-20 | 2d | 48d |  |  |  |  |  |  |  |  |  |  | Qui 20/08/26 |  |
| 630 | 1.9.3 | **AG-F0008-0309-MB-E-00002** | 27d | 2026-07-28 | 2026-09-03 |  | 2026-07-23 | 2026-08-20 | 20d |  |  |  | AG - Arranjo (AG) | 03 - REDUÇÃO | 09 - FORNO TECNORED | E - ELÉTRICA | PLANTA BÁSICA DE DISTRIBUIÇÃO DE FORÇA CASA DE BOMBAS | A3 (420x297mm) | 01 | Revisão das cargas elétricas | Qui 20/08/26 | Qui 23/07/26 |
| 631 | 1.9.3.1 | Emissão inicial | 10d | 2026-07-28 | 2026-08-11 | 627SF | 2026-07-23 | 2026-08-06 | 10d | 48d | 0d |  |  |  |  |  |  |  |  |  | Qui 06/08/26 |  |
| 632 | 1.9.3.2 | Avaliação do Cliente | 5d | 2026-08-11 | 2026-08-18 | 631 | 2026-08-06 | 2026-08-13 | 5d | 48d | 0d |  |  |  |  |  |  |  |  |  | Qui 13/08/26 |  |
| 633 | 1.9.3.3 | Atendimento de Comentário | 3d | 2026-08-18 | 2026-08-21 | 632 | 2026-08-13 | 2026-08-18 | 3d | 48d | 0d |  |  |  |  |  |  |  |  |  | Ter 18/08/26 |  |
| 634 | 1.9.3.4 | Aprovação | 2d | 2026-08-21 | 2026-08-25 | 633 | 2026-08-18 | 2026-08-20 | 2d | 48d |  |  |  |  |  |  |  |  |  |  | Qui 20/08/26 |  |

| ID | WBS | Task | Duration | Start | Finish | Predecessors | Baseline start | Baseline finish | Baseline duration | Total slack | Free slack | Tipo de documento | Área | Sub-área | Disciplina | Título | Formato | Quantidade | Agrupamento Cecal | Término_LB_R0 | Início_LB_R0 |
| --- | --- | --- | --- | --- | --- | --- | --- | --- | --- | --- | --- | --- | --- | --- | --- | --- | --- | --- | --- | --- | --- |
| 635 | 1.9.4 | **AG-F0008-0309-MB-E-00003** | 22d | 2026-07-28 | 2026-08-27 |  | 2026-07-23 | 2026-08-24 | 22d | 46d |  | AG - Arranjo (AG) | 03 - REDUÇÃO | 09 - FORNO TECNORED | E - ELÉTRICA | PLANTA BÁSICA DE DISTRIBUIÇÃO DE FORÇA FORNO | A1 (841x594mm) | 01 | Revisão das cargas elétricas | Seg 24/08/26 | Qui 23/07/26 |
| 636 | 1.9.4.1 | Emissão inicial | 10d | 2026-07-28 | 2026-08-11 | 627SF | 2026-07-23 | 2026-08-06 | 10d | 46d | 0d |  |  |  |  |  |  |  |  | Qui 06/08/26 |  |
| 637 | 1.9.4.2 | Avaliação do Cliente | 5d | 2026-08-11 | 2026-08-18 | 636 | 2026-08-06 | 2026-08-13 | 5d | 46d | 0d |  |  |  |  |  |  |  |  | Qui 13/08/26 |  |
| 638 | 1.9.4.3 | Atendimento de Comentário | 5d | 2026-08-18 | 2026-08-25 | 637 | 2026-08-13 | 2026-08-20 | 5d | 46d | 0d |  |  |  |  |  |  |  |  | Qui 20/08/26 |  |
| 639 | 1.9.4.4 | Aprovação | 2d | 2026-08-25 | 2026-08-27 | 638 | 2026-08-20 | 2026-08-24 | 2d | 46d |  |  |  |  |  |  |  |  |  | Seg 24/08/26 |  |
| 640 | 1.9.5 | **AG-F0008-0309-MB-E-00004** | 34d | 2026-07-28 | 2026-09-14 |  | 2026-07-23 | 2026-08-20 | 20d |  |  | AG - Arranjo (AG) | 03 - REDUÇÃO | 09 - FORNO TECNORED | E - ELÉTRICA | PLANTA BÁSICA DE ILUMINAÇÃO CASA DE BOMBAS | A1 (841x594mm) | 01 | Readequação da lista de carga, iluminação, bandejamento | Qui 20/08/26 | Qui 23/07/26 |
| 641 | 1.9.5.1 | Emissão inicial | 10d | 2026-07-28 | 2026-08-11 | 627SF | 2026-07-23 | 2026-08-06 | 10d | 48d | 0d |  |  |  |  |  |  |  |  | Qui 06/08/26 |  |
| 642 | 1.9.5.2 | Avaliação do Cliente | 5d | 2026-08-11 | 2026-08-18 | 641 | 2026-08-06 | 2026-08-13 | 5d | 48d | 0d |  |  |  |  |  |  |  |  | Qui 13/08/26 |  |
| 643 | 1.9.5.3 | Atendimento de Comentário | 3d | 2026-08-18 | 2026-08-21 | 642 | 2026-08-13 | 2026-08-18 | 3d | 48d | 0d |  |  |  |  |  |  |  |  | Ter 18/08/26 |  |
| 644 | 1.9.5.4 | Aprovação | 2d | 2026-08-21 | 2026-08-25 | 643 | 2026-08-18 | 2026-08-20 | 2d | 48d |  |  |  |  |  |  |  |  |  | Qui 20/08/26 |  |
| 645 | 1.9.6 | **AG-F0008-0309-MB-E-00005** | 20d | 2026-07-28 | 2026-08-25 |  | 2026-07-23 | 2026-08-20 | 20d | 29d |  | AG - Arranjo (AG) | 03 - REDUÇÃO | 09 - FORNO TECNORED | E - ELÉTRICA | PLANTA BÁSICA DE ILUMINAÇÃO FORNO | A1 (841x594mm) | 01 | Readequação da lista de carga, iluminação, bandejamento | Qui 20/08/26 | Qui 23/07/26 |
| 646 | 1.9.6.1 | Emissão inicial | 10d | 2026-07-28 | 2026-08-11 | 627SF | 2026-07-23 | 2026-08-06 | 10d | 29d | 0d |  |  |  |  |  |  |  |  | Qui 06/08/26 |  |
| 647 | 1.9.6.2 | Avaliação do Cliente | 5d | 2026-08-11 | 2026-08-18 | 646 | 2026-08-06 | 2026-08-13 | 5d | 48d | 0d |  |  |  |  |  |  |  |  | Qui 13/08/26 |  |
| 648 | 1.9.6.3 | Atendimento de Comentário | 3d | 2026-08-18 | 2026-08-21 | 647 | 2026-08-13 | 2026-08-18 | 3d | 48d | 0d |  |  |  |  |  |  |  |  | Ter 18/08/26 |  |
| 649 | 1.9.6.4 | Aprovação | 2d | 2026-08-21 | 2026-08-25 | 648 | 2026-08-18 | 2026-08-20 | 2d | 48d |  |  |  |  |  |  |  |  |  | Qui 20/08/26 |  |
| 650 | 1.9.7 | **AG-F0008-0309-MB-E-00006** | 39d | 2026-07-28 | 2026-09-21 |  | 2026-07-23 | 2026-08-14 | 16d |  |  | AG - Arranjo (AG) | 03 - REDUÇÃO | 09 - FORNO TECNORED | E - ELÉTRICA | PLANTA BÁSICA DE ATERRAMENTO | A1 (841x594mm) | 01 | Revisão das cargas elétricas | Sex 14/08/26 | Qui 23/07/26 |
| 651 | 1.9.7.1 | Emissão inicial | 10d | 2026-07-28 | 2026-08-11 | 627SF | 2026-07-23 | 2026-08-06 | 10d | 52d | 0d |  |  |  |  |  |  |  |  | Qui 06/08/26 |  |
| 652 | 1.9.7.2 | Avaliação do Cliente | 1d | 2026-08-11 | 2026-08-12 | 651 | 2026-08-06 | 2026-08-07 | 1d | 52d | 0d |  |  |  |  |  |  |  |  | Sex 07/08/26 |  |
| 653 | 1.9.7.3 | Atendimento de Comentário | 3d | 2026-08-12 | 2026-08-17 | 652 | 2026-08-07 | 2026-08-12 | 3d | 52d | 0d |  |  |  |  |  |  |  |  | Qua 12/08/26 |  |
| 654 | 1.9.7.4 | Aprovação | 2d | 2026-08-17 | 2026-08-19 | 653 | 2026-08-12 | 2026-08-14 | 2d | 52d |  |  |  |  |  |  |  |  |  | Sex 14/08/26 |  |
| 655 | 1.9.8 | **AG-F0008-0309-MB-E-00007** | 20d | 2026-07-28 | 2026-08-25 |  | 2026-07-23 | 2026-08-20 | 20d | 48d |  | AG - Arranjo (AG) | 03 - REDUÇÃO | 09 - FORNO TECNORED | E - ELÉTRICA | PLANTA BÁSICA DE ATERRAMENTO | A1 (841x594mm) | 01 | Revisão das cargas elétricas | Qui 20/08/26 | Qui 23/07/26 |
| 656 | 1.9.8.1 | Emissão inicial | 10d | 2026-07-28 | 2026-08-11 | 627SF | 2026-07-23 | 2026-08-06 | 10d | 48d | 0d |  |  |  |  |  |  |  |  | Qui 06/08/26 |  |
| 657 | 1.9.8.2 | Avaliação do Cliente | 5d | 2026-08-11 | 2026-08-18 | 656 | 2026-08-06 | 2026-08-13 | 5d | 48d | 0d |  |  |  |  |  |  |  |  | Qui 13/08/26 |  |
| 658 | 1.9.8.3 | Atendimento de Comentário | 3d | 2026-08-18 | 2026-08-21 | 657 | 2026-08-13 | 2026-08-18 | 3d | 48d | 0d |  |  |  |  |  |  |  |  | Ter 18/08/26 |  |
| 659 | 1.9.8.4 | Aprovação | 2d | 2026-08-21 | 2026-08-25 | 658 | 2026-08-18 | 2026-08-20 | 2d | 48d |  |  |  |  |  |  |  |  |  | Qui 20/08/26 |  |

| ID | WBS | Task | Duration | Start | Finish | Predecessors | Baseline start | Baseline finish | Baseline duration | Total slack | Free slack | Tipo de documento | Área | Sub-área | Disciplina | Título | Formato | Quantidade | Agrupamento Cecal | Término_LB_R0 | Início_LB_R0 |
| --- | --- | --- | --- | --- | --- | --- | --- | --- | --- | --- | --- | --- | --- | --- | --- | --- | --- | --- | --- | --- | --- |
| 660 | 1.9.9 | **AG-F0008-0309-MB-E-00008** | 20d | 2026-07-28 | 2026-08-25 |  | 2026-07-23 | 2026-08-20 | 20d | 48d |  | AG - Arranjo (AG) | 03 - REDUÇÃO | 09 - FORNO TECNORED | E - ELÉTRICA | PLANTA BÁSICA DE DISTRIBUIÇÃO GERAL | A1 (841x594mm) | 01 | Revisão das cargas elétricas | Qui 20/08/26 | Qui 23/07/26 |
| 661 | 1.9.9.1 | Emissão inicial | 10d | 2026-07-28 | 2026-08-11 | 627SF | 2026-07-23 | 2026-08-06 | 10d | 48d | 0d |  |  |  |  |  |  |  |  | Qui 06/08/26 |  |
| 662 | 1.9.9.2 | Avaliação do Cliente | 5d | 2026-08-11 | 2026-08-18 | 661 | 2026-08-06 | 2026-08-13 | 5d | 48d | 0d |  |  |  |  |  |  |  |  | Qui 13/08/26 |  |
| 663 | 1.9.9.3 | Atendimento de Comentário | 3d | 2026-08-18 | 2026-08-21 | 662 | 2026-08-13 | 2026-08-18 | 3d | 48d | 0d |  |  |  |  |  |  |  |  | Ter 18/08/26 |  |
| 664 | 1.9.9.4 | Aprovação | 2d | 2026-08-21 | 2026-08-25 | 663 | 2026-08-18 | 2026-08-20 | 2d | 48d |  |  |  |  |  |  |  |  |  | Qui 20/08/26 |  |
| 665 | 1.9.10 | **CC-F0008-0309-MB-E-00001** | 25d | 2026-08-11 | 2026-09-15 |  | 2026-08-06 | 2026-09-10 | 25d | 29d |  | CC - Lista de Cargas e Consumidores | 03 - REDUÇÃO | 09 - FORNO TECNORED | E - ELÉTRICA | CARGA ELÈTRICA E ESTUDO DE DEMANDA | A4 (210x297mm) | 08 | Revisão das cargas elétricas | Qui 10/09/26 | Qui 06/08/26 |
| 666 | 1.9.10.1 | Emissão inicial | 15d | 2026-08-11 | 2026-09-01 | 646 | 2026-08-06 | 2026-08-27 | 15d | 29d | 0d |  |  |  |  |  |  |  |  | Qui 27/08/26 |  |
| 667 | 1.9.10.2 | Avaliação do Cliente | 5d | 2026-09-01 | 2026-09-08 | 666 | 2026-08-27 | 2026-09-03 | 5d | 29d | 0d |  |  |  |  |  |  |  |  | Qui 03/09/26 |  |
| 668 | 1.9.10.3 | Atendimento de Comentário | 3d | 2026-09-08 | 2026-09-11 | 667 | 2026-09-03 | 2026-09-08 | 3d | 33d | 0d |  |  |  |  |  |  |  |  | Ter 08/09/26 |  |
| 669 | 1.9.10.4 | Aprovação | 2d | 2026-09-11 | 2026-09-15 | 668 | 2026-09-08 | 2026-09-10 | 2d | 33d |  |  |  |  |  |  |  |  |  | Qui 10/09/26 |  |
| 670 | 1.9.11 | **DU-F0008-0309-MB-E-00001** | 20d | 2026-08-11 | 2026-09-08 |  | 2026-08-06 | 2026-09-10 | 25d |  |  | DU - Diagrama Unifilar (DU) | 03 - REDUÇÃO | 09 - FORNO TECNORED | E - ELÉTRICA | DIAGRAMA ELETRICO - MC-0300MB-01 | A4 (210x297mm) | 01 | Revisão das cargas elétricas | Qui 10/09/26 | Qui 06/08/26 |
| 671 | 1.9.11.1 | Emissão inicial | 15d | 2026-08-11 | 2026-09-01 | 667SF | 2026-08-06 | 2026-08-27 | 15d | 33d | 0d |  |  |  |  |  |  |  |  | Qui 27/08/26 |  |
| 672 | 1.9.11.2 | Avaliação do Cliente | 5d | 2026-09-01 | 2026-09-08 | 671 | 2026-08-27 | 2026-09-03 | 5d | 33d | 0d |  |  |  |  |  |  |  |  | Qui 03/09/26 |  |
| 673 | 1.9.11.3 | Atendimento de Comentário | 3d | 2026-09-08 | 2026-09-11 | 672 | 2026-09-03 | 2026-09-08 | 3d | 33d | 0d |  |  |  |  |  |  |  |  | Ter 08/09/26 |  |
| 674 | 1.9.11.4 | Aprovação | 2d | 2026-09-11 | 2026-09-15 | 673 | 2026-09-08 | 2026-09-10 | 2d | 33d |  |  |  |  |  |  |  |  |  | Qui 10/09/26 |  |
| 675 | 1.9.12 | **DU-F0008-0309-MB-E-00002** | 27d | 2026-08-11 | 2026-09-17 |  | 2026-08-06 | 2026-09-14 | 27d | 31d |  | DU - Diagrama Unifilar (DU) | 03 - REDUÇÃO | 09 - FORNO TECNORED | E - ELÉTRICA | DIAGRAMA ELETRICO - MC-0300MB-02 | A4 (210x297mm) | 01 | Revisão das cargas elétricas | Seg 14/09/26 | Qui 06/08/26 |
| 676 | 1.9.12.1 | Emissão inicial | 15d | 2026-08-11 | 2026-09-01 | 667SF | 2026-08-06 | 2026-08-27 | 15d | 31d | 0d |  |  |  |  |  |  |  |  | Qui 27/08/26 |  |
| 677 | 1.9.12.2 | Avaliação do Cliente | 5d | 2026-09-01 | 2026-09-08 | 676 | 2026-08-27 | 2026-09-03 | 5d | 31d | 0d |  |  |  |  |  |  |  |  | Qui 03/09/26 |  |
| 678 | 1.9.12.3 | Atendimento de Comentário | 5d | 2026-09-08 | 2026-09-15 | 677 | 2026-09-03 | 2026-09-10 | 5d | 31d | 0d |  |  |  |  |  |  |  |  | Qui 10/09/26 |  |
| 679 | 1.9.12.4 | Aprovação | 2d | 2026-09-15 | 2026-09-17 | 678 | 2026-09-10 | 2026-09-14 | 2d | 31d |  |  |  |  |  |  |  |  |  | Seg 14/09/26 |  |
| 680 | 1.9.13 | **DU-F0008-0309-MB-E-00003** | 25d | 2026-08-11 | 2026-09-15 |  | 2026-08-06 | 2026-09-10 | 25d | 33d |  | DU - Diagrama Unifilar (DU) | 03 - REDUÇÃO | 09 - FORNO TECNORED | E - ELÉTRICA | DIAGRAMA ELETRICO - MC-0300MB-03 | A4 (210x297mm) | 01 | Revisão das cargas elétricas | Qui 10/09/26 | Qui 06/08/26 |
| 681 | 1.9.13.1 | Emissão inicial | 15d | 2026-08-11 | 2026-09-01 | 667SF | 2026-08-06 | 2026-08-27 | 15d | 33d | 0d |  |  |  |  |  |  |  |  | Qui 27/08/26 |  |
| 682 | 1.9.13.2 | Avaliação do Cliente | 5d | 2026-09-01 | 2026-09-08 | 681 | 2026-08-27 | 2026-09-03 | 5d | 33d | 0d |  |  |  |  |  |  |  |  | Qui 03/09/26 |  |
| 683 | 1.9.13.3 | Atendimento de Comentário | 3d | 2026-09-08 | 2026-09-11 | 682 | 2026-09-03 | 2026-09-08 | 3d | 33d | 0d |  |  |  |  |  |  |  |  | Ter 08/09/26 |  |
| 684 | 1.9.13.4 | Aprovação | 2d | 2026-09-11 | 2026-09-15 | 683 | 2026-09-08 | 2026-09-10 | 2d | 33d |  |  |  |  |  |  |  |  |  | Qui 10/09/26 |  |

| ID | WBS | Task | Duration | Start | Finish | Predecessors | Baseline start | Baseline finish | Baseline duration | Total slack | Free slack | Constraint | Tipo de documento | Área | Sub-área | Disciplina | Formato | Quantidade | Agrupamento Cecal | Término_LB_R0 | Início_LB_R0 |
| --- | --- | --- | --- | --- | --- | --- | --- | --- | --- | --- | --- | --- | --- | --- | --- | --- | --- | --- | --- | --- | --- |
| 685 | 1.9.14 | **ET-F0008-0309-MB-E-00001** | 27d | 2026-08-13 | 2026-09-21 |  | 2026-08-12 | 2026-09-17 | 27d | 29d |  |  | ET - Especificação Técnica | 03 - REDUÇÃO | 09 - FORNO TECNORED | E - ELÉTRICA | A4 (210x297mm) | 10 | Revisão das cargas elétricas | Qui 17/09/26 | Qua 12/08/26 |
| 686 | 1.9.14.1 | Emissão inicial | 15d | 2026-08-13 | 2026-09-03 | 667SF+2d | 2026-08-12 | 2026-09-01 | 15d | 29d | 0d | start no earlier than 2026-08-12 |  |  |  |  |  |  |  | Ter 01/09/26 |  |
| 687 | 1.9.14.2 | Avaliação do Cliente | 5d | 2026-09-03 | 2026-09-10 | 686 | 2026-09-02 | 2026-09-08 | 5d | 29d | 0d |  |  |  |  |  |  |  |  | Ter 08/09/26 |  |
| 688 | 1.9.14.3 | Atendimento de Comentário | 5d | 2026-09-10 | 2026-09-17 | 687 | 2026-09-09 | 2026-09-15 | 5d | 29d | 0d |  |  |  |  |  |  |  |  | Ter 15/09/26 |  |
| 689 | 1.9.14.4 | Aprovação | 2d | 2026-09-17 | 2026-09-21 | 688 | 2026-09-16 | 2026-09-17 | 2d | 29d |  |  |  |  |  |  |  |  |  | Qui 17/09/26 |  |
| 690 | 1.9.15 | **LB-F0008-0309-MB-E-00001** | 37d | 2026-08-13 | 2026-10-05 |  | 2026-08-10 | 2026-09-14 | 25d |  |  |  | LB - Lista de Cabos | 03 - REDUÇÃO | 09 - FORNO TECNORED | E - ELÉTRICA | A4 (210x297mm) | 10 | Readequação da lista de carga, iluminação, bandejamento | Seg 14/09/26 | Seg 10/08/26 |
| 691 | 1.9.15.1 | Emissão inicial | 15d | 2026-08-13 | 2026-09-03 | 667SF+2d | 2026-08-10 | 2026-08-31 | 15d | 31d | 0d |  |  |  |  |  |  |  |  | Seg 31/08/26 |  |
| 692 | 1.9.15.2 | Avaliação do Cliente | 5d | 2026-09-03 | 2026-09-10 | 691 | 2026-08-31 | 2026-09-07 | 5d | 31d | 0d |  |  |  |  |  |  |  |  | Seg 07/09/26 |  |
| 693 | 1.9.15.3 | Atendimento de Comentário | 3d | 2026-09-10 | 2026-09-15 | 692 | 2026-09-07 | 2026-09-10 | 3d | 31d | 0d |  |  |  |  |  |  |  |  | Qui 10/09/26 |  |
| 694 | 1.9.15.4 | Aprovação | 2d | 2026-09-15 | 2026-09-17 | 693 | 2026-09-10 | 2026-09-14 | 2d | 31d |  |  |  |  |  |  |  |  |  | Seg 14/09/26 |  |
| 695 | 1.9.16 | **LM-F0008-0309-MB-E-00001** | 37d | 2026-08-13 | 2026-10-05 |  | 2026-08-10 | 2026-09-14 | 25d |  |  |  | LM - Lista de Materiais | 03 - REDUÇÃO | 09 - FORNO TECNORED | E - ELÉTRICA | A4 (210x297mm) | 10 | Readequação da lista de carga, iluminação, bandejamento | Seg 14/09/26 | Seg 10/08/26 |
| 696 | 1.9.16.1 | Emissão inicial | 15d | 2026-08-13 | 2026-09-03 | 692SF | 2026-08-10 | 2026-08-31 | 15d | 31d | 0d |  |  |  |  |  |  |  |  | Seg 31/08/26 |  |
| 697 | 1.9.16.2 | Avaliação do Cliente | 5d | 2026-09-03 | 2026-09-10 | 696 | 2026-08-31 | 2026-09-07 | 5d | 31d | 0d |  |  |  |  |  |  |  |  | Seg 07/09/26 |  |
| 698 | 1.9.16.3 | Atendimento de Comentário | 3d | 2026-09-10 | 2026-09-15 | 697 | 2026-09-07 | 2026-09-10 | 3d | 31d | 0d |  |  |  |  |  |  |  |  | Qui 10/09/26 |  |
| 699 | 1.9.16.4 | Aprovação | 2d | 2026-09-15 | 2026-09-17 | 698 | 2026-09-10 | 2026-09-14 | 2d | 31d |  |  |  |  |  |  |  |  |  | Seg 14/09/26 |  |
| 700 | 1.9.17 | **LR-F0008-0309-MB-E-00001** | 25d | 2026-08-13 | 2026-09-17 |  | 2026-08-10 | 2026-09-14 | 25d | 31d |  |  | LR - Lista de Motores | 03 - REDUÇÃO | 09 - FORNO TECNORED | E - ELÉTRICA | A4 (210x297mm) | 10 | Revisão das cargas elétricas | Seg 14/09/26 | Seg 10/08/26 |
| 701 | 1.9.17.1 | Emissão inicial | 15d | 2026-08-13 | 2026-09-03 | 692SF | 2026-08-10 | 2026-08-31 | 15d | 31d | 0d |  |  |  |  |  |  |  |  | Seg 31/08/26 |  |
| 702 | 1.9.17.2 | Avaliação do Cliente | 5d | 2026-09-03 | 2026-09-10 | 701 | 2026-08-31 | 2026-09-07 | 5d | 31d | 0d |  |  |  |  |  |  |  |  | Seg 07/09/26 |  |
| 703 | 1.9.17.3 | Atendimento de Comentário | 3d | 2026-09-10 | 2026-09-15 | 702 | 2026-09-07 | 2026-09-10 | 3d | 31d | 0d |  |  |  |  |  |  |  |  | Qui 10/09/26 |  |
| 704 | 1.9.17.4 | Aprovação | 2d | 2026-09-15 | 2026-09-17 | 703 | 2026-09-10 | 2026-09-14 | 2d | 31d |  |  |  |  |  |  |  |  |  | Seg 14/09/26 |  |
| 705 | 1.9.18 | **MD-F0008-0309-MB-E-00001** | 39d | 2026-08-13 | 2026-10-07 |  | 2026-08-10 | 2026-09-14 | 25d |  |  |  | MD - Memorial Descritivo | 03 - REDUÇÃO | 09 - FORNO TECNORED | E - ELÉTRICA | A4 (210x297mm) | 10 | Planilha de quantitativo do forno e carregamento | Seg 14/09/26 | Seg 10/08/26 |
| 706 | 1.9.18.1 | Emissão inicial | 15d | 2026-08-13 | 2026-09-03 | 692SF | 2026-08-10 | 2026-08-31 | 15d | 31d | 0d |  |  |  |  |  |  |  |  | Seg 31/08/26 |  |
| 707 | 1.9.18.2 | Avaliação do Cliente | 5d | 2026-09-03 | 2026-09-10 | 706 | 2026-08-31 | 2026-09-07 | 5d | 31d | 0d |  |  |  |  |  |  |  |  | Seg 07/09/26 |  |
| 708 | 1.9.18.3 | Atendimento de Comentário | 3d | 2026-09-10 | 2026-09-15 | 707 | 2026-09-07 | 2026-09-10 | 3d | 31d | 0d |  |  |  |  |  |  |  |  | Qui 10/09/26 |  |
| 709 | 1.9.18.4 | Aprovação | 2d | 2026-09-15 | 2026-09-17 | 708 | 2026-09-10 | 2026-09-14 | 2d | 31d |  |  |  |  |  |  |  |  |  | Seg 14/09/26 |  |

Notes:
- 685: Título: ESPECIFICAÇÃO TÉCNICA BÁSICA PARA COTAÇÃO DE PAINÉIS ELÉTRICOS
- 690: Título: LISTA DE CABOS DE FORÇA, COMANDO E ILUMINAÇÃO
- 695: Título: LISTA BÁSICA DE MATERIAIS FORÇA, ILUMINAÇÃO, ATERRAMENTO E SPDA
- 700: Título: LISTA DE MOTORES
- 705: Título: MEMORIAL DESCRITIVO PARA CUSTO DE MONTAGEM ELÉTRICA, EQUIPAMENTOS E MATERIAIS DE MONTAGEM DE CAMPO

| ID | WBS | Task | Duration | Start | Finish | Predecessors | Baseline start | Baseline finish | Baseline duration | Total slack | Free slack | Tipo de documento | Área | Sub-área | Disciplina | Título | Formato | Quantidade | Agrupamento Cecal | Término_LB_R0 | Início_LB_R0 |
| --- | --- | --- | --- | --- | --- | --- | --- | --- | --- | --- | --- | --- | --- | --- | --- | --- | --- | --- | --- | --- | --- |
| 710 | 1.9.19 | **OI-F0008-0309-MB-E-00001** | 25d | 2026-08-13 | 2026-09-17 |  | 2026-08-10 | 2026-09-14 | 25d | 31d |  | PQ - Planilha de Quantidades | 03 - REDUÇÃO | 09 - FORNO TECNORED | E - ELÉTRICA | PLANILHA QUANTITATIVO INSTRUMENTAÇÃO | A1 (841x594mm) | 10 | Planilha de quantitativo do forno e carregamento | Seg 14/09/26 | Seg 10/08/26 |
| 711 | 1.9.19.1 | Emissão inicial | 15d | 2026-08-13 | 2026-09-03 | 692SF | 2026-08-10 | 2026-08-31 | 15d | 31d | 0d |  |  |  |  |  |  |  |  | Seg 31/08/26 |  |
| 712 | 1.9.19.2 | Avaliação do Cliente | 5d | 2026-09-03 | 2026-09-10 | 711 | 2026-08-31 | 2026-09-07 | 5d | 31d | 0d |  |  |  |  |  |  |  |  | Seg 07/09/26 |  |
| 713 | 1.9.19.3 | Atendimento de Comentário | 3d | 2026-09-10 | 2026-09-15 | 712 | 2026-09-07 | 2026-09-10 | 3d | 31d | 0d |  |  |  |  |  |  |  |  | Qui 10/09/26 |  |
| 714 | 1.9.19.4 | Aprovação | 2d | 2026-09-15 | 2026-09-17 | 713 | 2026-09-10 | 2026-09-14 | 2d | 31d |  |  |  |  |  |  |  |  |  | Seg 14/09/26 |  |
| 715 | 1.10 | **AUTOMAÇÃO 309** | 81d | 2026-06-30 | 2026-10-21 |  | 2026-06-23 | 2026-09-29 | 70d |  |  |  |  |  |  |  |  |  |  | Ter 29/09/26 | Ter 23/06/26 |
| 716 | 1.10.1 | **CP-F0008-0309-MB-J-00001** | 25d | 2026-06-30 | 2026-08-04 |  | 2026-06-23 | 2026-07-28 | 25d | 63d |  | CP - Critério de Projeto | 03 - REDUÇÃO | 09 - FORNO TECNORED | J - AUTOMAÇÃO | CRITÉRIO DE PROJETO DE AUTOMAÇÃO | A4 (210x297mm) | 10 | Revisão da instrumentação | Ter 28/07/26 | Ter 23/06/26 |
| 717 | 1.10.1.1 | Emissão inicial | 15d | 2026-06-30 | 2026-07-21 | 17 | 2026-06-23 | 2026-07-14 | 15d | 63d | 0d |  |  |  |  |  |  |  |  | Ter 14/07/26 |  |
| 718 | 1.10.1.2 | Avaliação do Cliente | 5d | 2026-07-21 | 2026-07-28 | 717 | 2026-07-14 | 2026-07-21 | 5d | 63d | 0d |  |  |  |  |  |  |  |  | Ter 21/07/26 |  |
| 719 | 1.10.1.3 | Atendimento de Comentário | 3d | 2026-07-28 | 2026-07-31 | 718 | 2026-07-21 | 2026-07-24 | 3d | 63d | 0d |  |  |  |  |  |  |  |  | Sex 24/07/26 |  |
| 720 | 1.10.1.4 | Aprovação | 2d | 2026-07-31 | 2026-08-04 | 719 | 2026-07-24 | 2026-07-28 | 2d | 63d |  |  |  |  |  |  |  |  |  | Ter 28/07/26 |  |
| 721 | 1.10.2 | **CP-F0008-0309-MB-J-00002** | 25d | 2026-06-30 | 2026-08-04 | 17 | 2026-06-23 | 2026-07-28 | 25d | 63d |  | CP - Critério de Projeto | 03 - REDUÇÃO | 09 - FORNO TECNORED | J - AUTOMAÇÃO | CRITÉRIO DE PROJETO DE INSTRUMENTAÇÃO | A4 (210x297mm) | 10 | Revisão da instrumentação | Ter 28/07/26 | Ter 23/06/26 |
| 722 | 1.10.2.1 | Emissão inicial | 15d | 2026-06-30 | 2026-07-21 | 17 | 2026-06-23 | 2026-07-14 | 15d | 63d | 0d |  |  |  |  |  |  |  |  | Ter 14/07/26 |  |
| 723 | 1.10.2.2 | Avaliação do Cliente | 5d | 2026-07-21 | 2026-07-28 | 722 | 2026-07-14 | 2026-07-21 | 5d | 63d | 0d |  |  |  |  |  |  |  |  | Ter 21/07/26 |  |
| 724 | 1.10.2.3 | Atendimento de Comentário | 3d | 2026-07-28 | 2026-07-31 | 723 | 2026-07-21 | 2026-07-24 | 3d | 63d | 0d |  |  |  |  |  |  |  |  | Sex 24/07/26 |  |
| 725 | 1.10.2.4 | Aprovação | 2d | 2026-07-31 | 2026-08-04 | 724 | 2026-07-24 | 2026-07-28 | 2d | 63d |  |  |  |  |  |  |  |  |  | Ter 28/07/26 |  |
| 726 | 1.10.3 | **AG-F0008-0309-MB-J-00001** | 48d | 2026-07-28 | 2026-10-02 |  | 2026-07-23 | 2026-08-20 | 20d |  |  | AG - Arranjo (AG) | 03 - REDUÇÃO | 09 - FORNO TECNORED | J - AUTOMAÇÃO | PLANTA BÁSICA DE INSTRUMENTAÇÃO ELEVAÇÃO 6600 | A1 (841x594mm) | 01 | Revisão da instrumentação | Qui 20/08/26 | Qui 23/07/26 |
| 727 | 1.10.3.1 | Emissão inicial | 10d | 2026-07-28 | 2026-08-11 | 91, 286, 17 | 2026-07-23 | 2026-08-06 | 10d | 20d | 0d |  |  |  |  |  |  |  |  | Qui 06/08/26 |  |
| 728 | 1.10.3.2 | Avaliação do Cliente | 5d | 2026-08-11 | 2026-08-18 | 727 | 2026-08-06 | 2026-08-13 | 5d | 48d | 0d |  |  |  |  |  |  |  |  | Qui 13/08/26 |  |
| 729 | 1.10.3.3 | Atendimento de Comentário | 3d | 2026-08-18 | 2026-08-21 | 728 | 2026-08-13 | 2026-08-18 | 3d | 48d | 0d |  |  |  |  |  |  |  |  | Ter 18/08/26 |  |
| 730 | 1.10.3.4 | Aprovação | 2d | 2026-08-21 | 2026-08-25 | 729 | 2026-08-18 | 2026-08-20 | 2d | 48d |  |  |  |  |  |  |  |  |  | Qui 20/08/26 |  |
| 731 | 1.10.4 | **AG-F0008-0309-MB-J-00002** | 23d | 2026-07-14 | 2026-08-14 |  | 2026-07-09 | 2026-08-11 | 23d | 55d |  | AG - Arranjo (AG) | 03 - REDUÇÃO | 09 - FORNO TECNORED | J - AUTOMAÇÃO | PLANTA BÁSICA DE INSTRUMENTAÇÃO ELEVAÇÃO 10405 | A1 (841x594mm) | 01 | Revisão da instrumentação | Ter 11/08/26 | Qui 09/07/26 |
| 732 | 1.10.4.1 | Emissão inicial | 10d | 2026-07-14 | 2026-07-28 | 727SF | 2026-07-09 | 2026-07-23 | 10d | 55d | 0d |  |  |  |  |  |  |  |  | Qui 23/07/26 |  |
| 733 | 1.10.4.2 | Avaliação do Cliente | 5d | 2026-07-28 | 2026-08-04 | 732 | 2026-07-23 | 2026-07-30 | 5d | 55d | 0d |  |  |  |  |  |  |  |  | Qui 30/07/26 |  |
| 734 | 1.10.4.3 | Atendimento de Comentário | 3d | 2026-08-04 | 2026-08-07 | 733 | 2026-07-30 | 2026-08-04 | 3d | 55d | 0d |  |  |  |  |  |  |  |  | Ter 04/08/26 |  |
| 735 | 1.10.4.4 | Aprovação | 5d | 2026-08-07 | 2026-08-14 | 734 | 2026-08-04 | 2026-08-11 | 5d | 55d |  |  |  |  |  |  |  |  |  | Ter 11/08/26 |  |

| ID | WBS | Task | Duration | Start | Finish | Predecessors | Baseline start | Baseline finish | Baseline duration | Total slack | Free slack | Tipo de documento | Área | Sub-área | Disciplina | Título | Formato | Quantidade | Agrupamento Cecal | Término_LB_R0 | Início_LB_R0 |
| --- | --- | --- | --- | --- | --- | --- | --- | --- | --- | --- | --- | --- | --- | --- | --- | --- | --- | --- | --- | --- | --- |
| 736 | 1.10.5 | **AG-F0008-0309-MB-J-00003** | 20d | 2026-07-14 | 2026-08-11 |  | 2026-07-09 | 2026-08-06 | 20d | 58d |  | AG - Arranjo (AG) | 03 - REDUÇÃO | 09 - FORNO TECNORED | J - AUTOMAÇÃO | PLANTA BÁSICA DE INSTRUMENTAÇÃO ELEVAÇÃO 16502 | A1 (841x594mm) | 01 | Revisão da instrumentação | Qui 06/08/26 | Qui 09/07/26 |
| 737 | 1.10.5.1 | Emissão inicial | 10d | 2026-07-14 | 2026-07-28 | 727SF | 2026-07-09 | 2026-07-23 | 10d | 58d | 0d |  |  |  |  |  |  |  |  | Qui 23/07/26 |  |
| 738 | 1.10.5.2 | Avaliação do Cliente | 5d | 2026-07-28 | 2026-08-04 | 737 | 2026-07-23 | 2026-07-30 | 5d | 58d | 0d |  |  |  |  |  |  |  |  | Qui 30/07/26 |  |
| 739 | 1.10.5.3 | Atendimento de Comentário | 3d | 2026-08-04 | 2026-08-07 | 738 | 2026-07-30 | 2026-08-04 | 3d | 58d | 0d |  |  |  |  |  |  |  |  | Ter 04/08/26 |  |
| 740 | 1.10.5.4 | Aprovação | 2d | 2026-08-07 | 2026-08-11 | 739 | 2026-08-04 | 2026-08-06 | 2d | 58d |  |  |  |  |  |  |  |  |  | Qui 06/08/26 |  |
| 741 | 1.10.6 | **AG-F0008-0309-MB-J-00004** | 20d | 2026-07-14 | 2026-08-11 |  | 2026-07-09 | 2026-08-06 | 20d | 20d |  | AG - Arranjo (AG) | 03 - REDUÇÃO | 09 - FORNO TECNORED | J - AUTOMAÇÃO | PLANTA BÁSICA DE INSTRUMENTAÇÃO ELEVAÇÃO 23872 | A1 (841x594mm) | 01 | Revisão da instrumentação | Qui 06/08/26 | Qui 09/07/26 |
| 742 | 1.10.6.1 | Emissão inicial | 10d | 2026-07-14 | 2026-07-28 | 727SF | 2026-07-09 | 2026-07-23 | 10d | 20d | 0d |  |  |  |  |  |  |  |  | Qui 23/07/26 |  |
| 743 | 1.10.6.2 | Avaliação do Cliente | 5d | 2026-07-28 | 2026-08-04 | 742 | 2026-07-23 | 2026-07-30 | 5d | 58d | 0d |  |  |  |  |  |  |  |  | Qui 30/07/26 |  |
| 744 | 1.10.6.3 | Atendimento de Comentário | 3d | 2026-08-04 | 2026-08-07 | 743 | 2026-07-30 | 2026-08-04 | 3d | 58d | 0d |  |  |  |  |  |  |  |  | Ter 04/08/26 |  |
| 745 | 1.10.6.4 | Aprovação | 2d | 2026-08-07 | 2026-08-11 | 744 | 2026-08-04 | 2026-08-06 | 2d | 58d |  |  |  |  |  |  |  |  |  | Qui 06/08/26 |  |
| 746 | 1.10.7 | **AG-F0008-0309-MB-J-00005** | 22d | 2026-07-28 | 2026-08-27 |  | 2026-07-23 | 2026-08-24 | 22d | 20d |  | AG - Arranjo (AG) | 03 - REDUÇÃO | 09 - FORNO TECNORED | J - AUTOMAÇÃO | PLANTA BÁSICA DE INSTRUMENTAÇÃO ELEVAÇÃO 30064 | A1 (841x594mm) | 01 | Revisão da instrumentação | Seg 24/08/26 | Qui 23/07/26 |
| 747 | 1.10.7.1 | Emissão inicial | 10d | 2026-07-28 | 2026-08-11 | 742 | 2026-07-23 | 2026-08-06 | 10d | 20d | 0d |  |  |  |  |  |  |  |  | Qui 06/08/26 |  |
| 748 | 1.10.7.2 | Avaliação do Cliente | 5d | 2026-08-11 | 2026-08-18 | 747 | 2026-08-06 | 2026-08-13 | 5d | 20d | 0d |  |  |  |  |  |  |  |  | Qui 13/08/26 |  |
| 749 | 1.10.7.3 | Atendimento de Comentário | 5d | 2026-08-18 | 2026-08-25 | 748 | 2026-08-13 | 2026-08-20 | 5d | 46d | 0d |  |  |  |  |  |  |  |  | Qui 20/08/26 |  |
| 750 | 1.10.7.4 | Aprovação | 2d | 2026-08-25 | 2026-08-27 | 749 | 2026-08-20 | 2026-08-24 | 2d | 46d |  |  |  |  |  |  |  |  |  | Seg 24/08/26 |  |
| 751 | 1.10.8 | **AG-F0008-0309-MB-J-00006** | 20d | 2026-07-28 | 2026-08-25 |  | 2026-07-23 | 2026-08-20 | 20d | 48d |  | AG - Arranjo (AG) | 03 - REDUÇÃO | 09 - FORNO TECNORED | J - AUTOMAÇÃO | PLANTA BÁSICA DE INSTRUMENTAÇÃO ELEVAÇÃO 35115 | A1 (841x594mm) | 01 | Revisão da instrumentação | Qui 20/08/26 | Qui 23/07/26 |
| 752 | 1.10.8.1 | Emissão inicial | 10d | 2026-07-28 | 2026-08-11 | 748SF | 2026-07-23 | 2026-08-06 | 10d | 48d | 0d |  |  |  |  |  |  |  |  | Qui 06/08/26 |  |
| 753 | 1.10.8.2 | Avaliação do Cliente | 5d | 2026-08-11 | 2026-08-18 | 752 | 2026-08-06 | 2026-08-13 | 5d | 48d | 0d |  |  |  |  |  |  |  |  | Qui 13/08/26 |  |
| 754 | 1.10.8.3 | Atendimento de Comentário | 3d | 2026-08-18 | 2026-08-21 | 753 | 2026-08-13 | 2026-08-18 | 3d | 48d | 0d |  |  |  |  |  |  |  |  | Ter 18/08/26 |  |
| 755 | 1.10.8.4 | Aprovação | 2d | 2026-08-21 | 2026-08-25 | 754 | 2026-08-18 | 2026-08-20 | 2d | 48d |  |  |  |  |  |  |  |  |  | Qui 20/08/26 |  |
| 756 | 1.10.9 | **AG-F0008-0309-MB-J-00007** | 22d | 2026-07-28 | 2026-08-27 |  | 2026-07-23 | 2026-08-24 | 22d | 46d |  | AG - Arranjo (AG) | 03 - REDUÇÃO | 09 - FORNO TECNORED | J - AUTOMAÇÃO | PLANTA BÁSICA DE INSTRUMENTAÇÃO ELEVAÇÃO 39322 | A1 (841x594mm) | 01 | Revisão da instrumentação | Seg 24/08/26 | Qui 23/07/26 |
| 757 | 1.10.9.1 | Emissão inicial | 10d | 2026-07-28 | 2026-08-11 | 748SF | 2026-07-23 | 2026-08-06 | 10d | 46d | 0d |  |  |  |  |  |  |  |  | Qui 06/08/26 |  |
| 758 | 1.10.9.2 | Avaliação do Cliente | 5d | 2026-08-11 | 2026-08-18 | 757 | 2026-08-06 | 2026-08-13 | 5d | 46d | 0d |  |  |  |  |  |  |  |  | Qui 13/08/26 |  |
| 759 | 1.10.9.3 | Atendimento de Comentário | 5d | 2026-08-18 | 2026-08-25 | 758 | 2026-08-13 | 2026-08-20 | 5d | 46d | 0d |  |  |  |  |  |  |  |  | Qui 20/08/26 |  |
| 760 | 1.10.9.4 | Aprovação | 2d | 2026-08-25 | 2026-08-27 | 759 | 2026-08-20 | 2026-08-24 | 2d | 46d |  |  |  |  |  |  |  |  |  | Seg 24/08/26 |  |

| ID | WBS | Task | Duration | Start | Finish | Predecessors | Baseline start | Baseline finish | Baseline duration | Total slack | Free slack | Tipo de documento | Área | Sub-área | Disciplina | Formato | Quantidade | Agrupamento Cecal | Término_LB_R0 | Início_LB_R0 |
| --- | --- | --- | --- | --- | --- | --- | --- | --- | --- | --- | --- | --- | --- | --- | --- | --- | --- | --- | --- | --- |
| 761 | 1.10.10 | **AG-F0008-0309-MB-J-00008** | 20d | 2026-07-28 | 2026-08-25 |  | 2026-07-23 | 2026-08-20 | 20d | 48d |  | AG - Arranjo (AG) | 03 - REDUÇÃO | 09 - FORNO TECNORED | J - AUTOMAÇÃO | A1 (841x594mm) | 01 | Revisão da instrumentação | Qui 20/08/26 | Qui 23/07/26 |
| 762 | 1.10.10.1 | Emissão inicial | 10d | 2026-07-28 | 2026-08-11 | 748SF | 2026-07-23 | 2026-08-06 | 10d | 48d | 0d |  |  |  |  |  |  |  | Qui 06/08/26 |  |
| 763 | 1.10.10.2 | Avaliação do Cliente | 5d | 2026-08-11 | 2026-08-18 | 762 | 2026-08-06 | 2026-08-13 | 5d | 48d | 0d |  |  |  |  |  |  |  | Qui 13/08/26 |  |
| 764 | 1.10.10.3 | Atendimento de Comentário | 3d | 2026-08-18 | 2026-08-21 | 763 | 2026-08-13 | 2026-08-18 | 3d | 48d | 0d |  |  |  |  |  |  |  | Ter 18/08/26 |  |
| 765 | 1.10.10.4 | Aprovação | 2d | 2026-08-21 | 2026-08-25 | 764 | 2026-08-18 | 2026-08-20 | 2d | 48d |  |  |  |  |  |  |  |  | Qui 20/08/26 |  |
| 766 | 1.10.11 | **AG-F0008-0309-MB-J-00009** | 20d | 2026-07-28 | 2026-08-25 |  | 2026-07-23 | 2026-08-20 | 20d | 20d |  | AG - Arranjo (AG) | 03 - REDUÇÃO | 09 - FORNO TECNORED | J - AUTOMAÇÃO | A1 (841x594mm) | 01 | Revisão da instrumentação | Qui 20/08/26 | Qui 23/07/26 |
| 767 | 1.10.11.1 | Emissão inicial | 10d | 2026-07-28 | 2026-08-11 | 748SF | 2026-07-23 | 2026-08-06 | 10d | 20d | 0d |  |  |  |  |  |  |  | Qui 06/08/26 |  |
| 768 | 1.10.11.2 | Avaliação do Cliente | 5d | 2026-08-11 | 2026-08-18 | 767 | 2026-08-06 | 2026-08-13 | 5d | 48d | 0d |  |  |  |  |  |  |  | Qui 13/08/26 |  |
| 769 | 1.10.11.3 | Atendimento de Comentário | 3d | 2026-08-18 | 2026-08-21 | 768 | 2026-08-13 | 2026-08-18 | 3d | 48d | 0d |  |  |  |  |  |  |  | Ter 18/08/26 |  |
| 770 | 1.10.11.4 | Aprovação | 2d | 2026-08-21 | 2026-08-25 | 769 | 2026-08-18 | 2026-08-20 | 2d | 48d |  |  |  |  |  |  |  |  | Qui 20/08/26 |  |
| 771 | 1.10.12 | **LB-F0008-0309-MB-J-00001** | 39d | 2026-08-11 | 2026-10-05 |  | 2026-08-06 | 2026-09-14 | 27d |  |  | LB - Lista de Cabos | 03 - REDUÇÃO | 09 - FORNO TECNORED | J - AUTOMAÇÃO | A4 (210x297mm) | 10 | Revisão da instrumentação | Seg 14/09/26 | Qui 06/08/26 |
| 772 | 1.10.12.1 | Emissão inicial | 15d | 2026-08-11 | 2026-09-01 | 998, 767 | 2026-08-06 | 2026-08-27 | 15d | 20d | 0d |  |  |  |  |  |  |  | Qui 27/08/26 |  |
| 773 | 1.10.12.2 | Avaliação do Cliente | 5d | 2026-09-01 | 2026-09-08 | 772 | 2026-08-27 | 2026-09-03 | 5d | 20d | 0d |  |  |  |  |  |  |  | Qui 03/09/26 |  |
| 774 | 1.10.12.3 | Atendimento de Comentário | 5d | 2026-09-08 | 2026-09-15 | 773 | 2026-09-03 | 2026-09-10 | 5d | 31d | 0d |  |  |  |  |  |  |  | Qui 10/09/26 |  |
| 775 | 1.10.12.4 | Aprovação | 2d | 2026-09-15 | 2026-09-17 | 774 | 2026-09-10 | 2026-09-14 | 2d | 31d |  |  |  |  |  |  |  |  | Seg 14/09/26 |  |
| 776 | 1.10.13 | **LI-F0008-0300-MB-J-00001** | 32d | 2026-08-11 | 2026-09-24 |  | 2026-08-06 | 2026-09-10 | 25d |  |  | LI - Lista de Instrumentos | 03 - REDUÇÃO | 00 - GERAL | J - AUTOMAÇÃO | OUTROS | 01 | Revisão da instrumentação | Qui 10/09/26 | Qui 06/08/26 |
| 777 | 1.10.13.1 | Emissão inicial | 15d | 2026-08-11 | 2026-09-01 | 773SF | 2026-08-06 | 2026-08-27 | 15d | 33d | 0d |  |  |  |  |  |  |  | Qui 27/08/26 |  |
| 778 | 1.10.13.2 | Avaliação do Cliente | 5d | 2026-09-01 | 2026-09-08 | 777 | 2026-08-27 | 2026-09-03 | 5d | 33d | 0d |  |  |  |  |  |  |  | Qui 03/09/26 |  |
| 779 | 1.10.13.3 | Atendimento de Comentário | 3d | 2026-09-08 | 2026-09-11 | 778 | 2026-09-03 | 2026-09-08 | 3d | 33d | 0d |  |  |  |  |  |  |  | Ter 08/09/26 |  |
| 780 | 1.10.13.4 | Aprovação | 2d | 2026-09-11 | 2026-09-15 | 779 | 2026-09-08 | 2026-09-10 | 2d | 33d |  |  |  |  |  |  |  |  | Qui 10/09/26 |  |
| 781 | 1.10.14 | **LI-F0008-0302-MB-J-00001** | 31d | 2026-08-11 | 2026-09-23 |  | 2026-08-06 | 2026-09-10 | 25d |  |  | LI - Lista de Instrumentos | 03 - REDUÇÃO | 02 - CARREGAMENTO | J - AUTOMAÇÃO | OUTROS | 01 | Revisão da instrumentação | Qui 10/09/26 | Qui 06/08/26 |
| 782 | 1.10.14.1 | Emissão inicial | 15d | 2026-08-11 | 2026-09-01 | 773SF | 2026-08-06 | 2026-08-27 | 15d | 33d | 0d |  |  |  |  |  |  |  | Qui 27/08/26 |  |
| 783 | 1.10.14.2 | Avaliação do Cliente | 5d | 2026-09-01 | 2026-09-08 | 782 | 2026-08-27 | 2026-09-03 | 5d | 33d | 0d |  |  |  |  |  |  |  | Qui 03/09/26 |  |
| 784 | 1.10.14.3 | Atendimento de Comentário | 3d | 2026-09-08 | 2026-09-11 | 783 | 2026-09-03 | 2026-09-08 | 3d | 33d | 0d |  |  |  |  |  |  |  | Ter 08/09/26 |  |
| 785 | 1.10.14.4 | Aprovação | 2d | 2026-09-11 | 2026-09-15 | 784 | 2026-09-08 | 2026-09-10 | 2d | 33d |  |  |  |  |  |  |  |  | Qui 10/09/26 |  |

Notes:
- 761: Título: PLANTA BÁSICA DE INSTRUMENTAÇÃO TORRE RESFRIAMENTO
- 766: Título: PLANTA BÁSICA DE INSTRUMENTAÇÃO FIBRA OPTICA
- 771: Título: LISTA DE CABOS BÁSICA
- 776: Título: LISTA de IO
- 781: Título: LISTA DE INSTRUMENTOS RECEIVING HOPPER, REVERSIBLE MOVABLE BELT AND PROCESS HOPPER – FLUXOGRAMA - FG-F0008-0302-MB-P-00001

| ID | WBS | Task | Duration | Start | Finish | Predecessors | Baseline start | Baseline finish | Baseline duration | Total slack | Free slack | Tipo de documento | Área | Sub-área | Disciplina | Formato | Quantidade | Agrupamento Cecal | Término_LB_R0 | Início_LB_R0 |
| --- | --- | --- | --- | --- | --- | --- | --- | --- | --- | --- | --- | --- | --- | --- | --- | --- | --- | --- | --- | --- |
| 786 | 1.10.15 | **LI-F0008-0302-MB-J-00002** | 25d | 2026-08-11 | 2026-09-15 |  | 2026-08-06 | 2026-09-10 | 25d | 33d |  | LI - Lista de Instrumentos | 03 - REDUÇÃO | 02 - CARREGAMENTO | J - AUTOMAÇÃO | OUTROS | 01 | Revisão da instrumentação | Qui 10/09/26 | Qui 06/08/26 |
| 787 | 1.10.15.1 | Emissão inicial | 15d | 2026-08-11 | 2026-09-01 | 773SF | 2026-08-06 | 2026-08-27 | 15d | 33d | 0d |  |  |  |  |  |  |  | Qui 27/08/26 |  |
| 788 | 1.10.15.2 | Avaliação do Cliente | 5d | 2026-09-01 | 2026-09-08 | 787 | 2026-08-27 | 2026-09-03 | 5d | 33d | 0d |  |  |  |  |  |  |  | Qui 03/09/26 |  |
| 789 | 1.10.15.3 | Atendimento de Comentário | 3d | 2026-09-08 | 2026-09-11 | 788 | 2026-09-03 | 2026-09-08 | 3d | 33d | 0d |  |  |  |  |  |  |  | Ter 08/09/26 |  |
| 790 | 1.10.15.4 | Aprovação | 2d | 2026-09-11 | 2026-09-15 | 789 | 2026-09-08 | 2026-09-10 | 2d | 33d |  |  |  |  |  |  |  |  | Qui 10/09/26 |  |
| 791 | 1.10.16 | **LI-F0008-0302-MB-J-00003** | 27d | 2026-08-11 | 2026-09-17 |  | 2026-08-06 | 2026-09-14 | 27d | 31d |  | LI - Lista de Instrumentos | 03 - REDUÇÃO | 02 - CARREGAMENTO | J - AUTOMAÇÃO | OUTROS | 01 | Revisão da instrumentação | Seg 14/09/26 | Qui 06/08/26 |
| 792 | 1.10.16.1 | Emissão inicial | 15d | 2026-08-11 | 2026-09-01 | 773SF | 2026-08-06 | 2026-08-27 | 15d | 31d | 0d |  |  |  |  |  |  |  | Qui 27/08/26 |  |
| 793 | 1.10.16.2 | Avaliação do Cliente | 5d | 2026-09-01 | 2026-09-08 | 792 | 2026-08-27 | 2026-09-03 | 5d | 31d | 0d |  |  |  |  |  |  |  | Qui 03/09/26 |  |
| 794 | 1.10.16.3 | Atendimento de Comentário | 5d | 2026-09-08 | 2026-09-15 | 793 | 2026-09-03 | 2026-09-10 | 5d | 31d | 0d |  |  |  |  |  |  |  | Qui 10/09/26 |  |
| 795 | 1.10.16.4 | Aprovação | 2d | 2026-09-15 | 2026-09-17 | 794 | 2026-09-10 | 2026-09-14 | 2d | 31d |  |  |  |  |  |  |  |  | Seg 14/09/26 |  |
| 796 | 1.10.17 | **LI-F0008-0302-MB-J-00004** | 25d | 2026-08-11 | 2026-09-15 |  | 2026-08-06 | 2026-09-10 | 25d | 33d |  | LI - Lista de Instrumentos | 03 - REDUÇÃO | 02 - CARREGAMENTO | J - AUTOMAÇÃO | OUTROS | 01 | Revisão da instrumentação | Qui 10/09/26 | Qui 06/08/26 |
| 797 | 1.10.17.1 | Emissão inicial | 15d | 2026-08-11 | 2026-09-01 | 773SF | 2026-08-06 | 2026-08-27 | 15d | 33d | 0d |  |  |  |  |  |  |  | Qui 27/08/26 |  |
| 798 | 1.10.17.2 | Avaliação do Cliente | 5d | 2026-09-01 | 2026-09-08 | 797 | 2026-08-27 | 2026-09-03 | 5d | 33d | 0d |  |  |  |  |  |  |  | Qui 03/09/26 |  |
| 799 | 1.10.17.3 | Atendimento de Comentário | 3d | 2026-09-08 | 2026-09-11 | 798 | 2026-09-03 | 2026-09-08 | 3d | 33d | 0d |  |  |  |  |  |  |  | Ter 08/09/26 |  |
| 800 | 1.10.17.4 | Aprovação | 2d | 2026-09-11 | 2026-09-15 | 799 | 2026-09-08 | 2026-09-10 | 2d | 33d |  |  |  |  |  |  |  |  | Qui 10/09/26 |  |
| 801 | 1.10.18 | **LI-F0008-0302-MB-J-00005** | 27d | 2026-08-11 | 2026-09-17 |  | 2026-08-06 | 2026-09-14 | 27d | 31d |  | LI - Lista de Instrumentos | 03 - REDUÇÃO | 02 - CARREGAMENTO | J - AUTOMAÇÃO | OUTROS | 01 | Revisão da instrumentação | Seg 14/09/26 | Qui 06/08/26 |
| 802 | 1.10.18.1 | Emissão inicial | 15d | 2026-08-11 | 2026-09-01 | 773SF | 2026-08-06 | 2026-08-27 | 15d | 31d | 0d |  |  |  |  |  |  |  | Qui 27/08/26 |  |
| 803 | 1.10.18.2 | Avaliação do Cliente | 5d | 2026-09-01 | 2026-09-08 | 802 | 2026-08-27 | 2026-09-03 | 5d | 31d | 0d |  |  |  |  |  |  |  | Qui 03/09/26 |  |
| 804 | 1.10.18.3 | Atendimento de Comentário | 5d | 2026-09-08 | 2026-09-15 | 803 | 2026-09-03 | 2026-09-10 | 5d | 31d | 0d |  |  |  |  |  |  |  | Qui 10/09/26 |  |
| 805 | 1.10.18.4 | Aprovação | 2d | 2026-09-15 | 2026-09-17 | 804 | 2026-09-10 | 2026-09-14 | 2d | 31d |  |  |  |  |  |  |  |  | Seg 14/09/26 |  |
| 806 | 1.10.19 | **LI-F0008-0302-MB-J-00006** | 25d | 2026-08-11 | 2026-09-15 |  | 2026-08-06 | 2026-09-10 | 25d | 33d |  | LI - Lista de Instrumentos | 03 - REDUÇÃO | 02 - CARREGAMENTO | J - AUTOMAÇÃO | OUTROS | 01 | Revisão da instrumentação | Qui 10/09/26 | Qui 06/08/26 |
| 807 | 1.10.19.1 | Emissão inicial | 15d | 2026-08-11 | 2026-09-01 | 773SF | 2026-08-06 | 2026-08-27 | 15d | 33d | 0d |  |  |  |  |  |  |  | Qui 27/08/26 |  |
| 808 | 1.10.19.2 | Avaliação do Cliente | 5d | 2026-09-01 | 2026-09-08 | 807 | 2026-08-27 | 2026-09-03 | 5d | 33d | 0d |  |  |  |  |  |  |  | Qui 03/09/26 |  |
| 809 | 1.10.19.3 | Atendimento de Comentário | 3d | 2026-09-08 | 2026-09-11 | 808 | 2026-09-03 | 2026-09-08 | 3d | 33d | 0d |  |  |  |  |  |  |  | Ter 08/09/26 |  |
| 810 | 1.10.19.4 | Aprovação | 2d | 2026-09-11 | 2026-09-15 | 809 | 2026-09-08 | 2026-09-10 | 2d | 33d |  |  |  |  |  |  |  |  | Qui 10/09/26 |  |

Notes:
- 786: Título: LISTA DE INSTRUMENTOS BUFFERS HOPPER - FR-400A – FLUXOGRAMA - FG-F0008-0302-MB-P-00002
- 791: Título: LISTA DE INSTRUMENTOS BUFFERS HOPPER - FR-400B – FLUXOGRAMA - FG-F0008-0302-MB-P-00003
- 796: Título: LISTA DE INSTRUMENTOS FR-400A - BOOSTER, BAR AND FUEL CHARGING – FLUXOGRAMA - FG-F0008-0302-MB-P-00004
- 801: Título: LISTA DE INSTRUMENTOS FR-400B - BOOSTER, BAR AND FUEL CHARGING – FLUXOGRAMA - FG-F0008-0302-MB-P-00005
- 806: Título: LISTA DE INSTRUMENTOS TECNORED SEMI CLEAN GAS AND N2 DISTRIBUTION – FLUXOGRAMA - FG-F0008-0302-MB-P-00006

| ID | WBS | Task | Duration | Start | Finish | Predecessors | Baseline start | Baseline finish | Baseline duration | Total slack | Free slack | Tipo de documento | Área | Sub-área | Disciplina | Formato | Quantidade | Agrupamento Cecal | Término_LB_R0 | Início_LB_R0 |
| --- | --- | --- | --- | --- | --- | --- | --- | --- | --- | --- | --- | --- | --- | --- | --- | --- | --- | --- | --- | --- |
| 811 | 1.10.20 | **LI-F0008-0307-MB-J-00001** | 33d | 2026-08-11 | 2026-09-25 |  | 2026-08-06 | 2026-09-14 | 27d |  |  | LI - Lista de Instrumentos | 03 - REDUÇÃO | 07 - RESFRIAMENTO | J - AUTOMAÇÃO | OUTROS | 01 | Revisão da instrumentação | Seg 14/09/26 | Qui 06/08/26 |
| 812 | 1.10.20.1 | Emissão inicial | 15d | 2026-08-11 | 2026-09-01 | 773SF | 2026-08-06 | 2026-08-27 | 15d | 31d | 0d |  |  |  |  |  |  |  | Qui 27/08/26 |  |
| 813 | 1.10.20.2 | Avaliação do Cliente | 5d | 2026-09-01 | 2026-09-08 | 812 | 2026-08-27 | 2026-09-03 | 5d | 31d | 0d |  |  |  |  |  |  |  | Qui 03/09/26 |  |
| 814 | 1.10.20.3 | Atendimento de Comentário | 5d | 2026-09-08 | 2026-09-15 | 813 | 2026-09-03 | 2026-09-10 | 5d | 31d | 0d |  |  |  |  |  |  |  | Qui 10/09/26 |  |
| 815 | 1.10.20.4 | Aprovação | 2d | 2026-09-15 | 2026-09-17 | 814 | 2026-09-10 | 2026-09-14 | 2d | 31d |  |  |  |  |  |  |  |  | Seg 14/09/26 |  |
| 816 | 1.10.21 | **LI-F0008-0309-MB-J-00001** | 25d | 2026-08-11 | 2026-09-15 |  | 2026-08-06 | 2026-09-10 | 25d | 33d |  | LI - Lista de Instrumentos | 03 - REDUÇÃO | 09 - FORNO TECNORED | J - AUTOMAÇÃO | A4 (210x297mm) | 10 | Revisão da instrumentação | Qui 10/09/26 | Qui 06/08/26 |
| 817 | 1.10.21.1 | Emissão inicial | 15d | 2026-08-11 | 2026-09-01 | 773SF | 2026-08-06 | 2026-08-27 | 15d | 33d | 0d |  |  |  |  |  |  |  | Qui 27/08/26 |  |
| 818 | 1.10.21.2 | Avaliação do Cliente | 5d | 2026-09-01 | 2026-09-08 | 817 | 2026-08-27 | 2026-09-03 | 5d | 33d | 0d |  |  |  |  |  |  |  | Qui 03/09/26 |  |
| 819 | 1.10.21.3 | Atendimento de Comentário | 3d | 2026-09-08 | 2026-09-11 | 818 | 2026-09-03 | 2026-09-08 | 3d | 33d | 0d |  |  |  |  |  |  |  | Ter 08/09/26 |  |
| 820 | 1.10.21.4 | Aprovação | 2d | 2026-09-11 | 2026-09-15 | 819 | 2026-09-08 | 2026-09-10 | 2d | 33d |  |  |  |  |  |  |  |  | Qui 10/09/26 |  |
| 821 | 1.10.22 | **LI-F0008-0309-MB-J-00002** | 25d | 2026-08-11 | 2026-09-15 |  | 2026-08-06 | 2026-09-10 | 25d | 33d |  | LI - Lista de Instrumentos | 03 - REDUÇÃO | 09 - FORNO TECNORED | J - AUTOMAÇÃO | OUTROS | 01 | Revisão da instrumentação | Qui 10/09/26 | Qui 06/08/26 |
| 822 | 1.10.22.1 | Emissão inicial | 15d | 2026-08-11 | 2026-09-01 | 773SF | 2026-08-06 | 2026-08-27 | 15d | 33d | 0d |  |  |  |  |  |  |  | Qui 27/08/26 |  |
| 823 | 1.10.22.2 | Avaliação do Cliente | 5d | 2026-09-01 | 2026-09-08 | 822 | 2026-08-27 | 2026-09-03 | 5d | 33d | 0d |  |  |  |  |  |  |  | Qui 03/09/26 |  |
| 824 | 1.10.22.3 | Atendimento de Comentário | 3d | 2026-09-08 | 2026-09-11 | 823 | 2026-09-03 | 2026-09-08 | 3d | 33d | 0d |  |  |  |  |  |  |  | Ter 08/09/26 |  |
| 825 | 1.10.22.4 | Aprovação | 2d | 2026-09-11 | 2026-09-15 | 824 | 2026-09-08 | 2026-09-10 | 2d | 33d |  |  |  |  |  |  |  |  | Qui 10/09/26 |  |
| 826 | 1.10.23 | **LI-F0008-0309-MB-J-00003** | 25d | 2026-08-11 | 2026-09-15 |  | 2026-08-06 | 2026-09-10 | 25d | 33d |  | LI - Lista de Instrumentos | 03 - REDUÇÃO | 09 - FORNO TECNORED | J - AUTOMAÇÃO | OUTROS | 01 | Revisão da instrumentação | Qui 10/09/26 | Qui 06/08/26 |
| 827 | 1.10.23.1 | Emissão inicial | 15d | 2026-08-11 | 2026-09-01 | 773SF | 2026-08-06 | 2026-08-27 | 15d | 33d | 0d |  |  |  |  |  |  |  | Qui 27/08/26 |  |
| 828 | 1.10.23.2 | Avaliação do Cliente | 5d | 2026-09-01 | 2026-09-08 | 827 | 2026-08-27 | 2026-09-03 | 5d | 33d | 0d |  |  |  |  |  |  |  | Qui 03/09/26 |  |
| 829 | 1.10.23.3 | Atendimento de Comentário | 3d | 2026-09-08 | 2026-09-11 | 828 | 2026-09-03 | 2026-09-08 | 3d | 33d | 0d |  |  |  |  |  |  |  | Ter 08/09/26 |  |
| 830 | 1.10.23.4 | Aprovação | 2d | 2026-09-11 | 2026-09-15 | 829 | 2026-09-08 | 2026-09-10 | 2d | 33d |  |  |  |  |  |  |  |  | Qui 10/09/26 |  |
| 831 | 1.10.24 | **LI-F0008-0309-MB-J-00004** | 25d | 2026-08-11 | 2026-09-15 |  | 2026-08-06 | 2026-09-10 | 25d | 33d |  | LI - Lista de Instrumentos | 03 - REDUÇÃO | 09 - FORNO TECNORED | J - AUTOMAÇÃO | OUTROS | 01 | Revisão da instrumentação | Qui 10/09/26 | Qui 06/08/26 |
| 832 | 1.10.24.1 | Emissão inicial | 15d | 2026-08-11 | 2026-09-01 | 773SF | 2026-08-06 | 2026-08-27 | 15d | 33d | 0d |  |  |  |  |  |  |  | Qui 27/08/26 |  |
| 833 | 1.10.24.2 | Avaliação do Cliente | 5d | 2026-09-01 | 2026-09-08 | 832 | 2026-08-27 | 2026-09-03 | 5d | 33d | 0d |  |  |  |  |  |  |  | Qui 03/09/26 |  |
| 834 | 1.10.24.3 | Atendimento de Comentário | 3d | 2026-09-08 | 2026-09-11 | 833 | 2026-09-03 | 2026-09-08 | 3d | 33d | 0d |  |  |  |  |  |  |  | Ter 08/09/26 |  |
| 835 | 1.10.24.4 | Aprovação | 2d | 2026-09-11 | 2026-09-15 | 834 | 2026-09-08 | 2026-09-10 | 2d | 33d |  |  |  |  |  |  |  |  | Qui 10/09/26 |  |

Notes:
- 811: Título: LISTA DE INSTRUMENTOS COOLING SYSTEM - HOT VALVES SECTIONING – FLUXOGRAMA - FG-F0008-0307-MB-P-00001
- 816: Título: LISTA DE INSTRUMENTOS PRIMARY AND SECUNDARY CIRCUIT - FURNACE 1 & 2 - COOLING SYSTEM - PUMP HOUSE – FLUXOGRAMA - FG-F0008-0309-MB-P-00001
- 821: Título: LISTA DE INSTRUMENTOS COOLING SYSTEM - COOLING BOX – FLUXOGRAMA - FG-F0008-0309-MB-P-00002
- 826: Título: LISTA DE INSTRUMENTOS COOLING SYSTEM - TUYERES CIRCUIT – FLUXOGRAMA - FG-F0008-0309-MB-P-00003
- 831: Título: LISTA DE INSTRUMENTOS COOLING SYSTEM - COOPER STAVES – FLUXOGRAMA - FG-F0008-0309-MB-P-00004

| ID | WBS | Task | Duration | Start | Finish | Predecessors | Baseline start | Baseline finish | Baseline duration | Total slack | Free slack | Tipo de documento | Área | Sub-área | Disciplina | Formato | Quantidade | Agrupamento Cecal | Término_LB_R0 | Início_LB_R0 |
| --- | --- | --- | --- | --- | --- | --- | --- | --- | --- | --- | --- | --- | --- | --- | --- | --- | --- | --- | --- | --- |
| 836 | 1.10.25 | **LI-F0008-0309-MB-J-00005** | 25d | 2026-08-11 | 2026-09-15 |  | 2026-08-06 | 2026-09-10 | 25d | 33d |  | LI - Lista de Instrumentos | 03 - REDUÇÃO | 09 - FORNO TECNORED | J - AUTOMAÇÃO | OUTROS | 01 | Revisão da instrumentação | Qui 10/09/26 | Qui 06/08/26 |
| 837 | 1.10.25.1 | Emissão inicial | 15d | 2026-08-11 | 2026-09-01 | 773SF | 2026-08-06 | 2026-08-27 | 15d | 33d | 0d |  |  |  |  |  |  |  | Qui 27/08/26 |  |
| 838 | 1.10.25.2 | Avaliação do Cliente | 5d | 2026-09-01 | 2026-09-08 | 837 | 2026-08-27 | 2026-09-03 | 5d | 33d | 0d |  |  |  |  |  |  |  | Qui 03/09/26 |  |
| 839 | 1.10.25.3 | Atendimento de Comentário | 3d | 2026-09-08 | 2026-09-11 | 838 | 2026-09-03 | 2026-09-08 | 3d | 33d | 0d |  |  |  |  |  |  |  | Ter 08/09/26 |  |
| 840 | 1.10.25.4 | Aprovação | 2d | 2026-09-11 | 2026-09-15 | 839 | 2026-09-08 | 2026-09-10 | 2d | 33d |  |  |  |  |  |  |  |  | Qui 10/09/26 |  |
| 841 | 1.10.26 | **LI-F0008-0309-MB-J-00006** | 27d | 2026-08-11 | 2026-09-17 |  | 2026-08-06 | 2026-09-14 | 27d | 31d |  | LI - Lista de Instrumentos | 03 - REDUÇÃO | 09 - FORNO TECNORED | J - AUTOMAÇÃO | OUTROS | 01 | Revisão da instrumentação | Seg 14/09/26 | Qui 06/08/26 |
| 842 | 1.10.26.1 | Emissão inicial | 15d | 2026-08-11 | 2026-09-01 | 773SF | 2026-08-06 | 2026-08-27 | 15d | 31d | 0d |  |  |  |  |  |  |  | Qui 27/08/26 |  |
| 843 | 1.10.26.2 | Avaliação do Cliente | 5d | 2026-09-01 | 2026-09-08 | 842 | 2026-08-27 | 2026-09-03 | 5d | 31d | 0d |  |  |  |  |  |  |  | Qui 03/09/26 |  |
| 844 | 1.10.26.3 | Atendimento de Comentário | 5d | 2026-09-08 | 2026-09-15 | 843 | 2026-09-03 | 2026-09-10 | 5d | 31d | 0d |  |  |  |  |  |  |  | Qui 10/09/26 |  |
| 845 | 1.10.26.4 | Aprovação | 2d | 2026-09-15 | 2026-09-17 | 844 | 2026-09-10 | 2026-09-14 | 2d | 31d |  |  |  |  |  |  |  |  | Seg 14/09/26 |  |
| 846 | 1.10.27 | **LI-F0008-0309-MB-J-00007** | 25d | 2026-08-11 | 2026-09-15 |  | 2026-08-06 | 2026-09-10 | 25d | 33d |  | LI - Lista de Instrumentos | 03 - REDUÇÃO | 09 - FORNO TECNORED | J - AUTOMAÇÃO | OUTROS | 01 | Revisão da instrumentação | Qui 10/09/26 | Qui 06/08/26 |
| 847 | 1.10.27.1 | Emissão inicial | 15d | 2026-08-11 | 2026-09-01 | 773SF | 2026-08-06 | 2026-08-27 | 15d | 33d | 0d |  |  |  |  |  |  |  | Qui 27/08/26 |  |
| 848 | 1.10.27.2 | Avaliação do Cliente | 5d | 2026-09-01 | 2026-09-08 | 847 | 2026-08-27 | 2026-09-03 | 5d | 33d | 0d |  |  |  |  |  |  |  | Qui 03/09/26 |  |
| 849 | 1.10.27.3 | Atendimento de Comentário | 3d | 2026-09-08 | 2026-09-11 | 848 | 2026-09-03 | 2026-09-08 | 3d | 33d | 0d |  |  |  |  |  |  |  | Ter 08/09/26 |  |
| 850 | 1.10.27.4 | Aprovação | 2d | 2026-09-11 | 2026-09-15 | 849 | 2026-09-08 | 2026-09-10 | 2d | 33d |  |  |  |  |  |  |  |  | Qui 10/09/26 |  |
| 851 | 1.10.28 | **LI-F0008-0309-MB-J-00008** | 27d | 2026-08-11 | 2026-09-17 |  | 2026-08-06 | 2026-09-14 | 27d | 31d |  | LI - Lista de Instrumentos | 03 - REDUÇÃO | 09 - FORNO TECNORED | J - AUTOMAÇÃO | OUTROS | 01 | Revisão da instrumentação | Seg 14/09/26 | Qui 06/08/26 |
| 852 | 1.10.28.1 | Emissão inicial | 15d | 2026-08-11 | 2026-09-01 | 773SF | 2026-08-06 | 2026-08-27 | 15d | 31d | 0d |  |  |  |  |  |  |  | Qui 27/08/26 |  |
| 853 | 1.10.28.2 | Avaliação do Cliente | 5d | 2026-09-01 | 2026-09-08 | 852 | 2026-08-27 | 2026-09-03 | 5d | 31d | 0d |  |  |  |  |  |  |  | Qui 03/09/26 |  |
| 854 | 1.10.28.3 | Atendimento de Comentário | 5d | 2026-09-08 | 2026-09-15 | 853 | 2026-09-03 | 2026-09-10 | 5d | 31d | 0d |  |  |  |  |  |  |  | Qui 10/09/26 |  |
| 855 | 1.10.28.4 | Aprovação | 2d | 2026-09-15 | 2026-09-17 | 854 | 2026-09-10 | 2026-09-14 | 2d | 31d |  |  |  |  |  |  |  |  | Seg 14/09/26 |  |
| 856 | 1.10.29 | **LI-F0008-0309-MB-J-00009** | 25d | 2026-08-11 | 2026-09-15 |  | 2026-08-06 | 2026-09-10 | 25d | 20d |  | LI - Lista de Instrumentos | 03 - REDUÇÃO | 09 - FORNO TECNORED | J - AUTOMAÇÃO | OUTROS | 01 | Revisão da instrumentação | Qui 10/09/26 | Qui 06/08/26 |
| 857 | 1.10.29.1 | Emissão inicial | 15d | 2026-08-11 | 2026-09-01 | 773SF | 2026-08-06 | 2026-08-27 | 15d | 20d | 0d |  |  |  |  |  |  |  | Qui 27/08/26 |  |
| 858 | 1.10.29.2 | Avaliação do Cliente | 5d | 2026-09-01 | 2026-09-08 | 857 | 2026-08-27 | 2026-09-03 | 5d | 33d | 0d |  |  |  |  |  |  |  | Qui 03/09/26 |  |
| 859 | 1.10.29.3 | Atendimento de Comentário | 3d | 2026-09-08 | 2026-09-11 | 858 | 2026-09-03 | 2026-09-08 | 3d | 33d | 0d |  |  |  |  |  |  |  | Ter 08/09/26 |  |
| 860 | 1.10.29.4 | Aprovação | 2d | 2026-09-11 | 2026-09-15 | 859 | 2026-09-08 | 2026-09-10 | 2d | 33d |  |  |  |  |  |  |  |  | Qui 10/09/26 |  |

Notes:
- 836: Título: LISTA DE INSTRUMENTOS COOLING SYSTEM - CAST IRON STAVES – FLUXOGRAMA - FG-F0008-0309-MB-P-00005
- 841: Título: LISTA DE INSTRUMENTOS COOLING SYSTEM - COURTAIN WALL – FLUXOGRAMA - FG-F0008-0309-MB-P-00006
- 846: Título: LISTA DE INSTRUMENTOS COOLING SYSTEM - TAPHOLE, CHANNEL AND DOORS COOLING CIRCUIT – FLUXOGRAMA - FG-F0008-0309-MB-P-00007
- 851: Título: LISTA DE INSTRUMENTOS COOLING SYSTEM - BOTTOM COOLING SYSTEM – FLUXOGRAMA - FG-F0008-0309-MB-P-00008
- 856: Título: LISTA DE INSTRUMENTOS TECNORED FURNACE PROPER – FLUXOGRAMA - FG-F0008-0309-MB-P-00009

| ID | WBS | Task | Duration | Start | Finish | Predecessors | Baseline start | Baseline finish | Baseline duration | Total slack | Free slack | Tipo de documento | Área | Sub-área | Disciplina | Título | Formato | Quantidade | Agrupamento Cecal | Término_LB_R0 | Início_LB_R0 |
| --- | --- | --- | --- | --- | --- | --- | --- | --- | --- | --- | --- | --- | --- | --- | --- | --- | --- | --- | --- | --- | --- |
| 861 | 1.10.30 | **LM-F0008-0309-MB-J-00001** | 34d | 2026-09-01 | 2026-10-19 |  | 2026-08-27 | 2026-09-25 | 21d |  |  | LM - Lista de Materiais | 03 - REDUÇÃO | 09 - FORNO TECNORED | J - AUTOMAÇÃO | LISTA DE MATERAIS BÁSICA | A1 (841x594mm) | 10 | Planilha de quantitativo do forno e carregamento | Sex 25/09/26 | Qui 27/08/26 |
| 862 | 1.10.30.1 | Emissão inicial | 11d | 2026-09-01 | 2026-09-16 | 857 | 2026-08-27 | 2026-09-11 | 11d | 22d | 0d |  |  |  |  |  |  |  |  | Sex 11/09/26 |  |
| 863 | 1.10.30.2 | Avaliação do Cliente | 5d | 2026-09-16 | 2026-09-23 | 862 | 2026-09-11 | 2026-09-18 | 5d | 22d | 0d |  |  |  |  |  |  |  |  | Sex 18/09/26 |  |
| 864 | 1.10.30.3 | Atendimento de Comentário | 3d | 2026-09-23 | 2026-09-28 | 863 | 2026-09-18 | 2026-09-23 | 3d | 22d | 0d |  |  |  |  |  |  |  |  | Qua 23/09/26 |  |
| 865 | 1.10.30.4 | Aprovação | 2d | 2026-09-28 | 2026-09-30 | 864 | 2026-09-23 | 2026-09-25 | 2d | 22d |  |  |  |  |  |  |  |  |  | Sex 25/09/26 |  |
| 866 | 1.10.31 | **MD-F0008-0309-MB-J-00001** | 34d | 2026-09-01 | 2026-10-19 |  | 2026-08-27 | 2026-09-29 | 23d |  |  | MD - Memorial Descritivo | 03 - REDUÇÃO | 09 - FORNO TECNORED | J - AUTOMAÇÃO | MEMORIAL DESCRITIVO DE AUTOMAÇÃO | A4 (210x297mm) | 10 | Planilha de quantitativo do forno e carregamento | Ter 29/09/26 | Qui 27/08/26 |
| 867 | 1.10.31.1 | Emissão inicial | 13d | 2026-09-01 | 2026-09-18 | 857 | 2026-08-27 | 2026-09-15 | 13d | 20d | 0d |  |  |  |  |  |  |  |  | Ter 15/09/26 |  |
| 868 | 1.10.31.2 | Avaliação do Cliente | 5d | 2026-09-18 | 2026-09-25 | 867 | 2026-09-15 | 2026-09-22 | 5d | 20d | 0d |  |  |  |  |  |  |  |  | Ter 22/09/26 |  |
| 869 | 1.10.31.3 | Atendimento de Comentário | 3d | 2026-09-25 | 2026-09-30 | 868 | 2026-09-22 | 2026-09-25 | 3d | 20d | 0d |  |  |  |  |  |  |  |  | Sex 25/09/26 |  |
| 870 | 1.10.31.4 | Aprovação | 2d | 2026-09-30 | 2026-10-02 | 869 | 2026-09-25 | 2026-09-29 | 2d | 20d |  |  |  |  |  |  |  |  |  | Ter 29/09/26 |  |
| 871 | 1.10.32 | **ET-F0008-0309-MB-J-00001** | 38d | 2026-08-11 | 2026-10-02 |  | 2026-08-06 | 2026-09-10 | 25d |  |  | PQ - Planilha de Quantidades | 03 - REDUÇÃO | 09 - FORNO TECNORED | J - AUTOMAÇÃO | PLANILHA QUANTITATIVO AUTOMAÇÃO | A1 (841x594mm) | 10 | Revisão da instrumentação | Qui 10/09/26 | Qui 06/08/26 |
| 872 | 1.10.32.1 | Emissão inicial | 15d | 2026-08-11 | 2026-09-01 | 867SF | 2026-08-06 | 2026-08-27 | 15d | 33d | 0d |  |  |  |  |  |  |  |  | Qui 27/08/26 |  |
| 873 | 1.10.32.2 | Avaliação do Cliente | 5d | 2026-09-01 | 2026-09-08 | 872 | 2026-08-27 | 2026-09-03 | 5d | 33d | 0d |  |  |  |  |  |  |  |  | Qui 03/09/26 |  |
| 874 | 1.10.32.3 | Atendimento de Comentário | 3d | 2026-09-08 | 2026-09-11 | 873 | 2026-09-03 | 2026-09-08 | 3d | 33d | 0d |  |  |  |  |  |  |  |  | Ter 08/09/26 |  |
| 875 | 1.10.32.4 | Aprovação | 2d | 2026-09-11 | 2026-09-15 | 874 | 2026-09-08 | 2026-09-10 | 2d | 33d |  |  |  |  |  |  |  |  |  | Qui 10/09/26 |  |
| 876 | 1.10.33 | **PQ-F0008-0309-MB-J-00001** | 25d | 2026-08-11 | 2026-09-15 |  | 2026-08-06 | 2026-09-10 | 25d | 33d |  | PQ - Planilha de Quantidades | 03 - REDUÇÃO | 09 - FORNO TECNORED | J - AUTOMAÇÃO | PLANILHA QUANTITATIVO AUTOMAÇÃO | A1 (841x594mm) | 10 | Planilha de quantitativo do forno e carregamento | Qui 10/09/26 | Qui 06/08/26 |
| 877 | 1.10.33.1 | Emissão inicial | 15d | 2026-08-11 | 2026-09-01 | 867SF | 2026-08-06 | 2026-08-27 | 15d | 33d | 0d |  |  |  |  |  |  |  |  | Qui 27/08/26 |  |
| 878 | 1.10.33.2 | Avaliação do Cliente | 5d | 2026-09-01 | 2026-09-08 | 877 | 2026-08-27 | 2026-09-03 | 5d | 33d | 0d |  |  |  |  |  |  |  |  | Qui 03/09/26 |  |
| 879 | 1.10.33.3 | Atendimento de Comentário | 3d | 2026-09-08 | 2026-09-11 | 878 | 2026-09-03 | 2026-09-08 | 3d | 33d | 0d |  |  |  |  |  |  |  |  | Ter 08/09/26 |  |
| 880 | 1.10.33.4 | Aprovação | 2d | 2026-09-11 | 2026-09-15 | 879 | 2026-09-08 | 2026-09-10 | 2d | 33d |  |  |  |  |  |  |  |  |  | Qui 10/09/26 |  |
| 881 | 1.11 | **PROCESSO GUSA 309** | 77d | 2026-06-30 | 2026-10-15 |  | 2026-04-23 | 2026-09-22 | 109d |  |  |  |  |  |  |  |  |  |  | Ter 22/09/26 | Ter 23/06/26 |
| 882 | 1.11.1 | **CP-F0008-0309-MB-P-00001** | 68d | 2026-06-30 | 2026-10-02 |  | 2026-06-23 | 2026-07-28 | 25d |  |  | CP - Critério de Projeto | 03 - REDUÇÃO | 09 - FORNO TECNORED | P - PROCESSO GUSA | CRITÉRIO DE PROJETO DE UTILIDADES | A4 (210x297mm) | 10 | Readequação das utilidades no prédio do forno | Ter 28/07/26 | Ter 23/06/26 |
| 883 | 1.11.1.1 | Emissão inicial | 15d | 2026-06-30 | 2026-07-21 | 17 | 2026-06-23 | 2026-07-14 | 15d | 43d | 0d |  |  |  |  |  |  |  |  | Ter 14/07/26 |  |
| 884 | 1.11.1.2 | Avaliação do Cliente | 5d | 2026-07-21 | 2026-07-28 | 883 | 2026-07-14 | 2026-07-21 | 5d | 43d | 0d |  |  |  |  |  |  |  |  | Ter 21/07/26 |  |
| 885 | 1.11.1.3 | Atendimento de Comentário | 3d | 2026-07-28 | 2026-07-31 | 884 | 2026-07-21 | 2026-07-24 | 3d | 43d | 0d |  |  |  |  |  |  |  |  | Sex 24/07/26 |  |
| 886 | 1.11.1.4 | Aprovação | 2d | 2026-07-31 | 2026-08-04 | 885 | 2026-07-24 | 2026-07-28 | 2d | 43d |  |  |  |  |  |  |  |  |  | Ter 28/07/26 |  |

| ID | WBS | Task | Duration | Start | Finish | Predecessors | Baseline start | Baseline finish | Baseline duration | Total slack | Free slack | Tipo de documento | Área | Sub-área | Disciplina | Formato | Quantidade | Agrupamento Cecal | Término_LB_R0 | Início_LB_R0 |
| --- | --- | --- | --- | --- | --- | --- | --- | --- | --- | --- | --- | --- | --- | --- | --- | --- | --- | --- | --- | --- |
| 887 | 1.11.2 | **FG-F0008-0300-MB-P-00001** | 16d | 2026-06-30 | 2026-07-22 |  | 2026-06-23 | 2026-07-21 | 20d |  |  | FG - Fluxogramas / P | 03 - REDUÇÃO | 00 - GERAL | P - PROCESSO GUSA | A1 (841x594mm) | 01 | Revisão dos fluxogramas | Ter 21/07/26 | Ter 23/06/26 |
| 888 | 1.11.2.1 | Emissão inicial | 10d | 2026-06-30 | 2026-07-14 | 17 | 2026-06-23 | 2026-07-07 | 10d | 46d | 0d |  |  |  |  |  |  |  | Ter 07/07/26 |  |
| 889 | 1.11.2.2 | Avaliação do Cliente | 5d | 2026-07-14 | 2026-07-21 | 888 | 2026-07-07 | 2026-07-14 | 5d | 46d | 0d |  |  |  |  |  |  |  | Ter 14/07/26 |  |
| 890 | 1.11.2.3 | Atendimento de Comentário | 3d | 2026-07-21 | 2026-07-24 | 889 | 2026-07-14 | 2026-07-17 | 3d | 68d | 0d |  |  |  |  |  |  |  | Sex 17/07/26 |  |
| 891 | 1.11.2.4 | Aprovação | 2d | 2026-07-24 | 2026-07-28 | 890 | 2026-07-17 | 2026-07-21 | 2d | 68d |  |  |  |  |  |  |  |  | Ter 21/07/26 |  |
| 892 | 1.11.3 | **FG-F0008-0300-MB-P-00002** | 18d | 2026-06-30 | 2026-07-24 |  | 2026-06-23 | 2026-07-21 | 20d |  |  | FG - Fluxogramas / P | 03 - REDUÇÃO | 00 - GERAL | P - PROCESSO GUSA | A1 (841x594mm) | 01 | Revisão dos fluxogramas | Ter 21/07/26 | Ter 23/06/26 |
| 893 | 1.11.3.1 | Emissão inicial | 10d | 2026-06-30 | 2026-07-14 | 889SF | 2026-06-23 | 2026-07-07 | 10d | 68d | 0d |  |  |  |  |  |  |  | Ter 07/07/26 |  |
| 894 | 1.11.3.2 | Avaliação do Cliente | 5d | 2026-07-14 | 2026-07-21 | 893 | 2026-07-07 | 2026-07-14 | 5d | 68d | 0d |  |  |  |  |  |  |  | Ter 14/07/26 |  |
| 895 | 1.11.3.3 | Atendimento de Comentário | 3d | 2026-07-21 | 2026-07-24 | 894 | 2026-07-14 | 2026-07-17 | 3d | 68d | 0d |  |  |  |  |  |  |  | Sex 17/07/26 |  |
| 896 | 1.11.3.4 | Aprovação | 2d | 2026-07-24 | 2026-07-28 | 895 | 2026-07-17 | 2026-07-21 | 2d | 68d |  |  |  |  |  |  |  |  | Ter 21/07/26 |  |
| 897 | 1.11.4 | **FG-F0008-0302-MB-P-00001** | 18d | 2026-06-30 | 2026-07-24 |  | 2026-06-23 | 2026-07-23 | 22d |  |  | FG - Fluxogramas / P | 03 - REDUÇÃO | 02 - CARREGAMENTO | P - PROCESSO GUSA | A1 (841x594mm) | 01 | Revisão da instrumentação | Qui 23/07/26 | Ter 23/06/26 |
| 898 | 1.11.4.1 | Emissão inicial | 10d | 2026-06-30 | 2026-07-14 | 889SF | 2026-06-23 | 2026-07-07 | 10d | 46d | 0d |  |  |  |  |  |  |  | Ter 07/07/26 |  |
| 899 | 1.11.4.2 | Avaliação do Cliente | 5d | 2026-07-14 | 2026-07-21 | 898 | 2026-07-07 | 2026-07-14 | 5d | 46d | 0d |  |  |  |  |  |  |  | Ter 14/07/26 |  |
| 900 | 1.11.4.3 | Atendimento de Comentário | 5d | 2026-07-21 | 2026-07-28 | 899 | 2026-07-14 | 2026-07-21 | 5d | 46d | 0d |  |  |  |  |  |  |  | Ter 21/07/26 |  |
| 901 | 1.11.4.4 | Aprovação | 2d | 2026-07-28 | 2026-07-30 | 900 | 2026-07-21 | 2026-07-23 | 2d | 46d |  |  |  |  |  |  |  |  | Qui 23/07/26 |  |
| 902 | 1.11.5 | **FG-F0008-0302-MB-P-00002** | 19d | 2026-06-30 | 2026-07-27 |  | 2026-06-23 | 2026-07-21 | 20d |  |  | FG - Fluxogramas / P | 03 - REDUÇÃO | 02 - CARREGAMENTO | P - PROCESSO GUSA | A1 (841x594mm) | 01 | Revisão da instrumentação | Ter 21/07/26 | Ter 23/06/26 |
| 903 | 1.11.5.1 | Emissão inicial | 10d | 2026-06-30 | 2026-07-14 | 889SF | 2026-06-23 | 2026-07-07 | 10d | 68d | 0d |  |  |  |  |  |  |  | Ter 07/07/26 |  |
| 904 | 1.11.5.2 | Avaliação do Cliente | 5d | 2026-07-14 | 2026-07-21 | 903 | 2026-07-07 | 2026-07-14 | 5d | 68d | 0d |  |  |  |  |  |  |  | Ter 14/07/26 |  |
| 905 | 1.11.5.3 | Atendimento de Comentário | 3d | 2026-07-21 | 2026-07-24 | 904 | 2026-07-14 | 2026-07-17 | 3d | 68d | 0d |  |  |  |  |  |  |  | Sex 17/07/26 |  |
| 906 | 1.11.5.4 | Aprovação | 2d | 2026-07-24 | 2026-07-28 | 905 | 2026-07-17 | 2026-07-21 | 2d | 68d |  |  |  |  |  |  |  |  | Ter 21/07/26 |  |
| 907 | 1.11.6 | **FG-F0008-0302-MB-P-00003** | 10d | 2026-07-14 | 2026-07-28 |  | 2026-07-07 | 2026-08-06 | 22d |  |  | FG - Fluxogramas / P | 03 - REDUÇÃO | 02 - CARREGAMENTO | P - PROCESSO GUSA | A1 (841x594mm) | 01 | Revisão da instrumentação | Qui 06/08/26 | Ter 07/07/26 |
| 908 | 1.11.6.1 | Emissão inicial | 10d | 2026-07-14 | 2026-07-28 | 888 | 2026-07-07 | 2026-07-21 | 10d | 46d | 0d |  |  |  |  |  |  |  | Ter 21/07/26 |  |
| 909 | 1.11.6.2 | Avaliação do Cliente | 5d | 2026-07-28 | 2026-08-04 | 908 | 2026-07-21 | 2026-07-28 | 5d | 46d | 0d |  |  |  |  |  |  |  | Ter 28/07/26 |  |
| 910 | 1.11.6.3 | Atendimento de Comentário | 5d | 2026-08-04 | 2026-08-11 | 909 | 2026-07-28 | 2026-08-04 | 5d | 56d | 0d |  |  |  |  |  |  |  | Ter 04/08/26 |  |
| 911 | 1.11.6.4 | Aprovação | 2d | 2026-08-11 | 2026-08-13 | 910 | 2026-08-04 | 2026-08-06 | 2d | 56d |  |  |  |  |  |  |  |  | Qui 06/08/26 |  |

Notes:
- 887: Título: PFD - PROCESSO GERAL
- 892: Título: PFD - DISTRIBUICAO N2
- 897: Título: P&ID -CARREGAMENTO FORNO CORREIA PRINCIPAL ATÉ SILOS PROCESSOS
- 902: Título: P&ID - SILO PROCESSO ATÉ SILO BUFFER FORNO 1
- 907: Título: P&ID - SILO PROCESSO ATÉ SILO BUFFER FORNO 2

| ID | WBS | Task | Duration | Start | Finish | Predecessors | Baseline start | Baseline finish | Baseline duration | Total slack | Free slack | Tipo de documento | Área | Sub-área | Disciplina | Formato | Quantidade | Agrupamento Cecal | Término_LB_R0 | Início_LB_R0 |
| --- | --- | --- | --- | --- | --- | --- | --- | --- | --- | --- | --- | --- | --- | --- | --- | --- | --- | --- | --- | --- |
| 912 | 1.11.7 | **FG-F0008-0302-MB-P-00004** | 11d | 2026-07-14 | 2026-07-29 |  | 2026-07-07 | 2026-08-04 | 20d |  |  | FG - Fluxogramas / P | 03 - REDUÇÃO | 02 - CARREGAMENTO | P - PROCESSO GUSA | A1 (841x594mm) | 01 | Revisão da instrumentação | Ter 04/08/26 | Ter 07/07/26 |
| 913 | 1.11.7.1 | Emissão inicial | 10d | 2026-07-14 | 2026-07-28 | 909SF | 2026-07-07 | 2026-07-21 | 10d | 58d | 0d |  |  |  |  |  |  |  | Ter 21/07/26 |  |
| 914 | 1.11.7.2 | Avaliação do Cliente | 5d | 2026-07-28 | 2026-08-04 | 913 | 2026-07-21 | 2026-07-28 | 5d | 58d | 0d |  |  |  |  |  |  |  | Ter 28/07/26 |  |
| 915 | 1.11.7.3 | Atendimento de Comentário | 3d | 2026-08-04 | 2026-08-07 | 914 | 2026-07-28 | 2026-07-31 | 3d | 58d | 0d |  |  |  |  |  |  |  | Sex 31/07/26 |  |
| 916 | 1.11.7.4 | Aprovação | 2d | 2026-08-07 | 2026-08-11 | 915 | 2026-07-31 | 2026-08-04 | 2d | 58d |  |  |  |  |  |  |  |  | Ter 04/08/26 |  |
| 917 | 1.11.8 | **FG-F0008-0302-MB-P-00005** | 12d | 2026-07-14 | 2026-07-30 |  | 2026-07-07 | 2026-08-04 | 20d |  |  | FG - Fluxogramas / P | 03 - REDUÇÃO | 02 - CARREGAMENTO | P - PROCESSO GUSA | A1 (841x594mm) | 01 | Revisão da instrumentação | Ter 04/08/26 | Ter 07/07/26 |
| 918 | 1.11.8.1 | Emissão inicial | 10d | 2026-07-14 | 2026-07-28 | 909SF | 2026-07-07 | 2026-07-21 | 10d | 58d | 0d |  |  |  |  |  |  |  | Ter 21/07/26 |  |
| 919 | 1.11.8.2 | Avaliação do Cliente | 5d | 2026-07-28 | 2026-08-04 | 918 | 2026-07-21 | 2026-07-28 | 5d | 58d | 0d |  |  |  |  |  |  |  | Ter 28/07/26 |  |
| 920 | 1.11.8.3 | Atendimento de Comentário | 3d | 2026-08-04 | 2026-08-07 | 919 | 2026-07-28 | 2026-07-31 | 3d | 58d | 0d |  |  |  |  |  |  |  | Sex 31/07/26 |  |
| 921 | 1.11.8.4 | Aprovação | 2d | 2026-08-07 | 2026-08-11 | 920 | 2026-07-31 | 2026-08-04 | 2d | 58d |  |  |  |  |  |  |  |  | Ter 04/08/26 |  |
| 922 | 1.11.9 | **FG-F0008-0302-MB-P-00006** | 13d | 2026-07-14 | 2026-07-31 |  | 2026-07-07 | 2026-08-06 | 22d |  |  | FG - Fluxogramas / P | 03 - REDUÇÃO | 02 - CARREGAMENTO | P - PROCESSO GUSA | A1 (841x594mm) | 01 | Revisão da instrumentação | Qui 06/08/26 | Ter 07/07/26 |
| 923 | 1.11.9.1 | Emissão inicial | 10d | 2026-07-14 | 2026-07-28 | 909SF | 2026-07-07 | 2026-07-21 | 10d | 46d | 0d |  |  |  |  |  |  |  | Ter 21/07/26 |  |
| 924 | 1.11.9.2 | Avaliação do Cliente | 5d | 2026-07-28 | 2026-08-04 | 923 | 2026-07-21 | 2026-07-28 | 5d | 56d | 0d |  |  |  |  |  |  |  | Ter 28/07/26 |  |
| 925 | 1.11.9.3 | Atendimento de Comentário | 5d | 2026-08-04 | 2026-08-11 | 924 | 2026-07-28 | 2026-08-04 | 5d | 56d | 0d |  |  |  |  |  |  |  | Ter 04/08/26 |  |
| 926 | 1.11.9.4 | Aprovação | 2d | 2026-08-11 | 2026-08-13 | 925 | 2026-08-04 | 2026-08-06 | 2d | 56d |  |  |  |  |  |  |  |  | Qui 06/08/26 |  |
| 927 | 1.11.10 | **FG-F0008-0302-MB-P-00007** | 4d | 2026-07-28 | 2026-08-03 |  | 2026-07-21 | 2026-08-18 | 20d |  |  | FG - Fluxogramas / P | 03 - REDUÇÃO | 02 - CARREGAMENTO | P - PROCESSO GUSA | A1 (841x594mm) | 01 | Revisão dos fluxogramas | Ter 18/08/26 | Ter 21/07/26 |
| 928 | 1.11.10.1 | Emissão inicial | 10d | 2026-07-28 | 2026-08-11 | 923 | 2026-07-21 | 2026-08-04 | 10d | 46d | 0d |  |  |  |  |  |  |  | Ter 04/08/26 |  |
| 929 | 1.11.10.2 | Avaliação do Cliente | 5d | 2026-08-11 | 2026-08-18 | 928 | 2026-08-04 | 2026-08-11 | 5d | 46d | 0d |  |  |  |  |  |  |  | Ter 11/08/26 |  |
| 930 | 1.11.10.3 | Atendimento de Comentário | 3d | 2026-08-18 | 2026-08-21 | 929 | 2026-08-11 | 2026-08-14 | 3d | 48d | 0d |  |  |  |  |  |  |  | Sex 14/08/26 |  |
| 931 | 1.11.10.4 | Aprovação | 2d | 2026-08-21 | 2026-08-25 | 930 | 2026-08-14 | 2026-08-18 | 2d | 48d |  |  |  |  |  |  |  |  | Ter 18/08/26 |  |
| 932 | 1.11.11 | **FG-F0008-0302-MB-P-00008** | 20d | 2026-07-28 | 2026-08-25 |  | 2026-07-21 | 2026-08-18 | 20d | 48d |  | FG - Fluxogramas / P | 03 - REDUÇÃO | 02 - CARREGAMENTO | P - PROCESSO GUSA | A4 (210x297mm) | 01 | Revisão dos fluxogramas | Ter 18/08/26 | Ter 21/07/26 |
| 933 | 1.11.11.1 | Emissão inicial | 10d | 2026-07-28 | 2026-08-11 | 929SF | 2026-07-21 | 2026-08-04 | 10d | 48d | 0d |  |  |  |  |  |  |  | Ter 04/08/26 |  |
| 934 | 1.11.11.2 | Avaliação do Cliente | 5d | 2026-08-11 | 2026-08-18 | 933 | 2026-08-04 | 2026-08-11 | 5d | 48d | 0d |  |  |  |  |  |  |  | Ter 11/08/26 |  |
| 935 | 1.11.11.3 | Atendimento de Comentário | 3d | 2026-08-18 | 2026-08-21 | 934 | 2026-08-11 | 2026-08-14 | 3d | 48d | 0d |  |  |  |  |  |  |  | Sex 14/08/26 |  |
| 936 | 1.11.11.4 | Aprovação | 2d | 2026-08-21 | 2026-08-25 | 935 | 2026-08-14 | 2026-08-18 | 2d | 48d |  |  |  |  |  |  |  |  | Ter 18/08/26 |  |

Notes:
- 912: Título: P&ID - SILO BUFFER ATÉ FORNO LADO FORNO 1
- 917: Título: P&ID - SILO BUFFER ATÉ FORNO LADO FORNO 2
- 922: Título: P&ID - SISTEMA DE EQUALIZAÇÃO FORNO NITROGENIO E GAS DE PROCESSO
- 927: Título: PFD - SISTEMA CARREGAMENTO
- 932: Título: FLUXOGRAMA DE PROCESSO

| ID | WBS | Task | Duration | Start | Finish | Predecessors | Baseline start | Baseline finish | Baseline duration | Total slack | Free slack | Tipo de documento | Área | Sub-área | Disciplina | Título | Formato | Quantidade | Agrupamento Cecal | Término_LB_R0 | Início_LB_R0 |
| --- | --- | --- | --- | --- | --- | --- | --- | --- | --- | --- | --- | --- | --- | --- | --- | --- | --- | --- | --- | --- | --- |
| 937 | 1.11.12 | **FG-F0008-0302-MB-P-00009** | 20d | 2026-07-28 | 2026-08-25 |  | 2026-07-21 | 2026-08-18 | 20d | 48d |  | FG - Fluxogramas / P | 03 - REDUÇÃO | 02 - CARREGAMENTO | P - PROCESSO GUSA | FLUXOGRAMA DE PROCESSO | A4 (210x297mm) | 01 | Revisão dos fluxogramas | Ter 18/08/26 | Ter 21/07/26 |
| 938 | 1.11.12.1 | Emissão inicial | 10d | 2026-07-28 | 2026-08-11 | 929SF | 2026-07-21 | 2026-08-04 | 10d | 48d | 0d |  |  |  |  |  |  |  |  | Ter 04/08/26 |  |
| 939 | 1.11.12.2 | Avaliação do Cliente | 5d | 2026-08-11 | 2026-08-18 | 938 | 2026-08-04 | 2026-08-11 | 5d | 48d | 0d |  |  |  |  |  |  |  |  | Ter 11/08/26 |  |
| 940 | 1.11.12.3 | Atendimento de Comentário | 3d | 2026-08-18 | 2026-08-21 | 939 | 2026-08-11 | 2026-08-14 | 3d | 48d | 0d |  |  |  |  |  |  |  |  | Sex 14/08/26 |  |
| 941 | 1.11.12.4 | Aprovação | 2d | 2026-08-21 | 2026-08-25 | 940 | 2026-08-14 | 2026-08-18 | 2d | 48d |  |  |  |  |  |  |  |  |  | Ter 18/08/26 |  |
| 942 | 1.11.13 | **FG-F0008-0302-MB-P-00010** | 22d | 2026-07-28 | 2026-08-27 |  | 2026-07-21 | 2026-08-20 | 22d | 46d |  | FG - Fluxogramas / P | 03 - REDUÇÃO | 02 - CARREGAMENTO | P - PROCESSO GUSA | FLUXOGRAMA DE PROCESSO | A4 (210x297mm) | 01 | Revisão dos fluxogramas | Qui 20/08/26 | Ter 21/07/26 |
| 943 | 1.11.13.1 | Emissão inicial | 10d | 2026-07-28 | 2026-08-11 | 929SF | 2026-07-21 | 2026-08-04 | 10d | 46d | 0d |  |  |  |  |  |  |  |  | Ter 04/08/26 |  |
| 944 | 1.11.13.2 | Avaliação do Cliente | 5d | 2026-08-11 | 2026-08-18 | 943 | 2026-08-04 | 2026-08-11 | 5d | 46d | 0d |  |  |  |  |  |  |  |  | Ter 11/08/26 |  |
| 945 | 1.11.13.3 | Atendimento de Comentário | 5d | 2026-08-18 | 2026-08-25 | 944 | 2026-08-11 | 2026-08-18 | 5d | 46d | 0d |  |  |  |  |  |  |  |  | Ter 18/08/26 |  |
| 946 | 1.11.13.4 | Aprovação | 2d | 2026-08-25 | 2026-08-27 | 945 | 2026-08-18 | 2026-08-20 | 2d | 46d |  |  |  |  |  |  |  |  |  | Qui 20/08/26 |  |
| 947 | 1.11.14 | **FG-F0008-0302-MB-P-00011** | 20d | 2026-07-28 | 2026-08-25 |  | 2026-07-21 | 2026-08-18 | 20d | 48d |  | FG - Fluxogramas / P | 03 - REDUÇÃO | 02 - CARREGAMENTO | P - PROCESSO GUSA | FLUXOGRAMA DE PROCESSO | A4 (210x297mm) | 01 | Revisão dos fluxogramas | Ter 18/08/26 | Ter 21/07/26 |
| 948 | 1.11.14.1 | Emissão inicial | 10d | 2026-07-28 | 2026-08-11 | 929SF | 2026-07-21 | 2026-08-04 | 10d | 48d | 0d |  |  |  |  |  |  |  |  | Ter 04/08/26 |  |
| 949 | 1.11.14.2 | Avaliação do Cliente | 5d | 2026-08-11 | 2026-08-18 | 948 | 2026-08-04 | 2026-08-11 | 5d | 48d | 0d |  |  |  |  |  |  |  |  | Ter 11/08/26 |  |
| 950 | 1.11.14.3 | Atendimento de Comentário | 3d | 2026-08-18 | 2026-08-21 | 949 | 2026-08-11 | 2026-08-14 | 3d | 48d | 0d |  |  |  |  |  |  |  |  | Sex 14/08/26 |  |
| 951 | 1.11.14.4 | Aprovação | 2d | 2026-08-21 | 2026-08-25 | 950 | 2026-08-14 | 2026-08-18 | 2d | 48d |  |  |  |  |  |  |  |  |  | Ter 18/08/26 |  |
| 952 | 1.11.15 | **FG-F0008-0307-MB-P-00001** | 24d | 2026-06-30 | 2026-08-03 |  | 2026-06-23 | 2026-07-21 | 20d |  |  | FG - Fluxogramas / P | 03 - REDUÇÃO | 07 - RESFRIAMENTO | P - PROCESSO GUSA | P&ID - SISTEMA DE REFRIGERAÇÃO HOT VALVES SECCIONAMENTO | A1 (841x594mm) | 01 | Revisão da instrumentação | Ter 21/07/26 | Ter 23/06/26 |
| 953 | 1.11.15.1 | Emissão inicial | 10d | 2026-06-30 | 2026-07-14 | 17 | 2026-06-23 | 2026-07-07 | 10d | 18d | 0d |  |  |  |  |  |  |  |  | Ter 07/07/26 |  |
| 954 | 1.11.15.2 | Avaliação do Cliente | 5d | 2026-07-14 | 2026-07-21 | 953 | 2026-07-07 | 2026-07-14 | 5d | 18d | 0d |  |  |  |  |  |  |  |  | Ter 14/07/26 |  |
| 955 | 1.11.15.3 | Atendimento de Comentário | 3d | 2026-07-21 | 2026-07-24 | 954 | 2026-07-14 | 2026-07-17 | 3d | 68d | 0d |  |  |  |  |  |  |  |  | Sex 17/07/26 |  |
| 956 | 1.11.15.4 | Aprovação | 2d | 2026-07-24 | 2026-07-28 | 955 | 2026-07-17 | 2026-07-21 | 2d | 68d |  |  |  |  |  |  |  |  |  | Ter 21/07/26 |  |
| 957 | 1.11.16 | **FG-F0008-0307-MB-P-00002** | 20d | 2026-06-30 | 2026-07-28 |  | 2026-06-23 | 2026-07-21 | 20d | 68d |  | FG - Fluxogramas / P | 03 - REDUÇÃO | 07 - RESFRIAMENTO | P - PROCESSO GUSA | PFD - SISTEMA DE RESFRIAMENTO | A1 (841x594mm) | 01 | Revisão dos fluxogramas | Ter 21/07/26 | Ter 23/06/26 |
| 958 | 1.11.16.1 | Emissão inicial | 10d | 2026-06-30 | 2026-07-14 | 954SF | 2026-06-23 | 2026-07-07 | 10d | 68d | 0d |  |  |  |  |  |  |  |  | Ter 07/07/26 |  |
| 959 | 1.11.16.2 | Avaliação do Cliente | 5d | 2026-07-14 | 2026-07-21 | 958 | 2026-07-07 | 2026-07-14 | 5d | 68d | 0d |  |  |  |  |  |  |  |  | Ter 14/07/26 |  |
| 960 | 1.11.16.3 | Atendimento de Comentário | 3d | 2026-07-21 | 2026-07-24 | 959 | 2026-07-14 | 2026-07-17 | 3d | 68d | 0d |  |  |  |  |  |  |  |  | Sex 17/07/26 |  |
| 961 | 1.11.16.4 | Aprovação | 2d | 2026-07-24 | 2026-07-28 | 960 | 2026-07-17 | 2026-07-21 | 2d | 68d |  |  |  |  |  |  |  |  |  | Ter 21/07/26 |  |

| ID | WBS | Task | Duration | Start | Finish | Predecessors | Baseline start | Baseline finish | Baseline duration | Total slack | Free slack | Tipo de documento | Área | Sub-área | Disciplina | Título | Formato | Quantidade | Agrupamento Cecal | Término_LB_R0 | Início_LB_R0 |
| --- | --- | --- | --- | --- | --- | --- | --- | --- | --- | --- | --- | --- | --- | --- | --- | --- | --- | --- | --- | --- | --- |
| 962 | 1.11.17 | **FG-F0008-0309-MB-P-00001** | 16d | 2026-06-30 | 2026-07-22 |  | 2026-06-23 | 2026-07-23 | 22d |  |  | FG - Fluxogramas / P | 03 - REDUÇÃO | 09 - FORNO TECNORED | P - PROCESSO GUSA | P&ID - CIRCUITO PRIMÁRIO E SECUNDÁRIO FORNO 1 E FORNO 2 | A1 (841x594mm) | 01 | Revisão da instrumentação | Qui 23/07/26 | Ter 23/06/26 |
| 963 | 1.11.17.1 | Emissão inicial | 10d | 2026-06-30 | 2026-07-14 | 954SF | 2026-06-23 | 2026-07-07 | 10d | 66d | 0d |  |  |  |  |  |  |  |  | Ter 07/07/26 |  |
| 964 | 1.11.17.2 | Avaliação do Cliente | 5d | 2026-07-14 | 2026-07-21 | 963 | 2026-07-07 | 2026-07-14 | 5d | 66d | 0d |  |  |  |  |  |  |  |  | Ter 14/07/26 |  |
| 965 | 1.11.17.3 | Atendimento de Comentário | 5d | 2026-07-21 | 2026-07-28 | 964 | 2026-07-14 | 2026-07-21 | 5d | 66d | 0d |  |  |  |  |  |  |  |  | Ter 21/07/26 |  |
| 966 | 1.11.17.4 | Aprovação | 2d | 2026-07-28 | 2026-07-30 | 965 | 2026-07-21 | 2026-07-23 | 2d | 66d |  |  |  |  |  |  |  |  |  | Qui 23/07/26 |  |
| 967 | 1.11.18 | **FG-F0008-0309-MB-P-00002** | 25d | 2026-06-30 | 2026-08-04 |  | 2026-06-23 | 2026-07-21 | 20d |  |  | FG - Fluxogramas / P | 03 - REDUÇÃO | 09 - FORNO TECNORED | P - PROCESSO GUSA | P&ID - CIRCUITO REFRIGERAÇÃO COOLING BOX | A1 (841x594mm) | 01 | Revisão da instrumentação | Ter 21/07/26 | Ter 23/06/26 |
| 968 | 1.11.18.1 | Emissão inicial | 10d | 2026-06-30 | 2026-07-14 | 954SF | 2026-06-23 | 2026-07-07 | 10d | 68d | 0d |  |  |  |  |  |  |  |  | Ter 07/07/26 |  |
| 969 | 1.11.18.2 | Avaliação do Cliente | 5d | 2026-07-14 | 2026-07-21 | 968 | 2026-07-07 | 2026-07-14 | 5d | 68d | 0d |  |  |  |  |  |  |  |  | Ter 14/07/26 |  |
| 970 | 1.11.18.3 | Atendimento de Comentário | 3d | 2026-07-21 | 2026-07-24 | 969 | 2026-07-14 | 2026-07-17 | 3d | 68d | 0d |  |  |  |  |  |  |  |  | Sex 17/07/26 |  |
| 971 | 1.11.18.4 | Aprovação | 2d | 2026-07-24 | 2026-07-28 | 970 | 2026-07-17 | 2026-07-21 | 2d | 68d |  |  |  |  |  |  |  |  |  | Ter 21/07/26 |  |
| 972 | 1.11.19 | **FG-F0008-0309-MB-P-00003** | 26d | 2026-06-30 | 2026-08-05 |  | 2026-06-23 | 2026-07-21 | 20d |  |  | FG - Fluxogramas / P | 03 - REDUÇÃO | 09 - FORNO TECNORED | P - PROCESSO GUSA | P&ID - CIRCUITO REFRIGERAÇÃO VENTANEIRAS | A1 (841x594mm) | 01 | Revisão da instrumentação | Ter 21/07/26 | Ter 23/06/26 |
| 973 | 1.11.19.1 | Emissão inicial | 10d | 2026-06-30 | 2026-07-14 | 954SF | 2026-06-23 | 2026-07-07 | 10d | 68d | 0d |  |  |  |  |  |  |  |  | Ter 07/07/26 |  |
| 974 | 1.11.19.2 | Avaliação do Cliente | 5d | 2026-07-14 | 2026-07-21 | 973 | 2026-07-07 | 2026-07-14 | 5d | 68d | 0d |  |  |  |  |  |  |  |  | Ter 14/07/26 |  |
| 975 | 1.11.19.3 | Atendimento de Comentário | 3d | 2026-07-21 | 2026-07-24 | 974 | 2026-07-14 | 2026-07-17 | 3d | 68d | 0d |  |  |  |  |  |  |  |  | Sex 17/07/26 |  |
| 976 | 1.11.19.4 | Aprovação | 2d | 2026-07-24 | 2026-07-28 | 975 | 2026-07-17 | 2026-07-21 | 2d | 68d |  |  |  |  |  |  |  |  |  | Ter 21/07/26 |  |
| 977 | 1.11.20 | **FG-F0008-0309-MB-P-00004** | 27d | 2026-06-30 | 2026-08-06 |  | 2026-06-23 | 2026-07-21 | 20d |  |  | FG - Fluxogramas / P | 03 - REDUÇÃO | 09 - FORNO TECNORED | P - PROCESSO GUSA | P&ID - CIRCUITO REFRIGERAÇÃO STAVES LATERAIS | A1 (841x594mm) | 01 | Revisão da instrumentação | Ter 21/07/26 | Ter 23/06/26 |
| 978 | 1.11.20.1 | Emissão inicial | 10d | 2026-06-30 | 2026-07-14 | 954SF | 2026-06-23 | 2026-07-07 | 10d | 18d | 0d |  |  |  |  |  |  |  |  | Ter 07/07/26 |  |
| 979 | 1.11.20.2 | Avaliação do Cliente | 5d | 2026-07-14 | 2026-07-21 | 978 | 2026-07-07 | 2026-07-14 | 5d | 68d | 0d |  |  |  |  |  |  |  |  | Ter 14/07/26 |  |
| 980 | 1.11.20.3 | Atendimento de Comentário | 3d | 2026-07-21 | 2026-07-24 | 979 | 2026-07-14 | 2026-07-17 | 3d | 68d | 0d |  |  |  |  |  |  |  |  | Sex 17/07/26 |  |
| 981 | 1.11.20.4 | Aprovação | 2d | 2026-07-24 | 2026-07-28 | 980 | 2026-07-17 | 2026-07-21 | 2d | 68d |  |  |  |  |  |  |  |  |  | Ter 21/07/26 |  |
| 982 | 1.11.21 | **FG-F0008-0309-MB-P-00005** | 18d | 2026-07-14 | 2026-08-07 |  | 2026-07-07 | 2026-08-04 | 20d |  |  | FG - Fluxogramas / P | 03 - REDUÇÃO | 09 - FORNO TECNORED | P - PROCESSO GUSA | P&ID - CIRCUITO REFRIGERAÇÃO STAVES FERRO FUNDIDO | A1 (841x594mm) | 01 | Revisão da instrumentação | Ter 04/08/26 | Ter 07/07/26 |
| 983 | 1.11.21.1 | Emissão inicial | 10d | 2026-07-14 | 2026-07-28 | 978 | 2026-07-07 | 2026-07-21 | 10d | 18d | 0d |  |  |  |  |  |  |  |  | Ter 21/07/26 |  |
| 984 | 1.11.21.2 | Avaliação do Cliente | 5d | 2026-07-28 | 2026-08-04 | 983 | 2026-07-21 | 2026-07-28 | 5d | 18d | 0d |  |  |  |  |  |  |  |  | Ter 28/07/26 |  |
| 985 | 1.11.21.3 | Atendimento de Comentário | 3d | 2026-08-04 | 2026-08-07 | 984 | 2026-07-28 | 2026-07-31 | 3d | 58d | 0d |  |  |  |  |  |  |  |  | Sex 31/07/26 |  |
| 986 | 1.11.21.4 | Aprovação | 2d | 2026-08-07 | 2026-08-11 | 985 | 2026-07-31 | 2026-08-04 | 2d | 58d |  |  |  |  |  |  |  |  |  | Ter 04/08/26 |  |

| ID | WBS | Task | Duration | Start | Finish | Predecessors | Baseline start | Baseline finish | Baseline duration | Total slack | Free slack | Tipo de documento | Área | Sub-área | Disciplina | Título | Formato | Quantidade | Agrupamento Cecal | Término_LB_R0 | Início_LB_R0 |
| --- | --- | --- | --- | --- | --- | --- | --- | --- | --- | --- | --- | --- | --- | --- | --- | --- | --- | --- | --- | --- | --- |
| 987 | 1.11.22 | **FG-F0008-0309-MB-P-00006** | 19d | 2026-07-14 | 2026-08-10 |  | 2026-07-07 | 2026-08-04 | 20d |  |  | FG - Fluxogramas / P | 03 - REDUÇÃO | 09 - FORNO TECNORED | P - PROCESSO GUSA | P&ID - CIRCUITO REFRIGERAÇÃO CURTAIN-WALL | A1 (841x594mm) | 01 | Revisão da instrumentação | Ter 04/08/26 | Ter 07/07/26 |
| 988 | 1.11.22.1 | Emissão inicial | 10d | 2026-07-14 | 2026-07-28 | 984SF | 2026-07-07 | 2026-07-21 | 10d | 58d | 0d |  |  |  |  |  |  |  |  | Ter 21/07/26 |  |
| 989 | 1.11.22.2 | Avaliação do Cliente | 5d | 2026-07-28 | 2026-08-04 | 988 | 2026-07-21 | 2026-07-28 | 5d | 58d | 0d |  |  |  |  |  |  |  |  | Ter 28/07/26 |  |
| 990 | 1.11.22.3 | Atendimento de Comentário | 3d | 2026-08-04 | 2026-08-07 | 989 | 2026-07-28 | 2026-07-31 | 3d | 58d | 0d |  |  |  |  |  |  |  |  | Sex 31/07/26 |  |
| 991 | 1.11.22.4 | Aprovação | 2d | 2026-08-07 | 2026-08-11 | 990 | 2026-07-31 | 2026-08-04 | 2d | 58d |  |  |  |  |  |  |  |  |  | Ter 04/08/26 |  |
| 992 | 1.11.23 | **FG-F0008-0309-MB-P-00007** | 20d | 2026-07-14 | 2026-08-11 |  | 2026-07-07 | 2026-08-04 | 20d | 58d |  | FG - Fluxogramas / P | 03 - REDUÇÃO | 09 - FORNO TECNORED | P - PROCESSO GUSA | P&ID - CIRCUITO REFRIGERAÇÃO CADINHO | A1 (841x594mm) | 01 | Revisão da instrumentação | Ter 04/08/26 | Ter 07/07/26 |
| 993 | 1.11.23.1 | Emissão inicial | 10d | 2026-07-14 | 2026-07-28 | 984SF | 2026-07-07 | 2026-07-21 | 10d | 58d | 0d |  |  |  |  |  |  |  |  | Ter 21/07/26 |  |
| 994 | 1.11.23.2 | Avaliação do Cliente | 5d | 2026-07-28 | 2026-08-04 | 993 | 2026-07-21 | 2026-07-28 | 5d | 58d | 0d |  |  |  |  |  |  |  |  | Ter 28/07/26 |  |
| 995 | 1.11.23.3 | Atendimento de Comentário | 3d | 2026-08-04 | 2026-08-07 | 994 | 2026-07-28 | 2026-07-31 | 3d | 58d | 0d |  |  |  |  |  |  |  |  | Sex 31/07/26 |  |
| 996 | 1.11.23.4 | Aprovação | 2d | 2026-08-07 | 2026-08-11 | 995 | 2026-07-31 | 2026-08-04 | 2d | 58d |  |  |  |  |  |  |  |  |  | Ter 04/08/26 |  |
| 997 | 1.11.24 | **FG-F0008-0309-MB-P-00008** | 21d | 2026-07-14 | 2026-08-12 |  | 2026-07-07 | 2026-08-04 | 20d |  |  | FG - Fluxogramas / P | 03 - REDUÇÃO | 09 - FORNO TECNORED | P - PROCESSO GUSA | P&ID - CIRCUITO REFRIGERAÇÃO SOLEIRA | A1 (841x594mm) | 01 | Revisão da instrumentação | Ter 04/08/26 | Ter 07/07/26 |
| 998 | 1.11.24.1 | Emissão inicial | 10d | 2026-07-14 | 2026-07-28 | 984SF | 2026-07-07 | 2026-07-21 | 10d | 30d | 0d |  |  |  |  |  |  |  |  | Ter 21/07/26 |  |
| 999 | 1.11.24.2 | Avaliação do Cliente | 5d | 2026-07-28 | 2026-08-04 | 998 | 2026-07-21 | 2026-07-28 | 5d | 58d | 0d |  |  |  |  |  |  |  |  | Ter 28/07/26 |  |
| 1000 | 1.11.24.3 | Atendimento de Comentário | 3d | 2026-08-04 | 2026-08-07 | 999 | 2026-07-28 | 2026-07-31 | 3d | 58d | 0d |  |  |  |  |  |  |  |  | Sex 31/07/26 |  |
| 1001 | 1.11.24.4 | Aprovação | 2d | 2026-08-07 | 2026-08-11 | 1000 | 2026-07-31 | 2026-08-04 | 2d | 58d |  |  |  |  |  |  |  |  |  | Ter 04/08/26 |  |
| 1002 | 1.11.25 | **FG-F0008-0309-MB-P-00009** | 22d | 2026-07-14 | 2026-08-13 |  | 2026-07-07 | 2026-08-04 | 20d |  |  | FG - Fluxogramas / P | 03 - REDUÇÃO | 09 - FORNO TECNORED | P - PROCESSO GUSA | P&ID - FORNO TECNORED | A1 (841x594mm) | 01 | Revisão da instrumentação | Ter 04/08/26 | Ter 07/07/26 |
| 1003 | 1.11.25.1 | Emissão inicial | 10d | 2026-07-14 | 2026-07-28 | 984SF | 2026-07-07 | 2026-07-21 | 10d | 58d | 0d |  |  |  |  |  |  |  |  | Ter 21/07/26 |  |
| 1004 | 1.11.25.2 | Avaliação do Cliente | 5d | 2026-07-28 | 2026-08-04 | 1003 | 2026-07-21 | 2026-07-28 | 5d | 58d | 0d |  |  |  |  |  |  |  |  | Ter 28/07/26 |  |
| 1005 | 1.11.25.3 | Atendimento de Comentário | 3d | 2026-08-04 | 2026-08-07 | 1004 | 2026-07-28 | 2026-07-31 | 3d | 58d | 0d |  |  |  |  |  |  |  |  | Sex 31/07/26 |  |
| 1006 | 1.11.25.4 | Aprovação | 2d | 2026-08-07 | 2026-08-11 | 1005 | 2026-07-31 | 2026-08-04 | 2d | 58d |  |  |  |  |  |  |  |  |  | Ter 04/08/26 |  |
| 1007 | 1.11.26 | **FG-F0008-0309-MB-P-00010** | 12d | 2026-07-14 | 2026-07-30 |  | 2026-07-07 | 2026-08-04 | 20d |  |  | FG - Fluxogramas / P | 03 - REDUÇÃO | 09 - FORNO TECNORED | P - PROCESSO GUSA | PFD - FORNO PROPRIO | A1 (841x594mm) | 01 | Revisão dos fluxogramas | Ter 04/08/26 | Ter 07/07/26 |
| 1008 | 1.11.26.1 | Emissão inicial | 10d | 2026-07-14 | 2026-07-28 | 984SF | 2026-07-07 | 2026-07-21 | 10d | 18d | 0d |  |  |  |  |  |  |  |  | Ter 21/07/26 |  |
| 1009 | 1.11.26.2 | Avaliação do Cliente | 5d | 2026-07-28 | 2026-08-04 | 1008 | 2026-07-21 | 2026-07-28 | 5d | 31d | 0d |  |  |  |  |  |  |  |  | Ter 28/07/26 |  |
| 1010 | 1.11.26.3 | Atendimento de Comentário | 3d | 2026-08-04 | 2026-08-07 | 1009 | 2026-07-28 | 2026-07-31 | 3d | 31d | 0d |  |  |  |  |  |  |  |  | Sex 31/07/26 |  |
| 1011 | 1.11.26.4 | Aprovação | 2d | 2026-08-07 | 2026-08-11 | 1010 | 2026-07-31 | 2026-08-04 | 2d | 31d |  |  |  |  |  |  |  |  |  | Ter 04/08/26 |  |

| ID | WBS | Task | Duration | Start | Finish | Predecessors | Baseline start | Baseline finish | Baseline duration | Total slack | Free slack | Tipo de documento | Área | Sub-área | Disciplina | Formato | Quantidade | Agrupamento Cecal | Término_LB_R0 | Início_LB_R0 |
| --- | --- | --- | --- | --- | --- | --- | --- | --- | --- | --- | --- | --- | --- | --- | --- | --- | --- | --- | --- | --- |
| 1012 | 1.11.27 | **LL-F0008-0309-MB-P-00001** | 49d | 2026-07-28 | 2026-10-05 |  | 2026-07-21 | 2026-08-25 | 25d |  |  | LL - Lista de Linhas | 03 - REDUÇÃO | 09 - FORNO TECNORED | P - PROCESSO GUSA | A4 (210x297mm) | 10 | Readequação das utilidades no prédio do forno | Ter 25/08/26 | Ter 21/07/26 |
| 1013 | 1.11.27.1 | Emissão inicial | 15d | 2026-07-28 | 2026-08-18 | 1008 | 2026-07-21 | 2026-08-11 | 15d | 28d | 0d |  |  |  |  |  |  |  | Ter 11/08/26 |  |
| 1014 | 1.11.27.2 | Avaliação do Cliente | 5d | 2026-08-18 | 2026-08-25 | 1013 | 2026-08-11 | 2026-08-18 | 5d | 43d | 0d |  |  |  |  |  |  |  | Ter 18/08/26 |  |
| 1015 | 1.11.27.3 | Atendimento de Comentário | 3d | 2026-08-25 | 2026-08-28 | 1014 | 2026-08-18 | 2026-08-21 | 3d | 43d | 0d |  |  |  |  |  |  |  | Sex 21/08/26 |  |
| 1016 | 1.11.27.4 | Aprovação | 2d | 2026-08-28 | 2026-09-01 | 1015 | 2026-08-21 | 2026-08-25 | 2d | 43d |  |  |  |  |  |  |  |  | Ter 25/08/26 |  |
| 1017 | 1.11.28 | **MC-F0008-0302-MB-P-00001** | 25d | 2026-07-28 | 2026-09-01 |  | 2026-07-21 | 2026-08-25 | 25d | 43d |  | MC - Memória de Cálculo | 03 - REDUÇÃO | 02 - CARREGAMENTO | P - PROCESSO GUSA | A4 (210x297mm) | 10 | Revisão dos balanços de massa e energia utilidades | Ter 25/08/26 | Ter 21/07/26 |
| 1018 | 1.11.28.1 | Emissão inicial | 15d | 2026-07-28 | 2026-08-18 | 1008 | 2026-07-21 | 2026-08-11 | 15d | 43d | 0d |  |  |  |  |  |  |  | Ter 11/08/26 |  |
| 1019 | 1.11.28.2 | Avaliação do Cliente | 5d | 2026-08-18 | 2026-08-25 | 1018 | 2026-08-11 | 2026-08-18 | 5d | 43d | 0d |  |  |  |  |  |  |  | Ter 18/08/26 |  |
| 1020 | 1.11.28.3 | Atendimento de Comentário | 3d | 2026-08-25 | 2026-08-28 | 1019 | 2026-08-18 | 2026-08-21 | 3d | 43d | 0d |  |  |  |  |  |  |  | Sex 21/08/26 |  |
| 1021 | 1.11.28.4 | Aprovação | 2d | 2026-08-28 | 2026-09-01 | 1020 | 2026-08-21 | 2026-08-25 | 2d | 43d |  |  |  |  |  |  |  |  | Ter 25/08/26 |  |
| 1022 | 1.11.29 | **MC-F0008-0309-MB-P-00001** | 3d | 2026-07-28 | 2026-07-31 |  | 2026-07-21 | 2026-08-28 | 28d |  |  | MC - Memória de Cálculo | 03 - REDUÇÃO | 09 - FORNO TECNORED | P - PROCESSO GUSA | A4 (210x297mm) | 10 | Revisão dos balanços de massa e energia utilidades | Sex 28/08/26 | Ter 21/07/26 |
| 1023 | 1.11.29.1 | Emissão inicial | 15d | 2026-07-28 | 2026-08-18 | 1008 | 2026-07-21 | 2026-08-11 | 15d | 40d | 0d |  |  |  |  |  |  |  | Ter 11/08/26 |  |
| 1024 | 1.11.29.2 | Avaliação do Cliente | 5d | 2026-08-18 | 2026-08-25 | 1023 | 2026-08-11 | 2026-08-18 | 5d | 40d | 0d |  |  |  |  |  |  |  | Ter 18/08/26 |  |
| 1025 | 1.11.29.3 | Atendimento de Comentário | 3d | 2026-08-25 | 2026-08-28 | 1024 | 2026-08-18 | 2026-08-21 | 3d | 40d | 0d |  |  |  |  |  |  |  | Sex 21/08/26 |  |
| 1026 | 1.11.29.4 | Aprovação | 5d | 2026-08-28 | 2026-09-04 | 1025 | 2026-08-21 | 2026-08-28 | 5d | 40d |  |  |  |  |  |  |  |  | Sex 28/08/26 |  |
| 1027 | 1.11.30 | **MC-F0008-0309-MB-P-00002** | 13d | 2026-07-28 | 2026-08-14 |  | 2026-07-21 | 2026-08-25 | 25d |  |  | MC - Memória de Cálculo | 03 - REDUÇÃO | 09 - FORNO TECNORED | P - PROCESSO GUSA | A4 (210x297mm) | 10 | Revisão dos balanços de massa e energia utilidades | Ter 25/08/26 | Ter 21/07/26 |
| 1028 | 1.11.30.1 | Emissão inicial | 15d | 2026-07-28 | 2026-08-18 | 1008 | 2026-07-21 | 2026-08-11 | 15d | 43d | 0d |  |  |  |  |  |  |  | Ter 11/08/26 |  |
| 1029 | 1.11.30.2 | Avaliação do Cliente | 5d | 2026-08-18 | 2026-08-25 | 1028 | 2026-08-11 | 2026-08-18 | 5d | 43d | 0d |  |  |  |  |  |  |  | Ter 18/08/26 |  |
| 1030 | 1.11.30.3 | Atendimento de Comentário | 3d | 2026-08-25 | 2026-08-28 | 1029 | 2026-08-18 | 2026-08-21 | 3d | 43d | 0d |  |  |  |  |  |  |  | Sex 21/08/26 |  |
| 1031 | 1.11.30.4 | Aprovação | 2d | 2026-08-28 | 2026-09-01 | 1030 | 2026-08-21 | 2026-08-25 | 2d | 43d |  |  |  |  |  |  |  |  | Ter 25/08/26 |  |
| 1032 | 1.11.31 | **MC-F0008-0309-MB-P-00003** | 16d | 2026-07-28 | 2026-08-19 |  | 2026-07-21 | 2026-08-25 | 25d |  |  | MC - Memória de Cálculo | 03 - REDUÇÃO | 09 - FORNO TECNORED | P - PROCESSO GUSA | A4 (210x297mm) | 10 | Revisão dos balanços de massa e energia utilidades | Ter 25/08/26 | Ter 21/07/26 |
| 1033 | 1.11.31.1 | Emissão inicial | 15d | 2026-07-28 | 2026-08-18 | 1008 | 2026-07-21 | 2026-08-11 | 15d | 43d | 0d |  |  |  |  |  |  |  | Ter 11/08/26 |  |
| 1034 | 1.11.31.2 | Avaliação do Cliente | 5d | 2026-08-18 | 2026-08-25 | 1033 | 2026-08-11 | 2026-08-18 | 5d | 43d | 0d |  |  |  |  |  |  |  | Ter 18/08/26 |  |
| 1035 | 1.11.31.3 | Atendimento de Comentário | 3d | 2026-08-25 | 2026-08-28 | 1034 | 2026-08-18 | 2026-08-21 | 3d | 43d | 0d |  |  |  |  |  |  |  | Sex 21/08/26 |  |
| 1036 | 1.11.31.4 | Aprovação | 2d | 2026-08-28 | 2026-09-01 | 1035 | 2026-08-21 | 2026-08-25 | 2d | 43d |  |  |  |  |  |  |  |  | Ter 25/08/26 |  |

Notes:
- 1012: Título: ÍNDICE DE LINHAS
- 1017: Título: MEMORIAL DE CÁLCULO - PRÉ DIMENSIONAMENTO CAPACIDADE SISTEMA CARREGAMENTO
- 1022: Título: MEMORIAL DE CÁLCULO - ÁGUA INDUSTRIAL E ÁGUA DE PROCESSO (SPRAY DA CARGA)
- 1027: Título: MEMORIAL DE CÁLCULO - PRÉ DIMENSIONAMENTO DE ÁGUA DE RESFRIAMENTO
- 1032: Título: BALANÇO TÉRMICO - ÁGUA DE RESFRIAMENTO

| ID | WBS | Task | Duration | Start | Finish | Predecessors | Baseline start | Baseline finish | Baseline duration | Total slack | Free slack | Tipo de documento | Área | Sub-área | Disciplina | Título | Formato | Quantidade | Agrupamento Cecal | Término_LB_R0 | Início_LB_R0 |
| --- | --- | --- | --- | --- | --- | --- | --- | --- | --- | --- | --- | --- | --- | --- | --- | --- | --- | --- | --- | --- | --- |
| 1037 | 1.11.32 | **MC-F0008-0309-MB-P-00004** | 23d | 2026-07-28 | 2026-08-28 |  | 2026-07-21 | 2026-08-25 | 25d |  |  | MC - Memória de Cálculo | 03 - REDUÇÃO | 09 - FORNO TECNORED | P - PROCESSO GUSA | MEMORIAL DE CÁLCULO - PRÉ DIMENSIONAMENTO DE NITROGÊNIO | A4 (210x297mm) | 10 | Revisão dos balanços de massa e energia utilidades | Ter 25/08/26 | Ter 21/07/26 |
| 1038 | 1.11.32.1 | Emissão inicial | 15d | 2026-07-28 | 2026-08-18 | 1008 | 2026-07-21 | 2026-08-11 | 15d | 18d | 0d |  |  |  |  |  |  |  |  | Ter 11/08/26 |  |
| 1039 | 1.11.32.2 | Avaliação do Cliente | 5d | 2026-08-18 | 2026-08-25 | 1038 | 2026-08-11 | 2026-08-18 | 5d | 43d | 0d |  |  |  |  |  |  |  |  | Ter 18/08/26 |  |
| 1040 | 1.11.32.3 | Atendimento de Comentário | 3d | 2026-08-25 | 2026-08-28 | 1039 | 2026-08-18 | 2026-08-21 | 3d | 43d | 0d |  |  |  |  |  |  |  |  | Sex 21/08/26 |  |
| 1041 | 1.11.32.4 | Aprovação | 2d | 2026-08-28 | 2026-09-01 | 1040 | 2026-08-21 | 2026-08-25 | 2d | 43d |  |  |  |  |  |  |  |  |  | Ter 25/08/26 |  |
| 1042 | 1.11.33 | **MC-F0008-0309-MB-P-00005** | 10d | 2026-08-18 | 2026-09-01 |  | 2026-08-11 | 2026-09-15 | 25d |  |  | MC - Memória de Cálculo | 03 - REDUÇÃO | 09 - FORNO TECNORED | P - PROCESSO GUSA | MEMORIAL DE CÁLCULO - PRÉ DIMENSIONAMENTO DE OXIGÊNIO | A4 (210x297mm) | 10 | Revisão dos balanços de massa e energia utilidades | Ter 15/09/26 | Ter 11/08/26 |
| 1043 | 1.11.33.1 | Emissão inicial | 15d | 2026-08-18 | 2026-09-08 | 1038 | 2026-08-11 | 2026-09-01 | 15d | 28d | 0d |  |  |  |  |  |  |  |  | Ter 01/09/26 |  |
| 1044 | 1.11.33.2 | Avaliação do Cliente | 5d | 2026-09-08 | 2026-09-15 | 1043 | 2026-09-01 | 2026-09-08 | 5d | 28d | 0d |  |  |  |  |  |  |  |  | Ter 08/09/26 |  |
| 1045 | 1.11.33.3 | Atendimento de Comentário | 3d | 2026-09-15 | 2026-09-18 | 1044 | 2026-09-08 | 2026-09-11 | 3d | 28d | 0d |  |  |  |  |  |  |  |  | Sex 11/09/26 |  |
| 1046 | 1.11.33.4 | Aprovação | 2d | 2026-09-18 | 2026-09-22 | 1045 | 2026-09-11 | 2026-09-15 | 2d | 28d |  |  |  |  |  |  |  |  |  | Ter 15/09/26 |  |
| 1047 | 1.11.34 | **MC-F0008-0309-MB-P-00006** | 12d | 2026-08-18 | 2026-09-03 |  | 2026-08-11 | 2026-09-15 | 25d |  |  | MC - Memória de Cálculo | 03 - REDUÇÃO | 09 - FORNO TECNORED | P - PROCESSO GUSA | MEMORIAL DE CÁLCULO - DISTRIBUIÇÃO DE ÁGUA POTÁVEL | A4 (210x297mm) | 10 | Revisão dos balanços de massa e energia utilidades | Ter 15/09/26 | Ter 11/08/26 |
| 1048 | 1.11.34.1 | Emissão inicial | 15d | 2026-08-18 | 2026-09-08 | 1038 | 2026-08-11 | 2026-09-01 | 15d | 28d | 0d |  |  |  |  |  |  |  |  | Ter 01/09/26 |  |
| 1049 | 1.11.34.2 | Avaliação do Cliente | 5d | 2026-09-08 | 2026-09-15 | 1048 | 2026-09-01 | 2026-09-08 | 5d | 28d | 0d |  |  |  |  |  |  |  |  | Ter 08/09/26 |  |
| 1050 | 1.11.34.3 | Atendimento de Comentário | 3d | 2026-09-15 | 2026-09-18 | 1049 | 2026-09-08 | 2026-09-11 | 3d | 28d | 0d |  |  |  |  |  |  |  |  | Sex 11/09/26 |  |
| 1051 | 1.11.34.4 | Aprovação | 2d | 2026-09-18 | 2026-09-22 | 1050 | 2026-09-11 | 2026-09-15 | 2d | 28d |  |  |  |  |  |  |  |  |  | Ter 15/09/26 |  |
| 1052 | 1.11.35 | **MC-F0008-0309-MB-P-00007** | 18d | 2026-08-18 | 2026-09-11 |  | 2026-08-11 | 2026-09-18 | 28d |  |  | MC - Memória de Cálculo | 03 - REDUÇÃO | 09 - FORNO TECNORED | P - PROCESSO GUSA | MEMORIAL DE CÁLCULO - AR COMPRIMIDO | A4 (210x297mm) | 10 | Revisão dos balanços de massa e energia utilidades | Sex 18/09/26 | Ter 11/08/26 |
| 1053 | 1.11.35.1 | Emissão inicial | 15d | 2026-08-18 | 2026-09-08 | 1038 | 2026-08-11 | 2026-09-01 | 15d | 18d | 0d |  |  |  |  |  |  |  |  | Ter 01/09/26 |  |
| 1054 | 1.11.35.2 | Avaliação do Cliente | 5d | 2026-09-08 | 2026-09-15 | 1053 | 2026-09-01 | 2026-09-08 | 5d | 25d | 0d |  |  |  |  |  |  |  |  | Ter 08/09/26 |  |
| 1055 | 1.11.35.3 | Atendimento de Comentário | 3d | 2026-09-15 | 2026-09-18 | 1054 | 2026-09-08 | 2026-09-11 | 3d | 25d | 0d |  |  |  |  |  |  |  |  | Sex 11/09/26 |  |
| 1056 | 1.11.35.4 | Aprovação | 5d | 2026-09-18 | 2026-09-25 | 1055 | 2026-09-11 | 2026-09-18 | 5d | 25d |  |  |  |  |  |  |  |  |  | Sex 18/09/26 |  |
| 1057 | 1.11.36 | **MD-F0008-0302-MB-P-00001** | 25d | 2026-08-25 | 2026-09-29 |  | 2026-04-23 | 2026-09-22 | 25d | 23d |  | MD - Memorial Descritivo | 03 - REDUÇÃO | 02 - CARREGAMENTO | P - PROCESSO GUSA | MEMORIAL DESCRITIVO SISTEMA DE CARREGAMENTO | A4 (210x297mm) | 10 | Revisão do sistema de carregamento | Ter 22/09/26 | Qua 19/08/26 |
| 1058 | 1.11.36.1 | Emissão inicial | 15d | 2026-08-25 | 2026-09-15 | 151 | 2026-04-23 | 2026-09-08 | 15d | 23d | 0d |  |  |  |  |  |  |  |  | Ter 08/09/26 |  |
| 1059 | 1.11.36.2 | Avaliação do Cliente | 5d | 2026-09-15 | 2026-09-22 | 1058 | 2026-05-14 | 2026-09-15 | 5d | 23d | 0d |  |  |  |  |  |  |  |  | Ter 15/09/26 |  |
| 1060 | 1.11.36.3 | Atendimento de Comentário | 3d | 2026-09-22 | 2026-09-25 | 1059 | 2026-05-21 | 2026-09-18 | 3d | 23d | 0d |  |  |  |  |  |  |  |  | Sex 18/09/26 |  |
| 1061 | 1.11.36.4 | Aprovação | 2d | 2026-09-25 | 2026-09-29 | 1060 | 2026-05-26 | 2026-09-22 | 2d | 23d |  |  |  |  |  |  |  |  |  | Ter 22/09/26 |  |

| ID | WBS | Task | Duration | Start | Finish | Predecessors | Complete | Remaining | Baseline start | Baseline finish | Baseline duration | Total slack | Free slack | Constraint | Tipo de documento | Área | Sub-área | Disciplina | Formato | Quantidade | Agrupamento Cecal | Término_LB_R0 | Início_LB_R0 |
| --- | --- | --- | --- | --- | --- | --- | --- | --- | --- | --- | --- | --- | --- | --- | --- | --- | --- | --- | --- | --- | --- | --- | --- |
| 1062 | 1.11.37 | **MD-F0008-0309-MB-P-00001** | 24d | 2026-08-25 | 2026-09-28 |  |  |  | 2026-08-19 | 2026-09-22 | 25d |  |  |  | MD - Memorial Descritivo | 03 - REDUÇÃO | 09 - FORNO TECNORED | P - PROCESSO GUSA | A4 (210x297mm) | 10 | Revisão dos fluxogramas | Ter 22/09/26 | Qua 19/08/26 |
| 1063 | 1.11.37.1 | Emissão inicial | 15d | 2026-08-25 | 2026-09-15 | 151 |  |  | 2026-08-19 | 2026-09-08 | 15d | 23d | 0d |  |  |  |  |  |  |  |  | Ter 08/09/26 |  |
| 1064 | 1.11.37.2 | Avaliação do Cliente | 5d | 2026-09-15 | 2026-09-22 | 1063 |  |  | 2026-09-09 | 2026-09-15 | 5d | 23d | 0d |  |  |  |  |  |  |  |  | Ter 15/09/26 |  |
| 1065 | 1.11.37.3 | Atendimento de Comentário | 3d | 2026-09-22 | 2026-09-25 | 1064 |  |  | 2026-09-16 | 2026-09-18 | 3d | 23d | 0d |  |  |  |  |  |  |  |  | Sex 18/09/26 |  |
| 1066 | 1.11.37.4 | Aprovação | 2d | 2026-09-25 | 2026-09-29 | 1065 |  |  | 2026-09-21 | 2026-09-22 | 2d | 23d |  |  |  |  |  |  |  |  |  | Ter 22/09/26 |  |
| 1067 | 1.11.38 | **MD-F0008-0309-MB-P-00002** | 25d | 2026-08-25 | 2026-09-29 |  |  |  | 2026-08-19 | 2026-09-22 | 25d | 23d |  |  | MD - Memorial Descritivo | 03 - REDUÇÃO | 09 - FORNO TECNORED | P - PROCESSO GUSA | A4 (210x297mm) | 10 | Revisão dos fluxogramas | Ter 22/09/26 | Qua 19/08/26 |
| 1068 | 1.11.38.1 | Emissão inicial | 15d | 2026-08-25 | 2026-09-15 | 151 |  |  | 2026-08-19 | 2026-09-08 | 15d | 23d | 0d |  |  |  |  |  |  |  |  | Ter 08/09/26 |  |
| 1069 | 1.11.38.2 | Avaliação do Cliente | 5d | 2026-09-15 | 2026-09-22 | 1068 |  |  | 2026-09-09 | 2026-09-15 | 5d | 23d | 0d |  |  |  |  |  |  |  |  | Ter 15/09/26 |  |
| 1070 | 1.11.38.3 | Atendimento de Comentário | 3d | 2026-09-22 | 2026-09-25 | 1069 |  |  | 2026-09-16 | 2026-09-18 | 3d | 23d | 0d |  |  |  |  |  |  |  |  | Sex 18/09/26 |  |
| 1071 | 1.11.38.4 | Aprovação | 2d | 2026-09-25 | 2026-09-29 | 1070 |  |  | 2026-09-21 | 2026-09-22 | 2d | 23d |  |  |  |  |  |  |  |  |  | Ter 22/09/26 |  |
| 1072 | 1.11.39 | **RT-F0008-0309-MB-P-00001** | 20d | 2026-10-02 | 2026-10-30 | 882 |  |  | 2026-08-19 | 2026-09-15 | 20d | 0d |  |  | RT - Relatório Técnico | 03 - REDUÇÃO | 09 - FORNO TECNORED | P - PROCESSO GUSA | A4 (210x297mm) | 15 | Revisão do projeto do forno - carcaça e refratário | Ter 15/09/26 | Qua 19/08/26 |
| 1073 | 1.11.39.1 | Emissão inicial | 10d | 2026-10-02 | 2026-10-16 | 151 |  |  | 2026-08-19 | 2026-09-01 | 10d | 0d |  |  |  |  |  |  |  |  |  | Ter 01/09/26 |  |
| 1074 | 1.11.39.2 | Avaliação do Cliente | 5d | 2026-10-16 | 2026-10-23 | 1073 |  |  | 2026-09-02 | 2026-09-08 | 5d | 0d |  |  |  |  |  |  |  |  |  | Ter 08/09/26 |  |
| 1075 | 1.11.39.3 | Atendimento de Comentário | 3d | 2026-10-23 | 2026-10-28 | 1074 |  |  | 2026-09-09 | 2026-09-11 | 3d | 0d |  |  |  |  |  |  |  |  |  | Sex 11/09/26 |  |
| 1076 | 1.11.39.4 | Aprovação | 2d | 2026-10-28 | 2026-10-30 | 1075 |  |  | 2026-09-14 | 2026-09-15 | 2d | 0d |  |  |  |  |  |  |  |  |  | Ter 15/09/26 |  |
| 1077 | 1.12 | **DOCUMENTOS QUE NÃO SERÃO REVISADOS** | 127.88d? | 2026-04-23 A | 2026-10-19 |  | 21% | 101.59d? | 2026-04-23 | 2026-04-23 | 1d? | 9d |  |  |  |  |  |  |  |  |  | Qui 23/04/26 | Qui 23/04/26 |
| 1078 | 1.12.1 | AG-F0005-0309-MB-A-00003 | 1d? | 2026-04-23 A | 2026-04-23 A |  | 100% |  | 2026-04-23 | 2026-04-23 | 1d? |  |  |  |  |  |  | NÃO REVISADOS |  |  |  | Qui 23/04/26 |  |
| 1079 | 1.12.2 | AG-F0005-0309-MB-A-00004 | 1d? | 2026-04-23 A | 2026-04-23 A |  | 100% |  | 2026-04-23 | 2026-04-23 | 1d? |  |  |  |  |  |  | NÃO REVISADOS |  |  |  | Qui 23/04/26 |  |
| 1080 | 1.12.3 | AG-F0005-0309-MB-A-00005 | 1d? | 2026-04-23 A | 2026-04-23 A |  | 100% |  | 2026-04-23 | 2026-04-23 | 1d? |  |  |  |  |  |  |  |  |  |  | Qui 23/04/26 |  |
| 1081 | 1.12.4 | MC-F0005-0309-MB-C-00001 | 1d? | 2026-04-23 A | 2026-04-23 A |  | 100% |  | 2026-04-23 | 2026-04-23 | 1d? |  |  |  |  |  |  | NÃO REVISADOS |  |  |  | Qui 23/04/26 |  |
| 1082 | 1.12.5 | MC-F0005-0309-MB-C-00002 | 1d? | 2026-04-23 A | 2026-04-23 A |  | 100% |  | 2026-04-23 | 2026-04-23 | 1d? |  |  |  |  |  |  | NÃO REVISADOS |  |  |  | Qui 23/04/26 |  |
| 1083 | 1.12.6 | MC-F0005-0309-MB-C-00003 | 1d? | 2026-04-23 A | 2026-04-23 A |  | 100% |  | 2026-04-23 | 2026-04-23 | 1d? |  |  |  |  |  |  | NÃO REVISADOS |  |  |  | Qui 23/04/26 |  |
| 1084 | 1.12.7 | MC-F0005-0309-MB-C-00004 | 1d? | 2026-04-23 A | 2026-04-23 A |  | 100% |  | 2026-04-23 | 2026-04-23 | 1d? |  |  |  |  |  |  | NÃO REVISADOS |  |  |  | Qui 23/04/26 |  |
| 1085 | 1.12.8 | MC-F0005-0309-MB-C-00005 | 1d? | 2026-04-23 A | 2026-04-23 A |  | 100% |  | 2026-04-23 | 2026-04-23 | 1d? |  |  |  |  |  |  | NÃO REVISADOS |  |  |  | Qui 23/04/26 |  |
| 1086 | 1.12.9 | OI-F0005-0309-MB-G-00001 | 1d? | 2026-04-23 A | 2026-04-23 A |  | 100% |  | 2026-04-23 | 2026-04-23 | 1d? |  |  |  |  |  |  | NÃO REVISADOS |  |  |  | Qui 23/04/26 |  |
| 1087 | 1.12.10 | OI-F0005-0309-MB-G-00002 | 1d? | 2026-04-23 A | 2026-04-23 A |  | 100% |  | 2026-04-23 | 2026-04-23 | 1d? |  |  |  |  |  |  | NÃO REVISADOS |  |  |  | Qui 23/04/26 |  |
| 1088 | 1.12.11 | PX-F0005-0309-MB-G-00001 | 1d? | 2026-04-23 A | 2026-04-23 A |  | 100% |  | 2026-04-23 | 2026-04-23 | 1d? |  |  |  |  |  |  | NÃO REVISADOS |  |  |  | Qui 23/04/26 |  |
| 1089 | 1.12.12 | MD-F0005-0309-MB-G-00001 | 1d? | 2026-04-23 A | 2026-04-23 A |  | 100% |  | 2026-04-23 | 2026-04-23 | 1d? |  |  |  |  |  |  | NÃO REVISADOS |  |  |  | Qui 23/04/26 |  |
| 1090 | 1.12.13 | FD-F0005-0309-MB-J-00001 | 1d? | 2026-04-23 A | 2026-04-23 A |  | 100% |  | 2026-04-23 | 2026-04-23 | 1d? |  |  |  |  |  |  | NÃO REVISADOS |  |  |  | Qui 23/04/26 |  |
| 1091 | 1.12.14 | FD-F0005-0309-MB-J-00010 | 1d? | 2026-04-23 A | 2026-04-23 A |  | 100% |  | 2026-04-23 | 2026-04-23 | 1d? |  |  |  |  |  |  | NÃO REVISADOS |  |  |  | Qui 23/04/26 |  |
| 1092 | 1.12.15 | FD-F0005-0309-MB-J-00011 | 1d? | 2026-04-23 A | 2026-04-23 A |  | 100% |  | 2026-04-23 | 2026-04-23 | 1d? |  |  |  |  |  |  | NÃO REVISADOS |  |  |  | Qui 23/04/26 |  |
| 1093 | 1.12.16 | FD-F0005-0309-MB-J-00014 | 1d? | 2026-04-23 A | 2026-04-23 A |  | 100% |  | 2026-04-23 | 2026-04-23 | 1d? |  |  |  |  |  |  | NÃO REVISADOS |  |  |  | Qui 23/04/26 |  |
| 1094 | 1.12.17 | FD-F0005-0309-MB-J-00015 | 1d? | 2026-04-23 A | 2026-04-23 A |  | 100% |  | 2026-04-23 | 2026-04-23 | 1d? |  |  |  |  |  |  | NÃO REVISADOS |  |  |  | Qui 23/04/26 |  |
| 1095 | 1.12.18 | FD-F0005-0309-MB-J-00017 | 1d? | 2026-04-23 A | 2026-04-23 A |  | 100% |  | 2026-04-23 | 2026-04-23 | 1d? |  |  |  |  |  |  | NÃO REVISADOS |  |  |  | Qui 23/04/26 |  |
| 1096 | 1.12.19 | FD-F0005-0309-MB-J-00022 | 1d? | 2026-04-23 A | 2026-04-23 A |  | 100% |  | 2026-04-23 | 2026-04-23 | 1d? |  |  |  |  |  |  | NÃO REVISADOS |  |  |  | Qui 23/04/26 |  |
| 1097 | 1.12.20 | FD-F0005-0309-MB-J-00023 | 1d? | 2026-04-23 A | 2026-04-23 A |  | 100% |  | 2026-04-23 | 2026-04-23 | 1d? |  |  |  |  |  |  | NÃO REVISADOS |  |  |  | Qui 23/04/26 |  |
| 1098 | 1.12.21 | FD-F0005-0309-MB-J-00024 | 1d? | 2026-04-23 A | 2026-04-23 A |  | 100% |  | 2026-04-23 | 2026-04-23 | 1d? |  |  |  |  |  |  | NÃO REVISADOS |  |  |  | Qui 23/04/26 |  |
| 1099 | 1.12.22 | ET-F0005-0309-MB-J-00001 | 1d? | 2026-04-23 A | 2026-04-23 A |  | 100% |  | 2026-04-23 | 2026-04-23 | 1d? |  |  |  |  |  |  | NÃO REVISADOS |  |  |  | Qui 23/04/26 |  |
| 1100 | 1.12.23 | ET-F0005-0309-MB-J-00002 | 1d? | 2026-04-23 A | 2026-04-23 A |  | 100% |  | 2026-04-23 | 2026-04-23 | 1d? |  |  |  |  |  |  | NÃO REVISADOS |  |  |  | Qui 23/04/26 |  |
| 1101 | 1.12.24 | AC-F0005-0309-MB-J-00001 | 1d? | 2026-04-23 A | 2026-04-23 A |  | 100% |  | 2026-04-23 | 2026-04-23 | 1d? |  |  |  |  |  |  | NÃO REVISADOS |  |  |  | Qui 23/04/26 |  |
| 1102 | 1.12.25 | FD-F0005-0300-MB-J-00001 | 1d? | 2026-04-23 A | 2026-04-23 A |  | 100% |  | 2026-04-23 | 2026-04-23 | 1d? |  |  |  |  |  |  | NÃO REVISADOS |  |  |  | Qui 23/04/26 |  |
| 1103 | 1.12.26 | FD-F0005-0300-MB-J-00002 | 1d? | 2026-04-23 A | 2026-04-23 A |  | 100% |  | 2026-04-23 | 2026-04-23 | 1d? |  |  |  |  |  |  | NÃO REVISADOS |  |  |  | Qui 23/04/26 |  |
| 1104 | 1.12.27 | FD-F0005-0300-MB-J-00003 | 1d? | 2026-04-23 A | 2026-04-23 A |  | 100% |  | 2026-04-23 | 2026-04-23 | 1d? |  |  |  |  |  |  | NÃO REVISADOS |  |  |  | Qui 23/04/26 |  |
| 1105 | 1.12.28 | FD-F0005-0300-MB-J-00004 | 1d? | 2026-04-23 A | 2026-04-23 A |  | 100% |  | 2026-04-23 | 2026-04-23 | 1d? |  |  |  |  |  |  | NÃO REVISADOS |  |  |  | Qui 23/04/26 |  |
| 1106 | 1.12.29 | FD-F0005-0300-MB-J-00005 | 1d? | 2026-04-23 A | 2026-04-23 A |  | 100% |  | 2026-04-23 | 2026-04-23 | 1d? |  |  |  |  |  |  | NÃO REVISADOS |  |  |  | Qui 23/04/26 |  |
| 1107 | 1.12.30 | FD-F0005-0300-MB-J-00006 | 1d? | 2026-04-23 A | 2026-04-23 A |  | 100% |  | 2026-04-23 | 2026-04-23 | 1d? |  |  |  |  |  |  | NÃO REVISADOS |  |  |  | Qui 23/04/26 |  |
| 1108 | 1.12.31 | FD-F0005-0300-MB-J-00007 | 1d? | 2026-04-23 A | 2026-04-23 A |  | 100% |  | 2026-04-23 | 2026-04-23 | 1d? |  |  |  |  |  |  | NÃO REVISADOS |  |  |  | Qui 23/04/26 |  |
| 1109 | 1.12.32 | FD-F0005-0300-MB-J-00008 | 1d? | 2026-04-23 A | 2026-04-23 A |  | 100% |  | 2026-04-23 | 2026-04-23 | 1d? |  |  |  |  |  |  | NÃO REVISADOS |  |  |  | Qui 23/04/26 |  |
| 1110 | 1.12.33 | FD-F0005-0300-MB-J-00009 | 1d? | 2026-04-23 A | 2026-04-23 A |  | 100% |  | 2026-04-23 | 2026-04-23 | 1d? |  |  |  |  |  |  | NÃO REVISADOS |  |  |  | Qui 23/04/26 |  |
| 1111 | 1.12.34 | AG-F0005-0309-MB-G-00001 | 1d? | 2026-04-23 A | 2026-04-23 A |  | 100% |  | 2026-04-23 | 2026-04-23 | 1d? |  |  |  |  |  |  | NÃO REVISADOS |  |  |  | Qui 23/04/26 |  |
| 1112 | 1.12.35 | AG-F0005-0309-MB-G-00002 | 1d? | 2026-04-23 A | 2026-04-23 A |  | 100% |  | 2026-04-23 | 2026-04-23 | 1d? |  |  |  |  |  |  | NÃO REVISADOS |  |  |  | Qui 23/04/26 |  |
| 1113 | 1.12.36 | AG-F0005-0309-MB-G-00003 | 1d? | 2026-04-23 A | 2026-04-23 A |  | 100% |  | 2026-04-23 | 2026-04-23 | 1d? |  |  |  |  |  |  | NÃO REVISADOS |  |  |  | Qui 23/04/26 |  |
| 1114 | 1.12.37 | RT-F0005-0302-MB-L-00002 | 1d? | 2026-04-23 A | 2026-04-23 A |  | 100% |  | 2026-04-23 | 2026-04-23 | 1d? |  |  |  |  |  |  | NÃO REVISADOS |  |  |  | Qui 23/04/26 |  |
| 1115 | 1.12.38 | RT-F0005-0302-MB-L-00003 | 1d? | 2026-04-23 A | 2026-04-23 A |  | 100% |  | 2026-04-23 | 2026-04-23 | 1d? |  |  |  |  |  |  | NÃO REVISADOS |  |  |  | Qui 23/04/26 |  |
| 1116 | 1.12.39 | RT-F0005-0302-MB-L-00004 | 1d? | 2026-04-23 A | 2026-04-23 A |  | 100% |  | 2026-04-23 | 2026-04-23 | 1d? |  |  |  |  |  |  | NÃO REVISADOS |  |  |  | Qui 23/04/26 |  |
| 1117 | 1.12.40 | RT-F0005-0302-MB-L-00005 | 1d? | 2026-04-23 A | 2026-04-23 A |  | 100% |  | 2026-04-23 | 2026-04-23 | 1d? |  |  |  |  |  |  | NÃO REVISADOS |  |  |  | Qui 23/04/26 |  |
| 1118 | 1.12.41 | RT-F0005-0302-MB-L-00006 | 1d? | 2026-04-23 A | 2026-04-23 A |  | 100% |  | 2026-04-23 | 2026-04-23 | 1d? |  |  |  |  |  |  | NÃO REVISADOS |  |  |  | Qui 23/04/26 |  |
| 1119 | 1.12.42 | RT-F0005-0302-MB-L-00007 | 1d? | 2026-04-23 A | 2026-04-23 A |  | 100% |  | 2026-04-23 | 2026-04-23 | 1d? |  |  |  |  |  |  | NÃO REVISADOS |  |  |  | Qui 23/04/26 |  |
| 1120 | 1.12.43 | DT-F0005-0309-MB-L-00020 | 1d? | 2026-04-23 A | 2026-04-23 A |  | 100% |  | 2026-04-23 | 2026-04-23 | 1d? |  |  |  |  |  |  | NÃO REVISADOS |  |  |  | Qui 23/04/26 |  |
| 1121 | 1.12.44 | OI-F0005-0309-MB-M-00001 | 1d? | 2026-04-23 A | 2026-04-23 A |  | 100% |  | 2026-04-23 | 2026-04-23 | 1d? |  |  |  |  |  |  | NÃO REVISADOS |  |  |  | Qui 23/04/26 |  |
| 1122 | 1.12.45 | RT-F0005-0309-MB-P-00002 | 1d? | 2026-04-23 A | 2026-04-23 A |  | 100% |  | 2026-04-23 | 2026-04-23 | 1d? |  |  |  |  |  |  | NÃO REVISADOS |  |  |  | Qui 23/04/26 |  |
| 1123 | 1.12.46 | RT-F0005-0309-MB-P-00003 | 1d? | 2026-04-23 A | 2026-04-23 A |  | 100% |  | 2026-04-23 | 2026-04-23 | 1d? |  |  |  |  |  |  | NÃO REVISADOS |  |  |  | Qui 23/04/26 |  |
| 1124 | 1.12.47 | MC-F0005-0309-MB-S-00001 | 1d? | 2026-04-23 A | 2026-04-23 A |  | 100% |  | 2026-04-23 | 2026-04-23 | 1d? |  |  |  |  |  |  | NÃO REVISADOS |  |  |  | Qui 23/04/26 |  |
| 1125 | 1.12.48 | MC-F0005-0309-MB-S-00002 | 1d? | 2026-04-23 A | 2026-04-23 A |  | 100% |  | 2026-04-23 | 2026-04-23 | 1d? |  |  |  |  |  |  | NÃO REVISADOS |  |  |  | Qui 23/04/26 |  |
| 1126 | 1.12.49 | FD-F0005-0309-MB-T-00001 | 1d? | 2026-04-23 A | 2026-04-23 A |  | 100% |  | 2026-04-23 | 2026-04-23 | 1d? |  |  |  |  |  |  | NÃO REVISADOS |  |  |  | Qui 23/04/26 |  |
| 1127 | 1.12.50 | FD-F0005-0309-MB-T-00002 | 1d? | 2026-04-23 A | 2026-04-23 A |  | 100% |  | 2026-04-23 | 2026-04-23 | 1d? |  |  |  |  |  |  | NÃO REVISADOS |  |  |  | Qui 23/04/26 |  |
| 1128 | 1.12.51 | CP-F0005-0309-MB-S-00001 | 1d? | 2026-04-23 A | 2026-04-23 A |  | 100% |  | 2026-04-23 | 2026-04-23 | 1d? |  |  |  |  |  |  | NÃO REVISADOS |  |  |  | Qui 23/04/26 |  |
| 1129 | 1.12.52 | DT-F0005-0309-MB-E-00001 | 109.88d? | 2026-04-23 A | 2026-09-23 |  | 1% | 108.88d? | 2026-04-23 | 2026-04-23 | 1d? | 27d |  | finish no earlier than 2026-09-23 |  |  |  | NÃO REVISADOS |  |  |  | Qui 23/04/26 |  |
| 1130 | 1.12.53 | LE-F0008-0309-MB-M-00002 | 1d? | 2026-04-23 A | 2026-04-23 A |  | 100% |  | 2026-04-23 | 2026-04-23 | 1d? |  |  |  |  |  |  | NÃO REVISADOS |  |  |  | Qui 23/04/26 |  |
| 1131 | 1.12.54 | MC-F0008-0309-MB-E-00001 | 1d? | 2026-04-23 A | 2026-04-23 A |  | 100% |  | 2026-04-23 | 2026-04-23 | 1d? |  |  |  |  |  |  | NÃO REVISADOS |  |  |  | Qui 23/04/26 |  |

Notes:
- 1062: Título: MEMORIAL DESCRITIVO DE PROCESSO
- 1067: Título: MEMORIAL DESCRITIVO DE PROCESSO FORNO
- 1072: Título: ANALISE DO PRELIMINAR ESTRUTURAL DA CARCAÇA FORNO
- 1078: Título: SALA OPERADORES
- 1079: Título: VESTIÁRIO / SANITÁRIO
- 1081: Título: PRÉ-DIMENSIONAMENTO DE CONCRETO FUNDAÇÃO FORNO
- 1082: Título: PRÉ-DIMENSIONAMENTO DE CONCRETO TORRE DE RESFRIAMENTO
- 1083: Título: PRÉ-DIMENSIONAMENTO DE CONCRETO SALA ELÉTRICA
- 1084: Título: PRÉ-DIMENSIONAMENTO DE CONCRETO SALA OPERADORES
- 1085: Título: PRÉ-DIMENSIONAMENTO DE CONCRETO PIPE RACK
- 1086: Título: ESTIMATIVA DE CUSTO MONTAGEM ELÉTRICA
- 1087: Título: ESTIMATIVA DE CUSTO INSTRUMENTAÇÃO
- 1088: Título: PLANILHA CAPEX
- 1089: Título: MEMORIAL DESCRITIVO - DADOS PARA PREENCHIMENTO DO MCE
- 1090: Título: FOLHA DE DADOS MEDIDORES ELETROMAGNÉTICOS
- 1091: Título: FOLHA DE DADOS RADAR TYPE LEVEL TRANSMITTER
- 1092: Título: FOLHA DE DADOS TEMPERATURE TRANSMITTER
- 1093: Título: FOLHA DE DADOS ROTAMETER WITH TRANSMITTER
- 1094: Título: FOLHA DE DADOS MAGNETOSTRICTIVE LEVEL TRANSMITTER
- 1095: Título: FOLHA DE DADOS ULTRASONIC LEVEL SWITCH
- 1096: Título: FOLHA DE DADOS ULTRASONIC LEVEL TRANSMITTER
- 1097: Título: FOLHA DE DADOS ROTAMETER
- 1098: Título: FOLHA DE DADOS ULTRASONIC LEVEL GAUGE
- 1099: Título: ESPECIFICAÇÃO TÉCNICA ANALIZADOR
- 1100: Título: ESPECIFICAÇÃO TÉCNICA SISTEMA DE CONTROLE
- 1101: Título: ARQUITETURA DE REDE
- 1102: Título: FOLHAS DE DADOS DIFFERENTIAL PRESSURE TRANSMITTER
- 1103: Título: FOLHA DE DADOSTEMPERATURE SENSOR
- 1104: Título: FOLHA DE DADOS PRESSURE GAUGE
- 1105: Título: FOLHA DE DADOS ORIFICE PLATE
- 1106: Título: FOLHA DE DADOS PRESSURE REGULATOR
- 1107: Título: FOLHA DE DADOS VORTEX TRANSMITTER
- 1108: Título: FOLHA DE DADOS PNEUMATIC ACTUATED BUTTERFLY VALVE
- 1109: Título: FOLHAS DE DADOS PRESSURE AND LEVEL TRANSMITTER
- 1110: Título: FOLHA DE DADOS PNEUMATIC ACTUATED BALL VALVE
- 1111: Título: PLANTA E CORTES DE LEGALIZAÇÃO - IMPLANTAÇÃO PARCIAL
- 1112: Título: PLANTA E CORTES DE LEGALIZAÇÃO - PLANTA NÍVEL 0,00m / +3,224m
- 1113: Título: "PLANTA E CORTES DE LEGALIZAÇÃO - CORTES A-A, B-B, C-C, D-D E
- 1114: Título: PLANO DE CARGA NIVEL CORREIA REVERSIVEL E MOVEL
- 1115: Título: PLANO DE CARGA NIVEL SILOS DE PROCESSO
- 1116: Título: PLANO DE CARGA NIVEL SILOS DE BUFFER
- 1117: Título: PLANO DE CARGA SUPORTES TUBULACAO BAR
- 1118: Título: PLANO DE CARGA SUPORTES TUBULACAO COMBUSTIVEL LATERAL
- 1119: Título: PLANO DE CARGA SUPORTES TUBULACAO BOOSTER
- 1120: Título: VÁLVULA DE ISOLAMENTO DE GÁS DO TOPO
- 1121: Título: ESTIMATIVA DE CUSTOS EQUIPAMENTOS UTILIDADES
- 1122: Título: ANÁLISE DO PRELIMINAR ESTRUTURAL DA CARCAÇA FORNO
- 1123: Título: SIMULAÇOES TERMICAS PARA SISTEMA REFRIGERACAO E REFRATARIOS
- 1124: Título: MEMÓRIA DE CÁLCULO DE METÁLICA PLAFATORMA FILTRO
- 1125: Título: MEMÓRIA DE CÁLCULO DE METÁLICA SALA OPERADORES
- 1126: Título: FOLHA DE DADOS JUNTAS DE EXPANSÃO
- 1127: Título: FOLHA DE DADOS SUPORTE DE MOLAS
- 1128: Título: FOLHA DE DADOS SUPORTE DE MOLAS
- 1129: Título: FOLHA DE DADOS SUPORTE DE MOLAS
- 1130: Título: FOLHA DE DADOS SUPORTE DE MOLAS
- 1131: Título: FOLHA DE DADOS SUPORTE DE MOLAS

| ID | WBS | Task | Duration | Start | Finish | Complete | Remaining | Baseline start | Baseline finish | Baseline duration | Total slack | Constraint | Disciplina | Título | Término_LB_R0 |
| --- | --- | --- | --- | --- | --- | --- | --- | --- | --- | --- | --- | --- | --- | --- | --- |
| 1132 | 1.12.55 | MC-F0008-0309-MB-E-00002 | 1d? | 2026-04-23 A | 2026-04-23 A | 100% |  | 2026-04-23 | 2026-04-23 | 1d? |  |  | NÃO REVISADOS | FOLHA DE DADOS SUPORTE DE MOLAS | Qui 23/04/26 |
| 1133 | 1.12.56 | MC-F0008-0309-MB-E-00003 | 1d? | 2026-04-23 A | 2026-04-23 A | 100% |  | 2026-04-23 | 2026-04-23 | 1d? |  |  | NÃO REVISADOS | FOLHA DE DADOS SUPORTE DE MOLAS | Qui 23/04/26 |
| 1134 | 1.12.57 | MC-F0008-0309-MB-S-00001 | 1d? | 2026-04-23 A | 2026-04-23 A | 100% |  | 2026-04-23 | 2026-04-23 | 1d? |  |  | NÃO REVISADOS | FOLHA DE DADOS SUPORTE DE MOLAS | Qui 23/04/26 |
| 1135 | 1.12.58 | PL-F0008-0309-MB-S-00001 | 1d? | 2026-04-23 A | 2026-04-23 A | 100% |  | 2026-04-23 | 2026-04-23 | 1d? |  |  | NÃO REVISADOS | FOLHA DE DADOS SUPORTE DE MOLAS | Qui 23/04/26 |
| 1136 | 1.12.59 | PQ-F0008-0309-MB-J-00001 | 127.88d? | 2026-04-23 A | 2026-10-19 | 1% | 126.88d? | 2026-04-23 | 2026-04-23 | 1d? | 9d | finish no earlier than 2026-10-19 |  |  | Qui 23/04/26 |
| 1137 | 1.12.60 | RT-F0005-0309-MB-T-00001 | 1d? | 2026-04-23 A | 2026-04-23 A | 100% |  | 2026-04-23 | 2026-04-23 | 1d? |  |  | NÃO REVISADOS | PLANO DE CARGA SUPORTES TUBULACAO BOOSTER | Qui 23/04/26 |
| 1138 | 1.12.61 | RT-F0005-0309-MB-T-00002 | 1d? | 2026-04-23 A | 2026-04-23 A | 100% |  | 2026-04-23 | 2026-04-23 | 1d? |  |  | NÃO REVISADOS | PLANO DE CARGA SUPORTES TUBULACAO BOOSTER | Qui 23/04/26 |
