# CR-F0008-0000-GE-F-00001 23042026

Schedule from MS Project, 2026-03-31 to 2026-10-06, status date 2026-06-16, A marks actual dates.

## Calendars

- Padrão: Mon-Fri 09:00-12:00, 13:00-18:00; Sat-Sun off.

## Schedule

| ID | WBS | Task | Type | Duration | Start | Finish | Predecessors | Complete | Remaining | Baseline start | Baseline finish | Baseline duration | Total slack | Free slack | Constraint | Término_LB_R0 | Início_LB_R0 | Tipo de documento | Área | Sub-área | Disciplina | Título | Formato | Quantidade | Agrupamento Cecal |
| --- | --- | --- | --- | --- | --- | --- | --- | --- | --- | --- | --- | --- | --- | --- | --- | --- | --- | --- | --- | --- | --- | --- | --- | --- | --- |
| 1 | 1 | **F0009 - COM 0023 - CECAL** |  | 135.88d? | 2026-03-31 A | 2026-10-06 |  | 3% | 132.27d? | 2026-03-31 | 2026-09-29 | 130.88d? | 0d |  |  | Ter 29/09/26 | Ter 31/03/26 |  |  |  |  |  |  |  |  |
| 2 | 4.2.1.2 | MARCOS 309 | manual | 113d | 2026-03-31 A | 2026-09-03 | 3SS | 33% | 32249.7d |  |  |  |  |  |  |  |  |  |  |  |  |  |  |  |  |
| 3 | 1.2 | **MARCOS 309** |  | 113d? | 2026-03-31 A | 2026-09-03 |  | 50% | 56.5d? | 2026-03-31 | 2026-09-03 | 113d? | 22.88d | 0d |  | Qui 03/09/26 | Ter 31/03/26 |  |  |  |  |  |  |  |  |
| 4 | 1.2.1 | Reunião de kick-off | milestone | 1d | 2026-03-31 A | 2026-03-31 A |  | 100% |  | 2026-03-31 | 2026-03-31 | 1d |  |  | start no earlier than 2026-03-31 | Ter 31/03/26 | Ter 31/03/26 |  |  |  |  |  |  |  |  |
| 5 | 1.2.2 | Reunião Design Review 1 | milestone | 1d? | 2026-05-01 A | 2026-05-01 A | 4FS+30ed | 100% |  | 2026-05-01 | 2026-05-01 | 1d? |  |  |  | Sex 01/05/26 | Sex 01/05/26 |  |  |  |  |  |  |  |  |
| 6 | 1.2.3 | Reunião Design Review 2 | milestone | 1d? | 2026-06-01 A | 2026-06-01 A | 5FS+30ed | 100% |  | 2026-06-01 | 2026-06-01 | 1d? |  |  |  | Seg 01/06/26 | Seg 01/06/26 |  |  |  |  |  |  |  |  |
| 7 | 1.2.4 | Reunião Design Review 3 | milestone | 1d? | 2026-07-02 | 2026-07-02 | 6FS+30ed |  |  | 2026-07-02 | 2026-07-02 | 1d? | 21d | 1d |  | Qui 02/07/26 | Qui 02/07/26 |  |  |  |  |  |  |  |  |
| 8 | 1.2.5 | Reunião Design Review 4 | milestone | 1d? | 2026-08-03 | 2026-08-03 | 7FS+30ed |  |  | 2026-08-03 | 2026-08-03 | 1d? | 21.88d | 0d |  | Seg 03/08/26 | Seg 03/08/26 |  |  |  |  |  |  |  |  |
| 9 | 1.2.6 | Reunião Design Review 5 | milestone | 1d? | 2026-09-03 | 2026-09-03 | 8FS+30ed |  |  | 2026-09-03 | 2026-09-03 | 1d? | 21.88d |  |  | Qui 03/09/26 | Qui 03/09/26 |  |  |  |  |  |  |  |  |
| 10 | 4.2.1.4 | PENDÊNCIAS 309 | manual | 60.88d | 2026-03-31 A | 2026-06-23 | 11SS | 52% | 32255.3d |  |  |  |  |  |  |  |  |  |  |  |  |  |  |  |  |
| 11 | 1.4 | **PENDÊNCIAS 309** |  | 65.88d? | 2026-03-31 A | 2026-06-30 |  | 29% | 46.93d? | 2026-03-31 | 2026-06-23 | 60.88d? | 39d | 0d |  | Ter 23/06/26 | Ter 31/03/26 |  |  |  |  |  |  |  |  |
| 12 | 1.4.1 | LD dos documentos Multitec |  | 1d? | 2026-04-23 A | 2026-04-23 A |  | 100% |  | 2026-04-23 | 2026-04-23 | 1d? |  |  |  | Qui 23/04/26 | Qui 23/04/26 |  |  |  |  |  |  |  |  |
| 13 | 1.4.2 | Revisão do cronograma nas tarefas da Engenharia Básica |  | 1d? | 2026-04-23 A | 2026-04-23 A |  | 100% |  | 2026-04-23 | 2026-04-23 | 1d? |  |  |  | Qui 23/04/26 | Qui 23/04/26 |  |  |  |  |  |  |  |  |
| 14 | 1.4.3 | Definição do comprimento do forno |  | 65.88d? | 2026-03-31 A | 2026-06-30 |  | 56% | 29.18d? | 2026-03-31 | 2026-06-02 | 25.88d? | 39d |  | finish no earlier than 2026-06-30 | Ter 02/06/26 | Ter 31/03/26 |  |  |  |  |  |  |  |  |
| 15 | 1.4.4 | Avaliação do aumento largura da cuba de BAR e cadinho |  | 49.88d? | 2026-04-22 A | 2026-06-30 |  | 36% | 31.95d? | 2026-04-22 | 2026-06-02 | 19.88d? | 39d |  | finish no earlier than 2026-06-30 | Ter 02/06/26 | Qua 22/04/26 |  |  |  |  |  |  |  |  |
| 16 | 1.4.5 | Avaliação de compatibilidade com carregamento, utilidades e instrumentação |  | 41.88d? | 2026-05-04 A | 2026-06-30 |  | 21% | 33.12d? | 2026-05-04 | 2026-06-02 | 14.88d? | 39d |  | finish no earlier than 2026-06-30 | Ter 02/06/26 | Seg 04/05/26 |  |  |  |  |  |  |  |  |
| 17 | 1.4.6 | Avaliação de novas tecnologias (ventaneira lateral, injeção de gás V1 e V2, passagem de gás pela cuba) |  | 34.88d? | 2026-05-13 A | 2026-06-30 |  | 6% | 32.89d? | 2026-05-13 | 2026-06-09 | 19.88d? | 39d |  | finish no earlier than 2026-06-30 | Ter 09/06/26 | Qua 13/05/26 |  |  |  |  |  |  |  |  |
| 18 | 1.4.7 | Incorporação das novas tecnologias no modelo |  | 29.88d? | 2026-05-20 | 2026-06-30 |  |  |  | 2026-05-20 | 2026-06-16 | 19.88d? | 39d |  | finish no earlier than 2026-06-30 | Ter 16/06/26 | Qua 20/05/26 |  |  |  |  |  |  |  |  |
| 19 | 1.4.8 | Aprovação da geometria básica |  | 9.88d? | 2026-06-17 | 2026-06-30 |  |  |  | 2026-06-17 | 2026-06-23 | 4.88d? | 0d |  | finish no earlier than 2026-06-30 | Ter 23/06/26 | Qua 17/06/26 |  |  |  |  |  |  |  |  |
| 20 | 4.2.1.6 | GERAL/ COORDENAÇÃO 309 | manual | 66d | 2026-06-24 | 2026-09-23 | 21SS |  |  |  |  |  |  |  |  |  |  |  |  |  |  |  |  |  |  |
| 21 | 1.6 | **GERAL/ COORDENAÇÃO 309** |  | 66d | 2026-07-01 | 2026-10-01 | 11FS+1d |  |  | 2026-06-24 | 2026-09-24 | 66d | 3d | 0d |  | Qui 24/09/26 | Qua 24/06/26 |  |  |  |  |  |  |  |  |
| 22 | 1.6.1 | **3DT-F0009-0309-MB-G-00001** |  | 15d | 2026-09-10 | 2026-10-01 |  |  |  | 2026-09-03 | 2026-09-24 | 15d | 3d |  |  | Qui 24/09/26 | Qui 03/09/26 | 3DT - Desenho 3d | 03 - REDUÇÃO | 09 - FORNO TECNORED | G - GERAL/ COORDENAÇÃO | MODELO 3D FORNO - CONJUNTO | OUTROS | 01 | Revisão do projeto do forno - carcaça e refratário |
| 23 | 1.6.1.1 | Emissão inicial |  | 5d | 2026-09-10 | 2026-09-17 | 410 |  |  | 2026-09-03 | 2026-09-10 | 5d | 3d | 0d |  | Qui 10/09/26 |  |  |  |  |  |  |  |  |  |
| 24 | 1.6.1.2 | Avaliação do Cliente |  | 5d | 2026-09-17 | 2026-09-24 | 23 |  |  | 2026-09-10 | 2026-09-17 | 5d | 3d | 0d |  | Qui 17/09/26 |  |  |  |  |  |  |  |  |  |
| 25 | 1.6.1.3 | Atendimento de Comentário |  | 3d | 2026-09-24 | 2026-09-29 | 24 |  |  | 2026-09-17 | 2026-09-22 | 3d | 3d | 0d |  | Ter 22/09/26 |  |  |  |  |  |  |  |  |  |
| 26 | 1.6.1.4 | Aprovação |  | 2d | 2026-09-29 | 2026-10-01 | 25 |  |  | 2026-09-22 | 2026-09-24 | 2d | 3d |  |  | Qui 24/09/26 |  |  |  |  |  |  |  |  |  |

| ID | WBS | Task | Type | Duration | Start | Finish | Predecessors | Baseline start | Baseline finish | Baseline duration | Total slack | Free slack | Constraint | Tipo de documento | Área | Sub-área | Disciplina | Título | Formato | Quantidade | Agrupamento Cecal | Término_LB_R0 | Início_LB_R0 |
| --- | --- | --- | --- | --- | --- | --- | --- | --- | --- | --- | --- | --- | --- | --- | --- | --- | --- | --- | --- | --- | --- | --- | --- |
| 27 | 1.6.2 | **3DT-F0009-0309-MB-G-00002** |  | 15d | 2026-09-10 | 2026-10-01 |  | 2026-09-03 | 2026-09-24 | 15d | 3d |  |  | 3DT - Desenho 3d | 03 - REDUÇÃO | 09 - FORNO TECNORED | G - GERAL/ COORDENAÇÃO | MODELO 3D FORNO TUBULAÇÕES E CARREGAMENTO | OUTROS | 01 | Revisão do sistema de carregamento | Qui 24/09/26 | Qui 03/09/26 |
| 28 | 1.6.2.1 | Emissão inicial |  | 5d | 2026-09-10 | 2026-09-17 | 410 | 2026-09-03 | 2026-09-10 | 5d | 3d | 0d |  |  |  |  |  |  |  |  |  | Qui 10/09/26 |  |
| 29 | 1.6.2.2 | Avaliação do Cliente |  | 5d | 2026-09-17 | 2026-09-24 | 28 | 2026-09-10 | 2026-09-17 | 5d | 3d | 0d |  |  |  |  |  |  |  |  |  | Qui 17/09/26 |  |
| 30 | 1.6.2.3 | Atendimento de Comentário |  | 3d | 2026-09-24 | 2026-09-29 | 29 | 2026-09-17 | 2026-09-22 | 3d | 3d | 0d |  |  |  |  |  |  |  |  |  | Ter 22/09/26 |  |
| 31 | 1.6.2.4 | Aprovação |  | 2d | 2026-09-29 | 2026-10-01 | 30 | 2026-09-22 | 2026-09-24 | 2d | 3d |  |  |  |  |  |  |  |  |  |  | Qui 24/09/26 |  |
| 32 | 1.6.3 | **3DT-F0009-0309-MB-G-00003** |  | 15d | 2026-09-10 | 2026-10-01 |  | 2026-09-03 | 2026-09-24 | 15d | 3d |  |  | 3DT - Desenho 3d | 03 - REDUÇÃO | 09 - FORNO TECNORED | G - GERAL/ COORDENAÇÃO | MODELO 3D GERAL DOS SISTEMAS | OUTROS | 01 | Planilha de quantitativos e utilidades | Qui 24/09/26 | Qui 03/09/26 |
| 33 | 1.6.3.1 | Emissão inicial |  | 5d | 2026-09-10 | 2026-09-17 | 410 | 2026-09-03 | 2026-09-10 | 5d | 3d | 0d |  |  |  |  |  |  |  |  |  | Qui 10/09/26 |  |
| 34 | 1.6.3.2 | Avaliação do Cliente |  | 5d | 2026-09-17 | 2026-09-24 | 33 | 2026-09-10 | 2026-09-17 | 5d | 3d | 0d |  |  |  |  |  |  |  |  |  | Qui 17/09/26 |  |
| 35 | 1.6.3.3 | Atendimento de Comentário |  | 3d | 2026-09-24 | 2026-09-29 | 34 | 2026-09-17 | 2026-09-22 | 3d | 3d | 0d |  |  |  |  |  |  |  |  |  | Ter 22/09/26 |  |
| 36 | 1.6.3.4 | Aprovação |  | 2d | 2026-09-29 | 2026-10-01 | 35 | 2026-09-22 | 2026-09-24 | 2d | 3d |  |  |  |  |  |  |  |  |  |  | Qui 24/09/26 |  |
| 37 | 1.6.4 | **BK-F0009-0300-MB-G-00001** |  | 30d | 2026-07-01 | 2026-08-12 |  | 2026-06-24 | 2026-08-05 | 30d | 39d |  |  | BK - Data Book | 03 - REDUÇÃO | 00 - GERAL | G - GERAL/ COORDENAÇÃO | DATABOOK DO PROJETO | OUTROS | 01 | Planilha de quantitativos e utilidades | Qua 05/08/26 | Qua 24/06/26 |
| 38 | 1.6.4.1 | Emissão inicial |  | 15d | 2026-07-01 | 2026-07-22 |  | 2026-06-24 | 2026-07-15 | 15d | 39d | 0d |  |  |  |  |  |  |  |  |  | Qua 15/07/26 |  |
| 39 | 1.6.4.2 | Avaliação do Cliente |  | 5d | 2026-07-22 | 2026-07-29 | 38 | 2026-07-15 | 2026-07-22 | 5d | 39d | 0d |  |  |  |  |  |  |  |  |  | Qua 22/07/26 |  |
| 40 | 1.6.4.3 | Atendimento de Comentário |  | 5d | 2026-07-29 | 2026-08-05 | 39 | 2026-07-22 | 2026-07-29 | 5d | 39d | 0d |  |  |  |  |  |  |  |  |  | Qua 29/07/26 |  |
| 41 | 1.6.4.4 | Aprovação |  | 5d | 2026-08-05 | 2026-08-12 | 40 | 2026-07-29 | 2026-08-05 | 5d | 39d |  |  |  |  |  |  |  |  |  |  | Qua 05/08/26 |  |
| 42 | 1.6.5 | **EG-F0009-0309-MB-G-00001** |  | 30d | 2026-08-20 | 2026-10-01 |  | 2026-08-13 | 2026-09-24 | 30d | 3d |  |  | EG - Especificação Geral | 03 - REDUÇÃO | 09 - FORNO TECNORED | G - GERAL/ COORDENAÇÃO | PARÂMETROS PARA DESIGN FREEZE | OUTROS | 01 | Parâmetros para design freeze | Qui 24/09/26 | Qui 13/08/26 |
| 43 | 1.6.5.1 | Emissão inicial |  | 15d | 2026-08-20 | 2026-09-10 | 23SF | 2026-08-13 | 2026-09-03 | 15d | 3d | 0d |  |  |  |  |  |  |  |  |  | Qui 03/09/26 |  |
| 44 | 1.6.5.2 | Avaliação do Cliente |  | 5d | 2026-09-10 | 2026-09-17 | 43 | 2026-09-03 | 2026-09-10 | 5d | 3d | 0d |  |  |  |  |  |  |  |  |  | Qui 10/09/26 |  |
| 45 | 1.6.5.3 | Atendimento de Comentário |  | 5d | 2026-09-17 | 2026-09-24 | 44 | 2026-09-10 | 2026-09-17 | 5d | 3d | 0d |  |  |  |  |  |  |  |  |  | Qui 17/09/26 |  |
| 46 | 1.6.5.4 | Aprovação |  | 5d | 2026-09-24 | 2026-10-01 | 45 | 2026-09-17 | 2026-09-24 | 5d | 3d |  |  |  |  |  |  |  |  |  |  | Qui 24/09/26 |  |
| 47 | 4.2.1.8 | MECÂNICA / ARRANJOS 309 | manual | 69.88d | 2026-06-24 | 2026-09-29 | 48SS |  |  |  |  |  |  |  |  |  |  |  |  |  |  |  |  |
| 48 | 1.8 | **MECÂNICA / ARRANJOS 309** |  | 70d | 2026-06-30 | 2026-10-06 |  | 2026-06-24 | 2026-09-29 | 69.88d | 0d |  |  |  |  |  |  |  |  |  |  | Ter 29/09/26 | Qua 24/06/26 |
| 49 | 1.8.1 | **AG-F0009-0302-MB-L-00001** |  | 23d | 2026-06-30 | 2026-07-31 |  | 2026-06-24 | 2026-07-24 | 23d | 2d |  | start no earlier than 2026-06-24 | AG - Arranjo (AG) | 03 - REDUÇÃO | 02 - CARREGAMENTO | L - MECÂNICA / ARRANJOS | PLANTA BÁSICA - SISTEMA DE CARREGAMENTO | A1 (841x594mm) | 01 | Revisão do sistema de carregamento | Sex 24/07/26 | Qua 24/06/26 |
| 50 | 1.8.1.1 | Emissão inicial |  | 10d | 2026-06-30 | 2026-07-14 | 19 | 2026-06-24 | 2026-07-07 | 10d | 2d | 0d | start no earlier than 2026-06-24 |  |  |  |  |  |  |  |  | Ter 07/07/26 |  |
| 51 | 1.8.1.2 | Avaliação do Cliente |  | 5d | 2026-07-14 | 2026-07-21 | 50 | 2026-07-08 | 2026-07-14 | 5d | 47d | 0d | finish no earlier than 2026-07-07 |  |  |  |  |  |  |  |  | Ter 14/07/26 |  |
| 52 | 1.8.1.3 | Atendimento de Comentário |  | 3d | 2026-07-21 | 2026-07-24 | 51 | 2026-07-15 | 2026-07-17 | 3d | 47d | 0d | finish no earlier than 2026-07-07 |  |  |  |  |  |  |  |  | Sex 17/07/26 |  |
| 53 | 1.8.1.4 | Aprovação |  | 5d | 2026-07-24 | 2026-07-31 | 52 | 2026-07-20 | 2026-07-24 | 5d | 47d |  | finish no earlier than 2026-07-07 |  |  |  |  |  |  |  |  | Sex 24/07/26 |  |

| ID | WBS | Task | Duration | Start | Finish | Predecessors | Baseline start | Baseline finish | Baseline duration | Total slack | Free slack | Constraint | Tipo de documento | Área | Sub-área | Disciplina | Título | Formato | Quantidade | Agrupamento Cecal | Término_LB_R0 | Início_LB_R0 |
| --- | --- | --- | --- | --- | --- | --- | --- | --- | --- | --- | --- | --- | --- | --- | --- | --- | --- | --- | --- | --- | --- | --- |
| 54 | 1.8.2 | **AG-F0009-0302-MB-L-00002** | 20d | 2026-07-14 | 2026-08-11 |  | 2026-07-08 | 2026-08-04 | 20d | 40d |  |  | AG - Arranjo (AG) | 03 - REDUÇÃO | 02 - CARREGAMENTO | L - MECÂNICA / ARRANJOS | SISTEMA LINHA BAR | A1 (841x594mm) | 01 | Revisão do sistema de carregamento | Ter 04/08/26 | Qua 08/07/26 |
| 55 | 1.8.2.1 | Emissão inicial | 10d | 2026-07-14 | 2026-07-28 | 50 | 2026-07-08 | 2026-07-21 | 10d | 40d | 0d | finish no earlier than 2026-07-21 |  |  |  |  |  |  |  |  | Ter 21/07/26 |  |
| 56 | 1.8.2.2 | Avaliação do Cliente | 5d | 2026-07-28 | 2026-08-04 | 55 | 2026-07-22 | 2026-07-28 | 5d | 40d | 0d | finish no earlier than 2026-07-21 |  |  |  |  |  |  |  |  | Ter 28/07/26 |  |
| 57 | 1.8.2.3 | Atendimento de Comentário | 3d | 2026-08-04 | 2026-08-07 | 56 | 2026-07-29 | 2026-07-31 | 3d | 40d | 0d | finish no earlier than 2026-07-21 |  |  |  |  |  |  |  |  | Sex 31/07/26 |  |
| 58 | 1.8.2.4 | Aprovação | 2d | 2026-08-07 | 2026-08-11 | 57 | 2026-08-03 | 2026-08-04 | 2d | 40d |  | finish no earlier than 2026-07-21 |  |  |  |  |  |  |  |  | Ter 04/08/26 |  |
| 59 | 1.8.3 | **AG-F0009-0302-MB-L-00003** | 16d | 2026-07-14 | 2026-08-05 |  | 2026-07-08 | 2026-07-29 | 16d | 44d |  |  | AG - Arranjo (AG) | 03 - REDUÇÃO | 02 - CARREGAMENTO | L - MECÂNICA / ARRANJOS | SISTEMA LINHA COMBUSTÍVEL LATERAL | A1 (841x594mm) | 01 | Revisão do sistema de carregamento | Qua 29/07/26 | Qua 08/07/26 |
| 60 | 1.8.3.1 | Emissão inicial | 10d | 2026-07-14 | 2026-07-28 | 50 | 2026-07-08 | 2026-07-21 | 10d | 44d | 0d | finish no earlier than 2026-07-21 |  |  |  |  |  |  |  |  | Ter 21/07/26 |  |
| 61 | 1.8.3.2 | Avaliação do Cliente | 1d | 2026-07-28 | 2026-07-29 | 60 | 2026-07-22 | 2026-07-22 | 1d | 44d | 0d | finish no earlier than 2026-07-21 |  |  |  |  |  |  |  |  | Qua 22/07/26 |  |
| 62 | 1.8.3.3 | Atendimento de Comentário | 3d | 2026-07-29 | 2026-08-03 | 61 | 2026-07-23 | 2026-07-27 | 3d | 44d | 0d | finish no earlier than 2026-07-21 |  |  |  |  |  |  |  |  | Seg 27/07/26 |  |
| 63 | 1.8.3.4 | Aprovação | 2d | 2026-08-03 | 2026-08-05 | 62 | 2026-07-28 | 2026-07-29 | 2d | 44d |  | finish no earlier than 2026-07-21 |  |  |  |  |  |  |  |  | Qua 29/07/26 |  |
| 64 | 1.8.4 | **AG-F0009-0302-MB-L-00004** | 20d | 2026-07-14 | 2026-08-11 |  | 2026-07-08 | 2026-08-04 | 20d | 40d |  |  | AG - Arranjo (AG) | 03 - REDUÇÃO | 02 - CARREGAMENTO | L - MECÂNICA / ARRANJOS | SISTEMA LINHA BOOSTER | A1 (841x594mm) | 01 | Revisão do sistema de carregamento | Ter 04/08/26 | Qua 08/07/26 |
| 65 | 1.8.4.1 | Emissão inicial | 10d | 2026-07-14 | 2026-07-28 | 50 | 2026-07-08 | 2026-07-21 | 10d | 40d | 0d | finish no earlier than 2026-07-21 |  |  |  |  |  |  |  |  | Ter 21/07/26 |  |
| 66 | 1.8.4.2 | Avaliação do Cliente | 5d | 2026-07-28 | 2026-08-04 | 65 | 2026-07-22 | 2026-07-28 | 5d | 40d | 0d | finish no earlier than 2026-07-21 |  |  |  |  |  |  |  |  | Ter 28/07/26 |  |
| 67 | 1.8.4.3 | Atendimento de Comentário | 3d | 2026-08-04 | 2026-08-07 | 66 | 2026-07-29 | 2026-07-31 | 3d | 40d | 0d | finish no earlier than 2026-07-21 |  |  |  |  |  |  |  |  | Sex 31/07/26 |  |
| 68 | 1.8.4.4 | Aprovação | 2d | 2026-08-07 | 2026-08-11 | 67 | 2026-08-03 | 2026-08-04 | 2d | 40d |  | finish no earlier than 2026-07-21 |  |  |  |  |  |  |  |  | Ter 04/08/26 |  |
| 69 | 1.8.5 | **AG-F0009-0302-MB-L-00005** | 20d | 2026-07-14 | 2026-08-11 |  | 2026-07-08 | 2026-08-04 | 20d | 40d |  |  | AG - Arranjo (AG) | 03 - REDUÇÃO | 02 - CARREGAMENTO | L - MECÂNICA / ARRANJOS | LOCAÇÃO SUPORTE TUBULACOES BAR | A1 (841x594mm) | 01 | Revisão do sistema de carregamento | Ter 04/08/26 | Qua 08/07/26 |
| 70 | 1.8.5.1 | Emissão inicial | 10d | 2026-07-14 | 2026-07-28 | 50 | 2026-07-08 | 2026-07-21 | 10d | 40d | 0d | finish no earlier than 2026-07-21 |  |  |  |  |  |  |  |  | Ter 21/07/26 |  |
| 71 | 1.8.5.2 | Avaliação do Cliente | 5d | 2026-07-28 | 2026-08-04 | 70 | 2026-07-22 | 2026-07-28 | 5d | 40d | 0d | finish no earlier than 2026-07-21 |  |  |  |  |  |  |  |  | Ter 28/07/26 |  |
| 72 | 1.8.5.3 | Atendimento de Comentário | 3d | 2026-08-04 | 2026-08-07 | 71 | 2026-07-29 | 2026-07-31 | 3d | 40d | 0d | finish no earlier than 2026-07-21 |  |  |  |  |  |  |  |  | Sex 31/07/26 |  |
| 73 | 1.8.5.4 | Aprovação | 2d | 2026-08-07 | 2026-08-11 | 72 | 2026-08-03 | 2026-08-04 | 2d | 40d |  | finish no earlier than 2026-07-21 |  |  |  |  |  |  |  |  | Ter 04/08/26 |  |
| 74 | 1.8.6 | **AG-F0009-0302-MB-L-00006** | 23d | 2026-07-14 | 2026-08-14 |  | 2026-07-08 | 2026-08-07 | 23d | 37d |  |  | AG - Arranjo (AG) | 03 - REDUÇÃO | 02 - CARREGAMENTO | L - MECÂNICA / ARRANJOS | LOCAÇÃO SUPORTE TUBULACOES BAR DETALHES | A1 (841x594mm) | 01 | Revisão do sistema de carregamento | Sex 07/08/26 | Qua 08/07/26 |
| 75 | 1.8.6.1 | Emissão inicial | 10d | 2026-07-14 | 2026-07-28 | 50 | 2026-07-08 | 2026-07-21 | 10d | 37d | 0d | finish no earlier than 2026-07-21 |  |  |  |  |  |  |  |  | Ter 21/07/26 |  |
| 76 | 1.8.6.2 | Avaliação do Cliente | 5d | 2026-07-28 | 2026-08-04 | 75 | 2026-07-22 | 2026-07-28 | 5d | 37d | 0d | finish no earlier than 2026-07-21 |  |  |  |  |  |  |  |  | Ter 28/07/26 |  |
| 77 | 1.8.6.3 | Atendimento de Comentário | 3d | 2026-08-04 | 2026-08-07 | 76 | 2026-07-29 | 2026-07-31 | 3d | 37d | 0d | finish no earlier than 2026-07-21 |  |  |  |  |  |  |  |  | Sex 31/07/26 |  |
| 78 | 1.8.6.4 | Aprovação | 5d | 2026-08-07 | 2026-08-14 | 77 | 2026-08-03 | 2026-08-07 | 5d | 37d |  | finish no earlier than 2026-07-21 |  |  |  |  |  |  |  |  | Sex 07/08/26 |  |

| ID | WBS | Task | Duration | Start | Finish | Predecessors | Baseline start | Baseline finish | Baseline duration | Total slack | Free slack | Constraint | Tipo de documento | Área | Sub-área | Disciplina | Título | Formato | Quantidade | Agrupamento Cecal | Término_LB_R0 | Início_LB_R0 |
| --- | --- | --- | --- | --- | --- | --- | --- | --- | --- | --- | --- | --- | --- | --- | --- | --- | --- | --- | --- | --- | --- | --- |
| 79 | 1.8.7 | **AG-F0009-0302-MB-L-00007** | 20d | 2026-07-14 | 2026-08-11 |  | 2026-07-08 | 2026-08-04 | 20d | 40d |  |  | AG - Arranjo (AG) | 03 - REDUÇÃO | 02 - CARREGAMENTO | L - MECÂNICA / ARRANJOS | LOCAÇÃO SUPORTE TUBULACOES COMBUSTIVEL LATERAL | A1 (841x594mm) | 01 | Revisão do sistema de carregamento | Ter 04/08/26 | Qua 08/07/26 |
| 80 | 1.8.7.1 | Emissão inicial | 10d | 2026-07-14 | 2026-07-28 | 50 | 2026-07-08 | 2026-07-21 | 10d | 40d | 0d | finish no earlier than 2026-07-21 |  |  |  |  |  |  |  |  | Ter 21/07/26 |  |
| 81 | 1.8.7.2 | Avaliação do Cliente | 5d | 2026-07-28 | 2026-08-04 | 80 | 2026-07-22 | 2026-07-28 | 5d | 40d | 0d | finish no earlier than 2026-07-21 |  |  |  |  |  |  |  |  | Ter 28/07/26 |  |
| 82 | 1.8.7.3 | Atendimento de Comentário | 3d | 2026-08-04 | 2026-08-07 | 81 | 2026-07-29 | 2026-07-31 | 3d | 40d | 0d | finish no earlier than 2026-07-21 |  |  |  |  |  |  |  |  | Sex 31/07/26 |  |
| 83 | 1.8.7.4 | Aprovação | 2d | 2026-08-07 | 2026-08-11 | 82 | 2026-08-03 | 2026-08-04 | 2d | 40d |  | finish no earlier than 2026-07-21 |  |  |  |  |  |  |  |  | Ter 04/08/26 |  |
| 84 | 1.8.8 | **AG-F0009-0302-MB-L-00008** | 20d | 2026-07-14 | 2026-08-11 |  | 2026-07-08 | 2026-08-04 | 20d | 40d |  |  | AG - Arranjo (AG) | 03 - REDUÇÃO | 02 - CARREGAMENTO | L - MECÂNICA / ARRANJOS | LOCAÇÃO SUPORTE TUBULACOES COMBUSTIVEL LATERAL | A1 (841x594mm) | 01 | Revisão do sistema de carregamento | Ter 04/08/26 | Qua 08/07/26 |
| 85 | 1.8.8.1 | Emissão inicial | 10d | 2026-07-14 | 2026-07-28 | 50 | 2026-07-08 | 2026-07-21 | 10d | 40d | 0d | finish no earlier than 2026-07-21 |  |  |  |  |  |  |  |  | Ter 21/07/26 |  |
| 86 | 1.8.8.2 | Avaliação do Cliente | 5d | 2026-07-28 | 2026-08-04 | 85 | 2026-07-22 | 2026-07-28 | 5d | 40d | 0d | finish no earlier than 2026-07-21 |  |  |  |  |  |  |  |  | Ter 28/07/26 |  |
| 87 | 1.8.8.3 | Atendimento de Comentário | 3d | 2026-08-04 | 2026-08-07 | 86 | 2026-07-29 | 2026-07-31 | 3d | 40d | 0d | finish no earlier than 2026-07-21 |  |  |  |  |  |  |  |  | Sex 31/07/26 |  |
| 88 | 1.8.8.4 | Aprovação | 2d | 2026-08-07 | 2026-08-11 | 87 | 2026-08-03 | 2026-08-04 | 2d | 40d |  | finish no earlier than 2026-07-21 |  |  |  |  |  |  |  |  | Ter 04/08/26 |  |
| 89 | 1.8.9 | **AG-F0009-0302-MB-L-00009** | 20d | 2026-07-14 | 2026-08-11 |  | 2026-07-08 | 2026-08-04 | 20d | 40d |  |  | AG - Arranjo (AG) | 03 - REDUÇÃO | 02 - CARREGAMENTO | L - MECÂNICA / ARRANJOS | LOCAÇÃO SUPORTE TUBULACOES BOOSTER | A1 (841x594mm) | 01 | Revisão do sistema de carregamento | Ter 04/08/26 | Qua 08/07/26 |
| 90 | 1.8.9.1 | Emissão inicial | 10d | 2026-07-14 | 2026-07-28 | 50 | 2026-07-08 | 2026-07-21 | 10d | 40d | 0d | finish no earlier than 2026-07-21 |  |  |  |  |  |  |  |  | Ter 21/07/26 |  |
| 91 | 1.8.9.2 | Avaliação do Cliente | 5d | 2026-07-28 | 2026-08-04 | 90 | 2026-07-22 | 2026-07-28 | 5d | 40d | 0d | finish no earlier than 2026-07-21 |  |  |  |  |  |  |  |  | Ter 28/07/26 |  |
| 92 | 1.8.9.3 | Atendimento de Comentário | 3d | 2026-08-04 | 2026-08-07 | 91 | 2026-07-29 | 2026-07-31 | 3d | 40d | 0d | finish no earlier than 2026-07-21 |  |  |  |  |  |  |  |  | Sex 31/07/26 |  |
| 93 | 1.8.9.4 | Aprovação | 2d | 2026-08-07 | 2026-08-11 | 92 | 2026-08-03 | 2026-08-04 | 2d | 40d |  | finish no earlier than 2026-07-21 |  |  |  |  |  |  |  |  | Ter 04/08/26 |  |
| 94 | 1.8.10 | **AG-F0009-0302-MB-L-00010** | 20d | 2026-07-14 | 2026-08-11 |  | 2026-07-08 | 2026-08-04 | 20d | 2d |  |  | AG - Arranjo (AG) | 03 - REDUÇÃO | 02 - CARREGAMENTO | L - MECÂNICA / ARRANJOS | LOCAÇÃO SUPORTE TUBULACOES BOOSTER DETALHES | A1 (841x594mm) | 01 | Revisão do sistema de carregamento | Ter 04/08/26 | Qua 08/07/26 |
| 95 | 1.8.10.1 | Emissão inicial | 10d | 2026-07-14 | 2026-07-28 | 50 | 2026-07-08 | 2026-07-21 | 10d | 2d | 0d | finish no earlier than 2026-07-21 |  |  |  |  |  |  |  |  | Ter 21/07/26 |  |
| 96 | 1.8.10.2 | Avaliação do Cliente | 5d | 2026-07-28 | 2026-08-04 | 95 | 2026-07-22 | 2026-07-28 | 5d | 40d | 0d | finish no earlier than 2026-07-21 |  |  |  |  |  |  |  |  | Ter 28/07/26 |  |
| 97 | 1.8.10.3 | Atendimento de Comentário | 3d | 2026-08-04 | 2026-08-07 | 96 | 2026-07-29 | 2026-07-31 | 3d | 40d | 0d | finish no earlier than 2026-07-21 |  |  |  |  |  |  |  |  | Sex 31/07/26 |  |
| 98 | 1.8.10.4 | Aprovação | 2d | 2026-08-07 | 2026-08-11 | 97 | 2026-08-03 | 2026-08-04 | 2d | 40d |  | finish no earlier than 2026-07-21 |  |  |  |  |  |  |  |  | Ter 04/08/26 |  |
| 99 | 1.8.11 | **DT-F0009-0302-MB-L-00001** | 20d | 2026-07-14 | 2026-08-11 |  | 2026-07-08 | 2026-08-04 | 20d | 10d |  |  | DT - Detalhe Típico | 03 - REDUÇÃO | 02 - CARREGAMENTO | L - MECÂNICA / ARRANJOS | MOEGA DE RECEBIMENTO | A1 (841x594mm) | 01 | Revisão do sistema de carregamento | Ter 04/08/26 | Qua 08/07/26 |
| 100 | 1.8.11.1 | Emissão inicial | 10d | 2026-07-14 | 2026-07-28 | 50 | 2026-07-08 | 2026-07-21 | 10d | 10d | 0d |  |  |  |  |  |  |  |  |  | Ter 21/07/26 |  |
| 101 | 1.8.11.2 | Avaliação do Cliente | 5d | 2026-07-28 | 2026-08-04 | 100 | 2026-07-22 | 2026-07-28 | 5d | 10d | 0d |  |  |  |  |  |  |  |  |  | Ter 28/07/26 |  |
| 102 | 1.8.11.3 | Atendimento de Comentário | 3d | 2026-08-04 | 2026-08-07 | 101 | 2026-07-29 | 2026-07-31 | 3d | 40d | 0d |  |  |  |  |  |  |  |  |  | Sex 31/07/26 |  |
| 103 | 1.8.11.4 | Aprovação | 2d | 2026-08-07 | 2026-08-11 | 102 | 2026-08-03 | 2026-08-04 | 2d | 40d |  |  |  |  |  |  |  |  |  |  | Ter 04/08/26 |  |

| ID | WBS | Task | Duration | Start | Finish | Predecessors | Baseline start | Baseline finish | Baseline duration | Total slack | Free slack | Tipo de documento | Área | Sub-área | Disciplina | Título | Formato | Quantidade | Agrupamento Cecal | Término_LB_R0 | Início_LB_R0 |
| --- | --- | --- | --- | --- | --- | --- | --- | --- | --- | --- | --- | --- | --- | --- | --- | --- | --- | --- | --- | --- | --- |
| 104 | 1.8.12 | **DT-F0009-0302-MB-L-00002** | 20d | 2026-07-14 | 2026-08-11 |  | 2026-07-08 | 2026-08-04 | 20d | 40d |  | DT - Detalhe Típico | 03 - REDUÇÃO | 02 - CARREGAMENTO | L - MECÂNICA / ARRANJOS | CORREIA REVERSÍVEL E MÓVEL - LIMITES DE OPERAÇÃO | A1 (841x594mm) | 01 | Revisão do sistema de carregamento | Ter 04/08/26 | Qua 08/07/26 |
| 105 | 1.8.12.1 | Emissão inicial | 10d | 2026-07-14 | 2026-07-28 | 50 | 2026-07-08 | 2026-07-21 | 10d | 40d | 0d |  |  |  |  |  |  |  |  | Ter 21/07/26 |  |
| 106 | 1.8.12.2 | Avaliação do Cliente | 5d | 2026-07-28 | 2026-08-04 | 105 | 2026-07-22 | 2026-07-28 | 5d | 40d | 0d |  |  |  |  |  |  |  |  | Ter 28/07/26 |  |
| 107 | 1.8.12.3 | Atendimento de Comentário | 3d | 2026-08-04 | 2026-08-07 | 106 | 2026-07-29 | 2026-07-31 | 3d | 40d | 0d |  |  |  |  |  |  |  |  | Sex 31/07/26 |  |
| 108 | 1.8.12.4 | Aprovação | 2d | 2026-08-07 | 2026-08-11 | 107 | 2026-08-03 | 2026-08-04 | 2d | 40d |  |  |  |  |  |  |  |  |  | Ter 04/08/26 |  |
| 109 | 1.8.13 | **DT-F0009-0302-MB-L-00003** | 20d | 2026-07-14 | 2026-08-11 |  | 2026-07-08 | 2026-08-04 | 20d | 40d |  | DT - Detalhe Típico | 03 - REDUÇÃO | 02 - CARREGAMENTO | L - MECÂNICA / ARRANJOS | CORREIA REVERSÍVEL E MÓVEL - DADOS GERAIS | A1 (841x594mm) | 01 | Revisão do sistema de carregamento | Ter 04/08/26 | Qua 08/07/26 |
| 110 | 1.8.13.1 | Emissão inicial | 10d | 2026-07-14 | 2026-07-28 | 50 | 2026-07-08 | 2026-07-21 | 10d | 40d | 0d |  |  |  |  |  |  |  |  | Ter 21/07/26 |  |
| 111 | 1.8.13.2 | Avaliação do Cliente | 5d | 2026-07-28 | 2026-08-04 | 110 | 2026-07-22 | 2026-07-28 | 5d | 40d | 0d |  |  |  |  |  |  |  |  | Ter 28/07/26 |  |
| 112 | 1.8.13.3 | Atendimento de Comentário | 3d | 2026-08-04 | 2026-08-07 | 111 | 2026-07-29 | 2026-07-31 | 3d | 40d | 0d |  |  |  |  |  |  |  |  | Sex 31/07/26 |  |
| 113 | 1.8.13.4 | Aprovação | 2d | 2026-08-07 | 2026-08-11 | 112 | 2026-08-03 | 2026-08-04 | 2d | 40d |  |  |  |  |  |  |  |  |  | Ter 04/08/26 |  |
| 114 | 1.8.14 | **DT-F0009-0302-MB-L-00004** | 20d | 2026-07-14 | 2026-08-11 |  | 2026-07-08 | 2026-08-04 | 20d | 40d |  | DT - Detalhe Típico | 03 - REDUÇÃO | 02 - CARREGAMENTO | L - MECÂNICA / ARRANJOS | CORREIA REVERSÍVEL E MÓVEL ARRANJOS ROLETES | A1 (841x594mm) | 01 | Revisão do sistema de carregamento | Ter 04/08/26 | Qua 08/07/26 |
| 115 | 1.8.14.1 | Emissão inicial | 10d | 2026-07-14 | 2026-07-28 | 50 | 2026-07-08 | 2026-07-21 | 10d | 40d | 0d |  |  |  |  |  |  |  |  | Ter 21/07/26 |  |
| 116 | 1.8.14.2 | Avaliação do Cliente | 5d | 2026-07-28 | 2026-08-04 | 115 | 2026-07-22 | 2026-07-28 | 5d | 40d | 0d |  |  |  |  |  |  |  |  | Ter 28/07/26 |  |
| 117 | 1.8.14.3 | Atendimento de Comentário | 3d | 2026-08-04 | 2026-08-07 | 116 | 2026-07-29 | 2026-07-31 | 3d | 40d | 0d |  |  |  |  |  |  |  |  | Sex 31/07/26 |  |
| 118 | 1.8.14.4 | Aprovação | 2d | 2026-08-07 | 2026-08-11 | 117 | 2026-08-03 | 2026-08-04 | 2d | 40d |  |  |  |  |  |  |  |  |  | Ter 04/08/26 |  |
| 119 | 1.8.15 | **DT-F0009-0302-MB-L-00005** | 20d | 2026-07-14 | 2026-08-11 |  | 2026-07-08 | 2026-08-04 | 20d | 40d |  | DT - Detalhe Típico | 03 - REDUÇÃO | 02 - CARREGAMENTO | L - MECÂNICA / ARRANJOS | CORREIA REVERSÍVEL E MÓVEL - SEÇÕES | A1 (841x594mm) | 01 | Revisão do sistema de carregamento | Ter 04/08/26 | Qua 08/07/26 |
| 120 | 1.8.15.1 | Emissão inicial | 10d | 2026-07-14 | 2026-07-28 | 50 | 2026-07-08 | 2026-07-21 | 10d | 40d | 0d |  |  |  |  |  |  |  |  | Ter 21/07/26 |  |
| 121 | 1.8.15.2 | Avaliação do Cliente | 5d | 2026-07-28 | 2026-08-04 | 120 | 2026-07-22 | 2026-07-28 | 5d | 40d | 0d |  |  |  |  |  |  |  |  | Ter 28/07/26 |  |
| 122 | 1.8.15.3 | Atendimento de Comentário | 3d | 2026-08-04 | 2026-08-07 | 121 | 2026-07-29 | 2026-07-31 | 3d | 40d | 0d |  |  |  |  |  |  |  |  | Sex 31/07/26 |  |
| 123 | 1.8.15.4 | Aprovação | 2d | 2026-08-07 | 2026-08-11 | 122 | 2026-08-03 | 2026-08-04 | 2d | 40d |  |  |  |  |  |  |  |  |  | Ter 04/08/26 |  |
| 124 | 1.8.16 | **DT-F0009-0302-MB-L-00006** | 20d | 2026-07-14 | 2026-08-11 |  | 2026-07-08 | 2026-08-04 | 20d | 5d |  | DT - Detalhe Típico | 03 - REDUÇÃO | 02 - CARREGAMENTO | L - MECÂNICA / ARRANJOS | SILO DE PROCESSOS BAR FORNO 1 E 2 | A1 (841x594mm) | 01 | Revisão do sistema de carregamento | Ter 04/08/26 | Qua 08/07/26 |
| 125 | 1.8.16.1 | Emissão inicial | 10d | 2026-07-14 | 2026-07-28 | 50 | 2026-07-08 | 2026-07-21 | 10d | 5d | 0d |  |  |  |  |  |  |  |  | Ter 21/07/26 |  |
| 126 | 1.8.16.2 | Avaliação do Cliente | 5d | 2026-07-28 | 2026-08-04 | 125 | 2026-07-22 | 2026-07-28 | 5d | 40d | 0d |  |  |  |  |  |  |  |  | Ter 28/07/26 |  |
| 127 | 1.8.16.3 | Atendimento de Comentário | 3d | 2026-08-04 | 2026-08-07 | 126 | 2026-07-29 | 2026-07-31 | 3d | 40d | 0d |  |  |  |  |  |  |  |  | Sex 31/07/26 |  |
| 128 | 1.8.16.4 | Aprovação | 2d | 2026-08-07 | 2026-08-11 | 127 | 2026-08-03 | 2026-08-04 | 2d | 40d |  |  |  |  |  |  |  |  |  | Ter 04/08/26 |  |

| ID | WBS | Task | Duration | Start | Finish | Predecessors | Baseline start | Baseline finish | Baseline duration | Total slack | Free slack | Tipo de documento | Área | Sub-área | Disciplina | Título | Formato | Quantidade | Agrupamento Cecal | Término_LB_R0 | Início_LB_R0 |
| --- | --- | --- | --- | --- | --- | --- | --- | --- | --- | --- | --- | --- | --- | --- | --- | --- | --- | --- | --- | --- | --- |
| 129 | 1.8.17 | **DT-F0009-0302-MB-L-00007** | 20d | 2026-07-28 | 2026-08-25 |  | 2026-07-22 | 2026-08-18 | 20d | 30d |  | DT - Detalhe Típico | 03 - REDUÇÃO | 02 - CARREGAMENTO | L - MECÂNICA / ARRANJOS | SILO DE PROCESSOS COMBUSTÍVEL LATERAL FORNO 1 E 2 | A1 (841x594mm) | 01 | Revisão do sistema de carregamento | Ter 18/08/26 | Qua 22/07/26 |
| 130 | 1.8.17.1 | Emissão inicial | 10d | 2026-07-28 | 2026-08-11 | 125 | 2026-07-22 | 2026-08-04 | 10d | 30d | 0d |  |  |  |  |  |  |  |  | Ter 04/08/26 |  |
| 131 | 1.8.17.2 | Avaliação do Cliente | 5d | 2026-08-11 | 2026-08-18 | 130 | 2026-08-05 | 2026-08-11 | 5d | 30d | 0d |  |  |  |  |  |  |  |  | Ter 11/08/26 |  |
| 132 | 1.8.17.3 | Atendimento de Comentário | 3d | 2026-08-18 | 2026-08-21 | 131 | 2026-08-12 | 2026-08-14 | 3d | 30d | 0d |  |  |  |  |  |  |  |  | Sex 14/08/26 |  |
| 133 | 1.8.17.4 | Aprovação | 2d | 2026-08-21 | 2026-08-25 | 132 | 2026-08-17 | 2026-08-18 | 2d | 30d |  |  |  |  |  |  |  |  |  | Ter 18/08/26 |  |
| 134 | 1.8.18 | **DT-F0009-0302-MB-L-00008** | 20d | 2026-07-28 | 2026-08-25 |  | 2026-07-22 | 2026-08-18 | 20d | 30d |  | DT - Detalhe Típico | 03 - REDUÇÃO | 02 - CARREGAMENTO | L - MECÂNICA / ARRANJOS | SILO DE PROCESSOS BOOSTER FORNO 1 E 2 | A1 (841x594mm) | 01 | Revisão do sistema de carregamento | Ter 18/08/26 | Qua 22/07/26 |
| 135 | 1.8.18.1 | Emissão inicial | 10d | 2026-07-28 | 2026-08-11 | 125 | 2026-07-22 | 2026-08-04 | 10d | 30d | 0d |  |  |  |  |  |  |  |  | Ter 04/08/26 |  |
| 136 | 1.8.18.2 | Avaliação do Cliente | 5d | 2026-08-11 | 2026-08-18 | 135 | 2026-08-05 | 2026-08-11 | 5d | 30d | 0d |  |  |  |  |  |  |  |  | Ter 11/08/26 |  |
| 137 | 1.8.18.3 | Atendimento de Comentário | 3d | 2026-08-18 | 2026-08-21 | 136 | 2026-08-12 | 2026-08-14 | 3d | 30d | 0d |  |  |  |  |  |  |  |  | Sex 14/08/26 |  |
| 138 | 1.8.18.4 | Aprovação | 2d | 2026-08-21 | 2026-08-25 | 137 | 2026-08-17 | 2026-08-18 | 2d | 30d |  |  |  |  |  |  |  |  |  | Ter 18/08/26 |  |
| 139 | 1.8.19 | **DT-F0009-0302-MB-L-00009** | 20d | 2026-07-28 | 2026-08-25 |  | 2026-07-22 | 2026-08-18 | 20d | 30d |  | DT - Detalhe Típico | 03 - REDUÇÃO | 02 - CARREGAMENTO | L - MECÂNICA / ARRANJOS | SILO DE BUFFER BAR FORNO 1 E 2 | A1 (841x594mm) | 01 | Revisão do sistema de carregamento | Ter 18/08/26 | Qua 22/07/26 |
| 140 | 1.8.19.1 | Emissão inicial | 10d | 2026-07-28 | 2026-08-11 | 125 | 2026-07-22 | 2026-08-04 | 10d | 30d | 0d |  |  |  |  |  |  |  |  | Ter 04/08/26 |  |
| 141 | 1.8.19.2 | Avaliação do Cliente | 5d | 2026-08-11 | 2026-08-18 | 140 | 2026-08-05 | 2026-08-11 | 5d | 30d | 0d |  |  |  |  |  |  |  |  | Ter 11/08/26 |  |
| 142 | 1.8.19.3 | Atendimento de Comentário | 3d | 2026-08-18 | 2026-08-21 | 141 | 2026-08-12 | 2026-08-14 | 3d | 30d | 0d |  |  |  |  |  |  |  |  | Sex 14/08/26 |  |
| 143 | 1.8.19.4 | Aprovação | 2d | 2026-08-21 | 2026-08-25 | 142 | 2026-08-17 | 2026-08-18 | 2d | 30d |  |  |  |  |  |  |  |  |  | Ter 18/08/26 |  |
| 144 | 1.8.20 | **DT-F0009-0302-MB-L-00010** | 20d | 2026-07-28 | 2026-08-25 |  | 2026-07-22 | 2026-08-18 | 20d | 30d |  | DT - Detalhe Típico | 03 - REDUÇÃO | 02 - CARREGAMENTO | L - MECÂNICA / ARRANJOS | SILO DE BUFFER COMBUSTÍVEL LATERAL FORNO 1 E 2 | A1 (841x594mm) | 01 | Revisão do sistema de carregamento | Ter 18/08/26 | Qua 22/07/26 |
| 145 | 1.8.20.1 | Emissão inicial | 10d | 2026-07-28 | 2026-08-11 | 125 | 2026-07-22 | 2026-08-04 | 10d | 30d | 0d |  |  |  |  |  |  |  |  | Ter 04/08/26 |  |
| 146 | 1.8.20.2 | Avaliação do Cliente | 5d | 2026-08-11 | 2026-08-18 | 145 | 2026-08-05 | 2026-08-11 | 5d | 30d | 0d |  |  |  |  |  |  |  |  | Ter 11/08/26 |  |
| 147 | 1.8.20.3 | Atendimento de Comentário | 3d | 2026-08-18 | 2026-08-21 | 146 | 2026-08-12 | 2026-08-14 | 3d | 30d | 0d |  |  |  |  |  |  |  |  | Sex 14/08/26 |  |
| 148 | 1.8.20.4 | Aprovação | 2d | 2026-08-21 | 2026-08-25 | 147 | 2026-08-17 | 2026-08-18 | 2d | 30d |  |  |  |  |  |  |  |  |  | Ter 18/08/26 |  |
| 149 | 1.8.21 | **DT-F0009-0302-MB-L-00011** | 25d | 2026-07-28 | 2026-09-01 |  | 2026-07-22 | 2026-08-25 | 25d | 5d |  | DT - Detalhe Típico | 03 - REDUÇÃO | 02 - CARREGAMENTO | L - MECÂNICA / ARRANJOS | SILO DE BUFFER BOOSTER FORNO 1 E 2 | A1 (841x594mm) | 01 | Revisão do sistema de carregamento | Ter 25/08/26 | Qua 22/07/26 |
| 150 | 1.8.21.1 | Emissão inicial | 10d | 2026-07-28 | 2026-08-11 | 125 | 2026-07-22 | 2026-08-04 | 10d | 5d | 0d |  |  |  |  |  |  |  |  | Ter 04/08/26 |  |
| 151 | 1.8.21.2 | Avaliação do Cliente | 5d | 2026-08-11 | 2026-08-18 | 150 | 2026-08-05 | 2026-08-11 | 5d | 25d | 0d |  |  |  |  |  |  |  |  | Ter 11/08/26 |  |
| 152 | 1.8.21.3 | Atendimento de Comentário | 5d | 2026-08-18 | 2026-08-25 | 151 | 2026-08-12 | 2026-08-18 | 5d | 25d | 0d |  |  |  |  |  |  |  |  | Ter 18/08/26 |  |
| 153 | 1.8.21.4 | Aprovação | 5d | 2026-08-25 | 2026-09-01 | 152 | 2026-08-19 | 2026-08-25 | 5d | 25d |  |  |  |  |  |  |  |  |  | Ter 25/08/26 |  |

| ID | WBS | Task | Duration | Start | Finish | Predecessors | Baseline start | Baseline finish | Baseline duration | Total slack | Free slack | Tipo de documento | Área | Sub-área | Disciplina | Título | Formato | Quantidade | Agrupamento Cecal | Término_LB_R0 | Início_LB_R0 |
| --- | --- | --- | --- | --- | --- | --- | --- | --- | --- | --- | --- | --- | --- | --- | --- | --- | --- | --- | --- | --- | --- |
| 154 | 1.8.22 | **DT-F0009-0302-MB-L-00012** | 20d | 2026-08-11 | 2026-09-08 |  | 2026-08-05 | 2026-09-01 | 20d | 5d |  | DT - Detalhe Típico | 03 - REDUÇÃO | 02 - CARREGAMENTO | L - MECÂNICA / ARRANJOS | TUBULACOES DE DESCARGA SISTEMA DE CARREGAMENTO | A1 (841x594mm) | 01 | Revisão do sistema de carregamento | Ter 01/09/26 | Qua 05/08/26 |
| 155 | 1.8.22.1 | Emissão inicial | 10d | 2026-08-11 | 2026-08-25 | 150 | 2026-08-05 | 2026-08-18 | 10d | 5d | 0d |  |  |  |  |  |  |  |  | Ter 18/08/26 |  |
| 156 | 1.8.22.2 | Avaliação do Cliente | 5d | 2026-08-25 | 2026-09-01 | 155 | 2026-08-19 | 2026-08-25 | 5d | 20d | 0d |  |  |  |  |  |  |  |  | Ter 25/08/26 |  |
| 157 | 1.8.22.3 | Atendimento de Comentário | 3d | 2026-09-01 | 2026-09-04 | 156 | 2026-08-26 | 2026-08-28 | 3d | 20d | 0d |  |  |  |  |  |  |  |  | Sex 28/08/26 |  |
| 158 | 1.8.22.4 | Aprovação | 2d | 2026-09-04 | 2026-09-08 | 157 | 2026-08-31 | 2026-09-01 | 2d | 20d |  |  |  |  |  |  |  |  |  | Ter 01/09/26 |  |
| 159 | 1.8.23 | **DT-F0009-0302-MB-L-00013** | 20d | 2026-08-11 | 2026-09-08 |  | 2026-08-05 | 2026-09-01 | 20d | 20d |  | DT - Detalhe Típico | 03 - REDUÇÃO | 02 - CARREGAMENTO | L - MECÂNICA / ARRANJOS | BAR SYSTEM - CALHAS ARRENGEMENT | A1 (841x594mm) | 01 | Revisão do sistema de carregamento | Ter 01/09/26 | Qua 05/08/26 |
| 160 | 1.8.23.1 | Emissão inicial | 10d | 2026-08-11 | 2026-08-25 | 150 | 2026-08-05 | 2026-08-18 | 10d | 20d | 0d |  |  |  |  |  |  |  |  | Ter 18/08/26 |  |
| 161 | 1.8.23.2 | Avaliação do Cliente | 5d | 2026-08-25 | 2026-09-01 | 160 | 2026-08-19 | 2026-08-25 | 5d | 20d | 0d |  |  |  |  |  |  |  |  | Ter 25/08/26 |  |
| 162 | 1.8.23.3 | Atendimento de Comentário | 3d | 2026-09-01 | 2026-09-04 | 161 | 2026-08-26 | 2026-08-28 | 3d | 20d | 0d |  |  |  |  |  |  |  |  | Sex 28/08/26 |  |
| 163 | 1.8.23.4 | Aprovação | 2d | 2026-09-04 | 2026-09-08 | 162 | 2026-08-31 | 2026-09-01 | 2d | 20d |  |  |  |  |  |  |  |  |  | Ter 01/09/26 |  |
| 164 | 1.8.24 | **DT-F0009-0302-MB-L-00014** | 20d | 2026-08-11 | 2026-09-08 |  | 2026-08-05 | 2026-09-01 | 20d | 20d |  | DT - Detalhe Típico | 03 - REDUÇÃO | 02 - CARREGAMENTO | L - MECÂNICA / ARRANJOS | BAR CALHAS - MARCA A | A1 (841x594mm) | 01 | Revisão do sistema de carregamento | Ter 01/09/26 | Qua 05/08/26 |
| 165 | 1.8.24.1 | Emissão inicial | 10d | 2026-08-11 | 2026-08-25 | 150 | 2026-08-05 | 2026-08-18 | 10d | 20d | 0d |  |  |  |  |  |  |  |  | Ter 18/08/26 |  |
| 166 | 1.8.24.2 | Avaliação do Cliente | 5d | 2026-08-25 | 2026-09-01 | 165 | 2026-08-19 | 2026-08-25 | 5d | 20d | 0d |  |  |  |  |  |  |  |  | Ter 25/08/26 |  |
| 167 | 1.8.24.3 | Atendimento de Comentário | 3d | 2026-09-01 | 2026-09-04 | 166 | 2026-08-26 | 2026-08-28 | 3d | 20d | 0d |  |  |  |  |  |  |  |  | Sex 28/08/26 |  |
| 168 | 1.8.24.4 | Aprovação | 2d | 2026-09-04 | 2026-09-08 | 167 | 2026-08-31 | 2026-09-01 | 2d | 20d |  |  |  |  |  |  |  |  |  | Ter 01/09/26 |  |
| 169 | 1.8.25 | **DT-F0009-0302-MB-L-00015** | 20d | 2026-08-11 | 2026-09-08 |  | 2026-08-05 | 2026-09-01 | 20d | 20d |  | DT - Detalhe Típico | 03 - REDUÇÃO | 02 - CARREGAMENTO | L - MECÂNICA / ARRANJOS | BAR CALHAS - MARCA B | A1 (841x594mm) | 01 | Revisão do sistema de carregamento | Ter 01/09/26 | Qua 05/08/26 |
| 170 | 1.8.25.1 | Emissão inicial | 10d | 2026-08-11 | 2026-08-25 | 150 | 2026-08-05 | 2026-08-18 | 10d | 20d | 0d |  |  |  |  |  |  |  |  | Ter 18/08/26 |  |
| 171 | 1.8.25.2 | Avaliação do Cliente | 5d | 2026-08-25 | 2026-09-01 | 170 | 2026-08-19 | 2026-08-25 | 5d | 20d | 0d |  |  |  |  |  |  |  |  | Ter 25/08/26 |  |
| 172 | 1.8.25.3 | Atendimento de Comentário | 3d | 2026-09-01 | 2026-09-04 | 171 | 2026-08-26 | 2026-08-28 | 3d | 20d | 0d |  |  |  |  |  |  |  |  | Sex 28/08/26 |  |
| 173 | 1.8.25.4 | Aprovação | 2d | 2026-09-04 | 2026-09-08 | 172 | 2026-08-31 | 2026-09-01 | 2d | 20d |  |  |  |  |  |  |  |  |  | Ter 01/09/26 |  |
| 174 | 1.8.26 | **DT-F0009-0302-MB-L-00016** | 20d | 2026-08-11 | 2026-09-08 |  | 2026-08-05 | 2026-09-01 | 20d | 20d |  | DT - Detalhe Típico | 03 - REDUÇÃO | 02 - CARREGAMENTO | L - MECÂNICA / ARRANJOS | BAR CALHAS - MARCA C | A1 (841x594mm) | 01 | Revisão do sistema de carregamento | Ter 01/09/26 | Qua 05/08/26 |
| 175 | 1.8.26.1 | Emissão inicial | 10d | 2026-08-11 | 2026-08-25 | 150 | 2026-08-05 | 2026-08-18 | 10d | 20d | 0d |  |  |  |  |  |  |  |  | Ter 18/08/26 |  |
| 176 | 1.8.26.2 | Avaliação do Cliente | 5d | 2026-08-25 | 2026-09-01 | 175 | 2026-08-19 | 2026-08-25 | 5d | 20d | 0d |  |  |  |  |  |  |  |  | Ter 25/08/26 |  |
| 177 | 1.8.26.3 | Atendimento de Comentário | 3d | 2026-09-01 | 2026-09-04 | 176 | 2026-08-26 | 2026-08-28 | 3d | 20d | 0d |  |  |  |  |  |  |  |  | Sex 28/08/26 |  |
| 178 | 1.8.26.4 | Aprovação | 2d | 2026-09-04 | 2026-09-08 | 177 | 2026-08-31 | 2026-09-01 | 2d | 20d |  |  |  |  |  |  |  |  |  | Ter 01/09/26 |  |

| ID | WBS | Task | Duration | Start | Finish | Predecessors | Baseline start | Baseline finish | Baseline duration | Total slack | Free slack | Tipo de documento | Área | Sub-área | Disciplina | Título | Formato | Quantidade | Agrupamento Cecal | Término_LB_R0 | Início_LB_R0 |
| --- | --- | --- | --- | --- | --- | --- | --- | --- | --- | --- | --- | --- | --- | --- | --- | --- | --- | --- | --- | --- | --- |
| 179 | 1.8.27 | **DT-F0009-0302-MB-L-00017** | 20d | 2026-08-11 | 2026-09-08 |  | 2026-08-05 | 2026-09-01 | 20d | 20d |  | DT - Detalhe Típico | 03 - REDUÇÃO | 02 - CARREGAMENTO | L - MECÂNICA / ARRANJOS | BAR CALHAS - MARCA D | A1 (841x594mm) | 01 | Revisão do sistema de carregamento | Ter 01/09/26 | Qua 05/08/26 |
| 180 | 1.8.27.1 | Emissão inicial | 10d | 2026-08-11 | 2026-08-25 | 150 | 2026-08-05 | 2026-08-18 | 10d | 20d | 0d |  |  |  |  |  |  |  |  | Ter 18/08/26 |  |
| 181 | 1.8.27.2 | Avaliação do Cliente | 5d | 2026-08-25 | 2026-09-01 | 180 | 2026-08-19 | 2026-08-25 | 5d | 20d | 0d |  |  |  |  |  |  |  |  | Ter 25/08/26 |  |
| 182 | 1.8.27.3 | Atendimento de Comentário | 3d | 2026-09-01 | 2026-09-04 | 181 | 2026-08-26 | 2026-08-28 | 3d | 20d | 0d |  |  |  |  |  |  |  |  | Sex 28/08/26 |  |
| 183 | 1.8.27.4 | Aprovação | 2d | 2026-09-04 | 2026-09-08 | 182 | 2026-08-31 | 2026-09-01 | 2d | 20d |  |  |  |  |  |  |  |  |  | Ter 01/09/26 |  |
| 184 | 1.8.28 | **DT-F0009-0302-MB-L-00018** | 20d | 2026-08-11 | 2026-09-08 |  | 2026-08-05 | 2026-09-01 | 20d | 20d |  | DT - Detalhe Típico | 03 - REDUÇÃO | 02 - CARREGAMENTO | L - MECÂNICA / ARRANJOS | BAR CALHAS - DETAIL TUBES | A1 (841x594mm) | 01 | Revisão do sistema de carregamento | Ter 01/09/26 | Qua 05/08/26 |
| 185 | 1.8.28.1 | Emissão inicial | 10d | 2026-08-11 | 2026-08-25 | 150 | 2026-08-05 | 2026-08-18 | 10d | 20d | 0d |  |  |  |  |  |  |  |  | Ter 18/08/26 |  |
| 186 | 1.8.28.2 | Avaliação do Cliente | 5d | 2026-08-25 | 2026-09-01 | 185 | 2026-08-19 | 2026-08-25 | 5d | 20d | 0d |  |  |  |  |  |  |  |  | Ter 25/08/26 |  |
| 187 | 1.8.28.3 | Atendimento de Comentário | 3d | 2026-09-01 | 2026-09-04 | 186 | 2026-08-26 | 2026-08-28 | 3d | 20d | 0d |  |  |  |  |  |  |  |  | Sex 28/08/26 |  |
| 188 | 1.8.28.4 | Aprovação | 2d | 2026-09-04 | 2026-09-08 | 187 | 2026-08-31 | 2026-09-01 | 2d | 20d |  |  |  |  |  |  |  |  |  | Ter 01/09/26 |  |
| 189 | 1.8.29 | **DT-F0009-0302-MB-L-00019** | 20d | 2026-08-11 | 2026-09-08 |  | 2026-08-05 | 2026-09-01 | 20d | 20d |  | DT - Detalhe Típico | 03 - REDUÇÃO | 02 - CARREGAMENTO | L - MECÂNICA / ARRANJOS | BAR CALHAS - DETAIL TUBES 2 | A1 (841x594mm) | 01 | Revisão do sistema de carregamento | Ter 01/09/26 | Qua 05/08/26 |
| 190 | 1.8.29.1 | Emissão inicial | 10d | 2026-08-11 | 2026-08-25 | 150 | 2026-08-05 | 2026-08-18 | 10d | 20d | 0d |  |  |  |  |  |  |  |  | Ter 18/08/26 |  |
| 191 | 1.8.29.2 | Avaliação do Cliente | 5d | 2026-08-25 | 2026-09-01 | 190 | 2026-08-19 | 2026-08-25 | 5d | 20d | 0d |  |  |  |  |  |  |  |  | Ter 25/08/26 |  |
| 192 | 1.8.29.3 | Atendimento de Comentário | 3d | 2026-09-01 | 2026-09-04 | 191 | 2026-08-26 | 2026-08-28 | 3d | 20d | 0d |  |  |  |  |  |  |  |  | Sex 28/08/26 |  |
| 193 | 1.8.29.4 | Aprovação | 2d | 2026-09-04 | 2026-09-08 | 192 | 2026-08-31 | 2026-09-01 | 2d | 20d |  |  |  |  |  |  |  |  |  | Ter 01/09/26 |  |
| 194 | 1.8.30 | **DT-F0009-0302-MB-L-00020** | 20d | 2026-08-11 | 2026-09-08 |  | 2026-08-05 | 2026-09-01 | 20d | 10d |  | DT - Detalhe Típico | 03 - REDUÇÃO | 02 - CARREGAMENTO | L - MECÂNICA / ARRANJOS | COMBUSTÍVEL LATERAL - TUBULAÇÃO | A1 (841x594mm) | 01 | Revisão do sistema de carregamento | Ter 01/09/26 | Qua 05/08/26 |
| 195 | 1.8.30.1 | Emissão inicial | 10d | 2026-08-11 | 2026-08-25 | 150 | 2026-08-05 | 2026-08-18 | 10d | 10d | 0d |  |  |  |  |  |  |  |  | Ter 18/08/26 |  |
| 196 | 1.8.30.2 | Avaliação do Cliente | 5d | 2026-08-25 | 2026-09-01 | 195 | 2026-08-19 | 2026-08-25 | 5d | 20d | 0d |  |  |  |  |  |  |  |  | Ter 25/08/26 |  |
| 197 | 1.8.30.3 | Atendimento de Comentário | 3d | 2026-09-01 | 2026-09-04 | 196 | 2026-08-26 | 2026-08-28 | 3d | 20d | 0d |  |  |  |  |  |  |  |  | Sex 28/08/26 |  |
| 198 | 1.8.30.4 | Aprovação | 2d | 2026-09-04 | 2026-09-08 | 197 | 2026-08-31 | 2026-09-01 | 2d | 20d |  |  |  |  |  |  |  |  |  | Ter 01/09/26 |  |
| 199 | 1.8.31 | **DT-F0009-0302-MB-L-00021** | 20d | 2026-08-11 | 2026-09-08 |  | 2026-08-05 | 2026-09-01 | 20d | 20d |  | DT - Detalhe Típico | 03 - REDUÇÃO | 02 - CARREGAMENTO | L - MECÂNICA / ARRANJOS | COMBUSTÍVEL LATERAL CALHAS - MARCA A | A1 (841x594mm) | 01 | Revisão do sistema de carregamento | Ter 01/09/26 | Qua 05/08/26 |
| 200 | 1.8.31.1 | Emissão inicial | 10d | 2026-08-11 | 2026-08-25 | 150 | 2026-08-05 | 2026-08-18 | 10d | 20d | 0d |  |  |  |  |  |  |  |  | Ter 18/08/26 |  |
| 201 | 1.8.31.2 | Avaliação do Cliente | 5d | 2026-08-25 | 2026-09-01 | 200 | 2026-08-19 | 2026-08-25 | 5d | 20d | 0d |  |  |  |  |  |  |  |  | Ter 25/08/26 |  |
| 202 | 1.8.31.3 | Atendimento de Comentário | 3d | 2026-09-01 | 2026-09-04 | 201 | 2026-08-26 | 2026-08-28 | 3d | 20d | 0d |  |  |  |  |  |  |  |  | Sex 28/08/26 |  |
| 203 | 1.8.31.4 | Aprovação | 2d | 2026-09-04 | 2026-09-08 | 202 | 2026-08-31 | 2026-09-01 | 2d | 20d |  |  |  |  |  |  |  |  |  | Ter 01/09/26 |  |

| ID | WBS | Task | Duration | Start | Finish | Predecessors | Baseline start | Baseline finish | Baseline duration | Total slack | Free slack | Tipo de documento | Área | Sub-área | Disciplina | Título | Formato | Quantidade | Agrupamento Cecal | Término_LB_R0 | Início_LB_R0 |
| --- | --- | --- | --- | --- | --- | --- | --- | --- | --- | --- | --- | --- | --- | --- | --- | --- | --- | --- | --- | --- | --- |
| 204 | 1.8.32 | **DT-F0009-0302-MB-L-00022** | 20d | 2026-08-25 | 2026-09-22 |  | 2026-08-19 | 2026-09-15 | 20d | 10d |  | DT - Detalhe Típico | 03 - REDUÇÃO | 02 - CARREGAMENTO | L - MECÂNICA / ARRANJOS | COMBUSTÍVEL LATERAL CALHAS - MARCA B | A1 (841x594mm) | 01 | Revisão do sistema de carregamento | Ter 15/09/26 | Qua 19/08/26 |
| 205 | 1.8.32.1 | Emissão inicial | 10d | 2026-08-25 | 2026-09-08 | 195 | 2026-08-19 | 2026-09-01 | 10d | 10d | 0d |  |  |  |  |  |  |  |  | Ter 01/09/26 |  |
| 206 | 1.8.32.2 | Avaliação do Cliente | 5d | 2026-09-08 | 2026-09-15 | 205 | 2026-09-02 | 2026-09-08 | 5d | 10d | 0d |  |  |  |  |  |  |  |  | Ter 08/09/26 |  |
| 207 | 1.8.32.3 | Atendimento de Comentário | 3d | 2026-09-15 | 2026-09-18 | 206 | 2026-09-09 | 2026-09-11 | 3d | 10d | 0d |  |  |  |  |  |  |  |  | Sex 11/09/26 |  |
| 208 | 1.8.32.4 | Aprovação | 2d | 2026-09-18 | 2026-09-22 | 207 | 2026-09-14 | 2026-09-15 | 2d | 10d |  |  |  |  |  |  |  |  |  | Ter 15/09/26 |  |
| 209 | 1.8.33 | **DT-F0009-0302-MB-L-00023** | 20d | 2026-08-25 | 2026-09-22 |  | 2026-08-19 | 2026-09-15 | 20d | 10d |  | DT - Detalhe Típico | 03 - REDUÇÃO | 02 - CARREGAMENTO | L - MECÂNICA / ARRANJOS | COMBUSTÍVEL LATERAL CALHAS - MARCA C | A1 (841x594mm) | 01 | Revisão do sistema de carregamento | Ter 15/09/26 | Qua 19/08/26 |
| 210 | 1.8.33.1 | Emissão inicial | 10d | 2026-08-25 | 2026-09-08 | 195 | 2026-08-19 | 2026-09-01 | 10d | 10d | 0d |  |  |  |  |  |  |  |  | Ter 01/09/26 |  |
| 211 | 1.8.33.2 | Avaliação do Cliente | 5d | 2026-09-08 | 2026-09-15 | 210 | 2026-09-02 | 2026-09-08 | 5d | 10d | 0d |  |  |  |  |  |  |  |  | Ter 08/09/26 |  |
| 212 | 1.8.33.3 | Atendimento de Comentário | 3d | 2026-09-15 | 2026-09-18 | 211 | 2026-09-09 | 2026-09-11 | 3d | 10d | 0d |  |  |  |  |  |  |  |  | Sex 11/09/26 |  |
| 213 | 1.8.33.4 | Aprovação | 2d | 2026-09-18 | 2026-09-22 | 212 | 2026-09-14 | 2026-09-15 | 2d | 10d |  |  |  |  |  |  |  |  |  | Ter 15/09/26 |  |
| 214 | 1.8.34 | **DT-F0009-0302-MB-L-00024** | 20d | 2026-08-25 | 2026-09-22 |  | 2026-08-19 | 2026-09-15 | 20d | 10d |  | DT - Detalhe Típico | 03 - REDUÇÃO | 02 - CARREGAMENTO | L - MECÂNICA / ARRANJOS | COMBUSTÍVEL LATERAL CALHAS - MARCA D | A1 (841x594mm) | 01 | Revisão do sistema de carregamento | Ter 15/09/26 | Qua 19/08/26 |
| 215 | 1.8.34.1 | Emissão inicial | 10d | 2026-08-25 | 2026-09-08 | 195 | 2026-08-19 | 2026-09-01 | 10d | 10d | 0d |  |  |  |  |  |  |  |  | Ter 01/09/26 |  |
| 216 | 1.8.34.2 | Avaliação do Cliente | 5d | 2026-09-08 | 2026-09-15 | 215 | 2026-09-02 | 2026-09-08 | 5d | 10d | 0d |  |  |  |  |  |  |  |  | Ter 08/09/26 |  |
| 217 | 1.8.34.3 | Atendimento de Comentário | 3d | 2026-09-15 | 2026-09-18 | 216 | 2026-09-09 | 2026-09-11 | 3d | 10d | 0d |  |  |  |  |  |  |  |  | Sex 11/09/26 |  |
| 218 | 1.8.34.4 | Aprovação | 2d | 2026-09-18 | 2026-09-22 | 217 | 2026-09-14 | 2026-09-15 | 2d | 10d |  |  |  |  |  |  |  |  |  | Ter 15/09/26 |  |
| 219 | 1.8.35 | **DT-F0009-0302-MB-L-00025** | 20d | 2026-08-25 | 2026-09-22 |  | 2026-08-19 | 2026-09-15 | 20d | 10d |  | DT - Detalhe Típico | 03 - REDUÇÃO | 02 - CARREGAMENTO | L - MECÂNICA / ARRANJOS | COMBUSTÍVEL LATERAL - DETALHES DOS TUBOS 1 | A1 (841x594mm) | 01 | Revisão do sistema de carregamento | Ter 15/09/26 | Qua 19/08/26 |
| 220 | 1.8.35.1 | Emissão inicial | 10d | 2026-08-25 | 2026-09-08 | 195 | 2026-08-19 | 2026-09-01 | 10d | 10d | 0d |  |  |  |  |  |  |  |  | Ter 01/09/26 |  |
| 221 | 1.8.35.2 | Avaliação do Cliente | 5d | 2026-09-08 | 2026-09-15 | 220 | 2026-09-02 | 2026-09-08 | 5d | 10d | 0d |  |  |  |  |  |  |  |  | Ter 08/09/26 |  |
| 222 | 1.8.35.3 | Atendimento de Comentário | 3d | 2026-09-15 | 2026-09-18 | 221 | 2026-09-09 | 2026-09-11 | 3d | 10d | 0d |  |  |  |  |  |  |  |  | Sex 11/09/26 |  |
| 223 | 1.8.35.4 | Aprovação | 2d | 2026-09-18 | 2026-09-22 | 222 | 2026-09-14 | 2026-09-15 | 2d | 10d |  |  |  |  |  |  |  |  |  | Ter 15/09/26 |  |
| 224 | 1.8.36 | **DT-F0009-0302-MB-L-00026** | 20d | 2026-08-25 | 2026-09-22 |  | 2026-08-19 | 2026-09-15 | 20d | 10d |  | DT - Detalhe Típico | 03 - REDUÇÃO | 02 - CARREGAMENTO | L - MECÂNICA / ARRANJOS | COMBUSTÍVEL LATERAL - DETALHES DOS TUBOS 2 | A1 (841x594mm) | 01 | Revisão do sistema de carregamento | Ter 15/09/26 | Qua 19/08/26 |
| 225 | 1.8.36.1 | Emissão inicial | 10d | 2026-08-25 | 2026-09-08 | 195 | 2026-08-19 | 2026-09-01 | 10d | 10d | 0d |  |  |  |  |  |  |  |  | Ter 01/09/26 |  |
| 226 | 1.8.36.2 | Avaliação do Cliente | 5d | 2026-09-08 | 2026-09-15 | 225 | 2026-09-02 | 2026-09-08 | 5d | 10d | 0d |  |  |  |  |  |  |  |  | Ter 08/09/26 |  |
| 227 | 1.8.36.3 | Atendimento de Comentário | 3d | 2026-09-15 | 2026-09-18 | 226 | 2026-09-09 | 2026-09-11 | 3d | 10d | 0d |  |  |  |  |  |  |  |  | Sex 11/09/26 |  |
| 228 | 1.8.36.4 | Aprovação | 2d | 2026-09-18 | 2026-09-22 | 227 | 2026-09-14 | 2026-09-15 | 2d | 10d |  |  |  |  |  |  |  |  |  | Ter 15/09/26 |  |

| ID | WBS | Task | Duration | Start | Finish | Predecessors | Baseline start | Baseline finish | Baseline duration | Total slack | Free slack | Tipo de documento | Área | Sub-área | Disciplina | Título | Formato | Quantidade | Agrupamento Cecal | Término_LB_R0 | Início_LB_R0 |
| --- | --- | --- | --- | --- | --- | --- | --- | --- | --- | --- | --- | --- | --- | --- | --- | --- | --- | --- | --- | --- | --- |
| 229 | 1.8.37 | **DT-F0009-0302-MB-L-00027** | 20d | 2026-08-25 | 2026-09-22 |  | 2026-08-19 | 2026-09-15 | 20d | 10d |  | DT - Detalhe Típico | 03 - REDUÇÃO | 02 - CARREGAMENTO | L - MECÂNICA / ARRANJOS | BOOSTER SYSTEM - CALHAS ARRENGEMENT | A1 (841x594mm) | 01 | Revisão do sistema de carregamento | Ter 15/09/26 | Qua 19/08/26 |
| 230 | 1.8.37.1 | Emissão inicial | 10d | 2026-08-25 | 2026-09-08 | 195 | 2026-08-19 | 2026-09-01 | 10d | 10d | 0d |  |  |  |  |  |  |  |  | Ter 01/09/26 |  |
| 231 | 1.8.37.2 | Avaliação do Cliente | 5d | 2026-09-08 | 2026-09-15 | 230 | 2026-09-02 | 2026-09-08 | 5d | 10d | 0d |  |  |  |  |  |  |  |  | Ter 08/09/26 |  |
| 232 | 1.8.37.3 | Atendimento de Comentário | 3d | 2026-09-15 | 2026-09-18 | 231 | 2026-09-09 | 2026-09-11 | 3d | 10d | 0d |  |  |  |  |  |  |  |  | Sex 11/09/26 |  |
| 233 | 1.8.37.4 | Aprovação | 2d | 2026-09-18 | 2026-09-22 | 232 | 2026-09-14 | 2026-09-15 | 2d | 10d |  |  |  |  |  |  |  |  |  | Ter 15/09/26 |  |
| 234 | 1.8.38 | **DT-F0009-0302-MB-L-00028** | 20d | 2026-08-25 | 2026-09-22 |  | 2026-08-19 | 2026-09-15 | 20d | 10d |  | DT - Detalhe Típico | 03 - REDUÇÃO | 02 - CARREGAMENTO | L - MECÂNICA / ARRANJOS | BOOSTER CALHAS - MARCAS A | A1 (841x594mm) | 01 | Revisão do sistema de carregamento | Ter 15/09/26 | Qua 19/08/26 |
| 235 | 1.8.38.1 | Emissão inicial | 10d | 2026-08-25 | 2026-09-08 | 195 | 2026-08-19 | 2026-09-01 | 10d | 10d | 0d |  |  |  |  |  |  |  |  | Ter 01/09/26 |  |
| 236 | 1.8.38.2 | Avaliação do Cliente | 5d | 2026-09-08 | 2026-09-15 | 235 | 2026-09-02 | 2026-09-08 | 5d | 10d | 0d |  |  |  |  |  |  |  |  | Ter 08/09/26 |  |
| 237 | 1.8.38.3 | Atendimento de Comentário | 3d | 2026-09-15 | 2026-09-18 | 236 | 2026-09-09 | 2026-09-11 | 3d | 10d | 0d |  |  |  |  |  |  |  |  | Sex 11/09/26 |  |
| 238 | 1.8.38.4 | Aprovação | 2d | 2026-09-18 | 2026-09-22 | 237 | 2026-09-14 | 2026-09-15 | 2d | 10d |  |  |  |  |  |  |  |  |  | Ter 15/09/26 |  |
| 239 | 1.8.39 | **DT-F0009-0302-MB-L-00029** | 20d | 2026-08-25 | 2026-09-22 |  | 2026-08-19 | 2026-09-15 | 20d | 10d |  | DT - Detalhe Típico | 03 - REDUÇÃO | 02 - CARREGAMENTO | L - MECÂNICA / ARRANJOS | BOOSTER CALHAS - MARCAS B | A1 (841x594mm) | 01 | Revisão do sistema de carregamento | Ter 15/09/26 | Qua 19/08/26 |
| 240 | 1.8.39.1 | Emissão inicial | 10d | 2026-08-25 | 2026-09-08 | 195 | 2026-08-19 | 2026-09-01 | 10d | 10d | 0d |  |  |  |  |  |  |  |  | Ter 01/09/26 |  |
| 241 | 1.8.39.2 | Avaliação do Cliente | 5d | 2026-09-08 | 2026-09-15 | 240 | 2026-09-02 | 2026-09-08 | 5d | 10d | 0d |  |  |  |  |  |  |  |  | Ter 08/09/26 |  |
| 242 | 1.8.39.3 | Atendimento de Comentário | 3d | 2026-09-15 | 2026-09-18 | 241 | 2026-09-09 | 2026-09-11 | 3d | 10d | 0d |  |  |  |  |  |  |  |  | Sex 11/09/26 |  |
| 243 | 1.8.39.4 | Aprovação | 2d | 2026-09-18 | 2026-09-22 | 242 | 2026-09-14 | 2026-09-15 | 2d | 10d |  |  |  |  |  |  |  |  |  | Ter 15/09/26 |  |
| 244 | 1.8.40 | **DT-F0009-0302-MB-L-00030** | 20d | 2026-08-25 | 2026-09-22 |  | 2026-08-19 | 2026-09-15 | 20d | 10d |  | DT - Detalhe Típico | 03 - REDUÇÃO | 02 - CARREGAMENTO | L - MECÂNICA / ARRANJOS | BOOSTER CALHAS - MARCAS C | A1 (841x594mm) | 01 | Revisão do sistema de carregamento | Ter 15/09/26 | Qua 19/08/26 |
| 245 | 1.8.40.1 | Emissão inicial | 10d | 2026-08-25 | 2026-09-08 | 195 | 2026-08-19 | 2026-09-01 | 10d | 10d | 0d |  |  |  |  |  |  |  |  | Ter 01/09/26 |  |
| 246 | 1.8.40.2 | Avaliação do Cliente | 5d | 2026-09-08 | 2026-09-15 | 245 | 2026-09-02 | 2026-09-08 | 5d | 10d | 0d |  |  |  |  |  |  |  |  | Ter 08/09/26 |  |
| 247 | 1.8.40.3 | Atendimento de Comentário | 3d | 2026-09-15 | 2026-09-18 | 246 | 2026-09-09 | 2026-09-11 | 3d | 10d | 0d |  |  |  |  |  |  |  |  | Sex 11/09/26 |  |
| 248 | 1.8.40.4 | Aprovação | 2d | 2026-09-18 | 2026-09-22 | 247 | 2026-09-14 | 2026-09-15 | 2d | 10d |  |  |  |  |  |  |  |  |  | Ter 15/09/26 |  |
| 249 | 1.8.41 | **DT-F0009-0302-MB-L-00031** | 20d | 2026-08-25 | 2026-09-22 |  | 2026-08-19 | 2026-09-15 | 20d | 10d |  | DT - Detalhe Típico | 03 - REDUÇÃO | 02 - CARREGAMENTO | L - MECÂNICA / ARRANJOS | BOOSTER CALHAS - DETAIL TUBES | A1 (841x594mm) | 01 | Revisão do sistema de carregamento | Ter 15/09/26 | Qua 19/08/26 |
| 250 | 1.8.41.1 | Emissão inicial | 10d | 2026-08-25 | 2026-09-08 | 195 | 2026-08-19 | 2026-09-01 | 10d | 10d | 0d |  |  |  |  |  |  |  |  | Ter 01/09/26 |  |
| 251 | 1.8.41.2 | Avaliação do Cliente | 5d | 2026-09-08 | 2026-09-15 | 250 | 2026-09-02 | 2026-09-08 | 5d | 10d | 0d |  |  |  |  |  |  |  |  | Ter 08/09/26 |  |
| 252 | 1.8.41.3 | Atendimento de Comentário | 3d | 2026-09-15 | 2026-09-18 | 251 | 2026-09-09 | 2026-09-11 | 3d | 10d | 0d |  |  |  |  |  |  |  |  | Sex 11/09/26 |  |
| 253 | 1.8.41.4 | Aprovação | 2d | 2026-09-18 | 2026-09-22 | 252 | 2026-09-14 | 2026-09-15 | 2d | 10d |  |  |  |  |  |  |  |  |  | Ter 15/09/26 |  |

| ID | WBS | Task | Duration | Start | Finish | Predecessors | Baseline start | Baseline finish | Baseline duration | Total slack | Free slack | Constraint | Tipo de documento | Área | Sub-área | Disciplina | Título | Formato | Quantidade | Agrupamento Cecal | Término_LB_R0 | Início_LB_R0 |
| --- | --- | --- | --- | --- | --- | --- | --- | --- | --- | --- | --- | --- | --- | --- | --- | --- | --- | --- | --- | --- | --- | --- |
| 254 | 1.8.42 | **AG-F0009-0309-MB-L-00001** | 20d | 2026-07-30 | 2026-08-27 | 19 | 2026-07-23 | 2026-08-20 | 20d | 28d |  |  | AG - Arranjo (AG) | 03 - REDUÇÃO | 09 - FORNO TECNORED | L - MECÂNICA / ARRANJOS | ARRANJO GERAL DOS FORNOS E FUNDAÇÃO | A1 (841x594mm) | 01 | Readequação da fundação | Qui 20/08/26 | Qui 23/07/26 |
| 255 | 1.8.42.1 | Emissão inicial | 10d | 2026-07-30 | 2026-08-13 | 908 | 2026-07-23 | 2026-08-06 | 10d | 28d | 0d | finish no earlier than 2026-07-07 |  |  |  |  |  |  |  |  | Qui 06/08/26 |  |
| 256 | 1.8.42.2 | Avaliação do Cliente | 5d | 2026-08-13 | 2026-08-20 | 255 | 2026-08-06 | 2026-08-13 | 5d | 28d | 0d | finish no earlier than 2026-07-07 |  |  |  |  |  |  |  |  | Qui 13/08/26 |  |
| 257 | 1.8.42.3 | Atendimento de Comentário | 3d | 2026-08-20 | 2026-08-25 | 256 | 2026-08-13 | 2026-08-18 | 3d | 28d | 0d | finish no earlier than 2026-07-07 |  |  |  |  |  |  |  |  | Ter 18/08/26 |  |
| 258 | 1.8.42.4 | Aprovação | 2d | 2026-08-25 | 2026-08-27 | 257 | 2026-08-18 | 2026-08-20 | 2d | 28d |  | finish no earlier than 2026-07-07 |  |  |  |  |  |  |  |  | Qui 20/08/26 |  |
| 259 | 1.8.43 | **AG-F0009-0309-MB-L-00002** | 20d | 2026-07-16 | 2026-08-13 |  | 2026-07-09 | 2026-08-06 | 20d | 38d |  |  | AG - Arranjo (AG) | 03 - REDUÇÃO | 09 - FORNO TECNORED | L - MECÂNICA / ARRANJOS | FR-400A FORNO PRÓPRIO | A1 (841x594mm) | 01 | Revisão do projeto do forno - carcaça e refratário | Qui 06/08/26 | Qui 09/07/26 |
| 260 | 1.8.43.1 | Emissão inicial | 10d | 2026-07-16 | 2026-07-30 | 255SF | 2026-07-09 | 2026-07-23 | 10d | 38d | 0d | finish no earlier than 2026-07-21 |  |  |  |  |  |  |  |  | Qui 23/07/26 |  |
| 261 | 1.8.43.2 | Avaliação do Cliente | 5d | 2026-07-30 | 2026-08-06 | 260 | 2026-07-23 | 2026-07-30 | 5d | 38d | 0d | finish no earlier than 2026-07-21 |  |  |  |  |  |  |  |  | Qui 30/07/26 |  |
| 262 | 1.8.43.3 | Atendimento de Comentário | 3d | 2026-08-06 | 2026-08-11 | 261 | 2026-07-30 | 2026-08-04 | 3d | 38d | 0d | finish no earlier than 2026-07-21 |  |  |  |  |  |  |  |  | Ter 04/08/26 |  |
| 263 | 1.8.43.4 | Aprovação | 2d | 2026-08-11 | 2026-08-13 | 262 | 2026-08-04 | 2026-08-06 | 2d | 38d |  | finish no earlier than 2026-07-21 |  |  |  |  |  |  |  |  | Qui 06/08/26 |  |
| 264 | 1.8.44 | **AG-F0009-0309-MB-L-00003** | 20d | 2026-07-16 | 2026-08-13 |  | 2026-07-09 | 2026-08-06 | 20d | 38d |  |  | AG - Arranjo (AG) | 03 - REDUÇÃO | 09 - FORNO TECNORED | L - MECÂNICA / ARRANJOS | FR-400A GEOMETRIA INTERNA | A1 (841x594mm) | 01 | Revisão do projeto do forno - carcaça e refratário | Qui 06/08/26 | Qui 09/07/26 |
| 265 | 1.8.44.1 | Emissão inicial | 10d | 2026-07-16 | 2026-07-30 | 255SF | 2026-07-09 | 2026-07-23 | 10d | 38d | 0d | finish no earlier than 2026-07-21 |  |  |  |  |  |  |  |  | Qui 23/07/26 |  |
| 266 | 1.8.44.2 | Avaliação do Cliente | 5d | 2026-07-30 | 2026-08-06 | 265 | 2026-07-23 | 2026-07-30 | 5d | 38d | 0d | finish no earlier than 2026-07-21 |  |  |  |  |  |  |  |  | Qui 30/07/26 |  |
| 267 | 1.8.44.3 | Atendimento de Comentário | 3d | 2026-08-06 | 2026-08-11 | 266 | 2026-07-30 | 2026-08-04 | 3d | 38d | 0d | finish no earlier than 2026-07-21 |  |  |  |  |  |  |  |  | Ter 04/08/26 |  |
| 268 | 1.8.44.4 | Aprovação | 2d | 2026-08-11 | 2026-08-13 | 267 | 2026-08-04 | 2026-08-06 | 2d | 38d |  | finish no earlier than 2026-07-21 |  |  |  |  |  |  |  |  | Qui 06/08/26 |  |
| 269 | 1.8.45 | **AG-F0009-0309-MB-L-00004** | 20d | 2026-07-16 | 2026-08-13 |  | 2026-07-09 | 2026-08-06 | 20d | 38d |  |  | AG - Arranjo (AG) | 03 - REDUÇÃO | 09 - FORNO TECNORED | L - MECÂNICA / ARRANJOS | FORNOS COMPONENTES PRINCIPAIS | A1 (841x594mm) | 01 | Revisão do projeto do forno - carcaça e refratário | Qui 06/08/26 | Qui 09/07/26 |
| 270 | 1.8.45.1 | Emissão inicial | 10d | 2026-07-16 | 2026-07-30 | 255SF | 2026-07-09 | 2026-07-23 | 10d | 38d | 0d | finish no earlier than 2026-07-21 |  |  |  |  |  |  |  |  | Qui 23/07/26 |  |
| 271 | 1.8.45.2 | Avaliação do Cliente | 5d | 2026-07-30 | 2026-08-06 | 270 | 2026-07-23 | 2026-07-30 | 5d | 38d | 0d | finish no earlier than 2026-07-21 |  |  |  |  |  |  |  |  | Qui 30/07/26 |  |
| 272 | 1.8.45.3 | Atendimento de Comentário | 3d | 2026-08-06 | 2026-08-11 | 271 | 2026-07-30 | 2026-08-04 | 3d | 38d | 0d | finish no earlier than 2026-07-21 |  |  |  |  |  |  |  |  | Ter 04/08/26 |  |
| 273 | 1.8.45.4 | Aprovação | 2d | 2026-08-11 | 2026-08-13 | 272 | 2026-08-04 | 2026-08-06 | 2d | 38d |  | finish no earlier than 2026-07-21 |  |  |  |  |  |  |  |  | Qui 06/08/26 |  |
| 274 | 1.8.46 | **AG-F0009-0309-MB-L-00005** | 20d | 2026-07-16 | 2026-08-13 |  | 2026-07-09 | 2026-08-06 | 20d | 38d |  |  | AG - Arranjo (AG) | 03 - REDUÇÃO | 09 - FORNO TECNORED | L - MECÂNICA / ARRANJOS | FR-400B FORNO PROPRIO | A1 (841x594mm) | 01 | Revisão do projeto do forno - carcaça e refratário | Qui 06/08/26 | Qui 09/07/26 |
| 275 | 1.8.46.1 | Emissão inicial | 10d | 2026-07-16 | 2026-07-30 | 255SF | 2026-07-09 | 2026-07-23 | 10d | 38d | 0d | finish no earlier than 2026-07-21 |  |  |  |  |  |  |  |  | Qui 23/07/26 |  |
| 276 | 1.8.46.2 | Avaliação do Cliente | 5d | 2026-07-30 | 2026-08-06 | 275 | 2026-07-23 | 2026-07-30 | 5d | 38d | 0d | finish no earlier than 2026-07-21 |  |  |  |  |  |  |  |  | Qui 30/07/26 |  |
| 277 | 1.8.46.3 | Atendimento de Comentário | 3d | 2026-08-06 | 2026-08-11 | 276 | 2026-07-30 | 2026-08-04 | 3d | 38d | 0d | finish no earlier than 2026-07-21 |  |  |  |  |  |  |  |  | Ter 04/08/26 |  |
| 278 | 1.8.46.4 | Aprovação | 2d | 2026-08-11 | 2026-08-13 | 277 | 2026-08-04 | 2026-08-06 | 2d | 38d |  | finish no earlier than 2026-07-21 |  |  |  |  |  |  |  |  | Qui 06/08/26 |  |

| ID | WBS | Task | Duration | Start | Finish | Predecessors | Baseline start | Baseline finish | Baseline duration | Total slack | Free slack | Constraint | Tipo de documento | Área | Sub-área | Disciplina | Título | Formato | Quantidade | Agrupamento Cecal | Término_LB_R0 | Início_LB_R0 |
| --- | --- | --- | --- | --- | --- | --- | --- | --- | --- | --- | --- | --- | --- | --- | --- | --- | --- | --- | --- | --- | --- | --- |
| 279 | 1.8.47 | **AG-F0009-0309-MB-L-00006** | 20d | 2026-07-16 | 2026-08-13 |  | 2026-07-09 | 2026-08-06 | 20d | 38d |  |  | AG - Arranjo (AG) | 03 - REDUÇÃO | 09 - FORNO TECNORED | L - MECÂNICA / ARRANJOS | FR-400B GEOMETRIA INTERNA | A1 (841x594mm) | 01 | Revisão do projeto do forno - carcaça e refratário | Qui 06/08/26 | Qui 09/07/26 |
| 280 | 1.8.47.1 | Emissão inicial | 10d | 2026-07-16 | 2026-07-30 | 255SF | 2026-07-09 | 2026-07-23 | 10d | 38d | 0d | finish no earlier than 2026-07-21 |  |  |  |  |  |  |  |  | Qui 23/07/26 |  |
| 281 | 1.8.47.2 | Avaliação do Cliente | 5d | 2026-07-30 | 2026-08-06 | 280 | 2026-07-23 | 2026-07-30 | 5d | 38d | 0d | finish no earlier than 2026-07-21 |  |  |  |  |  |  |  |  | Qui 30/07/26 |  |
| 282 | 1.8.47.3 | Atendimento de Comentário | 3d | 2026-08-06 | 2026-08-11 | 281 | 2026-07-30 | 2026-08-04 | 3d | 38d | 0d | finish no earlier than 2026-07-21 |  |  |  |  |  |  |  |  | Ter 04/08/26 |  |
| 283 | 1.8.47.4 | Aprovação | 2d | 2026-08-11 | 2026-08-13 | 282 | 2026-08-04 | 2026-08-06 | 2d | 38d |  | finish no earlier than 2026-07-21 |  |  |  |  |  |  |  |  | Qui 06/08/26 |  |
| 284 | 1.8.48 | **AG-F0009-0309-MB-L-00007** | 20d | 2026-07-16 | 2026-08-13 |  | 2026-07-09 | 2026-08-06 | 20d | 38d |  |  | AG - Arranjo (AG) | 03 - REDUÇÃO | 09 - FORNO TECNORED | L - MECÂNICA / ARRANJOS | ELEVAÇÃO FORNO E SISTEMA DE CARREGAMENTO | A1 (841x594mm) | 01 | Revisão do sistema de carregamento | Qui 06/08/26 | Qui 09/07/26 |
| 285 | 1.8.48.1 | Emissão inicial | 10d | 2026-07-16 | 2026-07-30 | 255SF | 2026-07-09 | 2026-07-23 | 10d | 38d | 0d | finish no earlier than 2026-07-21 |  |  |  |  |  |  |  |  | Qui 23/07/26 |  |
| 286 | 1.8.48.2 | Avaliação do Cliente | 5d | 2026-07-30 | 2026-08-06 | 285 | 2026-07-23 | 2026-07-30 | 5d | 38d | 0d | finish no earlier than 2026-07-21 |  |  |  |  |  |  |  |  | Qui 30/07/26 |  |
| 287 | 1.8.48.3 | Atendimento de Comentário | 3d | 2026-08-06 | 2026-08-11 | 286 | 2026-07-30 | 2026-08-04 | 3d | 38d | 0d | finish no earlier than 2026-07-21 |  |  |  |  |  |  |  |  | Ter 04/08/26 |  |
| 288 | 1.8.48.4 | Aprovação | 2d | 2026-08-11 | 2026-08-13 | 287 | 2026-08-04 | 2026-08-06 | 2d | 38d |  | finish no earlier than 2026-07-21 |  |  |  |  |  |  |  |  | Qui 06/08/26 |  |
| 289 | 1.8.49 | **AG-F0009-0309-MB-L-00008** | 20d | 2026-07-16 | 2026-08-13 |  | 2026-07-09 | 2026-08-06 | 20d | 0d |  |  | AG - Arranjo (AG) | 03 - REDUÇÃO | 09 - FORNO TECNORED | L - MECÂNICA / ARRANJOS | ELEVAÇÃO FORNO E SISTEMA DE CARREGAMENTO | A1 (841x594mm) | 01 | Revisão do sistema de carregamento | Qui 06/08/26 | Qui 09/07/26 |
| 290 | 1.8.49.1 | Emissão inicial | 10d | 2026-07-16 | 2026-07-30 | 255SF | 2026-07-09 | 2026-07-23 | 10d | 0d |  | finish no earlier than 2026-07-21 |  |  |  |  |  |  |  |  | Qui 23/07/26 |  |
| 291 | 1.8.49.2 | Avaliação do Cliente | 5d | 2026-07-30 | 2026-08-06 | 290 | 2026-07-23 | 2026-07-30 | 5d | 38d | 0d | finish no earlier than 2026-07-21 |  |  |  |  |  |  |  |  | Qui 30/07/26 |  |
| 292 | 1.8.49.3 | Atendimento de Comentário | 3d | 2026-08-06 | 2026-08-11 | 291 | 2026-07-30 | 2026-08-04 | 3d | 38d | 0d | finish no earlier than 2026-07-21 |  |  |  |  |  |  |  |  | Ter 04/08/26 |  |
| 293 | 1.8.49.4 | Aprovação | 2d | 2026-08-11 | 2026-08-13 | 292 | 2026-08-04 | 2026-08-06 | 2d | 38d |  | finish no earlier than 2026-07-21 |  |  |  |  |  |  |  |  | Qui 06/08/26 |  |
| 294 | 1.8.50 | **DT-F0009-0309-MB-L-00001** | 20d | 2026-07-30 | 2026-08-27 |  | 2026-07-23 | 2026-08-20 | 20d | 28d |  |  | DT - Detalhe Típico | 03 - REDUÇÃO | 09 - FORNO TECNORED | L - MECÂNICA / ARRANJOS | MECANISMO CURTAIN WALL | A1 (841x594mm) | 01 | Revisão do projeto do forno - carcaça e refratário | Qui 20/08/26 | Qui 23/07/26 |
| 295 | 1.8.50.1 | Emissão inicial | 10d | 2026-07-30 | 2026-08-13 | 290 | 2026-07-23 | 2026-08-06 | 10d | 28d | 0d |  |  |  |  |  |  |  |  |  | Qui 06/08/26 |  |
| 296 | 1.8.50.2 | Avaliação do Cliente | 5d | 2026-08-13 | 2026-08-20 | 295 | 2026-08-06 | 2026-08-13 | 5d | 28d | 0d |  |  |  |  |  |  |  |  |  | Qui 13/08/26 |  |
| 297 | 1.8.50.3 | Atendimento de Comentário | 3d | 2026-08-20 | 2026-08-25 | 296 | 2026-08-13 | 2026-08-18 | 3d | 28d | 0d |  |  |  |  |  |  |  |  |  | Ter 18/08/26 |  |
| 298 | 1.8.50.4 | Aprovação | 2d | 2026-08-25 | 2026-08-27 | 297 | 2026-08-18 | 2026-08-20 | 2d | 28d |  |  |  |  |  |  |  |  |  |  | Qui 20/08/26 |  |
| 299 | 1.8.51 | **DT-F0009-0309-MB-L-00002** | 20d | 2026-07-30 | 2026-08-27 |  | 2026-07-23 | 2026-08-20 | 20d | 28d |  |  | DT - Detalhe Típico | 03 - REDUÇÃO | 09 - FORNO TECNORED | L - MECÂNICA / ARRANJOS | CONJUNTO VENTANEIRA ALGARAVIZ | A1 (841x594mm) | 01 | Revisão do projeto do forno - carcaça e refratário | Qui 20/08/26 | Qui 23/07/26 |
| 300 | 1.8.51.1 | Emissão inicial | 10d | 2026-07-30 | 2026-08-13 | 290 | 2026-07-23 | 2026-08-06 | 10d | 28d | 0d |  |  |  |  |  |  |  |  |  | Qui 06/08/26 |  |
| 301 | 1.8.51.2 | Avaliação do Cliente | 5d | 2026-08-13 | 2026-08-20 | 300 | 2026-08-06 | 2026-08-13 | 5d | 28d | 0d |  |  |  |  |  |  |  |  |  | Qui 13/08/26 |  |
| 302 | 1.8.51.3 | Atendimento de Comentário | 3d | 2026-08-20 | 2026-08-25 | 301 | 2026-08-13 | 2026-08-18 | 3d | 28d | 0d |  |  |  |  |  |  |  |  |  | Ter 18/08/26 |  |
| 303 | 1.8.51.4 | Aprovação | 2d | 2026-08-25 | 2026-08-27 | 302 | 2026-08-18 | 2026-08-20 | 2d | 28d |  |  |  |  |  |  |  |  |  |  | Qui 20/08/26 |  |

| ID | WBS | Task | Duration | Start | Finish | Predecessors | Baseline start | Baseline finish | Baseline duration | Total slack | Free slack | Tipo de documento | Área | Sub-área | Disciplina | Título | Formato | Quantidade | Agrupamento Cecal | Término_LB_R0 | Início_LB_R0 |
| --- | --- | --- | --- | --- | --- | --- | --- | --- | --- | --- | --- | --- | --- | --- | --- | --- | --- | --- | --- | --- | --- |
| 304 | 1.8.52 | **DT-F0009-0309-MB-L-00003** | 20d | 2026-07-30 | 2026-08-27 |  | 2026-07-23 | 2026-08-20 | 20d | 28d |  | DT - Detalhe Típico | 03 - REDUÇÃO | 09 - FORNO TECNORED | L - MECÂNICA / ARRANJOS | VENTANEIRAS E COOLING BOX | A1 (841x594mm) | 01 | Revisão do projeto de cobre refrigerado | Qui 20/08/26 | Qui 23/07/26 |
| 305 | 1.8.52.1 | Emissão inicial | 10d | 2026-07-30 | 2026-08-13 | 290 | 2026-07-23 | 2026-08-06 | 10d | 28d | 0d |  |  |  |  |  |  |  |  | Qui 06/08/26 |  |
| 306 | 1.8.52.2 | Avaliação do Cliente | 5d | 2026-08-13 | 2026-08-20 | 305 | 2026-08-06 | 2026-08-13 | 5d | 28d | 0d |  |  |  |  |  |  |  |  | Qui 13/08/26 |  |
| 307 | 1.8.52.3 | Atendimento de Comentário | 3d | 2026-08-20 | 2026-08-25 | 306 | 2026-08-13 | 2026-08-18 | 3d | 28d | 0d |  |  |  |  |  |  |  |  | Ter 18/08/26 |  |
| 308 | 1.8.52.4 | Aprovação | 2d | 2026-08-25 | 2026-08-27 | 307 | 2026-08-18 | 2026-08-20 | 2d | 28d |  |  |  |  |  |  |  |  |  | Qui 20/08/26 |  |
| 309 | 1.8.53 | **DT-F0009-0309-MB-L-00004** | 20d | 2026-07-30 | 2026-08-27 |  | 2026-07-23 | 2026-08-20 | 20d | 0d |  | DT - Detalhe Típico | 03 - REDUÇÃO | 09 - FORNO TECNORED | L - MECÂNICA / ARRANJOS | STAVES DE COBRE | A1 (841x594mm) | 01 | Revisão do projeto de cobre refrigerado | Qui 20/08/26 | Qui 23/07/26 |
| 310 | 1.8.53.1 | Emissão inicial | 10d | 2026-07-30 | 2026-08-13 | 290 | 2026-07-23 | 2026-08-06 | 10d | 0d |  |  |  |  |  |  |  |  |  | Qui 06/08/26 |  |
| 311 | 1.8.53.2 | Avaliação do Cliente | 5d | 2026-08-13 | 2026-08-20 | 310 | 2026-08-06 | 2026-08-13 | 5d | 28d | 0d |  |  |  |  |  |  |  |  | Qui 13/08/26 |  |
| 312 | 1.8.53.3 | Atendimento de Comentário | 3d | 2026-08-20 | 2026-08-25 | 311 | 2026-08-13 | 2026-08-18 | 3d | 28d | 0d |  |  |  |  |  |  |  |  | Ter 18/08/26 |  |
| 313 | 1.8.53.4 | Aprovação | 2d | 2026-08-25 | 2026-08-27 | 312 | 2026-08-18 | 2026-08-20 | 2d | 28d |  |  |  |  |  |  |  |  |  | Qui 20/08/26 |  |
| 314 | 1.8.54 | **DT-F0009-0309-MB-L-00005** | 20d | 2026-08-13 | 2026-09-10 |  | 2026-08-06 | 2026-09-03 | 20d | 18d |  | DT - Detalhe Típico | 03 - REDUÇÃO | 09 - FORNO TECNORED | L - MECÂNICA / ARRANJOS | STAVES DE FERRO FUNDIDO | A1 (841x594mm) | 01 | Revisão do projeto de cobre refrigerado | Qui 03/09/26 | Qui 06/08/26 |
| 315 | 1.8.54.1 | Emissão inicial | 10d | 2026-08-13 | 2026-08-27 | 310 | 2026-08-06 | 2026-08-20 | 10d | 18d | 0d |  |  |  |  |  |  |  |  | Qui 20/08/26 |  |
| 316 | 1.8.54.2 | Avaliação do Cliente | 5d | 2026-08-27 | 2026-09-03 | 315 | 2026-08-20 | 2026-08-27 | 5d | 18d | 0d |  |  |  |  |  |  |  |  | Qui 27/08/26 |  |
| 317 | 1.8.54.3 | Atendimento de Comentário | 3d | 2026-09-03 | 2026-09-08 | 316 | 2026-08-27 | 2026-09-01 | 3d | 18d | 0d |  |  |  |  |  |  |  |  | Ter 01/09/26 |  |
| 318 | 1.8.54.4 | Aprovação | 2d | 2026-09-08 | 2026-09-10 | 317 | 2026-09-01 | 2026-09-03 | 2d | 18d |  |  |  |  |  |  |  |  |  | Qui 03/09/26 |  |
| 319 | 1.8.55 | **DT-F0009-0309-MB-L-00006** | 20d | 2026-08-13 | 2026-09-10 |  | 2026-08-06 | 2026-09-03 | 20d | 18d |  | DT - Detalhe Típico | 03 - REDUÇÃO | 09 - FORNO TECNORED | L - MECÂNICA / ARRANJOS | VENTANEIRAS V2 | A1 (841x594mm) | 01 | Revisão do projeto do forno - carcaça e refratário | Qui 03/09/26 | Qui 06/08/26 |
| 320 | 1.8.55.1 | Emissão inicial | 10d | 2026-08-13 | 2026-08-27 | 310 | 2026-08-06 | 2026-08-20 | 10d | 18d | 0d |  |  |  |  |  |  |  |  | Qui 20/08/26 |  |
| 321 | 1.8.55.2 | Avaliação do Cliente | 5d | 2026-08-27 | 2026-09-03 | 320 | 2026-08-20 | 2026-08-27 | 5d | 18d | 0d |  |  |  |  |  |  |  |  | Qui 27/08/26 |  |
| 322 | 1.8.55.3 | Atendimento de Comentário | 3d | 2026-09-03 | 2026-09-08 | 321 | 2026-08-27 | 2026-09-01 | 3d | 18d | 0d |  |  |  |  |  |  |  |  | Ter 01/09/26 |  |
| 323 | 1.8.55.4 | Aprovação | 2d | 2026-09-08 | 2026-09-10 | 322 | 2026-09-01 | 2026-09-03 | 2d | 18d |  |  |  |  |  |  |  |  |  | Qui 03/09/26 |  |
| 324 | 1.8.56 | **DT-F0009-0309-MB-L-00007** | 20d | 2026-08-13 | 2026-09-10 |  | 2026-08-06 | 2026-09-03 | 20d | 1d | 0d | DT - Detalhe Típico | 03 - REDUÇÃO | 09 - FORNO TECNORED | L - MECÂNICA / ARRANJOS | CARCAÇA FORNO | A1 (841x594mm) | 01 | Revisão do projeto do forno - carcaça e refratário | Qui 03/09/26 | Qui 06/08/26 |
| 325 | 1.8.56.1 | Emissão inicial | 10d | 2026-08-13 | 2026-08-27 | 310 | 2026-08-06 | 2026-08-20 | 10d | 1d | 0d |  |  |  |  |  |  |  |  | Qui 20/08/26 |  |
| 326 | 1.8.56.2 | Avaliação do Cliente | 5d | 2026-08-27 | 2026-09-03 | 325 | 2026-08-20 | 2026-08-27 | 5d | 1d | 0d |  |  |  |  |  |  |  |  | Qui 27/08/26 |  |
| 327 | 1.8.56.3 | Atendimento de Comentário | 3d | 2026-09-03 | 2026-09-08 | 326 | 2026-08-27 | 2026-09-01 | 3d | 1d | 0d |  |  |  |  |  |  |  |  | Ter 01/09/26 |  |
| 328 | 1.8.56.4 | Aprovação | 2d | 2026-09-08 | 2026-09-10 | 327 | 2026-09-01 | 2026-09-03 | 2d | 1d |  |  |  |  |  |  |  |  |  | Qui 03/09/26 |  |

| ID | WBS | Task | Duration | Start | Finish | Predecessors | Baseline start | Baseline finish | Baseline duration | Total slack | Free slack | Tipo de documento | Área | Sub-área | Disciplina | Título | Formato | Quantidade | Agrupamento Cecal | Término_LB_R0 | Início_LB_R0 |
| --- | --- | --- | --- | --- | --- | --- | --- | --- | --- | --- | --- | --- | --- | --- | --- | --- | --- | --- | --- | --- | --- |
| 329 | 1.8.57 | **DT-F0009-0309-MB-L-00008** | 20d | 2026-08-13 | 2026-09-10 |  | 2026-08-06 | 2026-09-03 | 20d | 18d |  | DT - Detalhe Típico | 03 - REDUÇÃO | 09 - FORNO TECNORED | L - MECÂNICA / ARRANJOS | FURO DE GUSA E CANHÃO DE LAMA | A1 (841x594mm) | 01 | Revisão do projeto do forno - carcaça e refratário | Qui 03/09/26 | Qui 06/08/26 |
| 330 | 1.8.57.1 | Emissão inicial | 10d | 2026-08-13 | 2026-08-27 | 310 | 2026-08-06 | 2026-08-20 | 10d | 18d | 0d |  |  |  |  |  |  |  |  | Qui 20/08/26 |  |
| 331 | 1.8.57.2 | Avaliação do Cliente | 5d | 2026-08-27 | 2026-09-03 | 330 | 2026-08-20 | 2026-08-27 | 5d | 18d | 0d |  |  |  |  |  |  |  |  | Qui 27/08/26 |  |
| 332 | 1.8.57.3 | Atendimento de Comentário | 3d | 2026-09-03 | 2026-09-08 | 331 | 2026-08-27 | 2026-09-01 | 3d | 18d | 0d |  |  |  |  |  |  |  |  | Ter 01/09/26 |  |
| 333 | 1.8.57.4 | Aprovação | 2d | 2026-09-08 | 2026-09-10 | 332 | 2026-09-01 | 2026-09-03 | 2d | 18d |  |  |  |  |  |  |  |  |  | Qui 03/09/26 |  |
| 334 | 1.8.58 | **DT-F0009-0309-MB-L-00009** | 20d | 2026-08-13 | 2026-09-10 |  | 2026-08-06 | 2026-09-03 | 20d | 18d |  | DT - Detalhe Típico | 03 - REDUÇÃO | 09 - FORNO TECNORED | L - MECÂNICA / ARRANJOS | REFRATARIO FORNO PROPRIO | A1 (841x594mm) | 01 | Revisão do projeto do forno - carcaça e refratário | Qui 03/09/26 | Qui 06/08/26 |
| 335 | 1.8.58.1 | Emissão inicial | 10d | 2026-08-13 | 2026-08-27 | 310 | 2026-08-06 | 2026-08-20 | 10d | 18d | 0d |  |  |  |  |  |  |  |  | Qui 20/08/26 |  |
| 336 | 1.8.58.2 | Avaliação do Cliente | 5d | 2026-08-27 | 2026-09-03 | 335 | 2026-08-20 | 2026-08-27 | 5d | 18d | 0d |  |  |  |  |  |  |  |  | Qui 27/08/26 |  |
| 337 | 1.8.58.3 | Atendimento de Comentário | 3d | 2026-09-03 | 2026-09-08 | 336 | 2026-08-27 | 2026-09-01 | 3d | 18d | 0d |  |  |  |  |  |  |  |  | Ter 01/09/26 |  |
| 338 | 1.8.58.4 | Aprovação | 2d | 2026-09-08 | 2026-09-10 | 337 | 2026-09-01 | 2026-09-03 | 2d | 18d |  |  |  |  |  |  |  |  |  | Qui 03/09/26 |  |
| 339 | 1.8.59 | **DT-F0009-0309-MB-L-00010** | 20d | 2026-08-13 | 2026-09-10 |  | 2026-08-06 | 2026-09-03 | 20d | 18d |  | DT - Detalhe Típico | 03 - REDUÇÃO | 09 - FORNO TECNORED | L - MECÂNICA / ARRANJOS | REFRATARIO TUBULACOES | A1 (841x594mm) | 01 | Revisão do projeto do forno - carcaça e refratário | Qui 03/09/26 | Qui 06/08/26 |
| 340 | 1.8.59.1 | Emissão inicial | 10d | 2026-08-13 | 2026-08-27 | 310 | 2026-08-06 | 2026-08-20 | 10d | 18d | 0d |  |  |  |  |  |  |  |  | Qui 20/08/26 |  |
| 341 | 1.8.59.2 | Avaliação do Cliente | 5d | 2026-08-27 | 2026-09-03 | 340 | 2026-08-20 | 2026-08-27 | 5d | 18d | 0d |  |  |  |  |  |  |  |  | Qui 27/08/26 |  |
| 342 | 1.8.59.3 | Atendimento de Comentário | 3d | 2026-09-03 | 2026-09-08 | 341 | 2026-08-27 | 2026-09-01 | 3d | 18d | 0d |  |  |  |  |  |  |  |  | Ter 01/09/26 |  |
| 343 | 1.8.59.4 | Aprovação | 2d | 2026-09-08 | 2026-09-10 | 342 | 2026-09-01 | 2026-09-03 | 2d | 18d |  |  |  |  |  |  |  |  |  | Qui 03/09/26 |  |
| 344 | 1.8.60 | **DT-F0009-0309-MB-L-00011** | 20d | 2026-08-13 | 2026-09-10 |  | 2026-08-06 | 2026-09-03 | 20d | 18d |  | DT - Detalhe Típico | 03 - REDUÇÃO | 09 - FORNO TECNORED | L - MECÂNICA / ARRANJOS | SUPORTE H DE VENTO V1 | A1 (841x594mm) | 01 | Revisão do projeto do forno - carcaça e refratário | Qui 03/09/26 | Qui 06/08/26 |
| 345 | 1.8.60.1 | Emissão inicial | 10d | 2026-08-13 | 2026-08-27 | 310 | 2026-08-06 | 2026-08-20 | 10d | 18d | 0d |  |  |  |  |  |  |  |  | Qui 20/08/26 |  |
| 346 | 1.8.60.2 | Avaliação do Cliente | 5d | 2026-08-27 | 2026-09-03 | 345 | 2026-08-20 | 2026-08-27 | 5d | 18d | 0d |  |  |  |  |  |  |  |  | Qui 27/08/26 |  |
| 347 | 1.8.60.3 | Atendimento de Comentário | 3d | 2026-09-03 | 2026-09-08 | 346 | 2026-08-27 | 2026-09-01 | 3d | 18d | 0d |  |  |  |  |  |  |  |  | Ter 01/09/26 |  |
| 348 | 1.8.60.4 | Aprovação | 2d | 2026-09-08 | 2026-09-10 | 347 | 2026-09-01 | 2026-09-03 | 2d | 18d |  |  |  |  |  |  |  |  |  | Qui 03/09/26 |  |
| 349 | 1.8.61 | **DT-F0009-0309-MB-L-00012** | 20d | 2026-08-13 | 2026-09-10 |  | 2026-08-06 | 2026-09-03 | 20d | 18d |  | DT - Detalhe Típico | 03 - REDUÇÃO | 09 - FORNO TECNORED | L - MECÂNICA / ARRANJOS | INSTRUMENTOS CADINHO | A1 (841x594mm) | 01 | Revisão da instrumentação | Qui 03/09/26 | Qui 06/08/26 |
| 350 | 1.8.61.1 | Emissão inicial | 10d | 2026-08-13 | 2026-08-27 | 310 | 2026-08-06 | 2026-08-20 | 10d | 18d | 0d |  |  |  |  |  |  |  |  | Qui 20/08/26 |  |
| 351 | 1.8.61.2 | Avaliação do Cliente | 5d | 2026-08-27 | 2026-09-03 | 350 | 2026-08-20 | 2026-08-27 | 5d | 18d | 0d |  |  |  |  |  |  |  |  | Qui 27/08/26 |  |
| 352 | 1.8.61.3 | Atendimento de Comentário | 3d | 2026-09-03 | 2026-09-08 | 351 | 2026-08-27 | 2026-09-01 | 3d | 18d | 0d |  |  |  |  |  |  |  |  | Ter 01/09/26 |  |
| 353 | 1.8.61.4 | Aprovação | 2d | 2026-09-08 | 2026-09-10 | 352 | 2026-09-01 | 2026-09-03 | 2d | 18d |  |  |  |  |  |  |  |  |  | Qui 03/09/26 |  |

| ID | WBS | Task | Duration | Start | Finish | Predecessors | Baseline start | Baseline finish | Baseline duration | Total slack | Free slack | Tipo de documento | Área | Sub-área | Disciplina | Título | Formato | Quantidade | Agrupamento Cecal | Término_LB_R0 | Início_LB_R0 |
| --- | --- | --- | --- | --- | --- | --- | --- | --- | --- | --- | --- | --- | --- | --- | --- | --- | --- | --- | --- | --- | --- |
| 354 | 1.8.62 | **DT-F0009-0309-MB-L-00013** | 20d | 2026-08-13 | 2026-09-10 |  | 2026-08-06 | 2026-09-03 | 20d | 18d |  | DT - Detalhe Típico | 03 - REDUÇÃO | 09 - FORNO TECNORED | L - MECÂNICA / ARRANJOS | INSTRUMENTOS CORPO E TOPO | A1 (841x594mm) | 01 | Revisão da instrumentação | Qui 03/09/26 | Qui 06/08/26 |
| 355 | 1.8.62.1 | Emissão inicial | 10d | 2026-08-13 | 2026-08-27 | 310 | 2026-08-06 | 2026-08-20 | 10d | 18d | 0d |  |  |  |  |  |  |  |  | Qui 20/08/26 |  |
| 356 | 1.8.62.2 | Avaliação do Cliente | 5d | 2026-08-27 | 2026-09-03 | 355 | 2026-08-20 | 2026-08-27 | 5d | 18d | 0d |  |  |  |  |  |  |  |  | Qui 27/08/26 |  |
| 357 | 1.8.62.3 | Atendimento de Comentário | 3d | 2026-09-03 | 2026-09-08 | 356 | 2026-08-27 | 2026-09-01 | 3d | 18d | 0d |  |  |  |  |  |  |  |  | Ter 01/09/26 |  |
| 358 | 1.8.62.4 | Aprovação | 2d | 2026-09-08 | 2026-09-10 | 357 | 2026-09-01 | 2026-09-03 | 2d | 18d |  |  |  |  |  |  |  |  |  | Qui 03/09/26 |  |
| 359 | 1.8.63 | **DT-F0009-0309-MB-L-00014** | 20d | 2026-08-13 | 2026-09-10 |  | 2026-08-06 | 2026-09-03 | 20d | 18d |  | DT - Detalhe Típico | 03 - REDUÇÃO | 09 - FORNO TECNORED | L - MECÂNICA / ARRANJOS | OFF TAKE | A1 (841x594mm) | 01 | Revisão da exaustão | Qui 03/09/26 | Qui 06/08/26 |
| 360 | 1.8.63.1 | Emissão inicial | 10d | 2026-08-13 | 2026-08-27 | 310 | 2026-08-06 | 2026-08-20 | 10d | 18d | 0d |  |  |  |  |  |  |  |  | Qui 20/08/26 |  |
| 361 | 1.8.63.2 | Avaliação do Cliente | 5d | 2026-08-27 | 2026-09-03 | 360 | 2026-08-20 | 2026-08-27 | 5d | 18d | 0d |  |  |  |  |  |  |  |  | Qui 27/08/26 |  |
| 362 | 1.8.63.3 | Atendimento de Comentário | 3d | 2026-09-03 | 2026-09-08 | 361 | 2026-08-27 | 2026-09-01 | 3d | 18d | 0d |  |  |  |  |  |  |  |  | Ter 01/09/26 |  |
| 363 | 1.8.63.4 | Aprovação | 2d | 2026-09-08 | 2026-09-10 | 362 | 2026-09-01 | 2026-09-03 | 2d | 18d |  |  |  |  |  |  |  |  |  | Qui 03/09/26 |  |
| 364 | 1.8.64 | **DT-F0009-0309-MB-L-00015** | 20d | 2026-08-13 | 2026-09-10 |  | 2026-08-06 | 2026-09-03 | 20d | 0d |  | DT - Detalhe Típico | 03 - REDUÇÃO | 09 - FORNO TECNORED | L - MECÂNICA / ARRANJOS | LIGAÇÃO VÁLVULAS SHUT-OFF | A1 (841x594mm) | 01 | Revisão da exaustão | Qui 03/09/26 | Qui 06/08/26 |
| 365 | 1.8.64.1 | Emissão inicial | 10d | 2026-08-13 | 2026-08-27 | 310 | 2026-08-06 | 2026-08-20 | 10d | 0d |  |  |  |  |  |  |  |  |  | Qui 20/08/26 |  |
| 366 | 1.8.64.2 | Avaliação do Cliente | 5d | 2026-08-27 | 2026-09-03 | 365 | 2026-08-20 | 2026-08-27 | 5d | 18d | 0d |  |  |  |  |  |  |  |  | Qui 27/08/26 |  |
| 367 | 1.8.64.3 | Atendimento de Comentário | 3d | 2026-09-03 | 2026-09-08 | 366 | 2026-08-27 | 2026-09-01 | 3d | 18d | 0d |  |  |  |  |  |  |  |  | Ter 01/09/26 |  |
| 368 | 1.8.64.4 | Aprovação | 2d | 2026-09-08 | 2026-09-10 | 367 | 2026-09-01 | 2026-09-03 | 2d | 18d |  |  |  |  |  |  |  |  |  | Qui 03/09/26 |  |
| 369 | 1.8.65 | **DT-F0009-0309-MB-L-00016** | 20d | 2026-08-27 | 2026-09-24 |  | 2026-08-20 | 2026-09-17 | 20d | 8d |  | DT - Detalhe Típico | 03 - REDUÇÃO | 09 - FORNO TECNORED | L - MECÂNICA / ARRANJOS | DOWNCOMER FORNOS E LIGAÇÃO SLG | A1 (841x594mm) | 01 | Revisão da exaustão | Qui 17/09/26 | Qui 20/08/26 |
| 370 | 1.8.65.1 | Emissão inicial | 10d | 2026-08-27 | 2026-09-10 | 365 | 2026-08-20 | 2026-09-03 | 10d | 8d | 0d |  |  |  |  |  |  |  |  | Qui 03/09/26 |  |
| 371 | 1.8.65.2 | Avaliação do Cliente | 5d | 2026-09-10 | 2026-09-17 | 370 | 2026-09-03 | 2026-09-10 | 5d | 8d | 0d |  |  |  |  |  |  |  |  | Qui 10/09/26 |  |
| 372 | 1.8.65.3 | Atendimento de Comentário | 3d | 2026-09-17 | 2026-09-22 | 371 | 2026-09-10 | 2026-09-15 | 3d | 8d | 0d |  |  |  |  |  |  |  |  | Ter 15/09/26 |  |
| 373 | 1.8.65.4 | Aprovação | 2d | 2026-09-22 | 2026-09-24 | 372 | 2026-09-15 | 2026-09-17 | 2d | 8d |  |  |  |  |  |  |  |  |  | Qui 17/09/26 |  |
| 374 | 1.8.66 | **DT-F0009-0309-MB-L-00017** | 20d | 2026-08-27 | 2026-09-24 |  | 2026-08-20 | 2026-09-17 | 20d | 8d |  | DT - Detalhe Típico | 03 - REDUÇÃO | 09 - FORNO TECNORED | L - MECÂNICA / ARRANJOS | INSTRUMENTOS TOPO DO FORNO E OFF-TAKE | A1 (841x594mm) | 01 | Revisão da exaustão | Qui 17/09/26 | Qui 20/08/26 |
| 375 | 1.8.66.1 | Emissão inicial | 10d | 2026-08-27 | 2026-09-10 | 365 | 2026-08-20 | 2026-09-03 | 10d | 8d | 0d |  |  |  |  |  |  |  |  | Qui 03/09/26 |  |
| 376 | 1.8.66.2 | Avaliação do Cliente | 5d | 2026-09-10 | 2026-09-17 | 375 | 2026-09-03 | 2026-09-10 | 5d | 8d | 0d |  |  |  |  |  |  |  |  | Qui 10/09/26 |  |
| 377 | 1.8.66.3 | Atendimento de Comentário | 3d | 2026-09-17 | 2026-09-22 | 376 | 2026-09-10 | 2026-09-15 | 3d | 8d | 0d |  |  |  |  |  |  |  |  | Ter 15/09/26 |  |
| 378 | 1.8.66.4 | Aprovação | 2d | 2026-09-22 | 2026-09-24 | 377 | 2026-09-15 | 2026-09-17 | 2d | 8d |  |  |  |  |  |  |  |  |  | Qui 17/09/26 |  |

| ID | WBS | Task | Duration | Start | Finish | Predecessors | Baseline start | Baseline finish | Baseline duration | Total slack | Free slack | Tipo de documento | Área | Sub-área | Disciplina | Título | Formato | Quantidade | Agrupamento Cecal | Término_LB_R0 | Início_LB_R0 |
| --- | --- | --- | --- | --- | --- | --- | --- | --- | --- | --- | --- | --- | --- | --- | --- | --- | --- | --- | --- | --- | --- |
| 379 | 1.8.67 | **DT-F0009-0309-MB-L-00018** | 20d | 2026-08-27 | 2026-09-24 |  | 2026-08-20 | 2026-09-17 | 20d | 8d |  | DT - Detalhe Típico | 03 - REDUÇÃO | 09 - FORNO TECNORED | L - MECÂNICA / ARRANJOS | INSTRUMENTOS ALGARAVIZES E H DE VENTO | A1 (841x594mm) | 01 | Revisão da instrumentação | Qui 17/09/26 | Qui 20/08/26 |
| 380 | 1.8.67.1 | Emissão inicial | 10d | 2026-08-27 | 2026-09-10 | 365 | 2026-08-20 | 2026-09-03 | 10d | 8d | 0d |  |  |  |  |  |  |  |  | Qui 03/09/26 |  |
| 381 | 1.8.67.2 | Avaliação do Cliente | 5d | 2026-09-10 | 2026-09-17 | 380 | 2026-09-03 | 2026-09-10 | 5d | 8d | 0d |  |  |  |  |  |  |  |  | Qui 10/09/26 |  |
| 382 | 1.8.67.3 | Atendimento de Comentário | 3d | 2026-09-17 | 2026-09-22 | 381 | 2026-09-10 | 2026-09-15 | 3d | 8d | 0d |  |  |  |  |  |  |  |  | Ter 15/09/26 |  |
| 383 | 1.8.67.4 | Aprovação | 2d | 2026-09-22 | 2026-09-24 | 382 | 2026-09-15 | 2026-09-17 | 2d | 8d |  |  |  |  |  |  |  |  |  | Qui 17/09/26 |  |
| 384 | 1.8.68 | **DT-F0009-0309-MB-L-00019** | 20d | 2026-08-27 | 2026-09-24 |  | 2026-08-20 | 2026-09-17 | 20d | 8d |  | DT - Detalhe Típico | 03 - REDUÇÃO | 09 - FORNO TECNORED | L - MECÂNICA / ARRANJOS | LIGACAO H DE VENTO FORNOS 1 E 2 | A1 (841x594mm) | 01 | Revisão do projeto do forno - carcaça e refratário | Qui 17/09/26 | Qui 20/08/26 |
| 385 | 1.8.68.1 | Emissão inicial | 10d | 2026-08-27 | 2026-09-10 | 365 | 2026-08-20 | 2026-09-03 | 10d | 8d | 0d |  |  |  |  |  |  |  |  | Qui 03/09/26 |  |
| 386 | 1.8.68.2 | Avaliação do Cliente | 5d | 2026-09-10 | 2026-09-17 | 385 | 2026-09-03 | 2026-09-10 | 5d | 8d | 0d |  |  |  |  |  |  |  |  | Qui 10/09/26 |  |
| 387 | 1.8.68.3 | Atendimento de Comentário | 3d | 2026-09-17 | 2026-09-22 | 386 | 2026-09-10 | 2026-09-15 | 3d | 8d | 0d |  |  |  |  |  |  |  |  | Ter 15/09/26 |  |
| 388 | 1.8.68.4 | Aprovação | 2d | 2026-09-22 | 2026-09-24 | 387 | 2026-09-15 | 2026-09-17 | 2d | 8d |  |  |  |  |  |  |  |  |  | Qui 17/09/26 |  |
| 389 | 1.8.69 | **DT-F0009-0309-MB-L-00020** | 20d | 2026-08-27 | 2026-09-24 |  | 2026-08-20 | 2026-09-17 | 20d | 8d |  | DT - Detalhe Típico | 03 - REDUÇÃO | 09 - FORNO TECNORED | L - MECÂNICA / ARRANJOS | INSTRUMENTOS STAVES DE COBRE | A1 (841x594mm) | 01 | Revisão da instrumentação | Qui 17/09/26 | Qui 20/08/26 |
| 390 | 1.8.69.1 | Emissão inicial | 10d | 2026-08-27 | 2026-09-10 | 365 | 2026-08-20 | 2026-09-03 | 10d | 8d | 0d |  |  |  |  |  |  |  |  | Qui 03/09/26 |  |
| 391 | 1.8.69.2 | Avaliação do Cliente | 5d | 2026-09-10 | 2026-09-17 | 390 | 2026-09-03 | 2026-09-10 | 5d | 8d | 0d |  |  |  |  |  |  |  |  | Qui 10/09/26 |  |
| 392 | 1.8.69.3 | Atendimento de Comentário | 3d | 2026-09-17 | 2026-09-22 | 391 | 2026-09-10 | 2026-09-15 | 3d | 8d | 0d |  |  |  |  |  |  |  |  | Ter 15/09/26 |  |
| 393 | 1.8.69.4 | Aprovação | 2d | 2026-09-22 | 2026-09-24 | 392 | 2026-09-15 | 2026-09-17 | 2d | 8d |  |  |  |  |  |  |  |  |  | Qui 17/09/26 |  |
| 394 | 1.8.70 | **DT-F0009-0309-MB-L-00021** | 20d | 2026-08-27 | 2026-09-24 |  | 2026-08-20 | 2026-09-17 | 20d | 8d |  | DT - Detalhe Típico | 03 - REDUÇÃO | 09 - FORNO TECNORED | L - MECÂNICA / ARRANJOS | INSTRUMENTOS CURTAIN-WALL | A1 (841x594mm) | 01 | Revisão da instrumentação | Qui 17/09/26 | Qui 20/08/26 |
| 395 | 1.8.70.1 | Emissão inicial | 10d | 2026-08-27 | 2026-09-10 | 365 | 2026-08-20 | 2026-09-03 | 10d | 8d | 0d |  |  |  |  |  |  |  |  | Qui 03/09/26 |  |
| 396 | 1.8.70.2 | Avaliação do Cliente | 5d | 2026-09-10 | 2026-09-17 | 395 | 2026-09-03 | 2026-09-10 | 5d | 8d | 0d |  |  |  |  |  |  |  |  | Qui 10/09/26 |  |
| 397 | 1.8.70.3 | Atendimento de Comentário | 3d | 2026-09-17 | 2026-09-22 | 396 | 2026-09-10 | 2026-09-15 | 3d | 8d | 0d |  |  |  |  |  |  |  |  | Ter 15/09/26 |  |
| 398 | 1.8.70.4 | Aprovação | 2d | 2026-09-22 | 2026-09-24 | 397 | 2026-09-15 | 2026-09-17 | 2d | 8d |  |  |  |  |  |  |  |  |  | Qui 17/09/26 |  |
| 399 | 1.8.71 | **DT-F0009-0309-MB-L-00022** | 20d | 2026-08-27 | 2026-09-24 |  | 2026-08-20 | 2026-09-17 | 20d | 8d |  | DT - Detalhe Típico | 03 - REDUÇÃO | 09 - FORNO TECNORED | L - MECÂNICA / ARRANJOS | VÁLVULA DE AR QUENTE | A1 (841x594mm) | 01 | Revisão da instrumentação | Qui 17/09/26 | Qui 20/08/26 |
| 400 | 1.8.71.1 | Emissão inicial | 10d | 2026-08-27 | 2026-09-10 | 365 | 2026-08-20 | 2026-09-03 | 10d | 8d | 0d |  |  |  |  |  |  |  |  | Qui 03/09/26 |  |
| 401 | 1.8.71.2 | Avaliação do Cliente | 5d | 2026-09-10 | 2026-09-17 | 400 | 2026-09-03 | 2026-09-10 | 5d | 8d | 0d |  |  |  |  |  |  |  |  | Qui 10/09/26 |  |
| 402 | 1.8.71.3 | Atendimento de Comentário | 3d | 2026-09-17 | 2026-09-22 | 401 | 2026-09-10 | 2026-09-15 | 3d | 8d | 0d |  |  |  |  |  |  |  |  | Ter 15/09/26 |  |
| 403 | 1.8.71.4 | Aprovação | 2d | 2026-09-22 | 2026-09-24 | 402 | 2026-09-15 | 2026-09-17 | 2d | 8d |  |  |  |  |  |  |  |  |  | Qui 17/09/26 |  |

| ID | WBS | Task | Type | Duration | Start | Finish | Predecessors | Baseline start | Baseline finish | Baseline duration | Total slack | Free slack | Tipo de documento | Área | Sub-área | Disciplina | Título | Formato | Quantidade | Agrupamento Cecal | Término_LB_R0 | Início_LB_R0 |
| --- | --- | --- | --- | --- | --- | --- | --- | --- | --- | --- | --- | --- | --- | --- | --- | --- | --- | --- | --- | --- | --- | --- |
| 404 | 1.8.72 | **DT-F0009-0309-MB-L-00023** |  | 20d | 2026-08-27 | 2026-09-24 |  | 2026-08-20 | 2026-09-17 | 20d | 8d |  | DT - Detalhe Típico | 03 - REDUÇÃO | 09 - FORNO TECNORED | L - MECÂNICA / ARRANJOS | VÁLVULA DE TIRAGEM AR QUENTE | A1 (841x594mm) | 01 | Revisão da instrumentação | Qui 17/09/26 | Qui 20/08/26 |
| 405 | 1.8.72.1 | Emissão inicial |  | 10d | 2026-08-27 | 2026-09-10 | 365 | 2026-08-20 | 2026-09-03 | 10d | 8d | 0d |  |  |  |  |  |  |  |  | Qui 03/09/26 |  |
| 406 | 1.8.72.2 | Avaliação do Cliente |  | 5d | 2026-09-10 | 2026-09-17 | 405 | 2026-09-03 | 2026-09-10 | 5d | 8d | 0d |  |  |  |  |  |  |  |  | Qui 10/09/26 |  |
| 407 | 1.8.72.3 | Atendimento de Comentário |  | 3d | 2026-09-17 | 2026-09-22 | 406 | 2026-09-10 | 2026-09-15 | 3d | 8d | 0d |  |  |  |  |  |  |  |  | Ter 15/09/26 |  |
| 408 | 1.8.72.4 | Aprovação |  | 2d | 2026-09-22 | 2026-09-24 | 407 | 2026-09-15 | 2026-09-17 | 2d | 8d |  |  |  |  |  |  |  |  |  | Qui 17/09/26 |  |
| 409 | 1.8.73 | **DT-F0009-0309-MB-L-00024** |  | 20d | 2026-08-27 | 2026-09-24 |  | 2026-08-20 | 2026-09-17 | 20d | 0d |  | DT - Detalhe Típico | 03 - REDUÇÃO | 09 - FORNO TECNORED | L - MECÂNICA / ARRANJOS | VÁLVULA BLEEDER | A1 (841x594mm) | 01 | Revisão da instrumentação | Qui 17/09/26 | Qui 20/08/26 |
| 410 | 1.8.73.1 | Emissão inicial |  | 10d | 2026-08-27 | 2026-09-10 | 365 | 2026-08-20 | 2026-09-03 | 10d | 0d |  |  |  |  |  |  |  |  |  | Qui 03/09/26 |  |
| 411 | 1.8.73.2 | Avaliação do Cliente |  | 5d | 2026-09-10 | 2026-09-17 | 410 | 2026-09-03 | 2026-09-10 | 5d | 8d | 0d |  |  |  |  |  |  |  |  | Qui 10/09/26 |  |
| 412 | 1.8.73.3 | Atendimento de Comentário |  | 3d | 2026-09-17 | 2026-09-22 | 411 | 2026-09-10 | 2026-09-15 | 3d | 8d | 0d |  |  |  |  |  |  |  |  | Ter 15/09/26 |  |
| 413 | 1.8.73.4 | Aprovação |  | 2d | 2026-09-22 | 2026-09-24 | 412 | 2026-09-15 | 2026-09-17 | 2d | 8d |  |  |  |  |  |  |  |  |  | Qui 17/09/26 |  |
| 414 | 1.8.74 | **RT-F0009-0309-MB-L-00001** |  | 18d | 2026-09-10 | 2026-10-06 |  | 2026-09-03 | 2026-09-29 | 18d | 0d |  | RT - Relatório Técnico | 03 - REDUÇÃO | 09 - FORNO TECNORED | L - MECÂNICA / ARRANJOS | PLANO DE CARGAS FORNO | A1 (841x594mm) | 01 | Readequação da fundação | Ter 29/09/26 | Qui 03/09/26 |
| 415 | 1.8.74.1 | Emissão inicial |  | 8d | 2026-09-10 | 2026-09-22 | 410 | 2026-09-03 | 2026-09-15 | 8d | 0d |  |  |  |  |  |  |  |  |  | Ter 15/09/26 |  |
| 416 | 1.8.74.2 | Avaliação do Cliente |  | 5d | 2026-09-22 | 2026-09-29 | 415 | 2026-09-15 | 2026-09-22 | 5d | 0d |  |  |  |  |  |  |  |  |  | Ter 22/09/26 |  |
| 417 | 1.8.74.3 | Atendimento de Comentário |  | 3d | 2026-09-29 | 2026-10-02 | 416 | 2026-09-22 | 2026-09-25 | 3d | 0d |  |  |  |  |  |  |  |  |  | Sex 25/09/26 |  |
| 418 | 1.8.74.4 | Aprovação |  | 2d | 2026-10-02 | 2026-10-06 | 417 | 2026-09-25 | 2026-09-29 | 2d | 0d |  |  |  |  |  |  |  |  |  | Ter 29/09/26 |  |
| 419 | 4.2.1.10 | MECÂNICA / EQUIPAMENTOS 309 | manual | 70d | 2026-06-23 | 2026-09-28 | 420SS |  |  |  |  |  |  |  |  |  |  |  |  |  |  |  |
| 420 | 1.10 | **MECÂNICA / EQUIPAMENTOS 309** |  | 70d | 2026-06-30 | 2026-10-06 |  | 2026-06-23 | 2026-09-29 | 70d | 0d |  |  |  |  |  |  |  |  |  | Ter 29/09/26 | Ter 23/06/26 |
| 421 | 1.10.1 | **CP-F0009-0309-MB-M-00001** |  | 15d | 2026-06-30 | 2026-07-21 |  | 2026-06-23 | 2026-07-14 | 15d | 30d | 20d | CP - Critério de Projeto | 03 - REDUÇÃO | 09 - FORNO TECNORED | M - MECÂNICA / EQUIPAMENTOS | CRITÉRIO DE PROJETO MECÂNICO | A4 (210x297mm) | 20 | Revisão dos balanços de massa e energia utilidades | Ter 14/07/26 | Ter 23/06/26 |
| 422 | 1.10.1.1 | Emissão inicial |  | 5d | 2026-06-30 | 2026-07-07 | 19 | 2026-06-23 | 2026-06-30 | 5d | 30d | 0d |  |  |  |  |  |  |  |  | Ter 30/06/26 |  |
| 423 | 1.10.1.2 | Avaliação do Cliente |  | 5d | 2026-07-07 | 2026-07-14 | 422 | 2026-06-30 | 2026-07-07 | 5d | 30d | 0d |  |  |  |  |  |  |  |  | Ter 07/07/26 |  |
| 424 | 1.10.1.3 | Atendimento de Comentário |  | 3d | 2026-07-14 | 2026-07-17 | 423 | 2026-07-07 | 2026-07-10 | 3d | 30d | 0d |  |  |  |  |  |  |  |  | Sex 10/07/26 |  |
| 425 | 1.10.1.4 | Aprovação |  | 2d | 2026-07-17 | 2026-07-21 | 424 | 2026-07-10 | 2026-07-14 | 2d | 30d |  |  |  |  |  |  |  |  |  | Ter 14/07/26 |  |
| 426 | 1.10.2 | **ET-F0009-0309-MB-M-00001** |  | 17d | 2026-09-10 | 2026-10-05 | 421 | 2026-09-03 | 2026-09-28 | 17d | 1d |  | ET - Especificação Técnica | 03 - REDUÇÃO | 09 - FORNO TECNORED | M - MECÂNICA / EQUIPAMENTOS | ESPECIFICAÇÃO TÉCNICA STAVES DE COBRE | A4 (210x297mm) | 02 | Revisão do projeto de cobre refrigerado | Seg 28/09/26 | Qui 03/09/26 |
| 427 | 1.10.2.1 | Emissão inicial |  | 7d | 2026-09-10 | 2026-09-21 | 324 | 2026-09-03 | 2026-09-14 | 7d | 1d | 0d |  |  |  |  |  |  |  |  | Seg 14/09/26 |  |
| 428 | 1.10.2.2 | Avaliação do Cliente |  | 5d | 2026-09-21 | 2026-09-28 | 427 | 2026-09-14 | 2026-09-21 | 5d | 1d | 0d |  |  |  |  |  |  |  |  | Seg 21/09/26 |  |
| 429 | 1.10.2.3 | Atendimento de Comentário |  | 3d | 2026-09-28 | 2026-10-01 | 428 | 2026-09-21 | 2026-09-24 | 3d | 1d | 0d |  |  |  |  |  |  |  |  | Qui 24/09/26 |  |
| 430 | 1.10.2.4 | Aprovação |  | 2d | 2026-10-01 | 2026-10-05 | 429 | 2026-09-24 | 2026-09-28 | 2d | 1d |  |  |  |  |  |  |  |  |  | Seg 28/09/26 |  |

| ID | WBS | Task | Duration | Start | Finish | Predecessors | Baseline start | Baseline finish | Baseline duration | Total slack | Free slack | Tipo de documento | Área | Sub-área | Disciplina | Título | Formato | Quantidade | Agrupamento Cecal | Término_LB_R0 | Início_LB_R0 |
| --- | --- | --- | --- | --- | --- | --- | --- | --- | --- | --- | --- | --- | --- | --- | --- | --- | --- | --- | --- | --- | --- |
| 431 | 1.10.3 | **ET-F0009-0309-MB-M-00002** | 17d | 2026-09-10 | 2026-10-05 | 421 | 2026-09-03 | 2026-09-28 | 17d | 1d |  | ET - Especificação Técnica | 03 - REDUÇÃO | 09 - FORNO TECNORED | M - MECÂNICA / EQUIPAMENTOS | ESPECIFICAÇÃO TÉCNICA STAVES DE FERRO FUNDIDO | A4 (210x297mm) | 02 | Revisão do projeto de cobre refrigerado | Seg 28/09/26 | Qui 03/09/26 |
| 432 | 1.10.3.1 | Emissão inicial | 7d | 2026-09-10 | 2026-09-21 | 324 | 2026-09-03 | 2026-09-14 | 7d | 1d | 0d |  |  |  |  |  |  |  |  | Seg 14/09/26 |  |
| 433 | 1.10.3.2 | Avaliação do Cliente | 5d | 2026-09-21 | 2026-09-28 | 432 | 2026-09-14 | 2026-09-21 | 5d | 1d | 0d |  |  |  |  |  |  |  |  | Seg 21/09/26 |  |
| 434 | 1.10.3.3 | Atendimento de Comentário | 3d | 2026-09-28 | 2026-10-01 | 433 | 2026-09-21 | 2026-09-24 | 3d | 1d | 0d |  |  |  |  |  |  |  |  | Qui 24/09/26 |  |
| 435 | 1.10.3.4 | Aprovação | 2d | 2026-10-01 | 2026-10-05 | 434 | 2026-09-24 | 2026-09-28 | 2d | 1d |  |  |  |  |  |  |  |  |  | Seg 28/09/26 |  |
| 436 | 1.10.4 | **ET-F0009-0309-MB-M-00003** | 17d | 2026-09-10 | 2026-10-05 | 421 | 2026-09-03 | 2026-09-28 | 17d | 1d |  | ET - Especificação Técnica | 03 - REDUÇÃO | 09 - FORNO TECNORED | M - MECÂNICA / EQUIPAMENTOS | ESPECIFICAÇÃO TÉCNICA VENTANEIRAS E COOLING BOX | A4 (210x297mm) | 02 | Revisão do projeto de cobre refrigerado | Seg 28/09/26 | Qui 03/09/26 |
| 437 | 1.10.4.1 | Emissão inicial | 7d | 2026-09-10 | 2026-09-21 | 324 | 2026-09-03 | 2026-09-14 | 7d | 1d | 0d |  |  |  |  |  |  |  |  | Seg 14/09/26 |  |
| 438 | 1.10.4.2 | Avaliação do Cliente | 5d | 2026-09-21 | 2026-09-28 | 437 | 2026-09-14 | 2026-09-21 | 5d | 1d | 0d |  |  |  |  |  |  |  |  | Seg 21/09/26 |  |
| 439 | 1.10.4.3 | Atendimento de Comentário | 3d | 2026-09-28 | 2026-10-01 | 438 | 2026-09-21 | 2026-09-24 | 3d | 1d | 0d |  |  |  |  |  |  |  |  | Qui 24/09/26 |  |
| 440 | 1.10.4.4 | Aprovação | 2d | 2026-10-01 | 2026-10-05 | 439 | 2026-09-24 | 2026-09-28 | 2d | 1d |  |  |  |  |  |  |  |  |  | Seg 28/09/26 |  |
| 441 | 1.10.5 | **ET-F0009-0309-MB-M-00004** | 17d | 2026-09-10 | 2026-10-05 | 421 | 2026-09-03 | 2026-09-28 | 17d | 1d |  | ET - Especificação Técnica | 03 - REDUÇÃO | 09 - FORNO TECNORED | M - MECÂNICA / EQUIPAMENTOS | ESPECIFICAÇÃO TÉCNICA CURTAIN WALL | A4 (210x297mm) | 02 | Revisão do projeto de cobre refrigerado | Seg 28/09/26 | Qui 03/09/26 |
| 442 | 1.10.5.1 | Emissão inicial | 7d | 2026-09-10 | 2026-09-21 | 324 | 2026-09-03 | 2026-09-14 | 7d | 1d | 0d |  |  |  |  |  |  |  |  | Seg 14/09/26 |  |
| 443 | 1.10.5.2 | Avaliação do Cliente | 5d | 2026-09-21 | 2026-09-28 | 442 | 2026-09-14 | 2026-09-21 | 5d | 1d | 0d |  |  |  |  |  |  |  |  | Seg 21/09/26 |  |
| 444 | 1.10.5.3 | Atendimento de Comentário | 3d | 2026-09-28 | 2026-10-01 | 443 | 2026-09-21 | 2026-09-24 | 3d | 1d | 0d |  |  |  |  |  |  |  |  | Qui 24/09/26 |  |
| 445 | 1.10.5.4 | Aprovação | 2d | 2026-10-01 | 2026-10-05 | 444 | 2026-09-24 | 2026-09-28 | 2d | 1d |  |  |  |  |  |  |  |  |  | Seg 28/09/26 |  |
| 446 | 1.10.6 | **FD-F0009-0309-MB-M-00001** | 27d | 2026-08-11 | 2026-09-17 |  | 2026-08-04 | 2026-09-10 | 27d | 13d |  | FD - Folha de Dados | 03 - REDUÇÃO | 09 - FORNO TECNORED | M - MECÂNICA / EQUIPAMENTOS | FOLHA DE DADOS ESPECIFICAÇÃO TÉCNICA TORRES DE RESFRIAMENTO | A4 (210x297mm) | 10 | Revisão do projeto de cobre refrigerado | Qui 10/09/26 | Ter 04/08/26 |
| 447 | 1.10.6.1 | Emissão inicial | 15d | 2026-08-11 | 2026-09-01 | 1018, 19 | 2026-08-04 | 2026-08-25 | 15d | 13d | 0d |  |  |  |  |  |  |  |  | Ter 25/08/26 |  |
| 448 | 1.10.6.2 | Avaliação do Cliente | 5d | 2026-09-01 | 2026-09-08 | 447 | 2026-08-25 | 2026-09-01 | 5d | 13d | 0d |  |  |  |  |  |  |  |  | Ter 01/09/26 |  |
| 449 | 1.10.6.3 | Atendimento de Comentário | 5d | 2026-09-08 | 2026-09-15 | 448 | 2026-09-01 | 2026-09-08 | 5d | 13d | 0d |  |  |  |  |  |  |  |  | Ter 08/09/26 |  |
| 450 | 1.10.6.4 | Aprovação | 2d | 2026-09-15 | 2026-09-17 | 449 | 2026-09-08 | 2026-09-10 | 2d | 13d |  |  |  |  |  |  |  |  |  | Qui 10/09/26 |  |
| 451 | 1.10.7 | **FD-F0009-0309-MB-M-00002** | 20d | 2026-09-08 | 2026-10-06 |  | 2026-09-01 | 2026-09-29 | 20d | 0d |  | FD - Folha de Dados | 03 - REDUÇÃO | 09 - FORNO TECNORED | M - MECÂNICA / EQUIPAMENTOS | FOLHA DE DADOS ESPECIFICAÇÃO TÉCNICA BOMBAS | A4 (210x297mm) | 10 | Revisão do projeto de cobre refrigerado | Ter 29/09/26 | Ter 01/09/26 |
| 452 | 1.10.7.1 | Emissão inicial | 10d | 2026-09-08 | 2026-09-22 | 1064 | 2026-09-01 | 2026-09-15 | 10d | 0d |  |  |  |  |  |  |  |  |  | Ter 15/09/26 |  |
| 453 | 1.10.7.2 | Avaliação do Cliente | 5d | 2026-09-22 | 2026-09-29 | 452 | 2026-09-15 | 2026-09-22 | 5d | 0d |  |  |  |  |  |  |  |  |  | Ter 22/09/26 |  |
| 454 | 1.10.7.3 | Atendimento de Comentário | 3d | 2026-09-29 | 2026-10-02 | 453 | 2026-09-22 | 2026-09-25 | 3d | 0d |  |  |  |  |  |  |  |  |  | Sex 25/09/26 |  |
| 455 | 1.10.7.4 | Aprovação | 2d | 2026-10-02 | 2026-10-06 | 454 | 2026-09-25 | 2026-09-29 | 2d | 0d |  |  |  |  |  |  |  |  |  | Ter 29/09/26 |  |

| ID | WBS | Task | Duration | Start | Finish | Predecessors | Baseline start | Baseline finish | Baseline duration | Total slack | Free slack | Tipo de documento | Área | Sub-área | Disciplina | Título | Formato | Quantidade | Agrupamento Cecal | Término_LB_R0 | Início_LB_R0 |
| --- | --- | --- | --- | --- | --- | --- | --- | --- | --- | --- | --- | --- | --- | --- | --- | --- | --- | --- | --- | --- | --- |
| 456 | 1.10.8 | **FD-F0009-0309-MB-M-00003** | 25d | 2026-08-18 | 2026-09-22 |  | 2026-08-11 | 2026-09-15 | 25d | 10d |  | FD - Folha de Dados | 03 - REDUÇÃO | 09 - FORNO TECNORED | M - MECÂNICA / EQUIPAMENTOS | FOLHA DE DADOS TROCADORES DE CALOR | A4 (210x297mm) | 10 | Revisão do projeto de cobre refrigerado | Ter 15/09/26 | Ter 11/08/26 |
| 457 | 1.10.8.1 | Emissão inicial | 15d | 2026-08-18 | 2026-09-08 | 452SF | 2026-08-11 | 2026-09-01 | 15d | 10d | 0d |  |  |  |  |  |  |  |  | Ter 01/09/26 |  |
| 458 | 1.10.8.2 | Avaliação do Cliente | 5d | 2026-09-08 | 2026-09-15 | 457 | 2026-09-01 | 2026-09-08 | 5d | 10d | 0d |  |  |  |  |  |  |  |  | Ter 08/09/26 |  |
| 459 | 1.10.8.3 | Atendimento de Comentário | 3d | 2026-09-15 | 2026-09-18 | 458 | 2026-09-08 | 2026-09-11 | 3d | 10d | 0d |  |  |  |  |  |  |  |  | Sex 11/09/26 |  |
| 460 | 1.10.8.4 | Aprovação | 2d | 2026-09-18 | 2026-09-22 | 459 | 2026-09-11 | 2026-09-15 | 2d | 10d |  |  |  |  |  |  |  |  |  | Ter 15/09/26 |  |
| 461 | 1.10.9 | **FD-F0009-0309-MB-M-00004** | 27d | 2026-08-18 | 2026-09-24 |  | 2026-08-11 | 2026-09-17 | 27d | 8d |  | FD - Folha de Dados | 03 - REDUÇÃO | 09 - FORNO TECNORED | M - MECÂNICA / EQUIPAMENTOS | FOLHA DE DADOS BICOS SPRAY DE CARGA | A4 (210x297mm) | 05 | Revisão do projeto de cobre refrigerado | Qui 17/09/26 | Ter 11/08/26 |
| 462 | 1.10.9.1 | Emissão inicial | 15d | 2026-08-18 | 2026-09-08 | 452SF | 2026-08-11 | 2026-09-01 | 15d | 8d | 0d |  |  |  |  |  |  |  |  | Ter 01/09/26 |  |
| 463 | 1.10.9.2 | Avaliação do Cliente | 5d | 2026-09-08 | 2026-09-15 | 462 | 2026-09-01 | 2026-09-08 | 5d | 8d | 0d |  |  |  |  |  |  |  |  | Ter 08/09/26 |  |
| 464 | 1.10.9.3 | Atendimento de Comentário | 5d | 2026-09-15 | 2026-09-22 | 463 | 2026-09-08 | 2026-09-15 | 5d | 8d | 0d |  |  |  |  |  |  |  |  | Ter 15/09/26 |  |
| 465 | 1.10.9.4 | Aprovação | 2d | 2026-09-22 | 2026-09-24 | 464 | 2026-09-15 | 2026-09-17 | 2d | 8d |  |  |  |  |  |  |  |  |  | Qui 17/09/26 |  |
| 466 | 1.10.10 | **FD-F0009-0309-MB-M-00005** | 25d | 2026-08-18 | 2026-09-22 |  | 2026-08-11 | 2026-09-15 | 25d | 10d |  | FD - Folha de Dados | 03 - REDUÇÃO | 09 - FORNO TECNORED | M - MECÂNICA / EQUIPAMENTOS | FOLHA DE DADOS FILTRO DUPLO CESTO | A4 (210x297mm) | 05 | Revisão do projeto de cobre refrigerado | Ter 15/09/26 | Ter 11/08/26 |
| 467 | 1.10.10.1 | Emissão inicial | 15d | 2026-08-18 | 2026-09-08 | 452SF | 2026-08-11 | 2026-09-01 | 15d | 10d | 0d |  |  |  |  |  |  |  |  | Ter 01/09/26 |  |
| 468 | 1.10.10.2 | Avaliação do Cliente | 5d | 2026-09-08 | 2026-09-15 | 467 | 2026-09-01 | 2026-09-08 | 5d | 10d | 0d |  |  |  |  |  |  |  |  | Ter 08/09/26 |  |
| 469 | 1.10.10.3 | Atendimento de Comentário | 3d | 2026-09-15 | 2026-09-18 | 468 | 2026-09-08 | 2026-09-11 | 3d | 10d | 0d |  |  |  |  |  |  |  |  | Sex 11/09/26 |  |
| 470 | 1.10.10.4 | Aprovação | 2d | 2026-09-18 | 2026-09-22 | 469 | 2026-09-11 | 2026-09-15 | 2d | 10d |  |  |  |  |  |  |  |  |  | Ter 15/09/26 |  |
| 471 | 1.10.11 | **FD-F0009-0309-MB-M-00006** | 25d | 2026-08-18 | 2026-09-22 |  | 2026-08-11 | 2026-09-15 | 25d | 10d |  | FD - Folha de Dados | 03 - REDUÇÃO | 09 - FORNO TECNORED | M - MECÂNICA / EQUIPAMENTOS | FOLHA DE DADOS BOMBAS PERISTÁLTICAS PARA TORRE RESFRIAMENTO | A4 (210x297mm) | 02 | Revisão do projeto de cobre refrigerado | Ter 15/09/26 | Ter 11/08/26 |
| 472 | 1.10.11.1 | Emissão inicial | 15d | 2026-08-18 | 2026-09-08 | 452SF | 2026-08-11 | 2026-09-01 | 15d | 10d | 0d |  |  |  |  |  |  |  |  | Ter 01/09/26 |  |
| 473 | 1.10.11.2 | Avaliação do Cliente | 5d | 2026-09-08 | 2026-09-15 | 472 | 2026-09-01 | 2026-09-08 | 5d | 10d | 0d |  |  |  |  |  |  |  |  | Ter 08/09/26 |  |
| 474 | 1.10.11.3 | Atendimento de Comentário | 3d | 2026-09-15 | 2026-09-18 | 473 | 2026-09-08 | 2026-09-11 | 3d | 10d | 0d |  |  |  |  |  |  |  |  | Sex 11/09/26 |  |
| 475 | 1.10.11.4 | Aprovação | 2d | 2026-09-18 | 2026-09-22 | 474 | 2026-09-11 | 2026-09-15 | 2d | 10d |  |  |  |  |  |  |  |  |  | Ter 15/09/26 |  |
| 476 | 1.10.12 | **FD-F0009-0309-MB-M-00007** | 25d | 2026-08-18 | 2026-09-22 |  | 2026-08-11 | 2026-09-15 | 25d | 10d |  | FD - Folha de Dados | 03 - REDUÇÃO | 09 - FORNO TECNORED | M - MECÂNICA / EQUIPAMENTOS | FOLHA DE DADOS UNIDADES HIDRÀULICAS PARA VÀLVULAS | A4 (210x297mm) | 02 | Readequação das utilidades no prédio do forno | Ter 15/09/26 | Ter 11/08/26 |
| 477 | 1.10.12.1 | Emissão inicial | 15d | 2026-08-18 | 2026-09-08 | 452SF | 2026-08-11 | 2026-09-01 | 15d | 10d | 0d |  |  |  |  |  |  |  |  | Ter 01/09/26 |  |
| 478 | 1.10.12.2 | Avaliação do Cliente | 5d | 2026-09-08 | 2026-09-15 | 477 | 2026-09-01 | 2026-09-08 | 5d | 10d | 0d |  |  |  |  |  |  |  |  | Ter 08/09/26 |  |
| 479 | 1.10.12.3 | Atendimento de Comentário | 3d | 2026-09-15 | 2026-09-18 | 478 | 2026-09-08 | 2026-09-11 | 3d | 10d | 0d |  |  |  |  |  |  |  |  | Sex 11/09/26 |  |
| 480 | 1.10.12.4 | Aprovação | 2d | 2026-09-18 | 2026-09-22 | 479 | 2026-09-11 | 2026-09-15 | 2d | 10d |  |  |  |  |  |  |  |  |  | Ter 15/09/26 |  |

| ID | WBS | Task | Duration | Start | Finish | Predecessors | Baseline start | Baseline finish | Baseline duration | Total slack | Free slack | Tipo de documento | Área | Sub-área | Disciplina | Título | Formato | Quantidade | Agrupamento Cecal | Término_LB_R0 | Início_LB_R0 |
| --- | --- | --- | --- | --- | --- | --- | --- | --- | --- | --- | --- | --- | --- | --- | --- | --- | --- | --- | --- | --- | --- |
| 481 | 1.10.13 | **FD-F0009-0309-MB-M-00008** | 25d | 2026-08-18 | 2026-09-22 |  | 2026-08-11 | 2026-09-15 | 25d | 10d |  | FD - Folha de Dados | 03 - REDUÇÃO | 09 - FORNO TECNORED | M - MECÂNICA / EQUIPAMENTOS | FOLHA DE DADOS VASO DE DESAREAÇÃO | A4 (210x297mm) | 02 | Readequação da casa de bombas | Ter 15/09/26 | Ter 11/08/26 |
| 482 | 1.10.13.1 | Emissão inicial | 15d | 2026-08-18 | 2026-09-08 | 452SF | 2026-08-11 | 2026-09-01 | 15d | 10d | 0d |  |  |  |  |  |  |  |  | Ter 01/09/26 |  |
| 483 | 1.10.13.2 | Avaliação do Cliente | 5d | 2026-09-08 | 2026-09-15 | 482 | 2026-09-01 | 2026-09-08 | 5d | 10d | 0d |  |  |  |  |  |  |  |  | Ter 08/09/26 |  |
| 484 | 1.10.13.3 | Atendimento de Comentário | 3d | 2026-09-15 | 2026-09-18 | 483 | 2026-09-08 | 2026-09-11 | 3d | 10d | 0d |  |  |  |  |  |  |  |  | Sex 11/09/26 |  |
| 485 | 1.10.13.4 | Aprovação | 2d | 2026-09-18 | 2026-09-22 | 484 | 2026-09-11 | 2026-09-15 | 2d | 10d |  |  |  |  |  |  |  |  |  | Ter 15/09/26 |  |
| 486 | 1.10.14 | **FD-F0009-0309-MB-M-00009** | 25d | 2026-08-18 | 2026-09-22 |  | 2026-08-11 | 2026-09-15 | 25d | 10d |  | FD - Folha de Dados | 03 - REDUÇÃO | 09 - FORNO TECNORED | M - MECÂNICA / EQUIPAMENTOS | FOLHA DE DADOS VASO DE EXPANSÃO | A4 (210x297mm) | 02 | Readequação da casa de bombas | Ter 15/09/26 | Ter 11/08/26 |
| 487 | 1.10.14.1 | Emissão inicial | 15d | 2026-08-18 | 2026-09-08 | 452SF | 2026-08-11 | 2026-09-01 | 15d | 10d | 0d |  |  |  |  |  |  |  |  | Ter 01/09/26 |  |
| 488 | 1.10.14.2 | Avaliação do Cliente | 5d | 2026-09-08 | 2026-09-15 | 487 | 2026-09-01 | 2026-09-08 | 5d | 10d | 0d |  |  |  |  |  |  |  |  | Ter 08/09/26 |  |
| 489 | 1.10.14.3 | Atendimento de Comentário | 3d | 2026-09-15 | 2026-09-18 | 488 | 2026-09-08 | 2026-09-11 | 3d | 10d | 0d |  |  |  |  |  |  |  |  | Sex 11/09/26 |  |
| 490 | 1.10.14.4 | Aprovação | 2d | 2026-09-18 | 2026-09-22 | 489 | 2026-09-11 | 2026-09-15 | 2d | 10d |  |  |  |  |  |  |  |  |  | Ter 15/09/26 |  |
| 491 | 1.10.15 | **FD-F0009-0309-MB-M-00010** | 25d | 2026-08-18 | 2026-09-22 |  | 2026-08-11 | 2026-09-15 | 25d | 10d |  | FD - Folha de Dados | 03 - REDUÇÃO | 09 - FORNO TECNORED | M - MECÂNICA / EQUIPAMENTOS | FOLHA DE DADOS VASOS DE EXPANSAO NITROGENIO | A4 (210x297mm) | 02 | Readequação da casa de bombas | Ter 15/09/26 | Ter 11/08/26 |
| 492 | 1.10.15.1 | Emissão inicial | 15d | 2026-08-18 | 2026-09-08 | 452SF | 2026-08-11 | 2026-09-01 | 15d | 10d | 0d |  |  |  |  |  |  |  |  | Ter 01/09/26 |  |
| 493 | 1.10.15.2 | Avaliação do Cliente | 5d | 2026-09-08 | 2026-09-15 | 492 | 2026-09-01 | 2026-09-08 | 5d | 10d | 0d |  |  |  |  |  |  |  |  | Ter 08/09/26 |  |
| 494 | 1.10.15.3 | Atendimento de Comentário | 3d | 2026-09-15 | 2026-09-18 | 493 | 2026-09-08 | 2026-09-11 | 3d | 10d | 0d |  |  |  |  |  |  |  |  | Sex 11/09/26 |  |
| 495 | 1.10.15.4 | Aprovação | 2d | 2026-09-18 | 2026-09-22 | 494 | 2026-09-11 | 2026-09-15 | 2d | 10d |  |  |  |  |  |  |  |  |  | Ter 15/09/26 |  |
| 496 | 1.10.16 | **FD-F0009-0309-MB-M-00011** | 25d | 2026-08-18 | 2026-09-22 |  | 2026-08-11 | 2026-09-15 | 25d | 10d |  | FD - Folha de Dados | 03 - REDUÇÃO | 09 - FORNO TECNORED | M - MECÂNICA / EQUIPAMENTOS | FOLHA DE DADOS FILTRO CHAPÉU DE BRUXA | A4 (210x297mm) | 02 | Readequação da casa de bombas | Ter 15/09/26 | Ter 11/08/26 |
| 497 | 1.10.16.1 | Emissão inicial | 15d | 2026-08-18 | 2026-09-08 | 452SF | 2026-08-11 | 2026-09-01 | 15d | 10d | 0d |  |  |  |  |  |  |  |  | Ter 01/09/26 |  |
| 498 | 1.10.16.2 | Avaliação do Cliente | 5d | 2026-09-08 | 2026-09-15 | 497 | 2026-09-01 | 2026-09-08 | 5d | 10d | 0d |  |  |  |  |  |  |  |  | Ter 08/09/26 |  |
| 499 | 1.10.16.3 | Atendimento de Comentário | 3d | 2026-09-15 | 2026-09-18 | 498 | 2026-09-08 | 2026-09-11 | 3d | 10d | 0d |  |  |  |  |  |  |  |  | Sex 11/09/26 |  |
| 500 | 1.10.16.4 | Aprovação | 2d | 2026-09-18 | 2026-09-22 | 499 | 2026-09-11 | 2026-09-15 | 2d | 10d |  |  |  |  |  |  |  |  |  | Ter 15/09/26 |  |
| 501 | 1.10.17 | **LE-F0009-0309-MB-M-00001** | 25d | 2026-08-18 | 2026-09-22 |  | 2026-08-11 | 2026-09-15 | 25d | 10d |  | LE - Lista de Equipamentos | 03 - REDUÇÃO | 09 - FORNO TECNORED | M - MECÂNICA / EQUIPAMENTOS | LISTA DE EQUIPAMENTOS MECÂNICOS | A4 (210x297mm) | 05 | Readequação da casa de bombas | Ter 15/09/26 | Ter 11/08/26 |
| 502 | 1.10.17.1 | Emissão inicial | 15d | 2026-08-18 | 2026-09-08 | 452SF | 2026-08-11 | 2026-09-01 | 15d | 10d | 0d |  |  |  |  |  |  |  |  | Ter 01/09/26 |  |
| 503 | 1.10.17.2 | Avaliação do Cliente | 5d | 2026-09-08 | 2026-09-15 | 502 | 2026-09-01 | 2026-09-08 | 5d | 10d | 0d |  |  |  |  |  |  |  |  | Ter 08/09/26 |  |
| 504 | 1.10.17.3 | Atendimento de Comentário | 3d | 2026-09-15 | 2026-09-18 | 503 | 2026-09-08 | 2026-09-11 | 3d | 10d | 0d |  |  |  |  |  |  |  |  | Sex 11/09/26 |  |
| 505 | 1.10.17.4 | Aprovação | 2d | 2026-09-18 | 2026-09-22 | 504 | 2026-09-11 | 2026-09-15 | 2d | 10d |  |  |  |  |  |  |  |  |  | Ter 15/09/26 |  |

| ID | WBS | Task | Duration | Start | Finish | Predecessors | Baseline start | Baseline finish | Baseline duration | Total slack | Free slack | Tipo de documento | Área | Sub-área | Disciplina | Título | Formato | Quantidade | Agrupamento Cecal | Término_LB_R0 | Início_LB_R0 |
| --- | --- | --- | --- | --- | --- | --- | --- | --- | --- | --- | --- | --- | --- | --- | --- | --- | --- | --- | --- | --- | --- |
| 506 | 1.10.18 | **LM-F0009-0309-MB-M-00001** | 25d | 2026-08-18 | 2026-09-22 |  | 2026-08-11 | 2026-09-15 | 25d | 10d |  | LM - Lista de Materiais | 03 - REDUÇÃO | 09 - FORNO TECNORED | M - MECÂNICA / EQUIPAMENTOS | LISTA DE MATERIAIS FORNO TECNORED | A4 (210x297mm) | 05 | Planilha de quantitativo do forno e carregamento | Ter 15/09/26 | Ter 11/08/26 |
| 507 | 1.10.18.1 | Emissão inicial | 15d | 2026-08-18 | 2026-09-08 | 452SF | 2026-08-11 | 2026-09-01 | 15d | 10d | 0d |  |  |  |  |  |  |  |  | Ter 01/09/26 |  |
| 508 | 1.10.18.2 | Avaliação do Cliente | 5d | 2026-09-08 | 2026-09-15 | 507 | 2026-09-01 | 2026-09-08 | 5d | 10d | 0d |  |  |  |  |  |  |  |  | Ter 08/09/26 |  |
| 509 | 1.10.18.3 | Atendimento de Comentário | 3d | 2026-09-15 | 2026-09-18 | 508 | 2026-09-08 | 2026-09-11 | 3d | 10d | 0d |  |  |  |  |  |  |  |  | Sex 11/09/26 |  |
| 510 | 1.10.18.4 | Aprovação | 2d | 2026-09-18 | 2026-09-22 | 509 | 2026-09-11 | 2026-09-15 | 2d | 10d |  |  |  |  |  |  |  |  |  | Ter 15/09/26 |  |
| 511 | 1.10.19 | **PQ-F0009-0309-MB-M-00001** | 25d | 2026-08-18 | 2026-09-22 |  | 2026-08-11 | 2026-09-15 | 25d | 10d |  | PQ - Planilha de Quantidades | 03 - REDUÇÃO | 09 - FORNO TECNORED | M - MECÂNICA / EQUIPAMENTOS | PLANILHA QUANTITATIVO EQUIPAMENTOS UTILIDADES | A4 (210x297mm) | 10 | Planilha de quantitativo do forno e carregamento | Ter 15/09/26 | Ter 11/08/26 |
| 512 | 1.10.19.1 | Emissão inicial | 15d | 2026-08-18 | 2026-09-08 | 452SF | 2026-08-11 | 2026-09-01 | 15d | 10d | 0d |  |  |  |  |  |  |  |  | Ter 01/09/26 |  |
| 513 | 1.10.19.2 | Avaliação do Cliente | 5d | 2026-09-08 | 2026-09-15 | 512 | 2026-09-01 | 2026-09-08 | 5d | 10d | 0d |  |  |  |  |  |  |  |  | Ter 08/09/26 |  |
| 514 | 1.10.19.3 | Atendimento de Comentário | 3d | 2026-09-15 | 2026-09-18 | 513 | 2026-09-08 | 2026-09-11 | 3d | 10d | 0d |  |  |  |  |  |  |  |  | Sex 11/09/26 |  |
| 515 | 1.10.19.4 | Aprovação | 2d | 2026-09-18 | 2026-09-22 | 514 | 2026-09-11 | 2026-09-15 | 2d | 10d |  |  |  |  |  |  |  |  |  | Ter 15/09/26 |  |
| 516 | 1.10.20 | **PQ-F0009-0309-MB-M-00002** | 25d | 2026-08-18 | 2026-09-22 | 421 | 2026-08-11 | 2026-09-15 | 25d | 10d |  | PQ - Planilha de Quantidades | 03 - REDUÇÃO | 09 - FORNO TECNORED | M - MECÂNICA / EQUIPAMENTOS | PLANILHA QUANTITATIVO DE EQUIPAMENTOS CARREGAMENTO | A1 (841x594mm) | 10 | Planilha de quantitativo do forno e carregamento | Ter 15/09/26 | Ter 11/08/26 |
| 517 | 1.10.20.1 | Emissão inicial | 15d | 2026-08-18 | 2026-09-08 | 513SF | 2026-08-11 | 2026-09-01 | 15d | 10d | 0d |  |  |  |  |  |  |  |  | Ter 01/09/26 |  |
| 518 | 1.10.20.2 | Avaliação do Cliente | 5d | 2026-09-08 | 2026-09-15 | 517 | 2026-09-01 | 2026-09-08 | 5d | 10d | 0d |  |  |  |  |  |  |  |  | Ter 08/09/26 |  |
| 519 | 1.10.20.3 | Atendimento de Comentário | 3d | 2026-09-15 | 2026-09-18 | 518 | 2026-09-08 | 2026-09-11 | 3d | 10d | 0d |  |  |  |  |  |  |  |  | Sex 11/09/26 |  |
| 520 | 1.10.20.4 | Aprovação | 2d | 2026-09-18 | 2026-09-22 | 519 | 2026-09-11 | 2026-09-15 | 2d | 10d |  |  |  |  |  |  |  |  |  | Ter 15/09/26 |  |
| 521 | 1.10.21 | **PQ-F0009-0309-MB-M-00003** | 25d | 2026-08-18 | 2026-09-22 | 421 | 2026-08-11 | 2026-09-15 | 25d | 10d |  | PQ - Planilha de Quantidades | 03 - REDUÇÃO | 09 - FORNO TECNORED | M - MECÂNICA / EQUIPAMENTOS | PLANILHA QUANTITATIVO SISTEMA CARREGAMENTO | A4 (210x297mm) | 10 | Planilha de quantitativo do forno e carregamento | Ter 15/09/26 | Ter 11/08/26 |
| 522 | 1.10.21.1 | Emissão inicial | 15d | 2026-08-18 | 2026-09-08 | 513SF | 2026-08-11 | 2026-09-01 | 15d | 10d | 0d |  |  |  |  |  |  |  |  | Ter 01/09/26 |  |
| 523 | 1.10.21.2 | Avaliação do Cliente | 5d | 2026-09-08 | 2026-09-15 | 522 | 2026-09-01 | 2026-09-08 | 5d | 10d | 0d |  |  |  |  |  |  |  |  | Ter 08/09/26 |  |
| 524 | 1.10.21.3 | Atendimento de Comentário | 3d | 2026-09-15 | 2026-09-18 | 523 | 2026-09-08 | 2026-09-11 | 3d | 10d | 0d |  |  |  |  |  |  |  |  | Sex 11/09/26 |  |
| 525 | 1.10.21.4 | Aprovação | 2d | 2026-09-18 | 2026-09-22 | 524 | 2026-09-11 | 2026-09-15 | 2d | 10d |  |  |  |  |  |  |  |  |  | Ter 15/09/26 |  |
| 526 | 1.10.22 | **PQ-F0009-0309-MB-M-00004** | 25d | 2026-08-18 | 2026-09-22 | 421 | 2026-08-11 | 2026-09-15 | 25d | 10d |  | PQ - Planilha de Quantidades | 03 - REDUÇÃO | 09 - FORNO TECNORED | M - MECÂNICA / EQUIPAMENTOS | PLANILHA QUANTITATIVO FORNO | A4 (210x297mm) | 18 | Planilha de quantitativo do forno e carregamento | Ter 15/09/26 | Ter 11/08/26 |
| 527 | 1.10.22.1 | Emissão inicial | 15d | 2026-08-18 | 2026-09-08 | 513SF | 2026-08-11 | 2026-09-01 | 15d | 10d | 0d |  |  |  |  |  |  |  |  | Ter 01/09/26 |  |
| 528 | 1.10.22.2 | Avaliação do Cliente | 5d | 2026-09-08 | 2026-09-15 | 527 | 2026-09-01 | 2026-09-08 | 5d | 10d | 0d |  |  |  |  |  |  |  |  | Ter 08/09/26 |  |
| 529 | 1.10.22.3 | Atendimento de Comentário | 3d | 2026-09-15 | 2026-09-18 | 528 | 2026-09-08 | 2026-09-11 | 3d | 10d | 0d |  |  |  |  |  |  |  |  | Sex 11/09/26 |  |
| 530 | 1.10.22.4 | Aprovação | 2d | 2026-09-18 | 2026-09-22 | 529 | 2026-09-11 | 2026-09-15 | 2d | 10d |  |  |  |  |  |  |  |  |  | Ter 15/09/26 |  |

| ID | WBS | Task | Type | Duration | Start | Finish | Predecessors | Baseline start | Baseline finish | Baseline duration | Total slack | Free slack | Tipo de documento | Área | Sub-área | Disciplina | Formato | Quantidade | Agrupamento Cecal | Término_LB_R0 | Início_LB_R0 |
| --- | --- | --- | --- | --- | --- | --- | --- | --- | --- | --- | --- | --- | --- | --- | --- | --- | --- | --- | --- | --- | --- |
| 531 | 1.10.23 | **RT-F0009-0309-MB-M-00001** |  | 18d | 2026-09-10 | 2026-10-06 |  | 2026-09-03 | 2026-09-29 | 18d | 0d |  | RT - Relatório Técnico | 03 - REDUÇÃO | 09 - FORNO TECNORED | M - MECÂNICA / EQUIPAMENTOS | A4 (210x297mm) | 10 | Revisão do projeto do forno - carcaça e refratário | Ter 29/09/26 | Qui 03/09/26 |
| 532 | 1.10.23.1 | Emissão inicial |  | 8d | 2026-09-10 | 2026-09-22 | 410 | 2026-09-03 | 2026-09-15 | 8d | 0d |  |  |  |  |  |  |  |  | Ter 15/09/26 |  |
| 533 | 1.10.23.2 | Avaliação do Cliente |  | 5d | 2026-09-22 | 2026-09-29 | 532 | 2026-09-15 | 2026-09-22 | 5d | 0d |  |  |  |  |  |  |  |  | Ter 22/09/26 |  |
| 534 | 1.10.23.3 | Atendimento de Comentário |  | 3d | 2026-09-29 | 2026-10-02 | 533 | 2026-09-22 | 2026-09-25 | 3d | 0d |  |  |  |  |  |  |  |  | Sex 25/09/26 |  |
| 535 | 1.10.23.4 | Aprovação |  | 2d | 2026-10-02 | 2026-10-06 | 534 | 2026-09-25 | 2026-09-29 | 2d | 0d |  |  |  |  |  |  |  |  | Ter 29/09/26 |  |
| 536 | 4.2.1.12 | TUBULAÇÃO E SISTEMAS 309 | manual | 30d | 2026-08-04 | 2026-09-14 | 537SS |  |  |  |  |  |  |  |  |  |  |  |  |  |  |
| 537 | 1.12 | **TUBULAÇÃO E SISTEMAS 309** |  | 30d | 2026-08-11 | 2026-09-22 |  | 2026-08-04 | 2026-09-15 | 30d | 10d | 0d |  |  |  |  |  |  |  | Ter 15/09/26 | Ter 04/08/26 |
| 538 | 1.12.1 | **AG-F0009-0309-MB-T-00001** |  | 25d | 2026-08-18 | 2026-09-22 |  | 2026-08-11 | 2026-09-15 | 25d | 10d |  | AG - Arranjo (AG) | 03 - REDUÇÃO | 09 - FORNO TECNORED | T - TUBULAÇÃO E SISTEMAS | A0 (1189x841mm) | 01 | Readequação das utilidades no prédio do forno | Ter 15/09/26 | Ter 11/08/26 |
| 539 | 1.12.1.1 | Emissão inicial |  | 10d | 2026-08-18 | 2026-09-01 | 1024 | 2026-08-11 | 2026-08-25 | 10d | 10d | 0d |  |  |  |  |  |  |  | Ter 25/08/26 |  |
| 540 | 1.12.1.2 | Avaliação do Cliente |  | 5d | 2026-09-01 | 2026-09-08 | 539 | 2026-08-25 | 2026-09-01 | 5d | 10d | 0d |  |  |  |  |  |  |  | Ter 01/09/26 |  |
| 541 | 1.12.1.3 | Atendimento de Comentário |  | 5d | 2026-09-08 | 2026-09-15 | 540 | 2026-09-01 | 2026-09-08 | 5d | 10d | 0d |  |  |  |  |  |  |  | Ter 08/09/26 |  |
| 542 | 1.12.1.4 | Aprovação |  | 5d | 2026-09-15 | 2026-09-22 | 541 | 2026-09-08 | 2026-09-15 | 5d | 10d |  |  |  |  |  |  |  |  | Ter 15/09/26 |  |
| 543 | 1.12.2 | **AG-F0009-0309-MB-T-00002** |  | 25d | 2026-08-18 | 2026-09-22 |  | 2026-08-11 | 2026-09-15 | 25d | 10d |  | AG - Arranjo (AG) | 03 - REDUÇÃO | 09 - FORNO TECNORED | T - TUBULAÇÃO E SISTEMAS | A1 (841x594mm) | 01 | Readequação das utilidades no prédio do forno | Ter 15/09/26 | Ter 11/08/26 |
| 544 | 1.12.2.1 | Emissão inicial |  | 10d | 2026-08-18 | 2026-09-01 | 540SF | 2026-08-11 | 2026-08-25 | 10d | 10d | 0d |  |  |  |  |  |  |  | Ter 25/08/26 |  |
| 545 | 1.12.2.2 | Avaliação do Cliente |  | 5d | 2026-09-01 | 2026-09-08 | 544 | 2026-08-25 | 2026-09-01 | 5d | 10d | 0d |  |  |  |  |  |  |  | Ter 01/09/26 |  |
| 546 | 1.12.2.3 | Atendimento de Comentário |  | 5d | 2026-09-08 | 2026-09-15 | 545 | 2026-09-01 | 2026-09-08 | 5d | 10d | 0d |  |  |  |  |  |  |  | Ter 08/09/26 |  |
| 547 | 1.12.2.4 | Aprovação |  | 5d | 2026-09-15 | 2026-09-22 | 546 | 2026-09-08 | 2026-09-15 | 5d | 10d |  |  |  |  |  |  |  |  | Ter 15/09/26 |  |
| 548 | 1.12.3 | **AG-F0009-0309-MB-T-00003** |  | 25d | 2026-08-18 | 2026-09-22 |  | 2026-08-11 | 2026-09-15 | 25d | 10d |  | AG - Arranjo (AG) | 03 - REDUÇÃO | 09 - FORNO TECNORED | T - TUBULAÇÃO E SISTEMAS | A1 (841x594mm) | 01 | Readequação das utilidades no prédio do forno | Ter 15/09/26 | Ter 11/08/26 |
| 549 | 1.12.3.1 | Emissão inicial |  | 10d | 2026-08-18 | 2026-09-01 | 540SF | 2026-08-11 | 2026-08-25 | 10d | 10d | 0d |  |  |  |  |  |  |  | Ter 25/08/26 |  |
| 550 | 1.12.3.2 | Avaliação do Cliente |  | 5d | 2026-09-01 | 2026-09-08 | 549 | 2026-08-25 | 2026-09-01 | 5d | 10d | 0d |  |  |  |  |  |  |  | Ter 01/09/26 |  |
| 551 | 1.12.3.3 | Atendimento de Comentário |  | 5d | 2026-09-08 | 2026-09-15 | 550 | 2026-09-01 | 2026-09-08 | 5d | 10d | 0d |  |  |  |  |  |  |  | Ter 08/09/26 |  |
| 552 | 1.12.3.4 | Aprovação |  | 5d | 2026-09-15 | 2026-09-22 | 551 | 2026-09-08 | 2026-09-15 | 5d | 10d |  |  |  |  |  |  |  |  | Ter 15/09/26 |  |
| 553 | 1.12.4 | **AG-F0009-0309-MB-T-00004** |  | 25d | 2026-08-18 | 2026-09-22 |  | 2026-08-11 | 2026-09-15 | 25d | 10d |  | AG - Arranjo (AG) | 03 - REDUÇÃO | 09 - FORNO TECNORED | T - TUBULAÇÃO E SISTEMAS | A1 (841x594mm) | 01 | Readequação das utilidades no prédio do forno | Ter 15/09/26 | Ter 11/08/26 |
| 554 | 1.12.4.1 | Emissão inicial |  | 10d | 2026-08-18 | 2026-09-01 | 540SF | 2026-08-11 | 2026-08-25 | 10d | 10d | 0d |  |  |  |  |  |  |  | Ter 25/08/26 |  |
| 555 | 1.12.4.2 | Avaliação do Cliente |  | 5d | 2026-09-01 | 2026-09-08 | 554 | 2026-08-25 | 2026-09-01 | 5d | 10d | 0d |  |  |  |  |  |  |  | Ter 01/09/26 |  |
| 556 | 1.12.4.3 | Atendimento de Comentário |  | 5d | 2026-09-08 | 2026-09-15 | 555 | 2026-09-01 | 2026-09-08 | 5d | 10d | 0d |  |  |  |  |  |  |  | Ter 08/09/26 |  |
| 557 | 1.12.4.4 | Aprovação |  | 5d | 2026-09-15 | 2026-09-22 | 556 | 2026-09-08 | 2026-09-15 | 5d | 10d |  |  |  |  |  |  |  |  | Ter 15/09/26 |  |

Notes:
- 531: Título: ANÁLISE DE FLEXIBILIDADE PRELIMINAR DA TUBULACAO DE AR QUENTE
- 538: Título: LAY-OUT DE EQUIPAMENTOS
- 543: Título: PLANTA BÁSICA CASA DE BOMBAS
- 548: Título: PLANTA BÁSICA CORTE CASA DE BOMBAS
- 553: Título: PLANTA BÁSICA PIPE-RACK DA CASA DE BOMBAS PLANTA E CORTE

| ID | WBS | Task | Duration | Start | Finish | Predecessors | Baseline start | Baseline finish | Baseline duration | Total slack | Free slack | Tipo de documento | Área | Sub-área | Disciplina | Título | Formato | Quantidade | Agrupamento Cecal | Término_LB_R0 | Início_LB_R0 |
| --- | --- | --- | --- | --- | --- | --- | --- | --- | --- | --- | --- | --- | --- | --- | --- | --- | --- | --- | --- | --- | --- |
| 558 | 1.12.5 | **AG-F0009-0309-MB-T-00005** | 25d | 2026-08-18 | 2026-09-22 |  | 2026-08-11 | 2026-09-15 | 25d | 10d |  | AG - Arranjo (AG) | 03 - REDUÇÃO | 09 - FORNO TECNORED | T - TUBULAÇÃO E SISTEMAS | PLANTA BÁSICA PIPE-RACK PARA FORNO PLANTA E CORTE | A1 (841x594mm) | 01 | Readequação das utilidades no prédio do forno | Ter 15/09/26 | Ter 11/08/26 |
| 559 | 1.12.5.1 | Emissão inicial | 10d | 2026-08-18 | 2026-09-01 | 540SF | 2026-08-11 | 2026-08-25 | 10d | 10d | 0d |  |  |  |  |  |  |  |  | Ter 25/08/26 |  |
| 560 | 1.12.5.2 | Avaliação do Cliente | 5d | 2026-09-01 | 2026-09-08 | 559 | 2026-08-25 | 2026-09-01 | 5d | 10d | 0d |  |  |  |  |  |  |  |  | Ter 01/09/26 |  |
| 561 | 1.12.5.3 | Atendimento de Comentário | 5d | 2026-09-08 | 2026-09-15 | 560 | 2026-09-01 | 2026-09-08 | 5d | 10d | 0d |  |  |  |  |  |  |  |  | Ter 08/09/26 |  |
| 562 | 1.12.5.4 | Aprovação | 5d | 2026-09-15 | 2026-09-22 | 561 | 2026-09-08 | 2026-09-15 | 5d | 10d |  |  |  |  |  |  |  |  |  | Ter 15/09/26 |  |
| 563 | 1.12.6 | **LK-F0009-0309-MB-T-00001** | 20d | 2026-08-25 | 2026-09-22 |  | 2026-08-18 | 2026-09-15 | 20d | 10d |  | LK - Lista de Tie in | 03 - REDUÇÃO | 09 - FORNO TECNORED | T - TUBULAÇÃO E SISTEMAS | LISTA DE TIE-INS | A4 (210x297mm) | 10 | Readequação das utilidades no prédio do forno | Ter 15/09/26 | Ter 18/08/26 |
| 564 | 1.12.6.1 | Emissão inicial | 5d | 2026-08-25 | 2026-09-01 | 540SF | 2026-08-18 | 2026-08-25 | 5d | 10d | 0d |  |  |  |  |  |  |  |  | Ter 25/08/26 |  |
| 565 | 1.12.6.2 | Avaliação do Cliente | 5d | 2026-09-01 | 2026-09-08 | 564 | 2026-08-25 | 2026-09-01 | 5d | 10d | 0d |  |  |  |  |  |  |  |  | Ter 01/09/26 |  |
| 566 | 1.12.6.3 | Atendimento de Comentário | 5d | 2026-09-08 | 2026-09-15 | 565 | 2026-09-01 | 2026-09-08 | 5d | 10d | 0d |  |  |  |  |  |  |  |  | Ter 08/09/26 |  |
| 567 | 1.12.6.4 | Aprovação | 5d | 2026-09-15 | 2026-09-22 | 566 | 2026-09-08 | 2026-09-15 | 5d | 10d |  |  |  |  |  |  |  |  |  | Ter 15/09/26 |  |
| 568 | 1.12.7 | **LM-F0009-0309-MB-T-00001** | 30d | 2026-08-11 | 2026-09-22 |  | 2026-08-04 | 2026-09-15 | 30d | 10d |  | LM - Lista de Materiais | 03 - REDUÇÃO | 09 - FORNO TECNORED | T - TUBULAÇÃO E SISTEMAS | LISTA DE MATERIAIS | A4 (210x297mm) | 10 | Readequação das utilidades no prédio do forno | Ter 15/09/26 | Ter 04/08/26 |
| 569 | 1.12.7.1 | Emissão inicial | 15d | 2026-08-11 | 2026-09-01 | 540SF | 2026-08-04 | 2026-08-25 | 15d | 10d | 0d |  |  |  |  |  |  |  |  | Ter 25/08/26 |  |
| 570 | 1.12.7.2 | Avaliação do Cliente | 5d | 2026-09-01 | 2026-09-08 | 569 | 2026-08-25 | 2026-09-01 | 5d | 10d | 0d |  |  |  |  |  |  |  |  | Ter 01/09/26 |  |
| 571 | 1.12.7.3 | Atendimento de Comentário | 5d | 2026-09-08 | 2026-09-15 | 570 | 2026-09-01 | 2026-09-08 | 5d | 10d | 0d |  |  |  |  |  |  |  |  | Ter 08/09/26 |  |
| 572 | 1.12.7.4 | Aprovação | 5d | 2026-09-15 | 2026-09-22 | 571 | 2026-09-08 | 2026-09-15 | 5d | 10d |  |  |  |  |  |  |  |  |  | Ter 15/09/26 |  |
| 573 | 1.12.8 | **LS-F0009-0309-MB-T-00001** | 25d | 2026-08-18 | 2026-09-22 |  | 2026-08-11 | 2026-09-15 | 25d | 10d |  | LS - Lista de Suportes | 03 - REDUÇÃO | 09 - FORNO TECNORED | T - TUBULAÇÃO E SISTEMAS | LISTA DE SUPORTES | A4 (210x297mm) | 10 | Readequação das utilidades no prédio do forno | Ter 15/09/26 | Ter 11/08/26 |
| 574 | 1.12.8.1 | Emissão inicial | 10d | 2026-08-18 | 2026-09-01 | 540SF | 2026-08-11 | 2026-08-25 | 10d | 10d | 0d |  |  |  |  |  |  |  |  | Ter 25/08/26 |  |
| 575 | 1.12.8.2 | Avaliação do Cliente | 5d | 2026-09-01 | 2026-09-08 | 574 | 2026-08-25 | 2026-09-01 | 5d | 10d | 0d |  |  |  |  |  |  |  |  | Ter 01/09/26 |  |
| 576 | 1.12.8.3 | Atendimento de Comentário | 5d | 2026-09-08 | 2026-09-15 | 575 | 2026-09-01 | 2026-09-08 | 5d | 10d | 0d |  |  |  |  |  |  |  |  | Ter 08/09/26 |  |
| 577 | 1.12.8.4 | Aprovação | 5d | 2026-09-15 | 2026-09-22 | 576 | 2026-09-08 | 2026-09-15 | 5d | 10d |  |  |  |  |  |  |  |  |  | Ter 15/09/26 |  |
| 578 | 1.12.9 | **MD-F0009-0309-MB-T-00001** | 30d | 2026-08-11 | 2026-09-22 |  | 2026-08-04 | 2026-09-15 | 30d | 10d |  | MD - Memorial Descritivo | 03 - REDUÇÃO | 09 - FORNO TECNORED | T - TUBULAÇÃO E SISTEMAS | MEMORIAL DESCRITIVO DE MONTAGEM MECÂNICA | A4 (210x297mm) | 10 | Readequação das utilidades no prédio do forno | Ter 15/09/26 | Ter 04/08/26 |
| 579 | 1.12.9.1 | Emissão inicial | 15d | 2026-08-11 | 2026-09-01 | 540SF | 2026-08-04 | 2026-08-25 | 15d | 10d | 0d |  |  |  |  |  |  |  |  | Ter 25/08/26 |  |
| 580 | 1.12.9.2 | Avaliação do Cliente | 5d | 2026-09-01 | 2026-09-08 | 579 | 2026-08-25 | 2026-09-01 | 5d | 10d | 0d |  |  |  |  |  |  |  |  | Ter 01/09/26 |  |
| 581 | 1.12.9.3 | Atendimento de Comentário | 5d | 2026-09-08 | 2026-09-15 | 580 | 2026-09-01 | 2026-09-08 | 5d | 10d | 0d |  |  |  |  |  |  |  |  | Ter 08/09/26 |  |
| 582 | 1.12.9.4 | Aprovação | 5d | 2026-09-15 | 2026-09-22 | 581 | 2026-09-08 | 2026-09-15 | 5d | 10d |  |  |  |  |  |  |  |  |  | Ter 15/09/26 |  |

| ID | WBS | Task | Type | Duration | Start | Finish | Predecessors | Baseline start | Baseline finish | Baseline duration | Total slack | Free slack | Tipo de documento | Área | Sub-área | Disciplina | Título | Formato | Quantidade | Agrupamento Cecal | Término_LB_R0 | Início_LB_R0 |
| --- | --- | --- | --- | --- | --- | --- | --- | --- | --- | --- | --- | --- | --- | --- | --- | --- | --- | --- | --- | --- | --- | --- |
| 583 | 1.12.10 | **MD-F0009-0309-MB-T-00002** |  | 30d | 2026-08-11 | 2026-09-22 |  | 2026-08-04 | 2026-09-15 | 30d | 10d |  | MD - Memorial Descritivo | 03 - REDUÇÃO | 09 - FORNO TECNORED | T - TUBULAÇÃO E SISTEMAS | MEMORIAL DESCRITIVO PESO DA TUBULAÇÃO DO FORNO | A4 (210x297mm) | 10 | Readequação das utilidades no prédio do forno | Ter 15/09/26 | Ter 04/08/26 |
| 584 | 1.12.10.1 | Emissão inicial |  | 15d | 2026-08-11 | 2026-09-01 | 540SF | 2026-08-04 | 2026-08-25 | 15d | 10d | 0d |  |  |  |  |  |  |  |  | Ter 25/08/26 |  |
| 585 | 1.12.10.2 | Avaliação do Cliente |  | 5d | 2026-09-01 | 2026-09-08 | 584 | 2026-08-25 | 2026-09-01 | 5d | 10d | 0d |  |  |  |  |  |  |  |  | Ter 01/09/26 |  |
| 586 | 1.12.10.3 | Atendimento de Comentário |  | 5d | 2026-09-08 | 2026-09-15 | 585 | 2026-09-01 | 2026-09-08 | 5d | 10d | 0d |  |  |  |  |  |  |  |  | Ter 08/09/26 |  |
| 587 | 1.12.10.4 | Aprovação |  | 5d | 2026-09-15 | 2026-09-22 | 586 | 2026-09-08 | 2026-09-15 | 5d | 10d |  |  |  |  |  |  |  |  |  | Ter 15/09/26 |  |
| 588 | 4.2.1.14 | ARQUITETURA 309 | manual | 35d | 2026-07-29 | 2026-09-15 | 589SS |  |  |  |  |  |  |  |  |  |  |  |  |  |  |  |
| 589 | 1.14 | **ARQUITETURA 309** |  | 35d | 2026-08-04 | 2026-09-22 |  | 2026-07-29 | 2026-09-15 | 35d | 10d | 0d |  |  |  |  |  |  |  |  | Ter 15/09/26 | Qua 29/07/26 |
| 590 | 1.14.1 | **AG-F0009-0309-MB-A-00001** |  | 25d | 2026-08-04 | 2026-09-08 |  | 2026-07-29 | 2026-09-01 | 25d | 10d |  | AG - Arranjo (AG) | 03 - REDUÇÃO | 09 - FORNO TECNORED | A - ARQUITETURA | ARQUITETURA PRÉDIO PRODUTIVO - BASE FORNO | A1 (841x594mm) | 01 | Readequação da fundação | Ter 01/09/26 | Qua 29/07/26 |
| 591 | 1.14.1.1 | Emissão inicial |  | 10d | 2026-08-04 | 2026-08-18 | 101, 290 | 2026-07-29 | 2026-08-11 | 10d | 10d | 0d |  |  |  |  |  |  |  |  | Ter 11/08/26 |  |
| 592 | 1.14.1.2 | Avaliação do Cliente |  | 5d | 2026-08-18 | 2026-08-25 | 591 | 2026-08-12 | 2026-08-18 | 5d | 20d | 0d |  |  |  |  |  |  |  |  | Ter 18/08/26 |  |
| 593 | 1.14.1.3 | Atendimento de Comentário |  | 5d | 2026-08-25 | 2026-09-01 | 592 | 2026-08-19 | 2026-08-25 | 5d | 20d | 0d |  |  |  |  |  |  |  |  | Ter 25/08/26 |  |
| 594 | 1.14.1.4 | Aprovação |  | 5d | 2026-09-01 | 2026-09-08 | 593 | 2026-08-26 | 2026-09-01 | 5d | 20d |  |  |  |  |  |  |  |  |  | Ter 01/09/26 |  |
| 595 | 1.14.2 | **AG-F0009-0309-MB-A-00002** |  | 25d | 2026-08-18 | 2026-09-22 |  | 2026-08-12 | 2026-09-15 | 25d | 10d |  | AG - Arranjo (AG) | 03 - REDUÇÃO | 09 - FORNO TECNORED | A - ARQUITETURA | ARQUITETURA PRÉDIO PRODUTIVO - BASE FORNO | A1 (841x594mm) | 01 | Readequação da fundação | Ter 15/09/26 | Qua 12/08/26 |
| 596 | 1.14.2.1 | Emissão inicial |  | 10d | 2026-08-18 | 2026-09-01 | 591 | 2026-08-12 | 2026-08-25 | 10d | 10d | 0d |  |  |  |  |  |  |  |  | Ter 25/08/26 |  |
| 597 | 1.14.2.2 | Avaliação do Cliente |  | 5d | 2026-09-01 | 2026-09-08 | 596 | 2026-08-26 | 2026-09-01 | 5d | 10d | 0d |  |  |  |  |  |  |  |  | Ter 01/09/26 |  |
| 598 | 1.14.2.3 | Atendimento de Comentário |  | 5d | 2026-09-08 | 2026-09-15 | 597 | 2026-09-02 | 2026-09-08 | 5d | 10d | 0d |  |  |  |  |  |  |  |  | Ter 08/09/26 |  |
| 599 | 1.14.2.4 | Aprovação |  | 5d | 2026-09-15 | 2026-09-22 | 598 | 2026-09-09 | 2026-09-15 | 5d | 10d |  |  |  |  |  |  |  |  |  | Ter 15/09/26 |  |
| 600 | 1.14.3 | **AG-F0009-0309-MB-A-00003** |  | 25d | 2026-08-18 | 2026-09-22 |  | 2026-08-12 | 2026-09-15 | 25d | 10d |  | AG - Arranjo (AG) | 03 - REDUÇÃO | 09 - FORNO TECNORED | A - ARQUITETURA | ARQUITETURA TORRE DE RESFRIAMENTO | A1 (841x594mm) | 01 | Revisão do projeto de cobre refrigerado | Ter 15/09/26 | Qua 12/08/26 |
| 601 | 1.14.3.1 | Emissão inicial |  | 10d | 2026-08-18 | 2026-09-01 | 597SF | 2026-08-12 | 2026-08-26 | 10d | 10d | 0d |  |  |  |  |  |  |  |  | Qua 26/08/26 |  |
| 602 | 1.14.3.2 | Avaliação do Cliente |  | 5d | 2026-09-01 | 2026-09-08 | 601 | 2026-08-26 | 2026-09-01 | 5d | 10d | 0d |  |  |  |  |  |  |  |  | Ter 01/09/26 |  |
| 603 | 1.14.3.3 | Atendimento de Comentário |  | 5d | 2026-09-08 | 2026-09-15 | 602 | 2026-09-02 | 2026-09-08 | 5d | 10d | 0d |  |  |  |  |  |  |  |  | Ter 08/09/26 |  |
| 604 | 1.14.3.4 | Aprovação |  | 5d | 2026-09-15 | 2026-09-22 | 603 | 2026-09-09 | 2026-09-15 | 5d | 10d |  |  |  |  |  |  |  |  |  | Ter 15/09/26 |  |
| 605 | 1.14.4 | **AG-F0009-0309-MB-A-00004** |  | 25d | 2026-08-18 | 2026-09-22 |  | 2026-08-12 | 2026-09-15 | 25d | 10d |  | AG - Arranjo (AG) | 03 - REDUÇÃO | 09 - FORNO TECNORED | A - ARQUITETURA | ARQUITETURA TORRE DE RESRIAMENTO E CASA DE BOMBAS | A1 (841x594mm) | 01 | Readequação da casa de bombas | Ter 15/09/26 | Qua 12/08/26 |
| 606 | 1.14.4.1 | Emissão inicial |  | 10d | 2026-08-18 | 2026-09-01 | 597SF | 2026-08-12 | 2026-08-26 | 10d | 10d | 0d |  |  |  |  |  |  |  |  | Qua 26/08/26 |  |
| 607 | 1.14.4.2 | Avaliação do Cliente |  | 5d | 2026-09-01 | 2026-09-08 | 606 | 2026-08-26 | 2026-09-01 | 5d | 10d | 0d |  |  |  |  |  |  |  |  | Ter 01/09/26 |  |
| 608 | 1.14.4.3 | Atendimento de Comentário |  | 5d | 2026-09-08 | 2026-09-15 | 607 | 2026-09-02 | 2026-09-08 | 5d | 10d | 0d |  |  |  |  |  |  |  |  | Ter 08/09/26 |  |
| 609 | 1.14.4.4 | Aprovação |  | 5d | 2026-09-15 | 2026-09-22 | 608 | 2026-09-09 | 2026-09-15 | 5d | 10d |  |  |  |  |  |  |  |  |  | Ter 15/09/26 |  |

| ID | WBS | Task | Type | Duration | Start | Finish | Predecessors | Baseline start | Baseline finish | Baseline duration | Total slack | Free slack | Constraint | Tipo de documento | Área | Sub-área | Disciplina | Título | Formato | Quantidade | Agrupamento Cecal | Término_LB_R0 | Início_LB_R0 |
| --- | --- | --- | --- | --- | --- | --- | --- | --- | --- | --- | --- | --- | --- | --- | --- | --- | --- | --- | --- | --- | --- | --- | --- |
| 610 | 1.14.5 | **MD-F0009-0309-MB-A-00001** |  | 30d | 2026-08-11 | 2026-09-22 |  | 2026-08-05 | 2026-09-15 | 30d | 10d |  |  | MD - Memorial Descritivo | 03 - REDUÇÃO | 09 - FORNO TECNORED | A - ARQUITETURA | MEMORIAL DESCRITIVO DOS SERVIÇOS DE CONSTRUÇÃO CIVIL | A4 (210x297mm) | 10 | Readequação da fundação | Ter 15/09/26 | Qua 05/08/26 |
| 611 | 1.14.5.1 | Emissão inicial |  | 15d | 2026-08-11 | 2026-09-01 | 597SF | 2026-08-05 | 2026-08-26 | 15d | 10d | 0d |  |  |  |  |  |  |  |  |  | Qua 26/08/26 |  |
| 612 | 1.14.5.2 | Avaliação do Cliente |  | 5d | 2026-09-01 | 2026-09-08 | 611 | 2026-08-26 | 2026-09-01 | 5d | 10d | 0d |  |  |  |  |  |  |  |  |  | Ter 01/09/26 |  |
| 613 | 1.14.5.3 | Atendimento de Comentário |  | 5d | 2026-09-08 | 2026-09-15 | 612 | 2026-09-02 | 2026-09-08 | 5d | 10d | 0d |  |  |  |  |  |  |  |  |  | Ter 08/09/26 |  |
| 614 | 1.14.5.4 | Aprovação |  | 5d | 2026-09-15 | 2026-09-22 | 613 | 2026-09-09 | 2026-09-15 | 5d | 10d |  |  |  |  |  |  |  |  |  |  | Ter 15/09/26 |  |
| 615 | 1.14.6 | **PQ-F0009-0309-MB-A-00001** |  | 29d | 2026-08-12 | 2026-09-22 |  | 2026-08-06 | 2026-09-15 | 29d | 10d |  |  | PQ - Planilha de Quantidades | 03 - REDUÇÃO | 09 - FORNO TECNORED | A - ARQUITETURA | PLANILHA DE QUANTITATIVOS PARA COMPOR CAPEX | A4 (210x297mm) | 10 | Planilha de quantitativo do forno e carregamento | Ter 15/09/26 | Qui 06/08/26 |
| 616 | 1.14.6.1 | Emissão inicial |  | 14d | 2026-08-12 | 2026-09-01 | 597SF | 2026-08-06 | 2026-08-26 | 14d | 10d | 0d | start no earlier than 2026-07-29 |  |  |  |  |  |  |  |  | Qua 26/08/26 |  |
| 617 | 1.14.6.2 | Avaliação do Cliente |  | 5d | 2026-09-01 | 2026-09-08 | 616 | 2026-08-26 | 2026-09-01 | 5d | 10d | 0d |  |  |  |  |  |  |  |  |  | Ter 01/09/26 |  |
| 618 | 1.14.6.3 | Atendimento de Comentário |  | 5d | 2026-09-08 | 2026-09-15 | 617 | 2026-09-02 | 2026-09-08 | 5d | 10d | 0d |  |  |  |  |  |  |  |  |  | Ter 08/09/26 |  |
| 619 | 1.14.6.4 | Aprovação |  | 5d | 2026-09-15 | 2026-09-22 | 618 | 2026-09-09 | 2026-09-15 | 5d | 10d |  | start no earlier than 2026-08-18 |  |  |  |  |  |  |  |  | Ter 15/09/26 |  |
| 620 | 4.2.1.16 | CIVIL / INFRAESTRUTURA 309 | manual | 25d | 2026-07-29 | 2026-09-01 | 621SS |  |  |  |  |  |  |  |  |  |  |  |  |  |  |  |  |
| 621 | 1.16 | **CIVIL / INFRAESTRUTURA 309** |  | 25d | 2026-08-04 | 2026-09-08 |  | 2026-07-29 | 2026-09-01 | 25d | 20d | 0d |  |  |  |  |  |  |  |  |  | Ter 01/09/26 | Qua 29/07/26 |
| 622 | 1.16.1 | **AG-F0009-0309-MB-B-00001** |  | 25d | 2026-08-04 | 2026-09-08 |  | 2026-07-29 | 2026-09-01 | 25d | 20d |  |  | AG - Arranjo (AG) | 03 - REDUÇÃO | 09 - FORNO TECNORED | B - CIVIL / INFRAESTRUTURA | IMPLANTAÇÃO GERAL | A0 (1189x841mm) | 01 | Readequação da fundação | Ter 01/09/26 | Qua 29/07/26 |
| 623 | 1.16.1.1 | Emissão inicial |  | 10d | 2026-08-04 | 2026-08-18 | 101, 290 | 2026-07-29 | 2026-08-11 | 10d | 20d | 0d |  |  |  |  |  |  |  |  |  | Ter 11/08/26 |  |
| 624 | 1.16.1.2 | Avaliação do Cliente |  | 5d | 2026-08-18 | 2026-08-25 | 623 | 2026-08-12 | 2026-08-18 | 5d | 20d | 0d |  |  |  |  |  |  |  |  |  | Ter 18/08/26 |  |
| 625 | 1.16.1.3 | Atendimento de Comentário |  | 5d | 2026-08-25 | 2026-09-01 | 624 | 2026-08-19 | 2026-08-25 | 5d | 20d | 0d |  |  |  |  |  |  |  |  |  | Ter 25/08/26 |  |
| 626 | 1.16.1.4 | Aprovação |  | 5d | 2026-09-01 | 2026-09-08 | 625 | 2026-08-26 | 2026-09-01 | 5d | 20d |  |  |  |  |  |  |  |  |  |  | Ter 01/09/26 |  |
| 627 | 4.2.1.18 | ELÉTRICA 309 | manual | 62.13d | 2026-06-23 | 2026-09-17 | 628SS |  |  |  |  |  |  |  |  |  |  |  |  |  |  |  |  |
| 628 | 1.18 | **ELÉTRICA 309** |  | 61d | 2026-06-30 | 2026-09-23 |  | 2026-06-23 | 2026-09-17 | 62.12d | 9d | 0d |  |  |  |  |  |  |  |  |  | Qui 17/09/26 | Ter 23/06/26 |
| 629 | 1.18.1 | **CP-F0009-0309-MB-E-00001** |  | 20d | 2026-06-30 | 2026-07-28 |  | 2026-06-23 | 2026-07-21 | 20d | 50d |  |  | CP - Critério de Projeto | 03 - REDUÇÃO | 09 - FORNO TECNORED | E - ELÉTRICA | CRITERIO DE PROJETO BÁSICO | A4 (210x297mm) | 10 | Revisão das cargas elétricas | Ter 21/07/26 | Ter 23/06/26 |
| 630 | 1.18.1.1 | Emissão inicial |  | 10d | 2026-06-30 | 2026-07-14 | 19 | 2026-06-23 | 2026-07-07 | 10d | 50d | 0d |  |  |  |  |  |  |  |  |  | Ter 07/07/26 |  |
| 631 | 1.18.1.2 | Avaliação do Cliente |  | 5d | 2026-07-14 | 2026-07-21 | 630 | 2026-07-07 | 2026-07-14 | 5d | 50d | 0d |  |  |  |  |  |  |  |  |  | Ter 14/07/26 |  |
| 632 | 1.18.1.3 | Atendimento de Comentário |  | 3d | 2026-07-21 | 2026-07-24 | 631 | 2026-07-14 | 2026-07-17 | 3d | 50d | 0d |  |  |  |  |  |  |  |  |  | Sex 17/07/26 |  |
| 633 | 1.18.1.4 | Aprovação |  | 2d | 2026-07-24 | 2026-07-28 | 632 | 2026-07-17 | 2026-07-21 | 2d | 50d |  |  |  |  |  |  |  |  |  |  | Ter 21/07/26 |  |

| ID | WBS | Task | Duration | Start | Finish | Predecessors | Baseline start | Baseline finish | Baseline duration | Total slack | Free slack | Tipo de documento | Área | Sub-área | Disciplina | Título | Formato | Quantidade | Agrupamento Cecal | Término_LB_R0 | Início_LB_R0 |
| --- | --- | --- | --- | --- | --- | --- | --- | --- | --- | --- | --- | --- | --- | --- | --- | --- | --- | --- | --- | --- | --- |
| 634 | 1.18.2 | **AG-F0009-0309-MB-E-00001** | 20d | 2026-07-30 | 2026-08-27 |  | 2026-07-23 | 2026-08-20 | 20d | 9d |  | AG - Arranjo (AG) | 03 - REDUÇÃO | 09 - FORNO TECNORED | E - ELÉTRICA | LAY-OUT SALA ELETRICA / CCM's | A1 (841x594mm) | 01 | Revisão das cargas elétricas | Qui 20/08/26 | Qui 23/07/26 |
| 635 | 1.18.2.1 | Emissão inicial | 10d | 2026-07-30 | 2026-08-13 | 95, 290, 1019 | 2026-07-23 | 2026-08-06 | 10d | 9d | 0d |  |  |  |  |  |  |  |  | Qui 06/08/26 |  |
| 636 | 1.18.2.2 | Avaliação do Cliente | 5d | 2026-08-13 | 2026-08-20 | 635 | 2026-08-06 | 2026-08-13 | 5d | 9d | 0d |  |  |  |  |  |  |  |  | Qui 13/08/26 |  |
| 637 | 1.18.2.3 | Atendimento de Comentário | 3d | 2026-08-20 | 2026-08-25 | 636 | 2026-08-13 | 2026-08-18 | 3d | 28d | 0d |  |  |  |  |  |  |  |  | Ter 18/08/26 |  |
| 638 | 1.18.2.4 | Aprovação | 2d | 2026-08-25 | 2026-08-27 | 637 | 2026-08-18 | 2026-08-20 | 2d | 28d |  |  |  |  |  |  |  |  |  | Qui 20/08/26 |  |
| 639 | 1.18.3 | **AG-F0009-0309-MB-E-00002** | 20d | 2026-07-30 | 2026-08-27 |  | 2026-07-23 | 2026-08-20 | 20d | 28d |  | AG - Arranjo (AG) | 03 - REDUÇÃO | 09 - FORNO TECNORED | E - ELÉTRICA | PLANTA BÁSICA DE DISTRIBUIÇÃO DE FORÇA CASA DE BOMBAS | A3 (420x297mm) | 01 | Revisão das cargas elétricas | Qui 20/08/26 | Qui 23/07/26 |
| 640 | 1.18.3.1 | Emissão inicial | 10d | 2026-07-30 | 2026-08-13 | 636SF | 2026-07-23 | 2026-08-06 | 10d | 28d | 0d |  |  |  |  |  |  |  |  | Qui 06/08/26 |  |
| 641 | 1.18.3.2 | Avaliação do Cliente | 5d | 2026-08-13 | 2026-08-20 | 640 | 2026-08-06 | 2026-08-13 | 5d | 28d | 0d |  |  |  |  |  |  |  |  | Qui 13/08/26 |  |
| 642 | 1.18.3.3 | Atendimento de Comentário | 3d | 2026-08-20 | 2026-08-25 | 641 | 2026-08-13 | 2026-08-18 | 3d | 28d | 0d |  |  |  |  |  |  |  |  | Ter 18/08/26 |  |
| 643 | 1.18.3.4 | Aprovação | 2d | 2026-08-25 | 2026-08-27 | 642 | 2026-08-18 | 2026-08-20 | 2d | 28d |  |  |  |  |  |  |  |  |  | Qui 20/08/26 |  |
| 644 | 1.18.4 | **AG-F0009-0309-MB-E-00003** | 22d | 2026-07-30 | 2026-08-31 |  | 2026-07-23 | 2026-08-24 | 22d | 26d |  | AG - Arranjo (AG) | 03 - REDUÇÃO | 09 - FORNO TECNORED | E - ELÉTRICA | PLANTA BÁSICA DE DISTRIBUIÇÃO DE FORÇA FORNO | A1 (841x594mm) | 01 | Revisão das cargas elétricas | Seg 24/08/26 | Qui 23/07/26 |
| 645 | 1.18.4.1 | Emissão inicial | 10d | 2026-07-30 | 2026-08-13 | 636SF | 2026-07-23 | 2026-08-06 | 10d | 26d | 0d |  |  |  |  |  |  |  |  | Qui 06/08/26 |  |
| 646 | 1.18.4.2 | Avaliação do Cliente | 5d | 2026-08-13 | 2026-08-20 | 645 | 2026-08-06 | 2026-08-13 | 5d | 26d | 0d |  |  |  |  |  |  |  |  | Qui 13/08/26 |  |
| 647 | 1.18.4.3 | Atendimento de Comentário | 5d | 2026-08-20 | 2026-08-27 | 646 | 2026-08-13 | 2026-08-20 | 5d | 26d | 0d |  |  |  |  |  |  |  |  | Qui 20/08/26 |  |
| 648 | 1.18.4.4 | Aprovação | 2d | 2026-08-27 | 2026-08-31 | 647 | 2026-08-20 | 2026-08-24 | 2d | 26d |  |  |  |  |  |  |  |  |  | Seg 24/08/26 |  |
| 649 | 1.18.5 | **AG-F0009-0309-MB-E-00004** | 20d | 2026-07-30 | 2026-08-27 |  | 2026-07-23 | 2026-08-20 | 20d | 28d |  | AG - Arranjo (AG) | 03 - REDUÇÃO | 09 - FORNO TECNORED | E - ELÉTRICA | PLANTA BÁSICA DE ILUMINAÇÃO CASA DE BOMBAS | A1 (841x594mm) | 01 | Readequação da lista de carga, iluminação, bandejamento | Qui 20/08/26 | Qui 23/07/26 |
| 650 | 1.18.5.1 | Emissão inicial | 10d | 2026-07-30 | 2026-08-13 | 636SF | 2026-07-23 | 2026-08-06 | 10d | 28d | 0d |  |  |  |  |  |  |  |  | Qui 06/08/26 |  |
| 651 | 1.18.5.2 | Avaliação do Cliente | 5d | 2026-08-13 | 2026-08-20 | 650 | 2026-08-06 | 2026-08-13 | 5d | 28d | 0d |  |  |  |  |  |  |  |  | Qui 13/08/26 |  |
| 652 | 1.18.5.3 | Atendimento de Comentário | 3d | 2026-08-20 | 2026-08-25 | 651 | 2026-08-13 | 2026-08-18 | 3d | 28d | 0d |  |  |  |  |  |  |  |  | Ter 18/08/26 |  |
| 653 | 1.18.5.4 | Aprovação | 2d | 2026-08-25 | 2026-08-27 | 652 | 2026-08-18 | 2026-08-20 | 2d | 28d |  |  |  |  |  |  |  |  |  | Qui 20/08/26 |  |
| 654 | 1.18.6 | **AG-F0009-0309-MB-E-00005** | 20d | 2026-07-30 | 2026-08-27 |  | 2026-07-23 | 2026-08-20 | 20d | 9d |  | AG - Arranjo (AG) | 03 - REDUÇÃO | 09 - FORNO TECNORED | E - ELÉTRICA | PLANTA BÁSICA DE ILUMINAÇÃO FORNO | A1 (841x594mm) | 01 | Readequação da lista de carga, iluminação, bandejamento | Qui 20/08/26 | Qui 23/07/26 |
| 655 | 1.18.6.1 | Emissão inicial | 10d | 2026-07-30 | 2026-08-13 | 636SF | 2026-07-23 | 2026-08-06 | 10d | 9d | 0d |  |  |  |  |  |  |  |  | Qui 06/08/26 |  |
| 656 | 1.18.6.2 | Avaliação do Cliente | 5d | 2026-08-13 | 2026-08-20 | 655 | 2026-08-06 | 2026-08-13 | 5d | 28d | 0d |  |  |  |  |  |  |  |  | Qui 13/08/26 |  |
| 657 | 1.18.6.3 | Atendimento de Comentário | 3d | 2026-08-20 | 2026-08-25 | 656 | 2026-08-13 | 2026-08-18 | 3d | 28d | 0d |  |  |  |  |  |  |  |  | Ter 18/08/26 |  |
| 658 | 1.18.6.4 | Aprovação | 2d | 2026-08-25 | 2026-08-27 | 657 | 2026-08-18 | 2026-08-20 | 2d | 28d |  |  |  |  |  |  |  |  |  | Qui 20/08/26 |  |

| ID | WBS | Task | Duration | Start | Finish | Predecessors | Baseline start | Baseline finish | Baseline duration | Total slack | Free slack | Tipo de documento | Área | Sub-área | Disciplina | Título | Formato | Quantidade | Agrupamento Cecal | Término_LB_R0 | Início_LB_R0 |
| --- | --- | --- | --- | --- | --- | --- | --- | --- | --- | --- | --- | --- | --- | --- | --- | --- | --- | --- | --- | --- | --- |
| 659 | 1.18.7 | **AG-F0009-0309-MB-E-00006** | 16d | 2026-07-30 | 2026-08-21 |  | 2026-07-23 | 2026-08-14 | 16d | 32d |  | AG - Arranjo (AG) | 03 - REDUÇÃO | 09 - FORNO TECNORED | E - ELÉTRICA | PLANTA BÁSICA DE ATERRAMENTO | A1 (841x594mm) | 01 | Revisão das cargas elétricas | Sex 14/08/26 | Qui 23/07/26 |
| 660 | 1.18.7.1 | Emissão inicial | 10d | 2026-07-30 | 2026-08-13 | 636SF | 2026-07-23 | 2026-08-06 | 10d | 32d | 0d |  |  |  |  |  |  |  |  | Qui 06/08/26 |  |
| 661 | 1.18.7.2 | Avaliação do Cliente | 1d | 2026-08-13 | 2026-08-14 | 660 | 2026-08-06 | 2026-08-07 | 1d | 32d | 0d |  |  |  |  |  |  |  |  | Sex 07/08/26 |  |
| 662 | 1.18.7.3 | Atendimento de Comentário | 3d | 2026-08-14 | 2026-08-19 | 661 | 2026-08-07 | 2026-08-12 | 3d | 32d | 0d |  |  |  |  |  |  |  |  | Qua 12/08/26 |  |
| 663 | 1.18.7.4 | Aprovação | 2d | 2026-08-19 | 2026-08-21 | 662 | 2026-08-12 | 2026-08-14 | 2d | 32d |  |  |  |  |  |  |  |  |  | Sex 14/08/26 |  |
| 664 | 1.18.8 | **AG-F0009-0309-MB-E-00007** | 20d | 2026-07-30 | 2026-08-27 |  | 2026-07-23 | 2026-08-20 | 20d | 28d |  | AG - Arranjo (AG) | 03 - REDUÇÃO | 09 - FORNO TECNORED | E - ELÉTRICA | PLANTA BÁSICA DE ATERRAMENTO | A1 (841x594mm) | 01 | Revisão das cargas elétricas | Qui 20/08/26 | Qui 23/07/26 |
| 665 | 1.18.8.1 | Emissão inicial | 10d | 2026-07-30 | 2026-08-13 | 636SF | 2026-07-23 | 2026-08-06 | 10d | 28d | 0d |  |  |  |  |  |  |  |  | Qui 06/08/26 |  |
| 666 | 1.18.8.2 | Avaliação do Cliente | 5d | 2026-08-13 | 2026-08-20 | 665 | 2026-08-06 | 2026-08-13 | 5d | 28d | 0d |  |  |  |  |  |  |  |  | Qui 13/08/26 |  |
| 667 | 1.18.8.3 | Atendimento de Comentário | 3d | 2026-08-20 | 2026-08-25 | 666 | 2026-08-13 | 2026-08-18 | 3d | 28d | 0d |  |  |  |  |  |  |  |  | Ter 18/08/26 |  |
| 668 | 1.18.8.4 | Aprovação | 2d | 2026-08-25 | 2026-08-27 | 667 | 2026-08-18 | 2026-08-20 | 2d | 28d |  |  |  |  |  |  |  |  |  | Qui 20/08/26 |  |
| 669 | 1.18.9 | **AG-F0009-0309-MB-E-00008** | 20d | 2026-07-30 | 2026-08-27 |  | 2026-07-23 | 2026-08-20 | 20d | 28d |  | AG - Arranjo (AG) | 03 - REDUÇÃO | 09 - FORNO TECNORED | E - ELÉTRICA | PLANTA BÁSICA DE DISTRIBUIÇÃO GERAL | A1 (841x594mm) | 01 | Revisão das cargas elétricas | Qui 20/08/26 | Qui 23/07/26 |
| 670 | 1.18.9.1 | Emissão inicial | 10d | 2026-07-30 | 2026-08-13 | 636SF | 2026-07-23 | 2026-08-06 | 10d | 28d | 0d |  |  |  |  |  |  |  |  | Qui 06/08/26 |  |
| 671 | 1.18.9.2 | Avaliação do Cliente | 5d | 2026-08-13 | 2026-08-20 | 670 | 2026-08-06 | 2026-08-13 | 5d | 28d | 0d |  |  |  |  |  |  |  |  | Qui 13/08/26 |  |
| 672 | 1.18.9.3 | Atendimento de Comentário | 3d | 2026-08-20 | 2026-08-25 | 671 | 2026-08-13 | 2026-08-18 | 3d | 28d | 0d |  |  |  |  |  |  |  |  | Ter 18/08/26 |  |
| 673 | 1.18.9.4 | Aprovação | 2d | 2026-08-25 | 2026-08-27 | 672 | 2026-08-18 | 2026-08-20 | 2d | 28d |  |  |  |  |  |  |  |  |  | Qui 20/08/26 |  |
| 674 | 1.18.10 | **CC-F0009-0309-MB-E-00001** | 25d | 2026-08-13 | 2026-09-17 |  | 2026-08-06 | 2026-09-10 | 25d | 9d |  | CC - Lista de Cargas e Consumidores | 03 - REDUÇÃO | 09 - FORNO TECNORED | E - ELÉTRICA | CARGA ELÈTRICA E ESTUDO DE DEMANDA | A4 (210x297mm) | 08 | Revisão das cargas elétricas | Qui 10/09/26 | Qui 06/08/26 |
| 675 | 1.18.10.1 | Emissão inicial | 15d | 2026-08-13 | 2026-09-03 | 655 | 2026-08-06 | 2026-08-27 | 15d | 9d | 0d |  |  |  |  |  |  |  |  | Qui 27/08/26 |  |
| 676 | 1.18.10.2 | Avaliação do Cliente | 5d | 2026-09-03 | 2026-09-10 | 675 | 2026-08-27 | 2026-09-03 | 5d | 9d | 0d |  |  |  |  |  |  |  |  | Qui 03/09/26 |  |
| 677 | 1.18.10.3 | Atendimento de Comentário | 3d | 2026-09-10 | 2026-09-15 | 676 | 2026-09-03 | 2026-09-08 | 3d | 13d | 0d |  |  |  |  |  |  |  |  | Ter 08/09/26 |  |
| 678 | 1.18.10.4 | Aprovação | 2d | 2026-09-15 | 2026-09-17 | 677 | 2026-09-08 | 2026-09-10 | 2d | 13d |  |  |  |  |  |  |  |  |  | Qui 10/09/26 |  |
| 679 | 1.18.11 | **DU-F0009-0309-MB-E-00001** | 25d | 2026-08-13 | 2026-09-17 |  | 2026-08-06 | 2026-09-10 | 25d | 13d |  | DU - Diagrama Unifilar (DU) | 03 - REDUÇÃO | 09 - FORNO TECNORED | E - ELÉTRICA | DIAGRAMA ELETRICO - MC-0300MB-01 | A4 (210x297mm) | 01 | Revisão das cargas elétricas | Qui 10/09/26 | Qui 06/08/26 |
| 680 | 1.18.11.1 | Emissão inicial | 15d | 2026-08-13 | 2026-09-03 | 676SF | 2026-08-06 | 2026-08-27 | 15d | 13d | 0d |  |  |  |  |  |  |  |  | Qui 27/08/26 |  |
| 681 | 1.18.11.2 | Avaliação do Cliente | 5d | 2026-09-03 | 2026-09-10 | 680 | 2026-08-27 | 2026-09-03 | 5d | 13d | 0d |  |  |  |  |  |  |  |  | Qui 03/09/26 |  |
| 682 | 1.18.11.3 | Atendimento de Comentário | 3d | 2026-09-10 | 2026-09-15 | 681 | 2026-09-03 | 2026-09-08 | 3d | 13d | 0d |  |  |  |  |  |  |  |  | Ter 08/09/26 |  |
| 683 | 1.18.11.4 | Aprovação | 2d | 2026-09-15 | 2026-09-17 | 682 | 2026-09-08 | 2026-09-10 | 2d | 13d |  |  |  |  |  |  |  |  |  | Qui 10/09/26 |  |

| ID | WBS | Task | Duration | Start | Finish | Predecessors | Baseline start | Baseline finish | Baseline duration | Total slack | Free slack | Constraint | Tipo de documento | Área | Sub-área | Disciplina | Formato | Quantidade | Agrupamento Cecal | Término_LB_R0 | Início_LB_R0 |
| --- | --- | --- | --- | --- | --- | --- | --- | --- | --- | --- | --- | --- | --- | --- | --- | --- | --- | --- | --- | --- | --- |
| 684 | 1.18.12 | **DU-F0009-0309-MB-E-00002** | 27d | 2026-08-13 | 2026-09-21 |  | 2026-08-06 | 2026-09-14 | 27d | 11d |  |  | DU - Diagrama Unifilar (DU) | 03 - REDUÇÃO | 09 - FORNO TECNORED | E - ELÉTRICA | A4 (210x297mm) | 01 | Revisão das cargas elétricas | Seg 14/09/26 | Qui 06/08/26 |
| 685 | 1.18.12.1 | Emissão inicial | 15d | 2026-08-13 | 2026-09-03 | 676SF | 2026-08-06 | 2026-08-27 | 15d | 11d | 0d |  |  |  |  |  |  |  |  | Qui 27/08/26 |  |
| 686 | 1.18.12.2 | Avaliação do Cliente | 5d | 2026-09-03 | 2026-09-10 | 685 | 2026-08-27 | 2026-09-03 | 5d | 11d | 0d |  |  |  |  |  |  |  |  | Qui 03/09/26 |  |
| 687 | 1.18.12.3 | Atendimento de Comentário | 5d | 2026-09-10 | 2026-09-17 | 686 | 2026-09-03 | 2026-09-10 | 5d | 11d | 0d |  |  |  |  |  |  |  |  | Qui 10/09/26 |  |
| 688 | 1.18.12.4 | Aprovação | 2d | 2026-09-17 | 2026-09-21 | 687 | 2026-09-10 | 2026-09-14 | 2d | 11d |  |  |  |  |  |  |  |  |  | Seg 14/09/26 |  |
| 689 | 1.18.13 | **DU-F0009-0309-MB-E-00003** | 25d | 2026-08-13 | 2026-09-17 |  | 2026-08-06 | 2026-09-10 | 25d | 13d |  |  | DU - Diagrama Unifilar (DU) | 03 - REDUÇÃO | 09 - FORNO TECNORED | E - ELÉTRICA | A4 (210x297mm) | 01 | Revisão das cargas elétricas | Qui 10/09/26 | Qui 06/08/26 |
| 690 | 1.18.13.1 | Emissão inicial | 15d | 2026-08-13 | 2026-09-03 | 676SF | 2026-08-06 | 2026-08-27 | 15d | 13d | 0d |  |  |  |  |  |  |  |  | Qui 27/08/26 |  |
| 691 | 1.18.13.2 | Avaliação do Cliente | 5d | 2026-09-03 | 2026-09-10 | 690 | 2026-08-27 | 2026-09-03 | 5d | 13d | 0d |  |  |  |  |  |  |  |  | Qui 03/09/26 |  |
| 692 | 1.18.13.3 | Atendimento de Comentário | 3d | 2026-09-10 | 2026-09-15 | 691 | 2026-09-03 | 2026-09-08 | 3d | 13d | 0d |  |  |  |  |  |  |  |  | Ter 08/09/26 |  |
| 693 | 1.18.13.4 | Aprovação | 2d | 2026-09-15 | 2026-09-17 | 692 | 2026-09-08 | 2026-09-10 | 2d | 13d |  |  |  |  |  |  |  |  |  | Qui 10/09/26 |  |
| 694 | 1.18.14 | **ET-F0009-0309-MB-E-00001** | 27d | 2026-08-17 | 2026-09-23 |  | 2026-08-12 | 2026-09-17 | 27d | 9d |  |  | ET - Especificação Técnica | 03 - REDUÇÃO | 09 - FORNO TECNORED | E - ELÉTRICA | A4 (210x297mm) | 10 | Revisão das cargas elétricas | Qui 17/09/26 | Qua 12/08/26 |
| 695 | 1.18.14.1 | Emissão inicial | 15d | 2026-08-17 | 2026-09-07 | 676SF+2d | 2026-08-12 | 2026-09-01 | 15d | 9d | 0d | start no earlier than 2026-08-12 |  |  |  |  |  |  |  | Ter 01/09/26 |  |
| 696 | 1.18.14.2 | Avaliação do Cliente | 5d | 2026-09-07 | 2026-09-14 | 695 | 2026-09-02 | 2026-09-08 | 5d | 9d | 0d |  |  |  |  |  |  |  |  | Ter 08/09/26 |  |
| 697 | 1.18.14.3 | Atendimento de Comentário | 5d | 2026-09-14 | 2026-09-21 | 696 | 2026-09-09 | 2026-09-15 | 5d | 9d | 0d |  |  |  |  |  |  |  |  | Ter 15/09/26 |  |
| 698 | 1.18.14.4 | Aprovação | 2d | 2026-09-21 | 2026-09-23 | 697 | 2026-09-16 | 2026-09-17 | 2d | 9d |  |  |  |  |  |  |  |  |  | Qui 17/09/26 |  |
| 699 | 1.18.15 | **LB-F0009-0309-MB-E-00001** | 25d | 2026-08-17 | 2026-09-21 |  | 2026-08-10 | 2026-09-14 | 25d | 11d |  |  | LB - Lista de Cabos | 03 - REDUÇÃO | 09 - FORNO TECNORED | E - ELÉTRICA | A4 (210x297mm) | 10 | Readequação da lista de carga, iluminação, bandejamento | Seg 14/09/26 | Seg 10/08/26 |
| 700 | 1.18.15.1 | Emissão inicial | 15d | 2026-08-17 | 2026-09-07 | 676SF+2d | 2026-08-10 | 2026-08-31 | 15d | 11d | 0d |  |  |  |  |  |  |  |  | Seg 31/08/26 |  |
| 701 | 1.18.15.2 | Avaliação do Cliente | 5d | 2026-09-07 | 2026-09-14 | 700 | 2026-08-31 | 2026-09-07 | 5d | 11d | 0d |  |  |  |  |  |  |  |  | Seg 07/09/26 |  |
| 702 | 1.18.15.3 | Atendimento de Comentário | 3d | 2026-09-14 | 2026-09-17 | 701 | 2026-09-07 | 2026-09-10 | 3d | 11d | 0d |  |  |  |  |  |  |  |  | Qui 10/09/26 |  |
| 703 | 1.18.15.4 | Aprovação | 2d | 2026-09-17 | 2026-09-21 | 702 | 2026-09-10 | 2026-09-14 | 2d | 11d |  |  |  |  |  |  |  |  |  | Seg 14/09/26 |  |
| 704 | 1.18.16 | **LM-F0009-0309-MB-E-00001** | 25d | 2026-08-17 | 2026-09-21 |  | 2026-08-10 | 2026-09-14 | 25d | 11d |  |  | LM - Lista de Materiais | 03 - REDUÇÃO | 09 - FORNO TECNORED | E - ELÉTRICA | A4 (210x297mm) | 10 | Readequação da lista de carga, iluminação, bandejamento | Seg 14/09/26 | Seg 10/08/26 |
| 705 | 1.18.16.1 | Emissão inicial | 15d | 2026-08-17 | 2026-09-07 | 701SF | 2026-08-10 | 2026-08-31 | 15d | 11d | 0d |  |  |  |  |  |  |  |  | Seg 31/08/26 |  |
| 706 | 1.18.16.2 | Avaliação do Cliente | 5d | 2026-09-07 | 2026-09-14 | 705 | 2026-08-31 | 2026-09-07 | 5d | 11d | 0d |  |  |  |  |  |  |  |  | Seg 07/09/26 |  |
| 707 | 1.18.16.3 | Atendimento de Comentário | 3d | 2026-09-14 | 2026-09-17 | 706 | 2026-09-07 | 2026-09-10 | 3d | 11d | 0d |  |  |  |  |  |  |  |  | Qui 10/09/26 |  |
| 708 | 1.18.16.4 | Aprovação | 2d | 2026-09-17 | 2026-09-21 | 707 | 2026-09-10 | 2026-09-14 | 2d | 11d |  |  |  |  |  |  |  |  |  | Seg 14/09/26 |  |

Notes:
- 684: Título: DIAGRAMA ELETRICO - MC-0300MB-02
- 689: Título: DIAGRAMA ELETRICO - MC-0300MB-03
- 694: Título: ESPECIFICAÇÃO TÉCNICA BÁSICA PARA COTAÇÃO DE PAINÉIS ELÉTRICOS
- 699: Título: LISTA DE CABOS DE FORÇA, COMANDO E ILUMINAÇÃO
- 704: Título: LISTA BÁSICA DE MATERIAIS FORÇA, ILUMINAÇÃO, ATERRAMENTO E SPDA

| ID | WBS | Task | Type | Duration | Start | Finish | Predecessors | Baseline start | Baseline finish | Baseline duration | Total slack | Free slack | Tipo de documento | Área | Sub-área | Disciplina | Formato | Quantidade | Agrupamento Cecal | Término_LB_R0 | Início_LB_R0 |
| --- | --- | --- | --- | --- | --- | --- | --- | --- | --- | --- | --- | --- | --- | --- | --- | --- | --- | --- | --- | --- | --- |
| 709 | 1.18.17 | **LR-F0009-0309-MB-E-00001** |  | 25d | 2026-08-17 | 2026-09-21 |  | 2026-08-10 | 2026-09-14 | 25d | 11d |  | LR - Lista de Motores | 03 - REDUÇÃO | 09 - FORNO TECNORED | E - ELÉTRICA | A4 (210x297mm) | 10 | Revisão das cargas elétricas | Seg 14/09/26 | Seg 10/08/26 |
| 710 | 1.18.17.1 | Emissão inicial |  | 15d | 2026-08-17 | 2026-09-07 | 701SF | 2026-08-10 | 2026-08-31 | 15d | 11d | 0d |  |  |  |  |  |  |  | Seg 31/08/26 |  |
| 711 | 1.18.17.2 | Avaliação do Cliente |  | 5d | 2026-09-07 | 2026-09-14 | 710 | 2026-08-31 | 2026-09-07 | 5d | 11d | 0d |  |  |  |  |  |  |  | Seg 07/09/26 |  |
| 712 | 1.18.17.3 | Atendimento de Comentário |  | 3d | 2026-09-14 | 2026-09-17 | 711 | 2026-09-07 | 2026-09-10 | 3d | 11d | 0d |  |  |  |  |  |  |  | Qui 10/09/26 |  |
| 713 | 1.18.17.4 | Aprovação |  | 2d | 2026-09-17 | 2026-09-21 | 712 | 2026-09-10 | 2026-09-14 | 2d | 11d |  |  |  |  |  |  |  |  | Seg 14/09/26 |  |
| 714 | 1.18.18 | **MD-F0009-0309-MB-E-00001** |  | 25d | 2026-08-17 | 2026-09-21 |  | 2026-08-10 | 2026-09-14 | 25d | 11d |  | MD - Memorial Descritivo | 03 - REDUÇÃO | 09 - FORNO TECNORED | E - ELÉTRICA | A4 (210x297mm) | 10 | Planilha de quantitativo do forno e carregamento | Seg 14/09/26 | Seg 10/08/26 |
| 715 | 1.18.18.1 | Emissão inicial |  | 15d | 2026-08-17 | 2026-09-07 | 701SF | 2026-08-10 | 2026-08-31 | 15d | 11d | 0d |  |  |  |  |  |  |  | Seg 31/08/26 |  |
| 716 | 1.18.18.2 | Avaliação do Cliente |  | 5d | 2026-09-07 | 2026-09-14 | 715 | 2026-08-31 | 2026-09-07 | 5d | 11d | 0d |  |  |  |  |  |  |  | Seg 07/09/26 |  |
| 717 | 1.18.18.3 | Atendimento de Comentário |  | 3d | 2026-09-14 | 2026-09-17 | 716 | 2026-09-07 | 2026-09-10 | 3d | 11d | 0d |  |  |  |  |  |  |  | Qui 10/09/26 |  |
| 718 | 1.18.18.4 | Aprovação |  | 2d | 2026-09-17 | 2026-09-21 | 717 | 2026-09-10 | 2026-09-14 | 2d | 11d |  |  |  |  |  |  |  |  | Seg 14/09/26 |  |
| 719 | 1.18.19 | **OI-F0009-0309-MB-E-00001** |  | 25d | 2026-08-17 | 2026-09-21 |  | 2026-08-10 | 2026-09-14 | 25d | 11d |  | PQ - Planilha de Quantidades | 03 - REDUÇÃO | 09 - FORNO TECNORED | E - ELÉTRICA | A1 (841x594mm) | 10 | Planilha de quantitativo do forno e carregamento | Seg 14/09/26 | Seg 10/08/26 |
| 720 | 1.18.19.1 | Emissão inicial |  | 15d | 2026-08-17 | 2026-09-07 | 701SF | 2026-08-10 | 2026-08-31 | 15d | 11d | 0d |  |  |  |  |  |  |  | Seg 31/08/26 |  |
| 721 | 1.18.19.2 | Avaliação do Cliente |  | 5d | 2026-09-07 | 2026-09-14 | 720 | 2026-08-31 | 2026-09-07 | 5d | 11d | 0d |  |  |  |  |  |  |  | Seg 07/09/26 |  |
| 722 | 1.18.19.3 | Atendimento de Comentário |  | 3d | 2026-09-14 | 2026-09-17 | 721 | 2026-09-07 | 2026-09-10 | 3d | 11d | 0d |  |  |  |  |  |  |  | Qui 10/09/26 |  |
| 723 | 1.18.19.4 | Aprovação |  | 2d | 2026-09-17 | 2026-09-21 | 722 | 2026-09-10 | 2026-09-14 | 2d | 11d |  |  |  |  |  |  |  |  | Seg 14/09/26 |  |
| 724 | 4.2.1.20 | AUTOMAÇÃO 309 | manual | 70d | 2026-06-23 | 2026-09-28 | 725SS |  |  |  |  |  |  |  |  |  |  |  |  |  |  |
| 725 | 1.20 | **AUTOMAÇÃO 309** |  | 70d | 2026-06-30 | 2026-10-06 |  | 2026-06-23 | 2026-09-29 | 70d | 0d |  |  |  |  |  |  |  |  | Ter 29/09/26 | Ter 23/06/26 |
| 726 | 1.20.1 | **CP-F0009-0309-MB-J-00001** |  | 25d | 2026-06-30 | 2026-08-04 |  | 2026-06-23 | 2026-07-28 | 25d | 45d |  | CP - Critério de Projeto | 03 - REDUÇÃO | 09 - FORNO TECNORED | J - AUTOMAÇÃO | A4 (210x297mm) | 10 | Revisão da instrumentação | Ter 28/07/26 | Ter 23/06/26 |
| 727 | 1.20.1.1 | Emissão inicial |  | 15d | 2026-06-30 | 2026-07-21 | 19 | 2026-06-23 | 2026-07-14 | 15d | 45d | 0d |  |  |  |  |  |  |  | Ter 14/07/26 |  |
| 728 | 1.20.1.2 | Avaliação do Cliente |  | 5d | 2026-07-21 | 2026-07-28 | 727 | 2026-07-14 | 2026-07-21 | 5d | 45d | 0d |  |  |  |  |  |  |  | Ter 21/07/26 |  |
| 729 | 1.20.1.3 | Atendimento de Comentário |  | 3d | 2026-07-28 | 2026-07-31 | 728 | 2026-07-21 | 2026-07-24 | 3d | 45d | 0d |  |  |  |  |  |  |  | Sex 24/07/26 |  |
| 730 | 1.20.1.4 | Aprovação |  | 2d | 2026-07-31 | 2026-08-04 | 729 | 2026-07-24 | 2026-07-28 | 2d | 45d |  |  |  |  |  |  |  |  | Ter 28/07/26 |  |
| 731 | 1.20.2 | **CP-F0009-0309-MB-J-00002** |  | 25d | 2026-06-30 | 2026-08-04 | 19 | 2026-06-23 | 2026-07-28 | 25d | 45d |  | CP - Critério de Projeto | 03 - REDUÇÃO | 09 - FORNO TECNORED | J - AUTOMAÇÃO | A4 (210x297mm) | 10 | Revisão da instrumentação | Ter 28/07/26 | Ter 23/06/26 |
| 732 | 1.20.2.1 | Emissão inicial |  | 15d | 2026-06-30 | 2026-07-21 | 19 | 2026-06-23 | 2026-07-14 | 15d | 45d | 0d |  |  |  |  |  |  |  | Ter 14/07/26 |  |
| 733 | 1.20.2.2 | Avaliação do Cliente |  | 5d | 2026-07-21 | 2026-07-28 | 732 | 2026-07-14 | 2026-07-21 | 5d | 45d | 0d |  |  |  |  |  |  |  | Ter 21/07/26 |  |
| 734 | 1.20.2.3 | Atendimento de Comentário |  | 3d | 2026-07-28 | 2026-07-31 | 733 | 2026-07-21 | 2026-07-24 | 3d | 45d | 0d |  |  |  |  |  |  |  | Sex 24/07/26 |  |
| 735 | 1.20.2.4 | Aprovação |  | 2d | 2026-07-31 | 2026-08-04 | 734 | 2026-07-24 | 2026-07-28 | 2d | 45d |  |  |  |  |  |  |  |  | Ter 28/07/26 |  |

Notes:
- 709: Título: LISTA DE MOTORES
- 714: Título: MEMORIAL DESCRITIVO PARA CUSTO DE MONTAGEM ELÉTRICA, EQUIPAMENTOS E MATERIAIS DE MONTAGEM DE CAMPO
- 719: Título: PLANILHA QUANTITATIVO INSTRUMENTAÇÃO
- 726: Título: CRITÉRIO DE PROJETO DE AUTOMAÇÃO
- 731: Título: CRITÉRIO DE PROJETO DE INSTRUMENTAÇÃO

| ID | WBS | Task | Duration | Start | Finish | Predecessors | Baseline start | Baseline finish | Baseline duration | Total slack | Free slack | Tipo de documento | Área | Sub-área | Disciplina | Título | Formato | Quantidade | Agrupamento Cecal | Término_LB_R0 | Início_LB_R0 |
| --- | --- | --- | --- | --- | --- | --- | --- | --- | --- | --- | --- | --- | --- | --- | --- | --- | --- | --- | --- | --- | --- |
| 736 | 1.20.3 | **AG-F0009-0309-MB-J-00001** | 20d | 2026-07-30 | 2026-08-27 |  | 2026-07-23 | 2026-08-20 | 20d | 0d |  | AG - Arranjo (AG) | 03 - REDUÇÃO | 09 - FORNO TECNORED | J - AUTOMAÇÃO | PLANTA BÁSICA DE INSTRUMENTAÇÃO ELEVAÇÃO 6600 | A1 (841x594mm) | 01 | Revisão da instrumentação | Qui 20/08/26 | Qui 23/07/26 |
| 737 | 1.20.3.1 | Emissão inicial | 10d | 2026-07-30 | 2026-08-13 | 95, 290, 19 | 2026-07-23 | 2026-08-06 | 10d | 0d |  |  |  |  |  |  |  |  |  | Qui 06/08/26 |  |
| 738 | 1.20.3.2 | Avaliação do Cliente | 5d | 2026-08-13 | 2026-08-20 | 737 | 2026-08-06 | 2026-08-13 | 5d | 28d | 0d |  |  |  |  |  |  |  |  | Qui 13/08/26 |  |
| 739 | 1.20.3.3 | Atendimento de Comentário | 3d | 2026-08-20 | 2026-08-25 | 738 | 2026-08-13 | 2026-08-18 | 3d | 28d | 0d |  |  |  |  |  |  |  |  | Ter 18/08/26 |  |
| 740 | 1.20.3.4 | Aprovação | 2d | 2026-08-25 | 2026-08-27 | 739 | 2026-08-18 | 2026-08-20 | 2d | 28d |  |  |  |  |  |  |  |  |  | Qui 20/08/26 |  |
| 741 | 1.20.4 | **AG-F0009-0309-MB-J-00002** | 23d | 2026-07-16 | 2026-08-18 |  | 2026-07-09 | 2026-08-11 | 23d | 35d |  | AG - Arranjo (AG) | 03 - REDUÇÃO | 09 - FORNO TECNORED | J - AUTOMAÇÃO | PLANTA BÁSICA DE INSTRUMENTAÇÃO ELEVAÇÃO 10405 | A1 (841x594mm) | 01 | Revisão da instrumentação | Ter 11/08/26 | Qui 09/07/26 |
| 742 | 1.20.4.1 | Emissão inicial | 10d | 2026-07-16 | 2026-07-30 | 737SF | 2026-07-09 | 2026-07-23 | 10d | 35d | 0d |  |  |  |  |  |  |  |  | Qui 23/07/26 |  |
| 743 | 1.20.4.2 | Avaliação do Cliente | 5d | 2026-07-30 | 2026-08-06 | 742 | 2026-07-23 | 2026-07-30 | 5d | 35d | 0d |  |  |  |  |  |  |  |  | Qui 30/07/26 |  |
| 744 | 1.20.4.3 | Atendimento de Comentário | 3d | 2026-08-06 | 2026-08-11 | 743 | 2026-07-30 | 2026-08-04 | 3d | 35d | 0d |  |  |  |  |  |  |  |  | Ter 04/08/26 |  |
| 745 | 1.20.4.4 | Aprovação | 5d | 2026-08-11 | 2026-08-18 | 744 | 2026-08-04 | 2026-08-11 | 5d | 35d |  |  |  |  |  |  |  |  |  | Ter 11/08/26 |  |
| 746 | 1.20.5 | **AG-F0009-0309-MB-J-00003** | 20d | 2026-07-16 | 2026-08-13 |  | 2026-07-09 | 2026-08-06 | 20d | 38d |  | AG - Arranjo (AG) | 03 - REDUÇÃO | 09 - FORNO TECNORED | J - AUTOMAÇÃO | PLANTA BÁSICA DE INSTRUMENTAÇÃO ELEVAÇÃO 16502 | A1 (841x594mm) | 01 | Revisão da instrumentação | Qui 06/08/26 | Qui 09/07/26 |
| 747 | 1.20.5.1 | Emissão inicial | 10d | 2026-07-16 | 2026-07-30 | 737SF | 2026-07-09 | 2026-07-23 | 10d | 38d | 0d |  |  |  |  |  |  |  |  | Qui 23/07/26 |  |
| 748 | 1.20.5.2 | Avaliação do Cliente | 5d | 2026-07-30 | 2026-08-06 | 747 | 2026-07-23 | 2026-07-30 | 5d | 38d | 0d |  |  |  |  |  |  |  |  | Qui 30/07/26 |  |
| 749 | 1.20.5.3 | Atendimento de Comentário | 3d | 2026-08-06 | 2026-08-11 | 748 | 2026-07-30 | 2026-08-04 | 3d | 38d | 0d |  |  |  |  |  |  |  |  | Ter 04/08/26 |  |
| 750 | 1.20.5.4 | Aprovação | 2d | 2026-08-11 | 2026-08-13 | 749 | 2026-08-04 | 2026-08-06 | 2d | 38d |  |  |  |  |  |  |  |  |  | Qui 06/08/26 |  |
| 751 | 1.20.6 | **AG-F0009-0309-MB-J-00004** | 20d | 2026-07-16 | 2026-08-13 |  | 2026-07-09 | 2026-08-06 | 20d | 0d |  | AG - Arranjo (AG) | 03 - REDUÇÃO | 09 - FORNO TECNORED | J - AUTOMAÇÃO | PLANTA BÁSICA DE INSTRUMENTAÇÃO ELEVAÇÃO 23872 | A1 (841x594mm) | 01 | Revisão da instrumentação | Qui 06/08/26 | Qui 09/07/26 |
| 752 | 1.20.6.1 | Emissão inicial | 10d | 2026-07-16 | 2026-07-30 | 737SF | 2026-07-09 | 2026-07-23 | 10d | 0d |  |  |  |  |  |  |  |  |  | Qui 23/07/26 |  |
| 753 | 1.20.6.2 | Avaliação do Cliente | 5d | 2026-07-30 | 2026-08-06 | 752 | 2026-07-23 | 2026-07-30 | 5d | 38d | 0d |  |  |  |  |  |  |  |  | Qui 30/07/26 |  |
| 754 | 1.20.6.3 | Atendimento de Comentário | 3d | 2026-08-06 | 2026-08-11 | 753 | 2026-07-30 | 2026-08-04 | 3d | 38d | 0d |  |  |  |  |  |  |  |  | Ter 04/08/26 |  |
| 755 | 1.20.6.4 | Aprovação | 2d | 2026-08-11 | 2026-08-13 | 754 | 2026-08-04 | 2026-08-06 | 2d | 38d |  |  |  |  |  |  |  |  |  | Qui 06/08/26 |  |
| 756 | 1.20.7 | **AG-F0009-0309-MB-J-00005** | 22d | 2026-07-30 | 2026-08-31 |  | 2026-07-23 | 2026-08-24 | 22d | 0d |  | AG - Arranjo (AG) | 03 - REDUÇÃO | 09 - FORNO TECNORED | J - AUTOMAÇÃO | PLANTA BÁSICA DE INSTRUMENTAÇÃO ELEVAÇÃO 30064 | A1 (841x594mm) | 01 | Revisão da instrumentação | Seg 24/08/26 | Qui 23/07/26 |
| 757 | 1.20.7.1 | Emissão inicial | 10d | 2026-07-30 | 2026-08-13 | 752 | 2026-07-23 | 2026-08-06 | 10d | 0d |  |  |  |  |  |  |  |  |  | Qui 06/08/26 |  |
| 758 | 1.20.7.2 | Avaliação do Cliente | 5d | 2026-08-13 | 2026-08-20 | 757 | 2026-08-06 | 2026-08-13 | 5d | 0d |  |  |  |  |  |  |  |  |  | Qui 13/08/26 |  |
| 759 | 1.20.7.3 | Atendimento de Comentário | 5d | 2026-08-20 | 2026-08-27 | 758 | 2026-08-13 | 2026-08-20 | 5d | 26d | 0d |  |  |  |  |  |  |  |  | Qui 20/08/26 |  |
| 760 | 1.20.7.4 | Aprovação | 2d | 2026-08-27 | 2026-08-31 | 759 | 2026-08-20 | 2026-08-24 | 2d | 26d |  |  |  |  |  |  |  |  |  | Seg 24/08/26 |  |

| ID | WBS | Task | Duration | Start | Finish | Predecessors | Baseline start | Baseline finish | Baseline duration | Total slack | Free slack | Tipo de documento | Área | Sub-área | Disciplina | Título | Formato | Quantidade | Agrupamento Cecal | Término_LB_R0 | Início_LB_R0 |
| --- | --- | --- | --- | --- | --- | --- | --- | --- | --- | --- | --- | --- | --- | --- | --- | --- | --- | --- | --- | --- | --- |
| 761 | 1.20.8 | **AG-F0009-0309-MB-J-00006** | 20d | 2026-07-30 | 2026-08-27 |  | 2026-07-23 | 2026-08-20 | 20d | 28d |  | AG - Arranjo (AG) | 03 - REDUÇÃO | 09 - FORNO TECNORED | J - AUTOMAÇÃO | PLANTA BÁSICA DE INSTRUMENTAÇÃO ELEVAÇÃO 35115 | A1 (841x594mm) | 01 | Revisão da instrumentação | Qui 20/08/26 | Qui 23/07/26 |
| 762 | 1.20.8.1 | Emissão inicial | 10d | 2026-07-30 | 2026-08-13 | 758SF | 2026-07-23 | 2026-08-06 | 10d | 28d | 0d |  |  |  |  |  |  |  |  | Qui 06/08/26 |  |
| 763 | 1.20.8.2 | Avaliação do Cliente | 5d | 2026-08-13 | 2026-08-20 | 762 | 2026-08-06 | 2026-08-13 | 5d | 28d | 0d |  |  |  |  |  |  |  |  | Qui 13/08/26 |  |
| 764 | 1.20.8.3 | Atendimento de Comentário | 3d | 2026-08-20 | 2026-08-25 | 763 | 2026-08-13 | 2026-08-18 | 3d | 28d | 0d |  |  |  |  |  |  |  |  | Ter 18/08/26 |  |
| 765 | 1.20.8.4 | Aprovação | 2d | 2026-08-25 | 2026-08-27 | 764 | 2026-08-18 | 2026-08-20 | 2d | 28d |  |  |  |  |  |  |  |  |  | Qui 20/08/26 |  |
| 766 | 1.20.9 | **AG-F0009-0309-MB-J-00007** | 22d | 2026-07-30 | 2026-08-31 |  | 2026-07-23 | 2026-08-24 | 22d | 26d |  | AG - Arranjo (AG) | 03 - REDUÇÃO | 09 - FORNO TECNORED | J - AUTOMAÇÃO | PLANTA BÁSICA DE INSTRUMENTAÇÃO ELEVAÇÃO 39322 | A1 (841x594mm) | 01 | Revisão da instrumentação | Seg 24/08/26 | Qui 23/07/26 |
| 767 | 1.20.9.1 | Emissão inicial | 10d | 2026-07-30 | 2026-08-13 | 758SF | 2026-07-23 | 2026-08-06 | 10d | 26d | 0d |  |  |  |  |  |  |  |  | Qui 06/08/26 |  |
| 768 | 1.20.9.2 | Avaliação do Cliente | 5d | 2026-08-13 | 2026-08-20 | 767 | 2026-08-06 | 2026-08-13 | 5d | 26d | 0d |  |  |  |  |  |  |  |  | Qui 13/08/26 |  |
| 769 | 1.20.9.3 | Atendimento de Comentário | 5d | 2026-08-20 | 2026-08-27 | 768 | 2026-08-13 | 2026-08-20 | 5d | 26d | 0d |  |  |  |  |  |  |  |  | Qui 20/08/26 |  |
| 770 | 1.20.9.4 | Aprovação | 2d | 2026-08-27 | 2026-08-31 | 769 | 2026-08-20 | 2026-08-24 | 2d | 26d |  |  |  |  |  |  |  |  |  | Seg 24/08/26 |  |
| 771 | 1.20.10 | **AG-F0009-0309-MB-J-00008** | 20d | 2026-07-30 | 2026-08-27 |  | 2026-07-23 | 2026-08-20 | 20d | 28d |  | AG - Arranjo (AG) | 03 - REDUÇÃO | 09 - FORNO TECNORED | J - AUTOMAÇÃO | PLANTA BÁSICA DE INSTRUMENTAÇÃO TORRE RESFRIAMENTO | A1 (841x594mm) | 01 | Revisão da instrumentação | Qui 20/08/26 | Qui 23/07/26 |
| 772 | 1.20.10.1 | Emissão inicial | 10d | 2026-07-30 | 2026-08-13 | 758SF | 2026-07-23 | 2026-08-06 | 10d | 28d | 0d |  |  |  |  |  |  |  |  | Qui 06/08/26 |  |
| 773 | 1.20.10.2 | Avaliação do Cliente | 5d | 2026-08-13 | 2026-08-20 | 772 | 2026-08-06 | 2026-08-13 | 5d | 28d | 0d |  |  |  |  |  |  |  |  | Qui 13/08/26 |  |
| 774 | 1.20.10.3 | Atendimento de Comentário | 3d | 2026-08-20 | 2026-08-25 | 773 | 2026-08-13 | 2026-08-18 | 3d | 28d | 0d |  |  |  |  |  |  |  |  | Ter 18/08/26 |  |
| 775 | 1.20.10.4 | Aprovação | 2d | 2026-08-25 | 2026-08-27 | 774 | 2026-08-18 | 2026-08-20 | 2d | 28d |  |  |  |  |  |  |  |  |  | Qui 20/08/26 |  |
| 776 | 1.20.11 | **AG-F0009-0309-MB-J-00009** | 20d | 2026-07-30 | 2026-08-27 |  | 2026-07-23 | 2026-08-20 | 20d | 0d |  | AG - Arranjo (AG) | 03 - REDUÇÃO | 09 - FORNO TECNORED | J - AUTOMAÇÃO | PLANTA BÁSICA DE INSTRUMENTAÇÃO FIBRA OPTICA | A1 (841x594mm) | 01 | Revisão da instrumentação | Qui 20/08/26 | Qui 23/07/26 |
| 777 | 1.20.11.1 | Emissão inicial | 10d | 2026-07-30 | 2026-08-13 | 758SF | 2026-07-23 | 2026-08-06 | 10d | 0d |  |  |  |  |  |  |  |  |  | Qui 06/08/26 |  |
| 778 | 1.20.11.2 | Avaliação do Cliente | 5d | 2026-08-13 | 2026-08-20 | 777 | 2026-08-06 | 2026-08-13 | 5d | 28d | 0d |  |  |  |  |  |  |  |  | Qui 13/08/26 |  |
| 779 | 1.20.11.3 | Atendimento de Comentário | 3d | 2026-08-20 | 2026-08-25 | 778 | 2026-08-13 | 2026-08-18 | 3d | 28d | 0d |  |  |  |  |  |  |  |  | Ter 18/08/26 |  |
| 780 | 1.20.11.4 | Aprovação | 2d | 2026-08-25 | 2026-08-27 | 779 | 2026-08-18 | 2026-08-20 | 2d | 28d |  |  |  |  |  |  |  |  |  | Qui 20/08/26 |  |
| 781 | 1.20.12 | **LB-F0009-0309-MB-J-00001** | 27d | 2026-08-13 | 2026-09-21 |  | 2026-08-06 | 2026-09-14 | 27d | 0d |  | LB - Lista de Cabos | 03 - REDUÇÃO | 09 - FORNO TECNORED | J - AUTOMAÇÃO | LISTA DE CABOS BÁSICA | A4 (210x297mm) | 10 | Revisão da instrumentação | Seg 14/09/26 | Qui 06/08/26 |
| 782 | 1.20.12.1 | Emissão inicial | 15d | 2026-08-13 | 2026-09-03 | 1009, 777 | 2026-08-06 | 2026-08-27 | 15d | 0d |  |  |  |  |  |  |  |  |  | Qui 27/08/26 |  |
| 783 | 1.20.12.2 | Avaliação do Cliente | 5d | 2026-09-03 | 2026-09-10 | 782 | 2026-08-27 | 2026-09-03 | 5d | 0d |  |  |  |  |  |  |  |  |  | Qui 03/09/26 |  |
| 784 | 1.20.12.3 | Atendimento de Comentário | 5d | 2026-09-10 | 2026-09-17 | 783 | 2026-09-03 | 2026-09-10 | 5d | 11d | 0d |  |  |  |  |  |  |  |  | Qui 10/09/26 |  |
| 785 | 1.20.12.4 | Aprovação | 2d | 2026-09-17 | 2026-09-21 | 784 | 2026-09-10 | 2026-09-14 | 2d | 11d |  |  |  |  |  |  |  |  |  | Seg 14/09/26 |  |

| ID | WBS | Task | Duration | Start | Finish | Predecessors | Baseline start | Baseline finish | Baseline duration | Total slack | Free slack | Tipo de documento | Área | Sub-área | Disciplina | Formato | Quantidade | Agrupamento Cecal | Término_LB_R0 | Início_LB_R0 |
| --- | --- | --- | --- | --- | --- | --- | --- | --- | --- | --- | --- | --- | --- | --- | --- | --- | --- | --- | --- | --- |
| 786 | 1.20.13 | **LI-F0009-0300-MB-J-00001** | 25d | 2026-08-13 | 2026-09-17 |  | 2026-08-06 | 2026-09-10 | 25d | 13d |  | LI - Lista de Instrumentos | 03 - REDUÇÃO | 00 - GERAL | J - AUTOMAÇÃO | OUTROS | 01 | Revisão da instrumentação | Qui 10/09/26 | Qui 06/08/26 |
| 787 | 1.20.13.1 | Emissão inicial | 15d | 2026-08-13 | 2026-09-03 | 783SF | 2026-08-06 | 2026-08-27 | 15d | 13d | 0d |  |  |  |  |  |  |  | Qui 27/08/26 |  |
| 788 | 1.20.13.2 | Avaliação do Cliente | 5d | 2026-09-03 | 2026-09-10 | 787 | 2026-08-27 | 2026-09-03 | 5d | 13d | 0d |  |  |  |  |  |  |  | Qui 03/09/26 |  |
| 789 | 1.20.13.3 | Atendimento de Comentário | 3d | 2026-09-10 | 2026-09-15 | 788 | 2026-09-03 | 2026-09-08 | 3d | 13d | 0d |  |  |  |  |  |  |  | Ter 08/09/26 |  |
| 790 | 1.20.13.4 | Aprovação | 2d | 2026-09-15 | 2026-09-17 | 789 | 2026-09-08 | 2026-09-10 | 2d | 13d |  |  |  |  |  |  |  |  | Qui 10/09/26 |  |
| 791 | 1.20.14 | **LI-F0009-0302-MB-J-00001** | 25d | 2026-08-13 | 2026-09-17 |  | 2026-08-06 | 2026-09-10 | 25d | 13d |  | LI - Lista de Instrumentos | 03 - REDUÇÃO | 02 - CARREGAMENTO | J - AUTOMAÇÃO | OUTROS | 01 | Revisão da instrumentação | Qui 10/09/26 | Qui 06/08/26 |
| 792 | 1.20.14.1 | Emissão inicial | 15d | 2026-08-13 | 2026-09-03 | 783SF | 2026-08-06 | 2026-08-27 | 15d | 13d | 0d |  |  |  |  |  |  |  | Qui 27/08/26 |  |
| 793 | 1.20.14.2 | Avaliação do Cliente | 5d | 2026-09-03 | 2026-09-10 | 792 | 2026-08-27 | 2026-09-03 | 5d | 13d | 0d |  |  |  |  |  |  |  | Qui 03/09/26 |  |
| 794 | 1.20.14.3 | Atendimento de Comentário | 3d | 2026-09-10 | 2026-09-15 | 793 | 2026-09-03 | 2026-09-08 | 3d | 13d | 0d |  |  |  |  |  |  |  | Ter 08/09/26 |  |
| 795 | 1.20.14.4 | Aprovação | 2d | 2026-09-15 | 2026-09-17 | 794 | 2026-09-08 | 2026-09-10 | 2d | 13d |  |  |  |  |  |  |  |  | Qui 10/09/26 |  |
| 796 | 1.20.15 | **LI-F0009-0302-MB-J-00002** | 25d | 2026-08-13 | 2026-09-17 |  | 2026-08-06 | 2026-09-10 | 25d | 13d |  | LI - Lista de Instrumentos | 03 - REDUÇÃO | 02 - CARREGAMENTO | J - AUTOMAÇÃO | OUTROS | 01 | Revisão da instrumentação | Qui 10/09/26 | Qui 06/08/26 |
| 797 | 1.20.15.1 | Emissão inicial | 15d | 2026-08-13 | 2026-09-03 | 783SF | 2026-08-06 | 2026-08-27 | 15d | 13d | 0d |  |  |  |  |  |  |  | Qui 27/08/26 |  |
| 798 | 1.20.15.2 | Avaliação do Cliente | 5d | 2026-09-03 | 2026-09-10 | 797 | 2026-08-27 | 2026-09-03 | 5d | 13d | 0d |  |  |  |  |  |  |  | Qui 03/09/26 |  |
| 799 | 1.20.15.3 | Atendimento de Comentário | 3d | 2026-09-10 | 2026-09-15 | 798 | 2026-09-03 | 2026-09-08 | 3d | 13d | 0d |  |  |  |  |  |  |  | Ter 08/09/26 |  |
| 800 | 1.20.15.4 | Aprovação | 2d | 2026-09-15 | 2026-09-17 | 799 | 2026-09-08 | 2026-09-10 | 2d | 13d |  |  |  |  |  |  |  |  | Qui 10/09/26 |  |
| 801 | 1.20.16 | **LI-F0009-0302-MB-J-00003** | 27d | 2026-08-13 | 2026-09-21 |  | 2026-08-06 | 2026-09-14 | 27d | 11d |  | LI - Lista de Instrumentos | 03 - REDUÇÃO | 02 - CARREGAMENTO | J - AUTOMAÇÃO | OUTROS | 01 | Revisão da instrumentação | Seg 14/09/26 | Qui 06/08/26 |
| 802 | 1.20.16.1 | Emissão inicial | 15d | 2026-08-13 | 2026-09-03 | 783SF | 2026-08-06 | 2026-08-27 | 15d | 11d | 0d |  |  |  |  |  |  |  | Qui 27/08/26 |  |
| 803 | 1.20.16.2 | Avaliação do Cliente | 5d | 2026-09-03 | 2026-09-10 | 802 | 2026-08-27 | 2026-09-03 | 5d | 11d | 0d |  |  |  |  |  |  |  | Qui 03/09/26 |  |
| 804 | 1.20.16.3 | Atendimento de Comentário | 5d | 2026-09-10 | 2026-09-17 | 803 | 2026-09-03 | 2026-09-10 | 5d | 11d | 0d |  |  |  |  |  |  |  | Qui 10/09/26 |  |
| 805 | 1.20.16.4 | Aprovação | 2d | 2026-09-17 | 2026-09-21 | 804 | 2026-09-10 | 2026-09-14 | 2d | 11d |  |  |  |  |  |  |  |  | Seg 14/09/26 |  |
| 806 | 1.20.17 | **LI-F0009-0302-MB-J-00004** | 25d | 2026-08-13 | 2026-09-17 |  | 2026-08-06 | 2026-09-10 | 25d | 13d |  | LI - Lista de Instrumentos | 03 - REDUÇÃO | 02 - CARREGAMENTO | J - AUTOMAÇÃO | OUTROS | 01 | Revisão da instrumentação | Qui 10/09/26 | Qui 06/08/26 |
| 807 | 1.20.17.1 | Emissão inicial | 15d | 2026-08-13 | 2026-09-03 | 783SF | 2026-08-06 | 2026-08-27 | 15d | 13d | 0d |  |  |  |  |  |  |  | Qui 27/08/26 |  |
| 808 | 1.20.17.2 | Avaliação do Cliente | 5d | 2026-09-03 | 2026-09-10 | 807 | 2026-08-27 | 2026-09-03 | 5d | 13d | 0d |  |  |  |  |  |  |  | Qui 03/09/26 |  |
| 809 | 1.20.17.3 | Atendimento de Comentário | 3d | 2026-09-10 | 2026-09-15 | 808 | 2026-09-03 | 2026-09-08 | 3d | 13d | 0d |  |  |  |  |  |  |  | Ter 08/09/26 |  |
| 810 | 1.20.17.4 | Aprovação | 2d | 2026-09-15 | 2026-09-17 | 809 | 2026-09-08 | 2026-09-10 | 2d | 13d |  |  |  |  |  |  |  |  | Qui 10/09/26 |  |

Notes:
- 786: Título: LISTA de IO
- 791: Título: LISTA DE INSTRUMENTOS RECEIVING HOPPER, REVERSIBLE MOVABLE BELT AND PROCESS HOPPER – FLUXOGRAMA - FG-F0008-0302-MB-P-00001
- 796: Título: LISTA DE INSTRUMENTOS BUFFERS HOPPER - FR-400A – FLUXOGRAMA - FG-F0008-0302-MB-P-00002
- 801: Título: LISTA DE INSTRUMENTOS BUFFERS HOPPER - FR-400B – FLUXOGRAMA - FG-F0008-0302-MB-P-00003
- 806: Título: LISTA DE INSTRUMENTOS FR-400A - BOOSTER, BAR AND FUEL CHARGING – FLUXOGRAMA - FG-F0008-0302-MB-P-00004

| ID | WBS | Task | Duration | Start | Finish | Predecessors | Baseline start | Baseline finish | Baseline duration | Total slack | Free slack | Tipo de documento | Área | Sub-área | Disciplina | Formato | Quantidade | Agrupamento Cecal | Término_LB_R0 | Início_LB_R0 |
| --- | --- | --- | --- | --- | --- | --- | --- | --- | --- | --- | --- | --- | --- | --- | --- | --- | --- | --- | --- | --- |
| 811 | 1.20.18 | **LI-F0009-0302-MB-J-00005** | 27d | 2026-08-13 | 2026-09-21 |  | 2026-08-06 | 2026-09-14 | 27d | 11d |  | LI - Lista de Instrumentos | 03 - REDUÇÃO | 02 - CARREGAMENTO | J - AUTOMAÇÃO | OUTROS | 01 | Revisão da instrumentação | Seg 14/09/26 | Qui 06/08/26 |
| 812 | 1.20.18.1 | Emissão inicial | 15d | 2026-08-13 | 2026-09-03 | 783SF | 2026-08-06 | 2026-08-27 | 15d | 11d | 0d |  |  |  |  |  |  |  | Qui 27/08/26 |  |
| 813 | 1.20.18.2 | Avaliação do Cliente | 5d | 2026-09-03 | 2026-09-10 | 812 | 2026-08-27 | 2026-09-03 | 5d | 11d | 0d |  |  |  |  |  |  |  | Qui 03/09/26 |  |
| 814 | 1.20.18.3 | Atendimento de Comentário | 5d | 2026-09-10 | 2026-09-17 | 813 | 2026-09-03 | 2026-09-10 | 5d | 11d | 0d |  |  |  |  |  |  |  | Qui 10/09/26 |  |
| 815 | 1.20.18.4 | Aprovação | 2d | 2026-09-17 | 2026-09-21 | 814 | 2026-09-10 | 2026-09-14 | 2d | 11d |  |  |  |  |  |  |  |  | Seg 14/09/26 |  |
| 816 | 1.20.19 | **LI-F0009-0302-MB-J-00006** | 25d | 2026-08-13 | 2026-09-17 |  | 2026-08-06 | 2026-09-10 | 25d | 13d |  | LI - Lista de Instrumentos | 03 - REDUÇÃO | 02 - CARREGAMENTO | J - AUTOMAÇÃO | OUTROS | 01 | Revisão da instrumentação | Qui 10/09/26 | Qui 06/08/26 |
| 817 | 1.20.19.1 | Emissão inicial | 15d | 2026-08-13 | 2026-09-03 | 783SF | 2026-08-06 | 2026-08-27 | 15d | 13d | 0d |  |  |  |  |  |  |  | Qui 27/08/26 |  |
| 818 | 1.20.19.2 | Avaliação do Cliente | 5d | 2026-09-03 | 2026-09-10 | 817 | 2026-08-27 | 2026-09-03 | 5d | 13d | 0d |  |  |  |  |  |  |  | Qui 03/09/26 |  |
| 819 | 1.20.19.3 | Atendimento de Comentário | 3d | 2026-09-10 | 2026-09-15 | 818 | 2026-09-03 | 2026-09-08 | 3d | 13d | 0d |  |  |  |  |  |  |  | Ter 08/09/26 |  |
| 820 | 1.20.19.4 | Aprovação | 2d | 2026-09-15 | 2026-09-17 | 819 | 2026-09-08 | 2026-09-10 | 2d | 13d |  |  |  |  |  |  |  |  | Qui 10/09/26 |  |
| 821 | 1.20.20 | **LI-F0009-0307-MB-J-00001** | 27d | 2026-08-13 | 2026-09-21 |  | 2026-08-06 | 2026-09-14 | 27d | 11d |  | LI - Lista de Instrumentos | 03 - REDUÇÃO | 07 - RESFRIAMENTO | J - AUTOMAÇÃO | OUTROS | 01 | Revisão da instrumentação | Seg 14/09/26 | Qui 06/08/26 |
| 822 | 1.20.20.1 | Emissão inicial | 15d | 2026-08-13 | 2026-09-03 | 783SF | 2026-08-06 | 2026-08-27 | 15d | 11d | 0d |  |  |  |  |  |  |  | Qui 27/08/26 |  |
| 823 | 1.20.20.2 | Avaliação do Cliente | 5d | 2026-09-03 | 2026-09-10 | 822 | 2026-08-27 | 2026-09-03 | 5d | 11d | 0d |  |  |  |  |  |  |  | Qui 03/09/26 |  |
| 824 | 1.20.20.3 | Atendimento de Comentário | 5d | 2026-09-10 | 2026-09-17 | 823 | 2026-09-03 | 2026-09-10 | 5d | 11d | 0d |  |  |  |  |  |  |  | Qui 10/09/26 |  |
| 825 | 1.20.20.4 | Aprovação | 2d | 2026-09-17 | 2026-09-21 | 824 | 2026-09-10 | 2026-09-14 | 2d | 11d |  |  |  |  |  |  |  |  | Seg 14/09/26 |  |
| 826 | 1.20.21 | **LI-F0009-0309-MB-J-00001** | 25d | 2026-08-13 | 2026-09-17 |  | 2026-08-06 | 2026-09-10 | 25d | 13d |  | LI - Lista de Instrumentos | 03 - REDUÇÃO | 09 - FORNO TECNORED | J - AUTOMAÇÃO | A4 (210x297mm) | 10 | Revisão da instrumentação | Qui 10/09/26 | Qui 06/08/26 |
| 827 | 1.20.21.1 | Emissão inicial | 15d | 2026-08-13 | 2026-09-03 | 783SF | 2026-08-06 | 2026-08-27 | 15d | 13d | 0d |  |  |  |  |  |  |  | Qui 27/08/26 |  |
| 828 | 1.20.21.2 | Avaliação do Cliente | 5d | 2026-09-03 | 2026-09-10 | 827 | 2026-08-27 | 2026-09-03 | 5d | 13d | 0d |  |  |  |  |  |  |  | Qui 03/09/26 |  |
| 829 | 1.20.21.3 | Atendimento de Comentário | 3d | 2026-09-10 | 2026-09-15 | 828 | 2026-09-03 | 2026-09-08 | 3d | 13d | 0d |  |  |  |  |  |  |  | Ter 08/09/26 |  |
| 830 | 1.20.21.4 | Aprovação | 2d | 2026-09-15 | 2026-09-17 | 829 | 2026-09-08 | 2026-09-10 | 2d | 13d |  |  |  |  |  |  |  |  | Qui 10/09/26 |  |
| 831 | 1.20.22 | **LI-F0009-0309-MB-J-00002** | 25d | 2026-08-13 | 2026-09-17 |  | 2026-08-06 | 2026-09-10 | 25d | 13d |  | LI - Lista de Instrumentos | 03 - REDUÇÃO | 09 - FORNO TECNORED | J - AUTOMAÇÃO | OUTROS | 01 | Revisão da instrumentação | Qui 10/09/26 | Qui 06/08/26 |
| 832 | 1.20.22.1 | Emissão inicial | 15d | 2026-08-13 | 2026-09-03 | 783SF | 2026-08-06 | 2026-08-27 | 15d | 13d | 0d |  |  |  |  |  |  |  | Qui 27/08/26 |  |
| 833 | 1.20.22.2 | Avaliação do Cliente | 5d | 2026-09-03 | 2026-09-10 | 832 | 2026-08-27 | 2026-09-03 | 5d | 13d | 0d |  |  |  |  |  |  |  | Qui 03/09/26 |  |
| 834 | 1.20.22.3 | Atendimento de Comentário | 3d | 2026-09-10 | 2026-09-15 | 833 | 2026-09-03 | 2026-09-08 | 3d | 13d | 0d |  |  |  |  |  |  |  | Ter 08/09/26 |  |
| 835 | 1.20.22.4 | Aprovação | 2d | 2026-09-15 | 2026-09-17 | 834 | 2026-09-08 | 2026-09-10 | 2d | 13d |  |  |  |  |  |  |  |  | Qui 10/09/26 |  |

Notes:
- 811: Título: LISTA DE INSTRUMENTOS FR-400B - BOOSTER, BAR AND FUEL CHARGING – FLUXOGRAMA - FG-F0008-0302-MB-P-00005
- 816: Título: LISTA DE INSTRUMENTOS TECNORED SEMI CLEAN GAS AND N2 DISTRIBUTION – FLUXOGRAMA - FG-F0008-0302-MB-P-00006
- 821: Título: LISTA DE INSTRUMENTOS COOLING SYSTEM - HOT VALVES SECTIONING – FLUXOGRAMA - FG-F0008-0307-MB-P-00001
- 826: Título: LISTA DE INSTRUMENTOS PRIMARY AND SECUNDARY CIRCUIT - FURNACE 1 & 2 - COOLING SYSTEM - PUMP HOUSE – FLUXOGRAMA - FG-F0008-0309-MB-P-00001
- 831: Título: LISTA DE INSTRUMENTOS COOLING SYSTEM - COOLING BOX – FLUXOGRAMA - FG-F0008-0309-MB-P-00002

| ID | WBS | Task | Duration | Start | Finish | Predecessors | Baseline start | Baseline finish | Baseline duration | Total slack | Free slack | Tipo de documento | Área | Sub-área | Disciplina | Formato | Quantidade | Agrupamento Cecal | Término_LB_R0 | Início_LB_R0 |
| --- | --- | --- | --- | --- | --- | --- | --- | --- | --- | --- | --- | --- | --- | --- | --- | --- | --- | --- | --- | --- |
| 836 | 1.20.23 | **LI-F0009-0309-MB-J-00003** | 25d | 2026-08-13 | 2026-09-17 |  | 2026-08-06 | 2026-09-10 | 25d | 13d |  | LI - Lista de Instrumentos | 03 - REDUÇÃO | 09 - FORNO TECNORED | J - AUTOMAÇÃO | OUTROS | 01 | Revisão da instrumentação | Qui 10/09/26 | Qui 06/08/26 |
| 837 | 1.20.23.1 | Emissão inicial | 15d | 2026-08-13 | 2026-09-03 | 783SF | 2026-08-06 | 2026-08-27 | 15d | 13d | 0d |  |  |  |  |  |  |  | Qui 27/08/26 |  |
| 838 | 1.20.23.2 | Avaliação do Cliente | 5d | 2026-09-03 | 2026-09-10 | 837 | 2026-08-27 | 2026-09-03 | 5d | 13d | 0d |  |  |  |  |  |  |  | Qui 03/09/26 |  |
| 839 | 1.20.23.3 | Atendimento de Comentário | 3d | 2026-09-10 | 2026-09-15 | 838 | 2026-09-03 | 2026-09-08 | 3d | 13d | 0d |  |  |  |  |  |  |  | Ter 08/09/26 |  |
| 840 | 1.20.23.4 | Aprovação | 2d | 2026-09-15 | 2026-09-17 | 839 | 2026-09-08 | 2026-09-10 | 2d | 13d |  |  |  |  |  |  |  |  | Qui 10/09/26 |  |
| 841 | 1.20.24 | **LI-F0009-0309-MB-J-00004** | 25d | 2026-08-13 | 2026-09-17 |  | 2026-08-06 | 2026-09-10 | 25d | 13d |  | LI - Lista de Instrumentos | 03 - REDUÇÃO | 09 - FORNO TECNORED | J - AUTOMAÇÃO | OUTROS | 01 | Revisão da instrumentação | Qui 10/09/26 | Qui 06/08/26 |
| 842 | 1.20.24.1 | Emissão inicial | 15d | 2026-08-13 | 2026-09-03 | 783SF | 2026-08-06 | 2026-08-27 | 15d | 13d | 0d |  |  |  |  |  |  |  | Qui 27/08/26 |  |
| 843 | 1.20.24.2 | Avaliação do Cliente | 5d | 2026-09-03 | 2026-09-10 | 842 | 2026-08-27 | 2026-09-03 | 5d | 13d | 0d |  |  |  |  |  |  |  | Qui 03/09/26 |  |
| 844 | 1.20.24.3 | Atendimento de Comentário | 3d | 2026-09-10 | 2026-09-15 | 843 | 2026-09-03 | 2026-09-08 | 3d | 13d | 0d |  |  |  |  |  |  |  | Ter 08/09/26 |  |
| 845 | 1.20.24.4 | Aprovação | 2d | 2026-09-15 | 2026-09-17 | 844 | 2026-09-08 | 2026-09-10 | 2d | 13d |  |  |  |  |  |  |  |  | Qui 10/09/26 |  |
| 846 | 1.20.25 | **LI-F0009-0309-MB-J-00005** | 25d | 2026-08-13 | 2026-09-17 |  | 2026-08-06 | 2026-09-10 | 25d | 13d |  | LI - Lista de Instrumentos | 03 - REDUÇÃO | 09 - FORNO TECNORED | J - AUTOMAÇÃO | OUTROS | 01 | Revisão da instrumentação | Qui 10/09/26 | Qui 06/08/26 |
| 847 | 1.20.25.1 | Emissão inicial | 15d | 2026-08-13 | 2026-09-03 | 783SF | 2026-08-06 | 2026-08-27 | 15d | 13d | 0d |  |  |  |  |  |  |  | Qui 27/08/26 |  |
| 848 | 1.20.25.2 | Avaliação do Cliente | 5d | 2026-09-03 | 2026-09-10 | 847 | 2026-08-27 | 2026-09-03 | 5d | 13d | 0d |  |  |  |  |  |  |  | Qui 03/09/26 |  |
| 849 | 1.20.25.3 | Atendimento de Comentário | 3d | 2026-09-10 | 2026-09-15 | 848 | 2026-09-03 | 2026-09-08 | 3d | 13d | 0d |  |  |  |  |  |  |  | Ter 08/09/26 |  |
| 850 | 1.20.25.4 | Aprovação | 2d | 2026-09-15 | 2026-09-17 | 849 | 2026-09-08 | 2026-09-10 | 2d | 13d |  |  |  |  |  |  |  |  | Qui 10/09/26 |  |
| 851 | 1.20.26 | **LI-F0009-0309-MB-J-00006** | 27d | 2026-08-13 | 2026-09-21 |  | 2026-08-06 | 2026-09-14 | 27d | 11d |  | LI - Lista de Instrumentos | 03 - REDUÇÃO | 09 - FORNO TECNORED | J - AUTOMAÇÃO | OUTROS | 01 | Revisão da instrumentação | Seg 14/09/26 | Qui 06/08/26 |
| 852 | 1.20.26.1 | Emissão inicial | 15d | 2026-08-13 | 2026-09-03 | 783SF | 2026-08-06 | 2026-08-27 | 15d | 11d | 0d |  |  |  |  |  |  |  | Qui 27/08/26 |  |
| 853 | 1.20.26.2 | Avaliação do Cliente | 5d | 2026-09-03 | 2026-09-10 | 852 | 2026-08-27 | 2026-09-03 | 5d | 11d | 0d |  |  |  |  |  |  |  | Qui 03/09/26 |  |
| 854 | 1.20.26.3 | Atendimento de Comentário | 5d | 2026-09-10 | 2026-09-17 | 853 | 2026-09-03 | 2026-09-10 | 5d | 11d | 0d |  |  |  |  |  |  |  | Qui 10/09/26 |  |
| 855 | 1.20.26.4 | Aprovação | 2d | 2026-09-17 | 2026-09-21 | 854 | 2026-09-10 | 2026-09-14 | 2d | 11d |  |  |  |  |  |  |  |  | Seg 14/09/26 |  |
| 856 | 1.20.27 | **LI-F0009-0309-MB-J-00007** | 25d | 2026-08-13 | 2026-09-17 |  | 2026-08-06 | 2026-09-10 | 25d | 13d |  | LI - Lista de Instrumentos | 03 - REDUÇÃO | 09 - FORNO TECNORED | J - AUTOMAÇÃO | OUTROS | 01 | Revisão da instrumentação | Qui 10/09/26 | Qui 06/08/26 |
| 857 | 1.20.27.1 | Emissão inicial | 15d | 2026-08-13 | 2026-09-03 | 783SF | 2026-08-06 | 2026-08-27 | 15d | 13d | 0d |  |  |  |  |  |  |  | Qui 27/08/26 |  |
| 858 | 1.20.27.2 | Avaliação do Cliente | 5d | 2026-09-03 | 2026-09-10 | 857 | 2026-08-27 | 2026-09-03 | 5d | 13d | 0d |  |  |  |  |  |  |  | Qui 03/09/26 |  |
| 859 | 1.20.27.3 | Atendimento de Comentário | 3d | 2026-09-10 | 2026-09-15 | 858 | 2026-09-03 | 2026-09-08 | 3d | 13d | 0d |  |  |  |  |  |  |  | Ter 08/09/26 |  |
| 860 | 1.20.27.4 | Aprovação | 2d | 2026-09-15 | 2026-09-17 | 859 | 2026-09-08 | 2026-09-10 | 2d | 13d |  |  |  |  |  |  |  |  | Qui 10/09/26 |  |

Notes:
- 836: Título: LISTA DE INSTRUMENTOS COOLING SYSTEM - TUYERES CIRCUIT – FLUXOGRAMA - FG-F0008-0309-MB-P-00003
- 841: Título: LISTA DE INSTRUMENTOS COOLING SYSTEM - COOPER STAVES – FLUXOGRAMA - FG-F0008-0309-MB-P-00004
- 846: Título: LISTA DE INSTRUMENTOS COOLING SYSTEM - CAST IRON STAVES – FLUXOGRAMA - FG-F0008-0309-MB-P-00005
- 851: Título: LISTA DE INSTRUMENTOS COOLING SYSTEM - COURTAIN WALL – FLUXOGRAMA - FG-F0008-0309-MB-P-00006
- 856: Título: LISTA DE INSTRUMENTOS COOLING SYSTEM - TAPHOLE, CHANNEL AND DOORS COOLING CIRCUIT – FLUXOGRAMA - FG-F0008-0309-MB-P-00007

| ID | WBS | Task | Duration | Start | Finish | Predecessors | Baseline start | Baseline finish | Baseline duration | Total slack | Free slack | Tipo de documento | Área | Sub-área | Disciplina | Formato | Quantidade | Agrupamento Cecal | Término_LB_R0 | Início_LB_R0 |
| --- | --- | --- | --- | --- | --- | --- | --- | --- | --- | --- | --- | --- | --- | --- | --- | --- | --- | --- | --- | --- |
| 861 | 1.20.28 | **LI-F0009-0309-MB-J-00008** | 27d | 2026-08-13 | 2026-09-21 |  | 2026-08-06 | 2026-09-14 | 27d | 11d |  | LI - Lista de Instrumentos | 03 - REDUÇÃO | 09 - FORNO TECNORED | J - AUTOMAÇÃO | OUTROS | 01 | Revisão da instrumentação | Seg 14/09/26 | Qui 06/08/26 |
| 862 | 1.20.28.1 | Emissão inicial | 15d | 2026-08-13 | 2026-09-03 | 783SF | 2026-08-06 | 2026-08-27 | 15d | 11d | 0d |  |  |  |  |  |  |  | Qui 27/08/26 |  |
| 863 | 1.20.28.2 | Avaliação do Cliente | 5d | 2026-09-03 | 2026-09-10 | 862 | 2026-08-27 | 2026-09-03 | 5d | 11d | 0d |  |  |  |  |  |  |  | Qui 03/09/26 |  |
| 864 | 1.20.28.3 | Atendimento de Comentário | 5d | 2026-09-10 | 2026-09-17 | 863 | 2026-09-03 | 2026-09-10 | 5d | 11d | 0d |  |  |  |  |  |  |  | Qui 10/09/26 |  |
| 865 | 1.20.28.4 | Aprovação | 2d | 2026-09-17 | 2026-09-21 | 864 | 2026-09-10 | 2026-09-14 | 2d | 11d |  |  |  |  |  |  |  |  | Seg 14/09/26 |  |
| 866 | 1.20.29 | **LI-F0009-0309-MB-J-00009** | 25d | 2026-08-13 | 2026-09-17 |  | 2026-08-06 | 2026-09-10 | 25d | 0d |  | LI - Lista de Instrumentos | 03 - REDUÇÃO | 09 - FORNO TECNORED | J - AUTOMAÇÃO | OUTROS | 01 | Revisão da instrumentação | Qui 10/09/26 | Qui 06/08/26 |
| 867 | 1.20.29.1 | Emissão inicial | 15d | 2026-08-13 | 2026-09-03 | 783SF | 2026-08-06 | 2026-08-27 | 15d | 0d |  |  |  |  |  |  |  |  | Qui 27/08/26 |  |
| 868 | 1.20.29.2 | Avaliação do Cliente | 5d | 2026-09-03 | 2026-09-10 | 867 | 2026-08-27 | 2026-09-03 | 5d | 13d | 0d |  |  |  |  |  |  |  | Qui 03/09/26 |  |
| 869 | 1.20.29.3 | Atendimento de Comentário | 3d | 2026-09-10 | 2026-09-15 | 868 | 2026-09-03 | 2026-09-08 | 3d | 13d | 0d |  |  |  |  |  |  |  | Ter 08/09/26 |  |
| 870 | 1.20.29.4 | Aprovação | 2d | 2026-09-15 | 2026-09-17 | 869 | 2026-09-08 | 2026-09-10 | 2d | 13d |  |  |  |  |  |  |  |  | Qui 10/09/26 |  |
| 871 | 1.20.30 | **LM-F0009-0309-MB-J-00001** | 21d | 2026-09-03 | 2026-10-02 |  | 2026-08-27 | 2026-09-25 | 21d | 2d |  | LM - Lista de Materiais | 03 - REDUÇÃO | 09 - FORNO TECNORED | J - AUTOMAÇÃO | A1 (841x594mm) | 10 | Planilha de quantitativo do forno e carregamento | Sex 25/09/26 | Qui 27/08/26 |
| 872 | 1.20.30.1 | Emissão inicial | 11d | 2026-09-03 | 2026-09-18 | 867 | 2026-08-27 | 2026-09-11 | 11d | 2d | 0d |  |  |  |  |  |  |  | Sex 11/09/26 |  |
| 873 | 1.20.30.2 | Avaliação do Cliente | 5d | 2026-09-18 | 2026-09-25 | 872 | 2026-09-11 | 2026-09-18 | 5d | 2d | 0d |  |  |  |  |  |  |  | Sex 18/09/26 |  |
| 874 | 1.20.30.3 | Atendimento de Comentário | 3d | 2026-09-25 | 2026-09-30 | 873 | 2026-09-18 | 2026-09-23 | 3d | 2d | 0d |  |  |  |  |  |  |  | Qua 23/09/26 |  |
| 875 | 1.20.30.4 | Aprovação | 2d | 2026-09-30 | 2026-10-02 | 874 | 2026-09-23 | 2026-09-25 | 2d | 2d |  |  |  |  |  |  |  |  | Sex 25/09/26 |  |
| 876 | 1.20.31 | **MD-F0009-0309-MB-J-00001** | 23d | 2026-09-03 | 2026-10-06 |  | 2026-08-27 | 2026-09-29 | 23d | 0d |  | MD - Memorial Descritivo | 03 - REDUÇÃO | 09 - FORNO TECNORED | J - AUTOMAÇÃO | A4 (210x297mm) | 10 | Planilha de quantitativo do forno e carregamento | Ter 29/09/26 | Qui 27/08/26 |
| 877 | 1.20.31.1 | Emissão inicial | 13d | 2026-09-03 | 2026-09-22 | 867 | 2026-08-27 | 2026-09-15 | 13d | 0d |  |  |  |  |  |  |  |  | Ter 15/09/26 |  |
| 878 | 1.20.31.2 | Avaliação do Cliente | 5d | 2026-09-22 | 2026-09-29 | 877 | 2026-09-15 | 2026-09-22 | 5d | 0d |  |  |  |  |  |  |  |  | Ter 22/09/26 |  |
| 879 | 1.20.31.3 | Atendimento de Comentário | 3d | 2026-09-29 | 2026-10-02 | 878 | 2026-09-22 | 2026-09-25 | 3d | 0d |  |  |  |  |  |  |  |  | Sex 25/09/26 |  |
| 880 | 1.20.31.4 | Aprovação | 2d | 2026-10-02 | 2026-10-06 | 879 | 2026-09-25 | 2026-09-29 | 2d | 0d |  |  |  |  |  |  |  |  | Ter 29/09/26 |  |
| 881 | 1.20.32 | **ET-F0009-0309-MB-J-00001** | 25d | 2026-08-13 | 2026-09-17 |  | 2026-08-06 | 2026-09-10 | 25d | 13d |  | PQ - Planilha de Quantidades | 03 - REDUÇÃO | 09 - FORNO TECNORED | J - AUTOMAÇÃO | A1 (841x594mm) | 10 | Revisão da instrumentação | Qui 10/09/26 | Qui 06/08/26 |
| 882 | 1.20.32.1 | Emissão inicial | 15d | 2026-08-13 | 2026-09-03 | 877SF | 2026-08-06 | 2026-08-27 | 15d | 13d | 0d |  |  |  |  |  |  |  | Qui 27/08/26 |  |
| 883 | 1.20.32.2 | Avaliação do Cliente | 5d | 2026-09-03 | 2026-09-10 | 882 | 2026-08-27 | 2026-09-03 | 5d | 13d | 0d |  |  |  |  |  |  |  | Qui 03/09/26 |  |
| 884 | 1.20.32.3 | Atendimento de Comentário | 3d | 2026-09-10 | 2026-09-15 | 883 | 2026-09-03 | 2026-09-08 | 3d | 13d | 0d |  |  |  |  |  |  |  | Ter 08/09/26 |  |
| 885 | 1.20.32.4 | Aprovação | 2d | 2026-09-15 | 2026-09-17 | 884 | 2026-09-08 | 2026-09-10 | 2d | 13d |  |  |  |  |  |  |  |  | Qui 10/09/26 |  |

Notes:
- 861: Título: LISTA DE INSTRUMENTOS COOLING SYSTEM - BOTTOM COOLING SYSTEM – FLUXOGRAMA - FG-F0008-0309-MB-P-00008
- 866: Título: LISTA DE INSTRUMENTOS TECNORED FURNACE PROPER – FLUXOGRAMA - FG-F0008-0309-MB-P-00009
- 871: Título: LISTA DE MATERAIS BÁSICA
- 876: Título: MEMORIAL DESCRITIVO DE AUTOMAÇÃO
- 881: Título: PLANILHA QUANTITATIVO AUTOMAÇÃO

| ID | WBS | Task | Type | Duration | Start | Finish | Predecessors | Baseline start | Baseline finish | Baseline duration | Total slack | Free slack | Tipo de documento | Área | Sub-área | Disciplina | Formato | Quantidade | Agrupamento Cecal | Término_LB_R0 | Início_LB_R0 |
| --- | --- | --- | --- | --- | --- | --- | --- | --- | --- | --- | --- | --- | --- | --- | --- | --- | --- | --- | --- | --- | --- |
| 886 | 1.20.33 | **PQ-F0009-0309-MB-J-00001** |  | 25d | 2026-08-13 | 2026-09-17 |  | 2026-08-06 | 2026-09-10 | 25d | 13d |  | PQ - Planilha de Quantidades | 03 - REDUÇÃO | 09 - FORNO TECNORED | J - AUTOMAÇÃO | A1 (841x594mm) | 10 | Planilha de quantitativo do forno e carregamento | Qui 10/09/26 | Qui 06/08/26 |
| 887 | 1.20.33.1 | Emissão inicial |  | 15d | 2026-08-13 | 2026-09-03 | 877SF | 2026-08-06 | 2026-08-27 | 15d | 13d | 0d |  |  |  |  |  |  |  | Qui 27/08/26 |  |
| 888 | 1.20.33.2 | Avaliação do Cliente |  | 5d | 2026-09-03 | 2026-09-10 | 887 | 2026-08-27 | 2026-09-03 | 5d | 13d | 0d |  |  |  |  |  |  |  | Qui 03/09/26 |  |
| 889 | 1.20.33.3 | Atendimento de Comentário |  | 3d | 2026-09-10 | 2026-09-15 | 888 | 2026-09-03 | 2026-09-08 | 3d | 13d | 0d |  |  |  |  |  |  |  | Ter 08/09/26 |  |
| 890 | 1.20.33.4 | Aprovação |  | 2d | 2026-09-15 | 2026-09-17 | 889 | 2026-09-08 | 2026-09-10 | 2d | 13d |  |  |  |  |  |  |  |  | Qui 10/09/26 |  |
| 891 | 4.2.1.22 | PROCESSO GUSA 309 | manual | 65.13d | 2026-06-23 | 2026-09-22 | 892SS |  |  |  |  |  |  |  |  |  |  |  |  |  |  |
| 892 | 1.22 | **PROCESSO GUSA 309** |  | 65d | 2026-06-30 | 2026-09-29 |  | 2026-04-23 | 2026-09-22 | 109d | 0d |  |  |  |  |  |  |  |  | Ter 22/09/26 | Ter 23/06/26 |
| 893 | 1.22.1 | **CP-F0009-0309-MB-P-00001** |  | 25d | 2026-06-30 | 2026-08-04 |  | 2026-06-23 | 2026-07-28 | 25d | 25d | 15d | CP - Critério de Projeto | 03 - REDUÇÃO | 09 - FORNO TECNORED | P - PROCESSO GUSA | A4 (210x297mm) | 10 | Readequação das utilidades no prédio do forno | Ter 28/07/26 | Ter 23/06/26 |
| 894 | 1.22.1.1 | Emissão inicial |  | 15d | 2026-06-30 | 2026-07-21 | 19 | 2026-06-23 | 2026-07-14 | 15d | 25d | 0d |  |  |  |  |  |  |  | Ter 14/07/26 |  |
| 895 | 1.22.1.2 | Avaliação do Cliente |  | 5d | 2026-07-21 | 2026-07-28 | 894 | 2026-07-14 | 2026-07-21 | 5d | 25d | 0d |  |  |  |  |  |  |  | Ter 21/07/26 |  |
| 896 | 1.22.1.3 | Atendimento de Comentário |  | 3d | 2026-07-28 | 2026-07-31 | 895 | 2026-07-21 | 2026-07-24 | 3d | 25d | 0d |  |  |  |  |  |  |  | Sex 24/07/26 |  |
| 897 | 1.22.1.4 | Aprovação |  | 2d | 2026-07-31 | 2026-08-04 | 896 | 2026-07-24 | 2026-07-28 | 2d | 25d |  |  |  |  |  |  |  |  | Ter 28/07/26 |  |
| 898 | 1.22.2 | **FG-F0009-0300-MB-P-00001** |  | 20d | 2026-06-30 | 2026-07-28 |  | 2026-06-23 | 2026-07-21 | 20d | 28d |  | FG - Fluxogramas / P | 03 - REDUÇÃO | 00 - GERAL | P - PROCESSO GUSA | A1 (841x594mm) | 01 | Revisão dos fluxogramas | Ter 21/07/26 | Ter 23/06/26 |
| 899 | 1.22.2.1 | Emissão inicial |  | 10d | 2026-06-30 | 2026-07-14 | 19 | 2026-06-23 | 2026-07-07 | 10d | 28d | 0d |  |  |  |  |  |  |  | Ter 07/07/26 |  |
| 900 | 1.22.2.2 | Avaliação do Cliente |  | 5d | 2026-07-14 | 2026-07-21 | 899 | 2026-07-07 | 2026-07-14 | 5d | 28d | 0d |  |  |  |  |  |  |  | Ter 14/07/26 |  |
| 901 | 1.22.2.3 | Atendimento de Comentário |  | 3d | 2026-07-21 | 2026-07-24 | 900 | 2026-07-14 | 2026-07-17 | 3d | 50d | 0d |  |  |  |  |  |  |  | Sex 17/07/26 |  |
| 902 | 1.22.2.4 | Aprovação |  | 2d | 2026-07-24 | 2026-07-28 | 901 | 2026-07-17 | 2026-07-21 | 2d | 50d |  |  |  |  |  |  |  |  | Ter 21/07/26 |  |
| 903 | 1.22.3 | **FG-F0009-0300-MB-P-00002** |  | 20d | 2026-06-30 | 2026-07-28 |  | 2026-06-23 | 2026-07-21 | 20d | 50d |  | FG - Fluxogramas / P | 03 - REDUÇÃO | 00 - GERAL | P - PROCESSO GUSA | A1 (841x594mm) | 01 | Revisão dos fluxogramas | Ter 21/07/26 | Ter 23/06/26 |
| 904 | 1.22.3.1 | Emissão inicial |  | 10d | 2026-06-30 | 2026-07-14 | 900SF | 2026-06-23 | 2026-07-07 | 10d | 50d | 0d |  |  |  |  |  |  |  | Ter 07/07/26 |  |
| 905 | 1.22.3.2 | Avaliação do Cliente |  | 5d | 2026-07-14 | 2026-07-21 | 904 | 2026-07-07 | 2026-07-14 | 5d | 50d | 0d |  |  |  |  |  |  |  | Ter 14/07/26 |  |
| 906 | 1.22.3.3 | Atendimento de Comentário |  | 3d | 2026-07-21 | 2026-07-24 | 905 | 2026-07-14 | 2026-07-17 | 3d | 50d | 0d |  |  |  |  |  |  |  | Sex 17/07/26 |  |
| 907 | 1.22.3.4 | Aprovação |  | 2d | 2026-07-24 | 2026-07-28 | 906 | 2026-07-17 | 2026-07-21 | 2d | 50d |  |  |  |  |  |  |  |  | Ter 21/07/26 |  |
| 908 | 1.22.4 | **FG-F0009-0302-MB-P-00001** |  | 22d | 2026-06-30 | 2026-07-30 |  | 2026-06-23 | 2026-07-23 | 22d | 28d | 0d | FG - Fluxogramas / P | 03 - REDUÇÃO | 02 - CARREGAMENTO | P - PROCESSO GUSA | A1 (841x594mm) | 01 | Revisão da instrumentação | Qui 23/07/26 | Ter 23/06/26 |
| 909 | 1.22.4.1 | Emissão inicial |  | 10d | 2026-06-30 | 2026-07-14 | 900SF | 2026-06-23 | 2026-07-07 | 10d | 28d | 0d |  |  |  |  |  |  |  | Ter 07/07/26 |  |
| 910 | 1.22.4.2 | Avaliação do Cliente |  | 5d | 2026-07-14 | 2026-07-21 | 909 | 2026-07-07 | 2026-07-14 | 5d | 28d | 0d |  |  |  |  |  |  |  | Ter 14/07/26 |  |
| 911 | 1.22.4.3 | Atendimento de Comentário |  | 5d | 2026-07-21 | 2026-07-28 | 910 | 2026-07-14 | 2026-07-21 | 5d | 28d | 0d |  |  |  |  |  |  |  | Ter 21/07/26 |  |
| 912 | 1.22.4.4 | Aprovação |  | 2d | 2026-07-28 | 2026-07-30 | 911 | 2026-07-21 | 2026-07-23 | 2d | 28d |  |  |  |  |  |  |  |  | Qui 23/07/26 |  |

Notes:
- 886: Título: PLANILHA QUANTITATIVO AUTOMAÇÃO
- 893: Título: CRITÉRIO DE PROJETO DE UTILIDADES
- 898: Título: PFD - PROCESSO GERAL
- 903: Título: PFD - DISTRIBUICAO N2
- 908: Título: P&ID -CARREGAMENTO FORNO CORREIA PRINCIPAL ATÉ SILOS PROCESSOS

| ID | WBS | Task | Duration | Start | Finish | Predecessors | Baseline start | Baseline finish | Baseline duration | Total slack | Free slack | Tipo de documento | Área | Sub-área | Disciplina | Formato | Quantidade | Agrupamento Cecal | Término_LB_R0 | Início_LB_R0 |
| --- | --- | --- | --- | --- | --- | --- | --- | --- | --- | --- | --- | --- | --- | --- | --- | --- | --- | --- | --- | --- |
| 913 | 1.22.5 | **FG-F0009-0302-MB-P-00002** | 20d | 2026-06-30 | 2026-07-28 |  | 2026-06-23 | 2026-07-21 | 20d | 50d |  | FG - Fluxogramas / P | 03 - REDUÇÃO | 02 - CARREGAMENTO | P - PROCESSO GUSA | A1 (841x594mm) | 01 | Revisão da instrumentação | Ter 21/07/26 | Ter 23/06/26 |
| 914 | 1.22.5.1 | Emissão inicial | 10d | 2026-06-30 | 2026-07-14 | 900SF | 2026-06-23 | 2026-07-07 | 10d | 50d | 0d |  |  |  |  |  |  |  | Ter 07/07/26 |  |
| 915 | 1.22.5.2 | Avaliação do Cliente | 5d | 2026-07-14 | 2026-07-21 | 914 | 2026-07-07 | 2026-07-14 | 5d | 50d | 0d |  |  |  |  |  |  |  | Ter 14/07/26 |  |
| 916 | 1.22.5.3 | Atendimento de Comentário | 3d | 2026-07-21 | 2026-07-24 | 915 | 2026-07-14 | 2026-07-17 | 3d | 50d | 0d |  |  |  |  |  |  |  | Sex 17/07/26 |  |
| 917 | 1.22.5.4 | Aprovação | 2d | 2026-07-24 | 2026-07-28 | 916 | 2026-07-17 | 2026-07-21 | 2d | 50d |  |  |  |  |  |  |  |  | Ter 21/07/26 |  |
| 918 | 1.22.6 | **FG-F0009-0302-MB-P-00003** | 22d | 2026-07-14 | 2026-08-13 |  | 2026-07-07 | 2026-08-06 | 22d | 28d |  | FG - Fluxogramas / P | 03 - REDUÇÃO | 02 - CARREGAMENTO | P - PROCESSO GUSA | A1 (841x594mm) | 01 | Revisão da instrumentação | Qui 06/08/26 | Ter 07/07/26 |
| 919 | 1.22.6.1 | Emissão inicial | 10d | 2026-07-14 | 2026-07-28 | 899 | 2026-07-07 | 2026-07-21 | 10d | 28d | 0d |  |  |  |  |  |  |  | Ter 21/07/26 |  |
| 920 | 1.22.6.2 | Avaliação do Cliente | 5d | 2026-07-28 | 2026-08-04 | 919 | 2026-07-21 | 2026-07-28 | 5d | 28d | 0d |  |  |  |  |  |  |  | Ter 28/07/26 |  |
| 921 | 1.22.6.3 | Atendimento de Comentário | 5d | 2026-08-04 | 2026-08-11 | 920 | 2026-07-28 | 2026-08-04 | 5d | 38d | 0d |  |  |  |  |  |  |  | Ter 04/08/26 |  |
| 922 | 1.22.6.4 | Aprovação | 2d | 2026-08-11 | 2026-08-13 | 921 | 2026-08-04 | 2026-08-06 | 2d | 38d |  |  |  |  |  |  |  |  | Qui 06/08/26 |  |
| 923 | 1.22.7 | **FG-F0009-0302-MB-P-00004** | 20d | 2026-07-14 | 2026-08-11 |  | 2026-07-07 | 2026-08-04 | 20d | 40d |  | FG - Fluxogramas / P | 03 - REDUÇÃO | 02 - CARREGAMENTO | P - PROCESSO GUSA | A1 (841x594mm) | 01 | Revisão da instrumentação | Ter 04/08/26 | Ter 07/07/26 |
| 924 | 1.22.7.1 | Emissão inicial | 10d | 2026-07-14 | 2026-07-28 | 920SF | 2026-07-07 | 2026-07-21 | 10d | 40d | 0d |  |  |  |  |  |  |  | Ter 21/07/26 |  |
| 925 | 1.22.7.2 | Avaliação do Cliente | 5d | 2026-07-28 | 2026-08-04 | 924 | 2026-07-21 | 2026-07-28 | 5d | 40d | 0d |  |  |  |  |  |  |  | Ter 28/07/26 |  |
| 926 | 1.22.7.3 | Atendimento de Comentário | 3d | 2026-08-04 | 2026-08-07 | 925 | 2026-07-28 | 2026-07-31 | 3d | 40d | 0d |  |  |  |  |  |  |  | Sex 31/07/26 |  |
| 927 | 1.22.7.4 | Aprovação | 2d | 2026-08-07 | 2026-08-11 | 926 | 2026-07-31 | 2026-08-04 | 2d | 40d |  |  |  |  |  |  |  |  | Ter 04/08/26 |  |
| 928 | 1.22.8 | **FG-F0009-0302-MB-P-00005** | 20d | 2026-07-14 | 2026-08-11 |  | 2026-07-07 | 2026-08-04 | 20d | 40d |  | FG - Fluxogramas / P | 03 - REDUÇÃO | 02 - CARREGAMENTO | P - PROCESSO GUSA | A1 (841x594mm) | 01 | Revisão da instrumentação | Ter 04/08/26 | Ter 07/07/26 |
| 929 | 1.22.8.1 | Emissão inicial | 10d | 2026-07-14 | 2026-07-28 | 920SF | 2026-07-07 | 2026-07-21 | 10d | 40d | 0d |  |  |  |  |  |  |  | Ter 21/07/26 |  |
| 930 | 1.22.8.2 | Avaliação do Cliente | 5d | 2026-07-28 | 2026-08-04 | 929 | 2026-07-21 | 2026-07-28 | 5d | 40d | 0d |  |  |  |  |  |  |  | Ter 28/07/26 |  |
| 931 | 1.22.8.3 | Atendimento de Comentário | 3d | 2026-08-04 | 2026-08-07 | 930 | 2026-07-28 | 2026-07-31 | 3d | 40d | 0d |  |  |  |  |  |  |  | Sex 31/07/26 |  |
| 932 | 1.22.8.4 | Aprovação | 2d | 2026-08-07 | 2026-08-11 | 931 | 2026-07-31 | 2026-08-04 | 2d | 40d |  |  |  |  |  |  |  |  | Ter 04/08/26 |  |
| 933 | 1.22.9 | **FG-F0009-0302-MB-P-00006** | 22d | 2026-07-14 | 2026-08-13 |  | 2026-07-07 | 2026-08-06 | 22d | 28d |  | FG - Fluxogramas / P | 03 - REDUÇÃO | 02 - CARREGAMENTO | P - PROCESSO GUSA | A1 (841x594mm) | 01 | Revisão da instrumentação | Qui 06/08/26 | Ter 07/07/26 |
| 934 | 1.22.9.1 | Emissão inicial | 10d | 2026-07-14 | 2026-07-28 | 920SF | 2026-07-07 | 2026-07-21 | 10d | 28d | 0d |  |  |  |  |  |  |  | Ter 21/07/26 |  |
| 935 | 1.22.9.2 | Avaliação do Cliente | 5d | 2026-07-28 | 2026-08-04 | 934 | 2026-07-21 | 2026-07-28 | 5d | 38d | 0d |  |  |  |  |  |  |  | Ter 28/07/26 |  |
| 936 | 1.22.9.3 | Atendimento de Comentário | 5d | 2026-08-04 | 2026-08-11 | 935 | 2026-07-28 | 2026-08-04 | 5d | 38d | 0d |  |  |  |  |  |  |  | Ter 04/08/26 |  |
| 937 | 1.22.9.4 | Aprovação | 2d | 2026-08-11 | 2026-08-13 | 936 | 2026-08-04 | 2026-08-06 | 2d | 38d |  |  |  |  |  |  |  |  | Qui 06/08/26 |  |

Notes:
- 913: Título: P&ID - SILO PROCESSO ATÉ SILO BUFFER FORNO 1
- 918: Título: P&ID - SILO PROCESSO ATÉ SILO BUFFER FORNO 2
- 923: Título: P&ID - SILO BUFFER ATÉ FORNO LADO FORNO 1
- 928: Título: P&ID - SILO BUFFER ATÉ FORNO LADO FORNO 2
- 933: Título: P&ID - SISTEMA DE EQUALIZAÇÃO FORNO NITROGENIO E GAS DE PROCESSO

| ID | WBS | Task | Duration | Start | Finish | Predecessors | Baseline start | Baseline finish | Baseline duration | Total slack | Free slack | Tipo de documento | Área | Sub-área | Disciplina | Título | Formato | Quantidade | Agrupamento Cecal | Término_LB_R0 | Início_LB_R0 |
| --- | --- | --- | --- | --- | --- | --- | --- | --- | --- | --- | --- | --- | --- | --- | --- | --- | --- | --- | --- | --- | --- |
| 938 | 1.22.10 | **FG-F0009-0302-MB-P-00007** | 20d | 2026-07-28 | 2026-08-25 |  | 2026-07-21 | 2026-08-18 | 20d | 28d |  | FG - Fluxogramas / P | 03 - REDUÇÃO | 02 - CARREGAMENTO | P - PROCESSO GUSA | PFD - SISTEMA CARREGAMENTO | A1 (841x594mm) | 01 | Revisão dos fluxogramas | Ter 18/08/26 | Ter 21/07/26 |
| 939 | 1.22.10.1 | Emissão inicial | 10d | 2026-07-28 | 2026-08-11 | 934 | 2026-07-21 | 2026-08-04 | 10d | 28d | 0d |  |  |  |  |  |  |  |  | Ter 04/08/26 |  |
| 940 | 1.22.10.2 | Avaliação do Cliente | 5d | 2026-08-11 | 2026-08-18 | 939 | 2026-08-04 | 2026-08-11 | 5d | 28d | 0d |  |  |  |  |  |  |  |  | Ter 11/08/26 |  |
| 941 | 1.22.10.3 | Atendimento de Comentário | 3d | 2026-08-18 | 2026-08-21 | 940 | 2026-08-11 | 2026-08-14 | 3d | 30d | 0d |  |  |  |  |  |  |  |  | Sex 14/08/26 |  |
| 942 | 1.22.10.4 | Aprovação | 2d | 2026-08-21 | 2026-08-25 | 941 | 2026-08-14 | 2026-08-18 | 2d | 30d |  |  |  |  |  |  |  |  |  | Ter 18/08/26 |  |
| 943 | 1.22.11 | **FG-F0009-0302-MB-P-00008** | 20d | 2026-07-28 | 2026-08-25 |  | 2026-07-21 | 2026-08-18 | 20d | 30d |  | FG - Fluxogramas / P | 03 - REDUÇÃO | 02 - CARREGAMENTO | P - PROCESSO GUSA | FLUXOGRAMA DE PROCESSO | A4 (210x297mm) | 01 | Revisão dos fluxogramas | Ter 18/08/26 | Ter 21/07/26 |
| 944 | 1.22.11.1 | Emissão inicial | 10d | 2026-07-28 | 2026-08-11 | 940SF | 2026-07-21 | 2026-08-04 | 10d | 30d | 0d |  |  |  |  |  |  |  |  | Ter 04/08/26 |  |
| 945 | 1.22.11.2 | Avaliação do Cliente | 5d | 2026-08-11 | 2026-08-18 | 944 | 2026-08-04 | 2026-08-11 | 5d | 30d | 0d |  |  |  |  |  |  |  |  | Ter 11/08/26 |  |
| 946 | 1.22.11.3 | Atendimento de Comentário | 3d | 2026-08-18 | 2026-08-21 | 945 | 2026-08-11 | 2026-08-14 | 3d | 30d | 0d |  |  |  |  |  |  |  |  | Sex 14/08/26 |  |
| 947 | 1.22.11.4 | Aprovação | 2d | 2026-08-21 | 2026-08-25 | 946 | 2026-08-14 | 2026-08-18 | 2d | 30d |  |  |  |  |  |  |  |  |  | Ter 18/08/26 |  |
| 948 | 1.22.12 | **FG-F0009-0302-MB-P-00009** | 20d | 2026-07-28 | 2026-08-25 |  | 2026-07-21 | 2026-08-18 | 20d | 30d |  | FG - Fluxogramas / P | 03 - REDUÇÃO | 02 - CARREGAMENTO | P - PROCESSO GUSA | FLUXOGRAMA DE PROCESSO | A4 (210x297mm) | 01 | Revisão dos fluxogramas | Ter 18/08/26 | Ter 21/07/26 |
| 949 | 1.22.12.1 | Emissão inicial | 10d | 2026-07-28 | 2026-08-11 | 940SF | 2026-07-21 | 2026-08-04 | 10d | 30d | 0d |  |  |  |  |  |  |  |  | Ter 04/08/26 |  |
| 950 | 1.22.12.2 | Avaliação do Cliente | 5d | 2026-08-11 | 2026-08-18 | 949 | 2026-08-04 | 2026-08-11 | 5d | 30d | 0d |  |  |  |  |  |  |  |  | Ter 11/08/26 |  |
| 951 | 1.22.12.3 | Atendimento de Comentário | 3d | 2026-08-18 | 2026-08-21 | 950 | 2026-08-11 | 2026-08-14 | 3d | 30d | 0d |  |  |  |  |  |  |  |  | Sex 14/08/26 |  |
| 952 | 1.22.12.4 | Aprovação | 2d | 2026-08-21 | 2026-08-25 | 951 | 2026-08-14 | 2026-08-18 | 2d | 30d |  |  |  |  |  |  |  |  |  | Ter 18/08/26 |  |
| 953 | 1.22.13 | **FG-F0009-0302-MB-P-00010** | 22d | 2026-07-28 | 2026-08-27 |  | 2026-07-21 | 2026-08-20 | 22d | 28d |  | FG - Fluxogramas / P | 03 - REDUÇÃO | 02 - CARREGAMENTO | P - PROCESSO GUSA | FLUXOGRAMA DE PROCESSO | A4 (210x297mm) | 01 | Revisão dos fluxogramas | Qui 20/08/26 | Ter 21/07/26 |
| 954 | 1.22.13.1 | Emissão inicial | 10d | 2026-07-28 | 2026-08-11 | 940SF | 2026-07-21 | 2026-08-04 | 10d | 28d | 0d |  |  |  |  |  |  |  |  | Ter 04/08/26 |  |
| 955 | 1.22.13.2 | Avaliação do Cliente | 5d | 2026-08-11 | 2026-08-18 | 954 | 2026-08-04 | 2026-08-11 | 5d | 28d | 0d |  |  |  |  |  |  |  |  | Ter 11/08/26 |  |
| 956 | 1.22.13.3 | Atendimento de Comentário | 5d | 2026-08-18 | 2026-08-25 | 955 | 2026-08-11 | 2026-08-18 | 5d | 28d | 0d |  |  |  |  |  |  |  |  | Ter 18/08/26 |  |
| 957 | 1.22.13.4 | Aprovação | 2d | 2026-08-25 | 2026-08-27 | 956 | 2026-08-18 | 2026-08-20 | 2d | 28d |  |  |  |  |  |  |  |  |  | Qui 20/08/26 |  |
| 958 | 1.22.14 | **FG-F0009-0302-MB-P-00011** | 20d | 2026-07-28 | 2026-08-25 |  | 2026-07-21 | 2026-08-18 | 20d | 30d |  | FG - Fluxogramas / P | 03 - REDUÇÃO | 02 - CARREGAMENTO | P - PROCESSO GUSA | FLUXOGRAMA DE PROCESSO | A4 (210x297mm) | 01 | Revisão dos fluxogramas | Ter 18/08/26 | Ter 21/07/26 |
| 959 | 1.22.14.1 | Emissão inicial | 10d | 2026-07-28 | 2026-08-11 | 940SF | 2026-07-21 | 2026-08-04 | 10d | 30d | 0d |  |  |  |  |  |  |  |  | Ter 04/08/26 |  |
| 960 | 1.22.14.2 | Avaliação do Cliente | 5d | 2026-08-11 | 2026-08-18 | 959 | 2026-08-04 | 2026-08-11 | 5d | 30d | 0d |  |  |  |  |  |  |  |  | Ter 11/08/26 |  |
| 961 | 1.22.14.3 | Atendimento de Comentário | 3d | 2026-08-18 | 2026-08-21 | 960 | 2026-08-11 | 2026-08-14 | 3d | 30d | 0d |  |  |  |  |  |  |  |  | Sex 14/08/26 |  |
| 962 | 1.22.14.4 | Aprovação | 2d | 2026-08-21 | 2026-08-25 | 961 | 2026-08-14 | 2026-08-18 | 2d | 30d |  |  |  |  |  |  |  |  |  | Ter 18/08/26 |  |

| ID | WBS | Task | Duration | Start | Finish | Predecessors | Baseline start | Baseline finish | Baseline duration | Total slack | Free slack | Tipo de documento | Área | Sub-área | Disciplina | Título | Formato | Quantidade | Agrupamento Cecal | Término_LB_R0 | Início_LB_R0 |
| --- | --- | --- | --- | --- | --- | --- | --- | --- | --- | --- | --- | --- | --- | --- | --- | --- | --- | --- | --- | --- | --- |
| 963 | 1.22.15 | **FG-F0009-0307-MB-P-00001** | 20d | 2026-06-30 | 2026-07-28 |  | 2026-06-23 | 2026-07-21 | 20d | 0d |  | FG - Fluxogramas / P | 03 - REDUÇÃO | 07 - RESFRIAMENTO | P - PROCESSO GUSA | P&ID - SISTEMA DE REFRIGERAÇÃO HOT VALVES SECCIONAMENTO | A1 (841x594mm) | 01 | Revisão da instrumentação | Ter 21/07/26 | Ter 23/06/26 |
| 964 | 1.22.15.1 | Emissão inicial | 10d | 2026-06-30 | 2026-07-14 | 19 | 2026-06-23 | 2026-07-07 | 10d | 0d |  |  |  |  |  |  |  |  |  | Ter 07/07/26 |  |
| 965 | 1.22.15.2 | Avaliação do Cliente | 5d | 2026-07-14 | 2026-07-21 | 964 | 2026-07-07 | 2026-07-14 | 5d | 0d |  |  |  |  |  |  |  |  |  | Ter 14/07/26 |  |
| 966 | 1.22.15.3 | Atendimento de Comentário | 3d | 2026-07-21 | 2026-07-24 | 965 | 2026-07-14 | 2026-07-17 | 3d | 50d | 0d |  |  |  |  |  |  |  |  | Sex 17/07/26 |  |
| 967 | 1.22.15.4 | Aprovação | 2d | 2026-07-24 | 2026-07-28 | 966 | 2026-07-17 | 2026-07-21 | 2d | 50d |  |  |  |  |  |  |  |  |  | Ter 21/07/26 |  |
| 968 | 1.22.16 | **FG-F0009-0307-MB-P-00002** | 20d | 2026-06-30 | 2026-07-28 |  | 2026-06-23 | 2026-07-21 | 20d | 50d |  | FG - Fluxogramas / P | 03 - REDUÇÃO | 07 - RESFRIAMENTO | P - PROCESSO GUSA | PFD - SISTEMA DE RESFRIAMENTO | A1 (841x594mm) | 01 | Revisão dos fluxogramas | Ter 21/07/26 | Ter 23/06/26 |
| 969 | 1.22.16.1 | Emissão inicial | 10d | 2026-06-30 | 2026-07-14 | 965SF | 2026-06-23 | 2026-07-07 | 10d | 50d | 0d |  |  |  |  |  |  |  |  | Ter 07/07/26 |  |
| 970 | 1.22.16.2 | Avaliação do Cliente | 5d | 2026-07-14 | 2026-07-21 | 969 | 2026-07-07 | 2026-07-14 | 5d | 50d | 0d |  |  |  |  |  |  |  |  | Ter 14/07/26 |  |
| 971 | 1.22.16.3 | Atendimento de Comentário | 3d | 2026-07-21 | 2026-07-24 | 970 | 2026-07-14 | 2026-07-17 | 3d | 50d | 0d |  |  |  |  |  |  |  |  | Sex 17/07/26 |  |
| 972 | 1.22.16.4 | Aprovação | 2d | 2026-07-24 | 2026-07-28 | 971 | 2026-07-17 | 2026-07-21 | 2d | 50d |  |  |  |  |  |  |  |  |  | Ter 21/07/26 |  |
| 973 | 1.22.17 | **FG-F0009-0309-MB-P-00001** | 22d | 2026-06-30 | 2026-07-30 |  | 2026-06-23 | 2026-07-23 | 22d | 48d |  | FG - Fluxogramas / P | 03 - REDUÇÃO | 09 - FORNO TECNORED | P - PROCESSO GUSA | P&ID - CIRCUITO PRIMÁRIO E SECUNDÁRIO FORNO 1 E FORNO 2 | A1 (841x594mm) | 01 | Revisão da instrumentação | Qui 23/07/26 | Ter 23/06/26 |
| 974 | 1.22.17.1 | Emissão inicial | 10d | 2026-06-30 | 2026-07-14 | 965SF | 2026-06-23 | 2026-07-07 | 10d | 48d | 0d |  |  |  |  |  |  |  |  | Ter 07/07/26 |  |
| 975 | 1.22.17.2 | Avaliação do Cliente | 5d | 2026-07-14 | 2026-07-21 | 974 | 2026-07-07 | 2026-07-14 | 5d | 48d | 0d |  |  |  |  |  |  |  |  | Ter 14/07/26 |  |
| 976 | 1.22.17.3 | Atendimento de Comentário | 5d | 2026-07-21 | 2026-07-28 | 975 | 2026-07-14 | 2026-07-21 | 5d | 48d | 0d |  |  |  |  |  |  |  |  | Ter 21/07/26 |  |
| 977 | 1.22.17.4 | Aprovação | 2d | 2026-07-28 | 2026-07-30 | 976 | 2026-07-21 | 2026-07-23 | 2d | 48d |  |  |  |  |  |  |  |  |  | Qui 23/07/26 |  |
| 978 | 1.22.18 | **FG-F0009-0309-MB-P-00002** | 20d | 2026-06-30 | 2026-07-28 |  | 2026-06-23 | 2026-07-21 | 20d | 50d |  | FG - Fluxogramas / P | 03 - REDUÇÃO | 09 - FORNO TECNORED | P - PROCESSO GUSA | P&ID - CIRCUITO REFRIGERAÇÃO COOLING BOX | A1 (841x594mm) | 01 | Revisão da instrumentação | Ter 21/07/26 | Ter 23/06/26 |
| 979 | 1.22.18.1 | Emissão inicial | 10d | 2026-06-30 | 2026-07-14 | 965SF | 2026-06-23 | 2026-07-07 | 10d | 50d | 0d |  |  |  |  |  |  |  |  | Ter 07/07/26 |  |
| 980 | 1.22.18.2 | Avaliação do Cliente | 5d | 2026-07-14 | 2026-07-21 | 979 | 2026-07-07 | 2026-07-14 | 5d | 50d | 0d |  |  |  |  |  |  |  |  | Ter 14/07/26 |  |
| 981 | 1.22.18.3 | Atendimento de Comentário | 3d | 2026-07-21 | 2026-07-24 | 980 | 2026-07-14 | 2026-07-17 | 3d | 50d | 0d |  |  |  |  |  |  |  |  | Sex 17/07/26 |  |
| 982 | 1.22.18.4 | Aprovação | 2d | 2026-07-24 | 2026-07-28 | 981 | 2026-07-17 | 2026-07-21 | 2d | 50d |  |  |  |  |  |  |  |  |  | Ter 21/07/26 |  |
| 983 | 1.22.19 | **FG-F0009-0309-MB-P-00003** | 20d | 2026-06-30 | 2026-07-28 |  | 2026-06-23 | 2026-07-21 | 20d | 50d |  | FG - Fluxogramas / P | 03 - REDUÇÃO | 09 - FORNO TECNORED | P - PROCESSO GUSA | P&ID - CIRCUITO REFRIGERAÇÃO VENTANEIRAS | A1 (841x594mm) | 01 | Revisão da instrumentação | Ter 21/07/26 | Ter 23/06/26 |
| 984 | 1.22.19.1 | Emissão inicial | 10d | 2026-06-30 | 2026-07-14 | 965SF | 2026-06-23 | 2026-07-07 | 10d | 50d | 0d |  |  |  |  |  |  |  |  | Ter 07/07/26 |  |
| 985 | 1.22.19.2 | Avaliação do Cliente | 5d | 2026-07-14 | 2026-07-21 | 984 | 2026-07-07 | 2026-07-14 | 5d | 50d | 0d |  |  |  |  |  |  |  |  | Ter 14/07/26 |  |
| 986 | 1.22.19.3 | Atendimento de Comentário | 3d | 2026-07-21 | 2026-07-24 | 985 | 2026-07-14 | 2026-07-17 | 3d | 50d | 0d |  |  |  |  |  |  |  |  | Sex 17/07/26 |  |
| 987 | 1.22.19.4 | Aprovação | 2d | 2026-07-24 | 2026-07-28 | 986 | 2026-07-17 | 2026-07-21 | 2d | 50d |  |  |  |  |  |  |  |  |  | Ter 21/07/26 |  |

| ID | WBS | Task | Duration | Start | Finish | Predecessors | Baseline start | Baseline finish | Baseline duration | Total slack | Free slack | Tipo de documento | Área | Sub-área | Disciplina | Título | Formato | Quantidade | Agrupamento Cecal | Término_LB_R0 | Início_LB_R0 |
| --- | --- | --- | --- | --- | --- | --- | --- | --- | --- | --- | --- | --- | --- | --- | --- | --- | --- | --- | --- | --- | --- |
| 988 | 1.22.20 | **FG-F0009-0309-MB-P-00004** | 20d | 2026-06-30 | 2026-07-28 |  | 2026-06-23 | 2026-07-21 | 20d | 0d |  | FG - Fluxogramas / P | 03 - REDUÇÃO | 09 - FORNO TECNORED | P - PROCESSO GUSA | P&ID - CIRCUITO REFRIGERAÇÃO STAVES LATERAIS | A1 (841x594mm) | 01 | Revisão da instrumentação | Ter 21/07/26 | Ter 23/06/26 |
| 989 | 1.22.20.1 | Emissão inicial | 10d | 2026-06-30 | 2026-07-14 | 965SF | 2026-06-23 | 2026-07-07 | 10d | 0d |  |  |  |  |  |  |  |  |  | Ter 07/07/26 |  |
| 990 | 1.22.20.2 | Avaliação do Cliente | 5d | 2026-07-14 | 2026-07-21 | 989 | 2026-07-07 | 2026-07-14 | 5d | 50d | 0d |  |  |  |  |  |  |  |  | Ter 14/07/26 |  |
| 991 | 1.22.20.3 | Atendimento de Comentário | 3d | 2026-07-21 | 2026-07-24 | 990 | 2026-07-14 | 2026-07-17 | 3d | 50d | 0d |  |  |  |  |  |  |  |  | Sex 17/07/26 |  |
| 992 | 1.22.20.4 | Aprovação | 2d | 2026-07-24 | 2026-07-28 | 991 | 2026-07-17 | 2026-07-21 | 2d | 50d |  |  |  |  |  |  |  |  |  | Ter 21/07/26 |  |
| 993 | 1.22.21 | **FG-F0009-0309-MB-P-00005** | 20d | 2026-07-14 | 2026-08-11 |  | 2026-07-07 | 2026-08-04 | 20d | 0d |  | FG - Fluxogramas / P | 03 - REDUÇÃO | 09 - FORNO TECNORED | P - PROCESSO GUSA | P&ID - CIRCUITO REFRIGERAÇÃO STAVES FERRO FUNDIDO | A1 (841x594mm) | 01 | Revisão da instrumentação | Ter 04/08/26 | Ter 07/07/26 |
| 994 | 1.22.21.1 | Emissão inicial | 10d | 2026-07-14 | 2026-07-28 | 989 | 2026-07-07 | 2026-07-21 | 10d | 0d |  |  |  |  |  |  |  |  |  | Ter 21/07/26 |  |
| 995 | 1.22.21.2 | Avaliação do Cliente | 5d | 2026-07-28 | 2026-08-04 | 994 | 2026-07-21 | 2026-07-28 | 5d | 0d |  |  |  |  |  |  |  |  |  | Ter 28/07/26 |  |
| 996 | 1.22.21.3 | Atendimento de Comentário | 3d | 2026-08-04 | 2026-08-07 | 995 | 2026-07-28 | 2026-07-31 | 3d | 40d | 0d |  |  |  |  |  |  |  |  | Sex 31/07/26 |  |
| 997 | 1.22.21.4 | Aprovação | 2d | 2026-08-07 | 2026-08-11 | 996 | 2026-07-31 | 2026-08-04 | 2d | 40d |  |  |  |  |  |  |  |  |  | Ter 04/08/26 |  |
| 998 | 1.22.22 | **FG-F0009-0309-MB-P-00006** | 20d | 2026-07-14 | 2026-08-11 |  | 2026-07-07 | 2026-08-04 | 20d | 40d |  | FG - Fluxogramas / P | 03 - REDUÇÃO | 09 - FORNO TECNORED | P - PROCESSO GUSA | P&ID - CIRCUITO REFRIGERAÇÃO CURTAIN-WALL | A1 (841x594mm) | 01 | Revisão da instrumentação | Ter 04/08/26 | Ter 07/07/26 |
| 999 | 1.22.22.1 | Emissão inicial | 10d | 2026-07-14 | 2026-07-28 | 995SF | 2026-07-07 | 2026-07-21 | 10d | 40d | 0d |  |  |  |  |  |  |  |  | Ter 21/07/26 |  |
| 1000 | 1.22.22.2 | Avaliação do Cliente | 5d | 2026-07-28 | 2026-08-04 | 999 | 2026-07-21 | 2026-07-28 | 5d | 40d | 0d |  |  |  |  |  |  |  |  | Ter 28/07/26 |  |
| 1001 | 1.22.22.3 | Atendimento de Comentário | 3d | 2026-08-04 | 2026-08-07 | 1000 | 2026-07-28 | 2026-07-31 | 3d | 40d | 0d |  |  |  |  |  |  |  |  | Sex 31/07/26 |  |
| 1002 | 1.22.22.4 | Aprovação | 2d | 2026-08-07 | 2026-08-11 | 1001 | 2026-07-31 | 2026-08-04 | 2d | 40d |  |  |  |  |  |  |  |  |  | Ter 04/08/26 |  |
| 1003 | 1.22.23 | **FG-F0009-0309-MB-P-00007** | 20d | 2026-07-14 | 2026-08-11 |  | 2026-07-07 | 2026-08-04 | 20d | 40d |  | FG - Fluxogramas / P | 03 - REDUÇÃO | 09 - FORNO TECNORED | P - PROCESSO GUSA | P&ID - CIRCUITO REFRIGERAÇÃO CADINHO | A1 (841x594mm) | 01 | Revisão da instrumentação | Ter 04/08/26 | Ter 07/07/26 |
| 1004 | 1.22.23.1 | Emissão inicial | 10d | 2026-07-14 | 2026-07-28 | 995SF | 2026-07-07 | 2026-07-21 | 10d | 40d | 0d |  |  |  |  |  |  |  |  | Ter 21/07/26 |  |
| 1005 | 1.22.23.2 | Avaliação do Cliente | 5d | 2026-07-28 | 2026-08-04 | 1004 | 2026-07-21 | 2026-07-28 | 5d | 40d | 0d |  |  |  |  |  |  |  |  | Ter 28/07/26 |  |
| 1006 | 1.22.23.3 | Atendimento de Comentário | 3d | 2026-08-04 | 2026-08-07 | 1005 | 2026-07-28 | 2026-07-31 | 3d | 40d | 0d |  |  |  |  |  |  |  |  | Sex 31/07/26 |  |
| 1007 | 1.22.23.4 | Aprovação | 2d | 2026-08-07 | 2026-08-11 | 1006 | 2026-07-31 | 2026-08-04 | 2d | 40d |  |  |  |  |  |  |  |  |  | Ter 04/08/26 |  |
| 1008 | 1.22.24 | **FG-F0009-0309-MB-P-00008** | 20d | 2026-07-14 | 2026-08-11 |  | 2026-07-07 | 2026-08-04 | 20d | 12d |  | FG - Fluxogramas / P | 03 - REDUÇÃO | 09 - FORNO TECNORED | P - PROCESSO GUSA | P&ID - CIRCUITO REFRIGERAÇÃO SOLEIRA | A1 (841x594mm) | 01 | Revisão da instrumentação | Ter 04/08/26 | Ter 07/07/26 |
| 1009 | 1.22.24.1 | Emissão inicial | 10d | 2026-07-14 | 2026-07-28 | 995SF | 2026-07-07 | 2026-07-21 | 10d | 12d | 0d |  |  |  |  |  |  |  |  | Ter 21/07/26 |  |
| 1010 | 1.22.24.2 | Avaliação do Cliente | 5d | 2026-07-28 | 2026-08-04 | 1009 | 2026-07-21 | 2026-07-28 | 5d | 40d | 0d |  |  |  |  |  |  |  |  | Ter 28/07/26 |  |
| 1011 | 1.22.24.3 | Atendimento de Comentário | 3d | 2026-08-04 | 2026-08-07 | 1010 | 2026-07-28 | 2026-07-31 | 3d | 40d | 0d |  |  |  |  |  |  |  |  | Sex 31/07/26 |  |
| 1012 | 1.22.24.4 | Aprovação | 2d | 2026-08-07 | 2026-08-11 | 1011 | 2026-07-31 | 2026-08-04 | 2d | 40d |  |  |  |  |  |  |  |  |  | Ter 04/08/26 |  |

| ID | WBS | Task | Duration | Start | Finish | Predecessors | Baseline start | Baseline finish | Baseline duration | Total slack | Free slack | Tipo de documento | Área | Sub-área | Disciplina | Formato | Quantidade | Agrupamento Cecal | Término_LB_R0 | Início_LB_R0 |
| --- | --- | --- | --- | --- | --- | --- | --- | --- | --- | --- | --- | --- | --- | --- | --- | --- | --- | --- | --- | --- |
| 1013 | 1.22.25 | **FG-F0009-0309-MB-P-00009** | 20d | 2026-07-14 | 2026-08-11 |  | 2026-07-07 | 2026-08-04 | 20d | 40d |  | FG - Fluxogramas / P | 03 - REDUÇÃO | 09 - FORNO TECNORED | P - PROCESSO GUSA | A1 (841x594mm) | 01 | Revisão da instrumentação | Ter 04/08/26 | Ter 07/07/26 |
| 1014 | 1.22.25.1 | Emissão inicial | 10d | 2026-07-14 | 2026-07-28 | 995SF | 2026-07-07 | 2026-07-21 | 10d | 40d | 0d |  |  |  |  |  |  |  | Ter 21/07/26 |  |
| 1015 | 1.22.25.2 | Avaliação do Cliente | 5d | 2026-07-28 | 2026-08-04 | 1014 | 2026-07-21 | 2026-07-28 | 5d | 40d | 0d |  |  |  |  |  |  |  | Ter 28/07/26 |  |
| 1016 | 1.22.25.3 | Atendimento de Comentário | 3d | 2026-08-04 | 2026-08-07 | 1015 | 2026-07-28 | 2026-07-31 | 3d | 40d | 0d |  |  |  |  |  |  |  | Sex 31/07/26 |  |
| 1017 | 1.22.25.4 | Aprovação | 2d | 2026-08-07 | 2026-08-11 | 1016 | 2026-07-31 | 2026-08-04 | 2d | 40d |  |  |  |  |  |  |  |  | Ter 04/08/26 |  |
| 1018 | 1.22.26 | **FG-F0009-0309-MB-P-00010** | 20d | 2026-07-14 | 2026-08-11 |  | 2026-07-07 | 2026-08-04 | 20d | 0d |  | FG - Fluxogramas / P | 03 - REDUÇÃO | 09 - FORNO TECNORED | P - PROCESSO GUSA | A1 (841x594mm) | 01 | Revisão dos fluxogramas | Ter 04/08/26 | Ter 07/07/26 |
| 1019 | 1.22.26.1 | Emissão inicial | 10d | 2026-07-14 | 2026-07-28 | 995SF | 2026-07-07 | 2026-07-21 | 10d | 0d |  |  |  |  |  |  |  |  | Ter 21/07/26 |  |
| 1020 | 1.22.26.2 | Avaliação do Cliente | 5d | 2026-07-28 | 2026-08-04 | 1019 | 2026-07-21 | 2026-07-28 | 5d | 13d | 0d |  |  |  |  |  |  |  | Ter 28/07/26 |  |
| 1021 | 1.22.26.3 | Atendimento de Comentário | 3d | 2026-08-04 | 2026-08-07 | 1020 | 2026-07-28 | 2026-07-31 | 3d | 13d | 0d |  |  |  |  |  |  |  | Sex 31/07/26 |  |
| 1022 | 1.22.26.4 | Aprovação | 2d | 2026-08-07 | 2026-08-11 | 1021 | 2026-07-31 | 2026-08-04 | 2d | 13d |  |  |  |  |  |  |  |  | Ter 04/08/26 |  |
| 1023 | 1.22.27 | **LL-F0009-0309-MB-P-00001** | 25d | 2026-07-28 | 2026-09-01 |  | 2026-07-21 | 2026-08-25 | 25d | 10d |  | LL - Lista de Linhas | 03 - REDUÇÃO | 09 - FORNO TECNORED | P - PROCESSO GUSA | A4 (210x297mm) | 10 | Readequação das utilidades no prédio do forno | Ter 25/08/26 | Ter 21/07/26 |
| 1024 | 1.22.27.1 | Emissão inicial | 15d | 2026-07-28 | 2026-08-18 | 1019 | 2026-07-21 | 2026-08-11 | 15d | 10d | 0d |  |  |  |  |  |  |  | Ter 11/08/26 |  |
| 1025 | 1.22.27.2 | Avaliação do Cliente | 5d | 2026-08-18 | 2026-08-25 | 1024 | 2026-08-11 | 2026-08-18 | 5d | 25d | 0d |  |  |  |  |  |  |  | Ter 18/08/26 |  |
| 1026 | 1.22.27.3 | Atendimento de Comentário | 3d | 2026-08-25 | 2026-08-28 | 1025 | 2026-08-18 | 2026-08-21 | 3d | 25d | 0d |  |  |  |  |  |  |  | Sex 21/08/26 |  |
| 1027 | 1.22.27.4 | Aprovação | 2d | 2026-08-28 | 2026-09-01 | 1026 | 2026-08-21 | 2026-08-25 | 2d | 25d |  |  |  |  |  |  |  |  | Ter 25/08/26 |  |
| 1028 | 1.22.28 | **MC-F0009-0302-MB-P-00001** | 25d | 2026-07-28 | 2026-09-01 |  | 2026-07-21 | 2026-08-25 | 25d | 25d |  | MC - Memória de Cálculo | 03 - REDUÇÃO | 02 - CARREGAMENTO | P - PROCESSO GUSA | A4 (210x297mm) | 10 | Revisão dos balanços de massa e energia utilidades | Ter 25/08/26 | Ter 21/07/26 |
| 1029 | 1.22.28.1 | Emissão inicial | 15d | 2026-07-28 | 2026-08-18 | 1019 | 2026-07-21 | 2026-08-11 | 15d | 25d | 0d |  |  |  |  |  |  |  | Ter 11/08/26 |  |
| 1030 | 1.22.28.2 | Avaliação do Cliente | 5d | 2026-08-18 | 2026-08-25 | 1029 | 2026-08-11 | 2026-08-18 | 5d | 25d | 0d |  |  |  |  |  |  |  | Ter 18/08/26 |  |
| 1031 | 1.22.28.3 | Atendimento de Comentário | 3d | 2026-08-25 | 2026-08-28 | 1030 | 2026-08-18 | 2026-08-21 | 3d | 25d | 0d |  |  |  |  |  |  |  | Sex 21/08/26 |  |
| 1032 | 1.22.28.4 | Aprovação | 2d | 2026-08-28 | 2026-09-01 | 1031 | 2026-08-21 | 2026-08-25 | 2d | 25d |  |  |  |  |  |  |  |  | Ter 25/08/26 |  |
| 1033 | 1.22.29 | **MC-F0009-0309-MB-P-00001** | 28d | 2026-07-28 | 2026-09-04 |  | 2026-07-21 | 2026-08-28 | 28d | 22d |  | MC - Memória de Cálculo | 03 - REDUÇÃO | 09 - FORNO TECNORED | P - PROCESSO GUSA | A4 (210x297mm) | 10 | Revisão dos balanços de massa e energia utilidades | Sex 28/08/26 | Ter 21/07/26 |
| 1034 | 1.22.29.1 | Emissão inicial | 15d | 2026-07-28 | 2026-08-18 | 1019 | 2026-07-21 | 2026-08-11 | 15d | 22d | 0d |  |  |  |  |  |  |  | Ter 11/08/26 |  |
| 1035 | 1.22.29.2 | Avaliação do Cliente | 5d | 2026-08-18 | 2026-08-25 | 1034 | 2026-08-11 | 2026-08-18 | 5d | 22d | 0d |  |  |  |  |  |  |  | Ter 18/08/26 |  |
| 1036 | 1.22.29.3 | Atendimento de Comentário | 3d | 2026-08-25 | 2026-08-28 | 1035 | 2026-08-18 | 2026-08-21 | 3d | 22d | 0d |  |  |  |  |  |  |  | Sex 21/08/26 |  |
| 1037 | 1.22.29.4 | Aprovação | 5d | 2026-08-28 | 2026-09-04 | 1036 | 2026-08-21 | 2026-08-28 | 5d | 22d |  |  |  |  |  |  |  |  | Sex 28/08/26 |  |

Notes:
- 1013: Título: P&ID - FORNO TECNORED
- 1018: Título: PFD - FORNO PROPRIO
- 1023: Título: ÍNDICE DE LINHAS
- 1028: Título: MEMORIAL DE CÁLCULO - PRÉ DIMENSIONAMENTO CAPACIDADE SISTEMA CARREGAMENTO
- 1033: Título: MEMORIAL DE CÁLCULO - ÁGUA INDUSTRIAL E ÁGUA DE PROCESSO (SPRAY DA CARGA)

| ID | WBS | Task | Duration | Start | Finish | Predecessors | Baseline start | Baseline finish | Baseline duration | Total slack | Free slack | Tipo de documento | Área | Sub-área | Disciplina | Formato | Quantidade | Agrupamento Cecal | Término_LB_R0 | Início_LB_R0 |
| --- | --- | --- | --- | --- | --- | --- | --- | --- | --- | --- | --- | --- | --- | --- | --- | --- | --- | --- | --- | --- |
| 1038 | 1.22.30 | **MC-F0009-0309-MB-P-00002** | 25d | 2026-07-28 | 2026-09-01 |  | 2026-07-21 | 2026-08-25 | 25d | 25d |  | MC - Memória de Cálculo | 03 - REDUÇÃO | 09 - FORNO TECNORED | P - PROCESSO GUSA | A4 (210x297mm) | 10 | Revisão dos balanços de massa e energia utilidades | Ter 25/08/26 | Ter 21/07/26 |
| 1039 | 1.22.30.1 | Emissão inicial | 15d | 2026-07-28 | 2026-08-18 | 1019 | 2026-07-21 | 2026-08-11 | 15d | 25d | 0d |  |  |  |  |  |  |  | Ter 11/08/26 |  |
| 1040 | 1.22.30.2 | Avaliação do Cliente | 5d | 2026-08-18 | 2026-08-25 | 1039 | 2026-08-11 | 2026-08-18 | 5d | 25d | 0d |  |  |  |  |  |  |  | Ter 18/08/26 |  |
| 1041 | 1.22.30.3 | Atendimento de Comentário | 3d | 2026-08-25 | 2026-08-28 | 1040 | 2026-08-18 | 2026-08-21 | 3d | 25d | 0d |  |  |  |  |  |  |  | Sex 21/08/26 |  |
| 1042 | 1.22.30.4 | Aprovação | 2d | 2026-08-28 | 2026-09-01 | 1041 | 2026-08-21 | 2026-08-25 | 2d | 25d |  |  |  |  |  |  |  |  | Ter 25/08/26 |  |
| 1043 | 1.22.31 | **MC-F0009-0309-MB-P-00003** | 25d | 2026-07-28 | 2026-09-01 |  | 2026-07-21 | 2026-08-25 | 25d | 25d |  | MC - Memória de Cálculo | 03 - REDUÇÃO | 09 - FORNO TECNORED | P - PROCESSO GUSA | A4 (210x297mm) | 10 | Revisão dos balanços de massa e energia utilidades | Ter 25/08/26 | Ter 21/07/26 |
| 1044 | 1.22.31.1 | Emissão inicial | 15d | 2026-07-28 | 2026-08-18 | 1019 | 2026-07-21 | 2026-08-11 | 15d | 25d | 0d |  |  |  |  |  |  |  | Ter 11/08/26 |  |
| 1045 | 1.22.31.2 | Avaliação do Cliente | 5d | 2026-08-18 | 2026-08-25 | 1044 | 2026-08-11 | 2026-08-18 | 5d | 25d | 0d |  |  |  |  |  |  |  | Ter 18/08/26 |  |
| 1046 | 1.22.31.3 | Atendimento de Comentário | 3d | 2026-08-25 | 2026-08-28 | 1045 | 2026-08-18 | 2026-08-21 | 3d | 25d | 0d |  |  |  |  |  |  |  | Sex 21/08/26 |  |
| 1047 | 1.22.31.4 | Aprovação | 2d | 2026-08-28 | 2026-09-01 | 1046 | 2026-08-21 | 2026-08-25 | 2d | 25d |  |  |  |  |  |  |  |  | Ter 25/08/26 |  |
| 1048 | 1.22.32 | **MC-F0009-0309-MB-P-00004** | 25d | 2026-07-28 | 2026-09-01 |  | 2026-07-21 | 2026-08-25 | 25d | 0d |  | MC - Memória de Cálculo | 03 - REDUÇÃO | 09 - FORNO TECNORED | P - PROCESSO GUSA | A4 (210x297mm) | 10 | Revisão dos balanços de massa e energia utilidades | Ter 25/08/26 | Ter 21/07/26 |
| 1049 | 1.22.32.1 | Emissão inicial | 15d | 2026-07-28 | 2026-08-18 | 1019 | 2026-07-21 | 2026-08-11 | 15d | 0d |  |  |  |  |  |  |  |  | Ter 11/08/26 |  |
| 1050 | 1.22.32.2 | Avaliação do Cliente | 5d | 2026-08-18 | 2026-08-25 | 1049 | 2026-08-11 | 2026-08-18 | 5d | 25d | 0d |  |  |  |  |  |  |  | Ter 18/08/26 |  |
| 1051 | 1.22.32.3 | Atendimento de Comentário | 3d | 2026-08-25 | 2026-08-28 | 1050 | 2026-08-18 | 2026-08-21 | 3d | 25d | 0d |  |  |  |  |  |  |  | Sex 21/08/26 |  |
| 1052 | 1.22.32.4 | Aprovação | 2d | 2026-08-28 | 2026-09-01 | 1051 | 2026-08-21 | 2026-08-25 | 2d | 25d |  |  |  |  |  |  |  |  | Ter 25/08/26 |  |
| 1053 | 1.22.33 | **MC-F0009-0309-MB-P-00005** | 25d | 2026-08-18 | 2026-09-22 |  | 2026-08-11 | 2026-09-15 | 25d | 10d |  | MC - Memória de Cálculo | 03 - REDUÇÃO | 09 - FORNO TECNORED | P - PROCESSO GUSA | A4 (210x297mm) | 10 | Revisão dos balanços de massa e energia utilidades | Ter 15/09/26 | Ter 11/08/26 |
| 1054 | 1.22.33.1 | Emissão inicial | 15d | 2026-08-18 | 2026-09-08 | 1049 | 2026-08-11 | 2026-09-01 | 15d | 10d | 0d |  |  |  |  |  |  |  | Ter 01/09/26 |  |
| 1055 | 1.22.33.2 | Avaliação do Cliente | 5d | 2026-09-08 | 2026-09-15 | 1054 | 2026-09-01 | 2026-09-08 | 5d | 10d | 0d |  |  |  |  |  |  |  | Ter 08/09/26 |  |
| 1056 | 1.22.33.3 | Atendimento de Comentário | 3d | 2026-09-15 | 2026-09-18 | 1055 | 2026-09-08 | 2026-09-11 | 3d | 10d | 0d |  |  |  |  |  |  |  | Sex 11/09/26 |  |
| 1057 | 1.22.33.4 | Aprovação | 2d | 2026-09-18 | 2026-09-22 | 1056 | 2026-09-11 | 2026-09-15 | 2d | 10d |  |  |  |  |  |  |  |  | Ter 15/09/26 |  |
| 1058 | 1.22.34 | **MC-F0009-0309-MB-P-00006** | 25d | 2026-08-18 | 2026-09-22 |  | 2026-08-11 | 2026-09-15 | 25d | 10d |  | MC - Memória de Cálculo | 03 - REDUÇÃO | 09 - FORNO TECNORED | P - PROCESSO GUSA | A4 (210x297mm) | 10 | Revisão dos balanços de massa e energia utilidades | Ter 15/09/26 | Ter 11/08/26 |
| 1059 | 1.22.34.1 | Emissão inicial | 15d | 2026-08-18 | 2026-09-08 | 1049 | 2026-08-11 | 2026-09-01 | 15d | 10d | 0d |  |  |  |  |  |  |  | Ter 01/09/26 |  |
| 1060 | 1.22.34.2 | Avaliação do Cliente | 5d | 2026-09-08 | 2026-09-15 | 1059 | 2026-09-01 | 2026-09-08 | 5d | 10d | 0d |  |  |  |  |  |  |  | Ter 08/09/26 |  |
| 1061 | 1.22.34.3 | Atendimento de Comentário | 3d | 2026-09-15 | 2026-09-18 | 1060 | 2026-09-08 | 2026-09-11 | 3d | 10d | 0d |  |  |  |  |  |  |  | Sex 11/09/26 |  |
| 1062 | 1.22.34.4 | Aprovação | 2d | 2026-09-18 | 2026-09-22 | 1061 | 2026-09-11 | 2026-09-15 | 2d | 10d |  |  |  |  |  |  |  |  | Ter 15/09/26 |  |

Notes:
- 1038: Título: MEMORIAL DE CÁLCULO - PRÉ DIMENSIONAMENTO DE ÁGUA DE RESFRIAMENTO
- 1043: Título: BALANÇO TÉRMICO - ÁGUA DE RESFRIAMENTO
- 1048: Título: MEMORIAL DE CÁLCULO - PRÉ DIMENSIONAMENTO DE NITROGÊNIO
- 1053: Título: MEMORIAL DE CÁLCULO - PRÉ DIMENSIONAMENTO DE OXIGÊNIO
- 1058: Título: MEMORIAL DE CÁLCULO - DISTRIBUIÇÃO DE ÁGUA POTÁVEL

| ID | WBS | Task | Type | Duration | Start | Finish | Predecessors | Complete | Baseline start | Baseline finish | Baseline duration | Total slack | Free slack | Tipo de documento | Área | Sub-área | Disciplina | Título | Formato | Quantidade | Agrupamento Cecal | Término_LB_R0 | Início_LB_R0 |
| --- | --- | --- | --- | --- | --- | --- | --- | --- | --- | --- | --- | --- | --- | --- | --- | --- | --- | --- | --- | --- | --- | --- | --- |
| 1063 | 1.22.35 | **MC-F0009-0309-MB-P-00007** |  | 28d | 2026-08-18 | 2026-09-25 |  |  | 2026-08-11 | 2026-09-18 | 28d | 0d |  | MC - Memória de Cálculo | 03 - REDUÇÃO | 09 - FORNO TECNORED | P - PROCESSO GUSA | MEMORIAL DE CÁLCULO - AR COMPRIMIDO | A4 (210x297mm) | 10 | Revisão dos balanços de massa e energia utilidades | Sex 18/09/26 | Ter 11/08/26 |
| 1064 | 1.22.35.1 | Emissão inicial |  | 15d | 2026-08-18 | 2026-09-08 | 1049 |  | 2026-08-11 | 2026-09-01 | 15d | 0d |  |  |  |  |  |  |  |  |  | Ter 01/09/26 |  |
| 1065 | 1.22.35.2 | Avaliação do Cliente |  | 5d | 2026-09-08 | 2026-09-15 | 1064 |  | 2026-09-01 | 2026-09-08 | 5d | 7d | 0d |  |  |  |  |  |  |  |  | Ter 08/09/26 |  |
| 1066 | 1.22.35.3 | Atendimento de Comentário |  | 3d | 2026-09-15 | 2026-09-18 | 1065 |  | 2026-09-08 | 2026-09-11 | 3d | 7d | 0d |  |  |  |  |  |  |  |  | Sex 11/09/26 |  |
| 1067 | 1.22.35.4 | Aprovação |  | 5d | 2026-09-18 | 2026-09-25 | 1066 |  | 2026-09-11 | 2026-09-18 | 5d | 7d |  |  |  |  |  |  |  |  |  | Sex 18/09/26 |  |
| 1068 | 1.22.36 | **MD-F0009-0302-MB-P-00001** |  | 25d | 2026-08-25 | 2026-09-29 |  |  | 2026-04-23 | 2026-09-22 | 25d | 5d |  | MD - Memorial Descritivo | 03 - REDUÇÃO | 02 - CARREGAMENTO | P - PROCESSO GUSA | MEMORIAL DESCRITIVO SISTEMA DE CARREGAMENTO | A4 (210x297mm) | 10 | Revisão do sistema de carregamento | Ter 22/09/26 | Qua 19/08/26 |
| 1069 | 1.22.36.1 | Emissão inicial |  | 15d | 2026-08-25 | 2026-09-15 | 155 |  | 2026-04-23 | 2026-09-08 | 15d | 5d | 0d |  |  |  |  |  |  |  |  | Ter 08/09/26 |  |
| 1070 | 1.22.36.2 | Avaliação do Cliente |  | 5d | 2026-09-15 | 2026-09-22 | 1069 |  | 2026-05-14 | 2026-09-15 | 5d | 5d | 0d |  |  |  |  |  |  |  |  | Ter 15/09/26 |  |
| 1071 | 1.22.36.3 | Atendimento de Comentário |  | 3d | 2026-09-22 | 2026-09-25 | 1070 |  | 2026-05-21 | 2026-09-18 | 3d | 5d | 0d |  |  |  |  |  |  |  |  | Sex 18/09/26 |  |
| 1072 | 1.22.36.4 | Aprovação |  | 2d | 2026-09-25 | 2026-09-29 | 1071 |  | 2026-05-26 | 2026-09-22 | 2d | 5d |  |  |  |  |  |  |  |  |  | Ter 22/09/26 |  |
| 1073 | 1.22.37 | **MD-F0009-0309-MB-P-00001** |  | 25d | 2026-08-25 | 2026-09-29 |  |  | 2026-08-19 | 2026-09-22 | 25d | 5d |  | MD - Memorial Descritivo | 03 - REDUÇÃO | 09 - FORNO TECNORED | P - PROCESSO GUSA | MEMORIAL DESCRITIVO DE PROCESSO | A4 (210x297mm) | 10 | Revisão dos fluxogramas | Ter 22/09/26 | Qua 19/08/26 |
| 1074 | 1.22.37.1 | Emissão inicial |  | 15d | 2026-08-25 | 2026-09-15 | 155 |  | 2026-08-19 | 2026-09-08 | 15d | 5d | 0d |  |  |  |  |  |  |  |  | Ter 08/09/26 |  |
| 1075 | 1.22.37.2 | Avaliação do Cliente |  | 5d | 2026-09-15 | 2026-09-22 | 1074 |  | 2026-09-09 | 2026-09-15 | 5d | 5d | 0d |  |  |  |  |  |  |  |  | Ter 15/09/26 |  |
| 1076 | 1.22.37.3 | Atendimento de Comentário |  | 3d | 2026-09-22 | 2026-09-25 | 1075 |  | 2026-09-16 | 2026-09-18 | 3d | 5d | 0d |  |  |  |  |  |  |  |  | Sex 18/09/26 |  |
| 1077 | 1.22.37.4 | Aprovação |  | 2d | 2026-09-25 | 2026-09-29 | 1076 |  | 2026-09-21 | 2026-09-22 | 2d | 5d |  |  |  |  |  |  |  |  |  | Ter 22/09/26 |  |
| 1078 | 1.22.38 | **MD-F0009-0309-MB-P-00002** |  | 25d | 2026-08-25 | 2026-09-29 |  |  | 2026-08-19 | 2026-09-22 | 25d | 5d |  | MD - Memorial Descritivo | 03 - REDUÇÃO | 09 - FORNO TECNORED | P - PROCESSO GUSA | MEMORIAL DESCRITIVO DE PROCESSO FORNO | A4 (210x297mm) | 10 | Revisão dos fluxogramas | Ter 22/09/26 | Qua 19/08/26 |
| 1079 | 1.22.38.1 | Emissão inicial |  | 15d | 2026-08-25 | 2026-09-15 | 155 |  | 2026-08-19 | 2026-09-08 | 15d | 5d | 0d |  |  |  |  |  |  |  |  | Ter 08/09/26 |  |
| 1080 | 1.22.38.2 | Avaliação do Cliente |  | 5d | 2026-09-15 | 2026-09-22 | 1079 |  | 2026-09-09 | 2026-09-15 | 5d | 5d | 0d |  |  |  |  |  |  |  |  | Ter 15/09/26 |  |
| 1081 | 1.22.38.3 | Atendimento de Comentário |  | 3d | 2026-09-22 | 2026-09-25 | 1080 |  | 2026-09-16 | 2026-09-18 | 3d | 5d | 0d |  |  |  |  |  |  |  |  | Sex 18/09/26 |  |
| 1082 | 1.22.38.4 | Aprovação |  | 2d | 2026-09-25 | 2026-09-29 | 1081 |  | 2026-09-21 | 2026-09-22 | 2d | 5d |  |  |  |  |  |  |  |  |  | Ter 22/09/26 |  |
| 1083 | 1.22.39 | **RT-F0009-0309-MB-P-00001** |  | 20d | 2026-08-25 | 2026-09-22 | 893 |  | 2026-08-19 | 2026-09-15 | 20d | 10d |  | RT - Relatório Técnico | 03 - REDUÇÃO | 09 - FORNO TECNORED | P - PROCESSO GUSA | ANALISE DO PRELIMINAR ESTRUTURAL DA CARCAÇA FORNO | A4 (210x297mm) | 15 | Revisão do projeto do forno - carcaça e refratário | Ter 15/09/26 | Qua 19/08/26 |
| 1084 | 1.22.39.1 | Emissão inicial |  | 10d | 2026-08-25 | 2026-09-08 | 155 |  | 2026-08-19 | 2026-09-01 | 10d | 10d | 0d |  |  |  |  |  |  |  |  | Ter 01/09/26 |  |
| 1085 | 1.22.39.2 | Avaliação do Cliente |  | 5d | 2026-09-08 | 2026-09-15 | 1084 |  | 2026-09-02 | 2026-09-08 | 5d | 10d | 0d |  |  |  |  |  |  |  |  | Ter 08/09/26 |  |
| 1086 | 1.22.39.3 | Atendimento de Comentário |  | 3d | 2026-09-15 | 2026-09-18 | 1085 |  | 2026-09-09 | 2026-09-11 | 3d | 10d | 0d |  |  |  |  |  |  |  |  | Sex 11/09/26 |  |
| 1087 | 1.22.39.4 | Aprovação |  | 2d | 2026-09-18 | 2026-09-22 | 1086 |  | 2026-09-14 | 2026-09-15 | 2d | 10d |  |  |  |  |  |  |  |  |  | Ter 15/09/26 |  |
| 1088 | 4.2.1.24 | DOCUMENTOS QUE NÃO SERÃO REVISADOS | manual | 1d | 2026-04-23 A | 2026-04-23 A | 1089SS | 100% |  |  |  |  |  |  |  |  |  |  |  |  |  |  |  |

| ID | WBS | Task | Duration | Start | Finish | Complete | Baseline start | Baseline finish | Baseline duration | Término_LB_R0 | Início_LB_R0 | Disciplina |
| --- | --- | --- | --- | --- | --- | --- | --- | --- | --- | --- | --- | --- |
| 1089 | 1.24 | **DOCUMENTOS QUE NÃO SERÃO REVISADOS** | 1d? | 2026-04-23 A | 2026-04-23 A | 100% | 2026-04-23 | 2026-04-23 | 1d? | Qui 23/04/26 | Qui 23/04/26 |  |
| 1090 | 1.24.1 | AG-F0005-0309-MB-A-00003 | 1d? | 2026-04-23 A | 2026-04-23 A | 100% | 2026-04-23 | 2026-04-23 | 1d? | Qui 23/04/26 |  | NÃO REVISADOS |
| 1091 | 1.24.2 | AG-F0005-0309-MB-A-00004 | 1d? | 2026-04-23 A | 2026-04-23 A | 100% | 2026-04-23 | 2026-04-23 | 1d? | Qui 23/04/26 |  | NÃO REVISADOS |
| 1092 | 1.24.3 | AG-F0005-0309-MB-A-00005 | 1d? | 2026-04-23 A | 2026-04-23 A | 100% | 2026-04-23 | 2026-04-23 | 1d? | Qui 23/04/26 |  |  |
| 1093 | 1.24.4 | MC-F0005-0309-MB-C-00001 | 1d? | 2026-04-23 A | 2026-04-23 A | 100% | 2026-04-23 | 2026-04-23 | 1d? | Qui 23/04/26 |  | NÃO REVISADOS |
| 1094 | 1.24.5 | MC-F0005-0309-MB-C-00002 | 1d? | 2026-04-23 A | 2026-04-23 A | 100% | 2026-04-23 | 2026-04-23 | 1d? | Qui 23/04/26 |  | NÃO REVISADOS |
| 1095 | 1.24.6 | MC-F0005-0309-MB-C-00003 | 1d? | 2026-04-23 A | 2026-04-23 A | 100% | 2026-04-23 | 2026-04-23 | 1d? | Qui 23/04/26 |  | NÃO REVISADOS |
| 1096 | 1.24.7 | MC-F0005-0309-MB-C-00004 | 1d? | 2026-04-23 A | 2026-04-23 A | 100% | 2026-04-23 | 2026-04-23 | 1d? | Qui 23/04/26 |  | NÃO REVISADOS |
| 1097 | 1.24.8 | MC-F0005-0309-MB-C-00005 | 1d? | 2026-04-23 A | 2026-04-23 A | 100% | 2026-04-23 | 2026-04-23 | 1d? | Qui 23/04/26 |  | NÃO REVISADOS |
| 1098 | 1.24.9 | OI-F0005-0309-MB-G-00001 | 1d? | 2026-04-23 A | 2026-04-23 A | 100% | 2026-04-23 | 2026-04-23 | 1d? | Qui 23/04/26 |  | NÃO REVISADOS |
| 1099 | 1.24.10 | OI-F0005-0309-MB-G-00002 | 1d? | 2026-04-23 A | 2026-04-23 A | 100% | 2026-04-23 | 2026-04-23 | 1d? | Qui 23/04/26 |  | NÃO REVISADOS |
| 1100 | 1.24.11 | PX-F0005-0309-MB-G-00001 | 1d? | 2026-04-23 A | 2026-04-23 A | 100% | 2026-04-23 | 2026-04-23 | 1d? | Qui 23/04/26 |  | NÃO REVISADOS |
| 1101 | 1.24.12 | MD-F0005-0309-MB-G-00001 | 1d? | 2026-04-23 A | 2026-04-23 A | 100% | 2026-04-23 | 2026-04-23 | 1d? | Qui 23/04/26 |  | NÃO REVISADOS |
| 1102 | 1.24.13 | FD-F0005-0309-MB-J-00001 | 1d? | 2026-04-23 A | 2026-04-23 A | 100% | 2026-04-23 | 2026-04-23 | 1d? | Qui 23/04/26 |  | NÃO REVISADOS |
| 1103 | 1.24.14 | FD-F0005-0309-MB-J-00010 | 1d? | 2026-04-23 A | 2026-04-23 A | 100% | 2026-04-23 | 2026-04-23 | 1d? | Qui 23/04/26 |  | NÃO REVISADOS |
| 1104 | 1.24.15 | FD-F0005-0309-MB-J-00011 | 1d? | 2026-04-23 A | 2026-04-23 A | 100% | 2026-04-23 | 2026-04-23 | 1d? | Qui 23/04/26 |  | NÃO REVISADOS |
| 1105 | 1.24.16 | FD-F0005-0309-MB-J-00014 | 1d? | 2026-04-23 A | 2026-04-23 A | 100% | 2026-04-23 | 2026-04-23 | 1d? | Qui 23/04/26 |  | NÃO REVISADOS |
| 1106 | 1.24.17 | FD-F0005-0309-MB-J-00015 | 1d? | 2026-04-23 A | 2026-04-23 A | 100% | 2026-04-23 | 2026-04-23 | 1d? | Qui 23/04/26 |  | NÃO REVISADOS |
| 1107 | 1.24.18 | FD-F0005-0309-MB-J-00017 | 1d? | 2026-04-23 A | 2026-04-23 A | 100% | 2026-04-23 | 2026-04-23 | 1d? | Qui 23/04/26 |  | NÃO REVISADOS |
| 1108 | 1.24.19 | FD-F0005-0309-MB-J-00022 | 1d? | 2026-04-23 A | 2026-04-23 A | 100% | 2026-04-23 | 2026-04-23 | 1d? | Qui 23/04/26 |  | NÃO REVISADOS |
| 1109 | 1.24.20 | FD-F0005-0309-MB-J-00023 | 1d? | 2026-04-23 A | 2026-04-23 A | 100% | 2026-04-23 | 2026-04-23 | 1d? | Qui 23/04/26 |  | NÃO REVISADOS |
| 1110 | 1.24.21 | FD-F0005-0309-MB-J-00024 | 1d? | 2026-04-23 A | 2026-04-23 A | 100% | 2026-04-23 | 2026-04-23 | 1d? | Qui 23/04/26 |  | NÃO REVISADOS |
| 1111 | 1.24.22 | ET-F0005-0309-MB-J-00001 | 1d? | 2026-04-23 A | 2026-04-23 A | 100% | 2026-04-23 | 2026-04-23 | 1d? | Qui 23/04/26 |  | NÃO REVISADOS |
| 1112 | 1.24.23 | ET-F0005-0309-MB-J-00002 | 1d? | 2026-04-23 A | 2026-04-23 A | 100% | 2026-04-23 | 2026-04-23 | 1d? | Qui 23/04/26 |  | NÃO REVISADOS |
| 1113 | 1.24.24 | AC-F0005-0309-MB-J-00001 | 1d? | 2026-04-23 A | 2026-04-23 A | 100% | 2026-04-23 | 2026-04-23 | 1d? | Qui 23/04/26 |  | NÃO REVISADOS |
| 1114 | 1.24.25 | FD-F0005-0300-MB-J-00001 | 1d? | 2026-04-23 A | 2026-04-23 A | 100% | 2026-04-23 | 2026-04-23 | 1d? | Qui 23/04/26 |  | NÃO REVISADOS |
| 1115 | 1.24.26 | FD-F0005-0300-MB-J-00002 | 1d? | 2026-04-23 A | 2026-04-23 A | 100% | 2026-04-23 | 2026-04-23 | 1d? | Qui 23/04/26 |  | NÃO REVISADOS |
| 1116 | 1.24.27 | FD-F0005-0300-MB-J-00003 | 1d? | 2026-04-23 A | 2026-04-23 A | 100% | 2026-04-23 | 2026-04-23 | 1d? | Qui 23/04/26 |  | NÃO REVISADOS |
| 1117 | 1.24.28 | FD-F0005-0300-MB-J-00004 | 1d? | 2026-04-23 A | 2026-04-23 A | 100% | 2026-04-23 | 2026-04-23 | 1d? | Qui 23/04/26 |  | NÃO REVISADOS |
| 1118 | 1.24.29 | FD-F0005-0300-MB-J-00005 | 1d? | 2026-04-23 A | 2026-04-23 A | 100% | 2026-04-23 | 2026-04-23 | 1d? | Qui 23/04/26 |  | NÃO REVISADOS |
| 1119 | 1.24.30 | FD-F0005-0300-MB-J-00006 | 1d? | 2026-04-23 A | 2026-04-23 A | 100% | 2026-04-23 | 2026-04-23 | 1d? | Qui 23/04/26 |  | NÃO REVISADOS |
| 1120 | 1.24.31 | FD-F0005-0300-MB-J-00007 | 1d? | 2026-04-23 A | 2026-04-23 A | 100% | 2026-04-23 | 2026-04-23 | 1d? | Qui 23/04/26 |  | NÃO REVISADOS |
| 1121 | 1.24.32 | FD-F0005-0300-MB-J-00008 | 1d? | 2026-04-23 A | 2026-04-23 A | 100% | 2026-04-23 | 2026-04-23 | 1d? | Qui 23/04/26 |  | NÃO REVISADOS |
| 1122 | 1.24.33 | FD-F0005-0300-MB-J-00009 | 1d? | 2026-04-23 A | 2026-04-23 A | 100% | 2026-04-23 | 2026-04-23 | 1d? | Qui 23/04/26 |  | NÃO REVISADOS |
| 1123 | 1.24.34 | AG-F0005-0309-MB-G-00001 | 1d? | 2026-04-23 A | 2026-04-23 A | 100% | 2026-04-23 | 2026-04-23 | 1d? | Qui 23/04/26 |  | NÃO REVISADOS |
| 1124 | 1.24.35 | AG-F0005-0309-MB-G-00002 | 1d? | 2026-04-23 A | 2026-04-23 A | 100% | 2026-04-23 | 2026-04-23 | 1d? | Qui 23/04/26 |  | NÃO REVISADOS |
| 1125 | 1.24.36 | AG-F0005-0309-MB-G-00003 | 1d? | 2026-04-23 A | 2026-04-23 A | 100% | 2026-04-23 | 2026-04-23 | 1d? | Qui 23/04/26 |  | NÃO REVISADOS |
| 1126 | 1.24.37 | RT-F0005-0302-MB-L-00002 | 1d? | 2026-04-23 A | 2026-04-23 A | 100% | 2026-04-23 | 2026-04-23 | 1d? | Qui 23/04/26 |  | NÃO REVISADOS |
| 1127 | 1.24.38 | RT-F0005-0302-MB-L-00003 | 1d? | 2026-04-23 A | 2026-04-23 A | 100% | 2026-04-23 | 2026-04-23 | 1d? | Qui 23/04/26 |  | NÃO REVISADOS |
| 1128 | 1.24.39 | RT-F0005-0302-MB-L-00004 | 1d? | 2026-04-23 A | 2026-04-23 A | 100% | 2026-04-23 | 2026-04-23 | 1d? | Qui 23/04/26 |  | NÃO REVISADOS |
| 1129 | 1.24.40 | RT-F0005-0302-MB-L-00005 | 1d? | 2026-04-23 A | 2026-04-23 A | 100% | 2026-04-23 | 2026-04-23 | 1d? | Qui 23/04/26 |  | NÃO REVISADOS |
| 1130 | 1.24.41 | RT-F0005-0302-MB-L-00006 | 1d? | 2026-04-23 A | 2026-04-23 A | 100% | 2026-04-23 | 2026-04-23 | 1d? | Qui 23/04/26 |  | NÃO REVISADOS |
| 1131 | 1.24.42 | RT-F0005-0302-MB-L-00007 | 1d? | 2026-04-23 A | 2026-04-23 A | 100% | 2026-04-23 | 2026-04-23 | 1d? | Qui 23/04/26 |  | NÃO REVISADOS |
| 1132 | 1.24.43 | DT-F0005-0309-MB-L-00020 | 1d? | 2026-04-23 A | 2026-04-23 A | 100% | 2026-04-23 | 2026-04-23 | 1d? | Qui 23/04/26 |  | NÃO REVISADOS |
| 1133 | 1.24.44 | OI-F0005-0309-MB-M-00001 | 1d? | 2026-04-23 A | 2026-04-23 A | 100% | 2026-04-23 | 2026-04-23 | 1d? | Qui 23/04/26 |  | NÃO REVISADOS |
| 1134 | 1.24.45 | RT-F0005-0309-MB-P-00002 | 1d? | 2026-04-23 A | 2026-04-23 A | 100% | 2026-04-23 | 2026-04-23 | 1d? | Qui 23/04/26 |  | NÃO REVISADOS |
| 1135 | 1.24.46 | RT-F0005-0309-MB-P-00003 | 1d? | 2026-04-23 A | 2026-04-23 A | 100% | 2026-04-23 | 2026-04-23 | 1d? | Qui 23/04/26 |  | NÃO REVISADOS |
| 1136 | 1.24.47 | MC-F0005-0309-MB-S-00001 | 1d? | 2026-04-23 A | 2026-04-23 A | 100% | 2026-04-23 | 2026-04-23 | 1d? | Qui 23/04/26 |  | NÃO REVISADOS |
| 1137 | 1.24.48 | MC-F0005-0309-MB-S-00002 | 1d? | 2026-04-23 A | 2026-04-23 A | 100% | 2026-04-23 | 2026-04-23 | 1d? | Qui 23/04/26 |  | NÃO REVISADOS |
| 1138 | 1.24.49 | FD-F0005-0309-MB-T-00001 | 1d? | 2026-04-23 A | 2026-04-23 A | 100% | 2026-04-23 | 2026-04-23 | 1d? | Qui 23/04/26 |  | NÃO REVISADOS |
| 1139 | 1.24.50 | FD-F0005-0309-MB-T-00002 | 1d? | 2026-04-23 A | 2026-04-23 A | 100% | 2026-04-23 | 2026-04-23 | 1d? | Qui 23/04/26 |  | NÃO REVISADOS |
| 1140 | 1.24.51 | CP-F0005-0309-MB-S-00001 | 1d? | 2026-04-23 A | 2026-04-23 A | 100% | 2026-04-23 | 2026-04-23 | 1d? | Qui 23/04/26 |  | NÃO REVISADOS |
| 1141 | 1.24.52 | DT-F0005-0309-MB-E-00001 | 1d? | 2026-04-23 A | 2026-04-23 A | 100% | 2026-04-23 | 2026-04-23 | 1d? | Qui 23/04/26 |  | NÃO REVISADOS |
| 1142 | 1.24.53 | LE-F0009-0309-MB-M-00002 | 1d? | 2026-04-23 A | 2026-04-23 A | 100% | 2026-04-23 | 2026-04-23 | 1d? | Qui 23/04/26 |  | NÃO REVISADOS |
| 1143 | 1.24.54 | MC-F0009-0309-MB-E-00001 | 1d? | 2026-04-23 A | 2026-04-23 A | 100% | 2026-04-23 | 2026-04-23 | 1d? | Qui 23/04/26 |  | NÃO REVISADOS |
| 1144 | 1.24.55 | MC-F0009-0309-MB-E-00002 | 1d? | 2026-04-23 A | 2026-04-23 A | 100% | 2026-04-23 | 2026-04-23 | 1d? | Qui 23/04/26 |  | NÃO REVISADOS |
| 1145 | 1.24.56 | MC-F0009-0309-MB-E-00003 | 1d? | 2026-04-23 A | 2026-04-23 A | 100% | 2026-04-23 | 2026-04-23 | 1d? | Qui 23/04/26 |  | NÃO REVISADOS |
| 1146 | 1.24.57 | MC-F0009-0309-MB-S-00001 | 1d? | 2026-04-23 A | 2026-04-23 A | 100% | 2026-04-23 | 2026-04-23 | 1d? | Qui 23/04/26 |  | NÃO REVISADOS |
| 1147 | 1.24.58 | PL-F0009-0309-MB-S-00001 | 1d? | 2026-04-23 A | 2026-04-23 A | 100% | 2026-04-23 | 2026-04-23 | 1d? | Qui 23/04/26 |  | NÃO REVISADOS |
| 1148 | 1.24.59 | PQ-F0009-0309-MB-J-00001 | 1d? | 2026-04-23 A | 2026-04-23 A | 100% | 2026-04-23 | 2026-04-23 | 1d? | Qui 23/04/26 |  |  |
| 1149 | 1.24.60 | RT-F0005-0309-MB-T-00001 | 1d? | 2026-04-23 A | 2026-04-23 A | 100% | 2026-04-23 | 2026-04-23 | 1d? | Qui 23/04/26 |  | NÃO REVISADOS |
| 1150 | 1.24.61 | RT-F0005-0309-MB-T-00002 | 1d? | 2026-04-23 A | 2026-04-23 A | 100% | 2026-04-23 | 2026-04-23 | 1d? | Qui 23/04/26 |  | NÃO REVISADOS |

Notes:
- 1090: Título: SALA OPERADORES
- 1091: Título: VESTIÁRIO / SANITÁRIO
- 1093: Título: PRÉ-DIMENSIONAMENTO DE CONCRETO FUNDAÇÃO FORNO
- 1094: Título: PRÉ-DIMENSIONAMENTO DE CONCRETO TORRE DE RESFRIAMENTO
- 1095: Título: PRÉ-DIMENSIONAMENTO DE CONCRETO SALA ELÉTRICA
- 1096: Título: PRÉ-DIMENSIONAMENTO DE CONCRETO SALA OPERADORES
- 1097: Título: PRÉ-DIMENSIONAMENTO DE CONCRETO PIPE RACK
- 1098: Título: ESTIMATIVA DE CUSTO MONTAGEM ELÉTRICA
- 1099: Título: ESTIMATIVA DE CUSTO INSTRUMENTAÇÃO
- 1100: Título: PLANILHA CAPEX
- 1101: Título: MEMORIAL DESCRITIVO - DADOS PARA PREENCHIMENTO DO MCE
- 1102: Título: FOLHA DE DADOS MEDIDORES ELETROMAGNÉTICOS
- 1103: Título: FOLHA DE DADOS RADAR TYPE LEVEL TRANSMITTER
- 1104: Título: FOLHA DE DADOS TEMPERATURE TRANSMITTER
- 1105: Título: FOLHA DE DADOS ROTAMETER WITH TRANSMITTER
- 1106: Título: FOLHA DE DADOS MAGNETOSTRICTIVE LEVEL TRANSMITTER
- 1107: Título: FOLHA DE DADOS ULTRASONIC LEVEL SWITCH
- 1108: Título: FOLHA DE DADOS ULTRASONIC LEVEL TRANSMITTER
- 1109: Título: FOLHA DE DADOS ROTAMETER
- 1110: Título: FOLHA DE DADOS ULTRASONIC LEVEL GAUGE
- 1111: Título: ESPECIFICAÇÃO TÉCNICA ANALIZADOR
- 1112: Título: ESPECIFICAÇÃO TÉCNICA SISTEMA DE CONTROLE
- 1113: Título: ARQUITETURA DE REDE
- 1114: Título: FOLHAS DE DADOS DIFFERENTIAL PRESSURE TRANSMITTER
- 1115: Título: FOLHA DE DADOSTEMPERATURE SENSOR
- 1116: Título: FOLHA DE DADOS PRESSURE GAUGE
- 1117: Título: FOLHA DE DADOS ORIFICE PLATE
- 1118: Título: FOLHA DE DADOS PRESSURE REGULATOR
- 1119: Título: FOLHA DE DADOS VORTEX TRANSMITTER
- 1120: Título: FOLHA DE DADOS PNEUMATIC ACTUATED BUTTERFLY VALVE
- 1121: Título: FOLHAS DE DADOS PRESSURE AND LEVEL TRANSMITTER
- 1122: Título: FOLHA DE DADOS PNEUMATIC ACTUATED BALL VALVE
- 1123: Título: PLANTA E CORTES DE LEGALIZAÇÃO - IMPLANTAÇÃO PARCIAL
- 1124: Título: PLANTA E CORTES DE LEGALIZAÇÃO - PLANTA NÍVEL 0,00m / +3,224m
- 1125: Título: "PLANTA E CORTES DE LEGALIZAÇÃO - CORTES A-A, B-B, C-C, D-D E
- 1126: Título: PLANO DE CARGA NIVEL CORREIA REVERSIVEL E MOVEL
- 1127: Título: PLANO DE CARGA NIVEL SILOS DE PROCESSO
- 1128: Título: PLANO DE CARGA NIVEL SILOS DE BUFFER
- 1129: Título: PLANO DE CARGA SUPORTES TUBULACAO BAR
- 1130: Título: PLANO DE CARGA SUPORTES TUBULACAO COMBUSTIVEL LATERAL
- 1131: Título: PLANO DE CARGA SUPORTES TUBULACAO BOOSTER
- 1132: Título: VÁLVULA DE ISOLAMENTO DE GÁS DO TOPO
- 1133: Título: ESTIMATIVA DE CUSTOS EQUIPAMENTOS UTILIDADES
- 1134: Título: ANÁLISE DO PRELIMINAR ESTRUTURAL DA CARCAÇA FORNO
- 1135: Título: SIMULAÇOES TERMICAS PARA SISTEMA REFRIGERACAO E REFRATARIOS
- 1136: Título: MEMÓRIA DE CÁLCULO DE METÁLICA PLAFATORMA FILTRO
- 1137: Título: MEMÓRIA DE CÁLCULO DE METÁLICA SALA OPERADORES
- 1138: Título: FOLHA DE DADOS JUNTAS DE EXPANSÃO
- 1139: Título: FOLHA DE DADOS SUPORTE DE MOLAS
- 1140: Título: FOLHA DE DADOS SUPORTE DE MOLAS
- 1141: Título: FOLHA DE DADOS SUPORTE DE MOLAS
- 1142: Título: FOLHA DE DADOS SUPORTE DE MOLAS
- 1143: Título: FOLHA DE DADOS SUPORTE DE MOLAS
- 1144: Título: FOLHA DE DADOS SUPORTE DE MOLAS
- 1145: Título: FOLHA DE DADOS SUPORTE DE MOLAS
- 1146: Título: FOLHA DE DADOS SUPORTE DE MOLAS
- 1147: Título: FOLHA DE DADOS SUPORTE DE MOLAS
- 1149: Título: PLANO DE CARGA SUPORTES TUBULACAO BOOSTER
- 1150: Título: PLANO DE CARGA SUPORTES TUBULACAO BOOSTER
