# CR-F0008-0000-GE-F-00001 23042026

Schedule from MS Project, 2026-03-31 to 2026-10-06, status date 2026-06-23, A marks actual dates.

## Calendars

- Padrão: Mon-Fri 09:00-12:00, 13:00-18:00; Sat-Sun off.

## Schedule

| ID | WBS | Task | Type | Duration | Start | Finish | Predecessors | Complete | Remaining | Baseline start | Baseline finish | Baseline duration | Total slack | Free slack | Constraint | Término_LB_R0 | Início_LB_R0 | Disciplina | Tipo de documento | Área | Sub-área | Título | Formato | Quantidade | Agrupamento Cecal |
| --- | --- | --- | --- | --- | --- | --- | --- | --- | --- | --- | --- | --- | --- | --- | --- | --- | --- | --- | --- | --- | --- | --- | --- | --- | --- |
| 1 | 1 | **F0009 - COM 0023 - CECAL** |  | 135.88d? | 2026-03-31 A | 2026-10-06 |  | 6% | 128.19d? | 2026-03-31 | 2026-09-29 | 130.88d? | 0d |  |  | Ter 29/09/26 | Ter 31/03/26 |  |  |  |  |  |  |  |  |
| 2 | 4.2.1.2 | MARCOS 309 | manual | 113d | 2026-03-31 A | 2026-09-03 | 4SS | 33% | 32249.7d |  |  |  |  |  |  |  |  |  |  |  |  |  |  |  |  |
| 3 | 5.2.1.2 | MARCOS 309 | manual | 113d | 2026-03-31 A | 2026-09-03 | 4SS | 50% | 32230.5d |  |  |  |  |  |  |  |  |  |  |  |  |  |  |  |  |
| 4 | 1.3 | **MARCOS 309** |  | 113d? | 2026-03-31 A | 2026-09-03 |  | 93% | 8.27d? | 2026-03-31 | 2026-09-03 | 113d? | 22.88d | 0d |  | Qui 03/09/26 | Ter 31/03/26 | MARCOS |  |  |  |  |  |  |  |
| 5 | 1.3.1 | Reunião de kick-off | milestone | 36d | 2026-03-31 A | 2026-05-27 A |  | 100% |  | 2026-03-31 | 2026-03-31 | 1d |  |  | start no earlier than 2026-03-31 | Ter 31/03/26 | Ter 31/03/26 | MARCOS |  |  |  |  |  |  |  |
| 6 | 1.3.2 | Reunião Design Review 1 | milestone | 1d? | 2026-05-01 A | 2026-05-01 A | 5FS+30ed | 100% |  | 2026-05-01 | 2026-05-01 | 1d? |  |  |  | Sex 01/05/26 | Sex 01/05/26 | MARCOS |  |  |  |  |  |  |  |
| 7 | 1.3.3 | Reunião Design Review 2 | milestone | 1d? | 2026-06-01 A | 2026-06-01 A | 6FS+30ed | 100% |  | 2026-06-01 | 2026-06-01 | 1d? |  |  |  | Seg 01/06/26 | Seg 01/06/26 | MARCOS |  |  |  |  |  |  |  |
| 8 | 1.3.4 | Reunião Design Review 3 | milestone | 1d? | 2026-07-02 | 2026-07-02 | 7FS+30ed |  |  | 2026-07-02 | 2026-07-02 | 1d? | 23d | 1d |  | Qui 02/07/26 | Qui 02/07/26 | MARCOS |  |  |  |  |  |  |  |
| 9 | 1.3.5 | Reunião Design Review 4 | milestone | 1d? | 2026-08-03 | 2026-08-03 | 8FS+30ed |  |  | 2026-08-03 | 2026-08-03 | 1d? | 24d | 0d |  | Seg 03/08/26 | Seg 03/08/26 | MARCOS |  |  |  |  |  |  |  |
| 10 | 1.3.6 | Reunião Design Review 5 | milestone | 1d? | 2026-09-03 | 2026-09-03 | 9FS+30ed |  |  | 2026-09-03 | 2026-09-03 | 1d? | 22.88d |  |  | Qui 03/09/26 | Qui 03/09/26 | MARCOS |  |  |  |  |  |  |  |
| 11 | 4.2.1.4 | PENDÊNCIAS 309 | manual | 60.88d | 2026-03-31 A | 2026-06-23 | 13SS | 52% | 32255.3d |  |  |  |  |  |  |  |  |  |  |  |  |  |  |  |  |
| 12 | 5.2.1.4 | PENDÊNCIAS 309 | manual | 65d | 2026-03-31 A | 2026-06-29 | 13SS | 74% | 32238.9d |  |  |  |  |  |  |  |  |  |  |  |  |  |  |  |  |
| 13 | 1.6 | **PENDÊNCIAS 309** |  | 65.88d? | 2026-03-31 A | 2026-06-30 |  | 78% | 14.47d? | 2026-03-31 | 2026-06-23 | 60.88d? | 39d | 0d |  | Ter 23/06/26 | Ter 31/03/26 | PENDÊNCIAS |  |  |  |  |  |  |  |
| 14 | 1.6.1 | LD dos documentos Multitec |  | 1d? | 2026-04-23 A | 2026-04-23 A |  | 100% |  | 2026-04-23 | 2026-04-23 | 1d? |  |  |  | Qui 23/04/26 | Qui 23/04/26 | PENDÊNCIAS |  |  |  |  |  |  |  |
| 15 | 1.6.2 | Revisão do cronograma nas tarefas da Engenharia Básica |  | 1d? | 2026-04-23 A | 2026-04-23 A |  | 100% |  | 2026-04-23 | 2026-04-23 | 1d? |  |  |  | Qui 23/04/26 | Qui 23/04/26 | PENDÊNCIAS |  |  |  |  |  |  |  |
| 16 | 1.6.3 | Definição do comprimento do forno |  | 65.88d? | 2026-03-31 A | 2026-06-30 |  | 90% | 6.59d? | 2026-03-31 | 2026-06-02 | 25.88d? | 39d |  | finish no earlier than 2026-06-30 | Ter 02/06/26 | Ter 31/03/26 | PENDÊNCIAS |  |  |  |  |  |  |  |
| 17 | 1.6.4 | Avaliação do aumento largura da cuba de BAR e cadinho |  | 49.88d? | 2026-04-22 A | 2026-06-30 |  | 90% | 4.99d? | 2026-04-22 | 2026-06-02 | 19.88d? | 39d |  | finish no earlier than 2026-06-30 | Ter 02/06/26 | Qua 22/04/26 | PENDÊNCIAS |  |  |  |  |  |  |  |
| 18 | 1.6.5 | Avaliação de compatibilidade com carregamento, utilidades e instrumentação |  | 41.88d? | 2026-05-04 A | 2026-06-30 |  | 76% | 10d? | 2026-05-04 | 2026-06-02 | 14.88d? | 39d |  | finish no earlier than 2026-06-30 | Ter 02/06/26 | Seg 04/05/26 | PENDÊNCIAS |  |  |  |  |  |  |  |
| 19 | 1.6.6 | Avaliação de novas tecnologias (ventaneira lateral, injeção de gás V1 e V2, passagem de gás pela cuba) |  | 34.88d? | 2026-05-13 A | 2026-06-30 |  | 71% | 10d? | 2026-05-13 | 2026-06-09 | 19.88d? | 39d |  | finish no earlier than 2026-06-30 | Ter 09/06/26 | Qua 13/05/26 | PENDÊNCIAS |  |  |  |  |  |  |  |
| 20 | 1.6.7 | Incorporação das novas tecnologias no modelo |  | 29.88d? | 2026-05-20 A | 2026-06-30 |  | 67% | 10d? | 2026-05-20 | 2026-06-16 | 19.88d? | 39d |  | finish no earlier than 2026-06-30 | Ter 16/06/26 | Qua 20/05/26 | PENDÊNCIAS |  |  |  |  |  |  |  |
| 21 | 1.6.8 | Aprovação da geometria básica |  | 9.88d? | 2026-06-17 | 2026-06-30 |  |  |  | 2026-06-17 | 2026-06-23 | 4.88d? | 0d |  | finish no earlier than 2026-06-30 | Ter 23/06/26 | Qua 17/06/26 | PENDÊNCIAS |  |  |  |  |  |  |  |
| 22 | 4.2.1.6 | GERAL/ COORDENAÇÃO 309 | manual | 66d | 2026-06-24 | 2026-09-23 | 23SS |  |  |  |  |  |  |  |  |  |  |  |  |  |  |  |  |  |  |
| 23 | 1.8 | **GERAL/ COORDENAÇÃO 309** |  | 66d | 2026-07-01 | 2026-10-01 | 13FS+1d |  |  | 2026-06-24 | 2026-09-24 | 66d | 3d | 0d |  | Qui 24/09/26 | Qua 24/06/26 |  |  |  |  |  |  |  |  |
| 24 | 1.8.1 | **3DT-F0009-0309-MB-G-00001** |  | 15d | 2026-09-10 | 2026-10-01 |  |  |  | 2026-09-03 | 2026-09-24 | 15d | 3d |  |  | Qui 24/09/26 | Qui 03/09/26 | COORDENAÇÃO | 3DT - Desenho 3d | 03 - REDUÇÃO | 09 - FORNO TECNORED | MODELO 3D FORNO - CONJUNTO | OUTROS | 01 | Revisão do projeto do forno - carcaça e refratário |
| 25 | 1.8.1.1 | Emissão inicial |  | 5d | 2026-09-10 | 2026-09-17 | 414 |  |  | 2026-09-03 | 2026-09-10 | 5d | 3d | 0d |  | Qui 10/09/26 |  | COORDENAÇÃO |  |  |  |  |  |  |  |
| 26 | 1.8.1.2 | Avaliação do Cliente |  | 5d | 2026-09-17 | 2026-09-24 | 25 |  |  | 2026-09-10 | 2026-09-17 | 5d | 3d | 0d |  | Qui 17/09/26 |  | COORDENAÇÃO |  |  |  |  |  |  |  |
| 27 | 1.8.1.3 | Atendimento de Comentário |  | 3d | 2026-09-24 | 2026-09-29 | 26 |  |  | 2026-09-17 | 2026-09-22 | 3d | 3d | 0d |  | Ter 22/09/26 |  | COORDENAÇÃO |  |  |  |  |  |  |  |
| 28 | 1.8.1.4 | Aprovação |  | 2d | 2026-09-29 | 2026-10-01 | 27 |  |  | 2026-09-22 | 2026-09-24 | 2d | 3d |  |  | Qui 24/09/26 |  | COORDENAÇÃO |  |  |  |  |  |  |  |

| ID | WBS | Task | Type | Duration | Start | Finish | Predecessors | Baseline start | Baseline finish | Baseline duration | Total slack | Free slack | Constraint | Tipo de documento | Área | Sub-área | Disciplina | Título | Formato | Quantidade | Agrupamento Cecal | Término_LB_R0 | Início_LB_R0 |
| --- | --- | --- | --- | --- | --- | --- | --- | --- | --- | --- | --- | --- | --- | --- | --- | --- | --- | --- | --- | --- | --- | --- | --- |
| 29 | 1.8.2 | **3DT-F0009-0309-MB-G-00002** |  | 15d | 2026-09-10 | 2026-10-01 |  | 2026-09-03 | 2026-09-24 | 15d | 3d |  |  | 3DT - Desenho 3d | 03 - REDUÇÃO | 09 - FORNO TECNORED | COORDENAÇÃO | MODELO 3D FORNO TUBULAÇÕES E CARREGAMENTO | OUTROS | 01 | Revisão do sistema de carregamento | Qui 24/09/26 | Qui 03/09/26 |
| 30 | 1.8.2.1 | Emissão inicial |  | 5d | 2026-09-10 | 2026-09-17 | 414 | 2026-09-03 | 2026-09-10 | 5d | 3d | 0d |  |  |  |  | COORDENAÇÃO |  |  |  |  | Qui 10/09/26 |  |
| 31 | 1.8.2.2 | Avaliação do Cliente |  | 5d | 2026-09-17 | 2026-09-24 | 30 | 2026-09-10 | 2026-09-17 | 5d | 3d | 0d |  |  |  |  | COORDENAÇÃO |  |  |  |  | Qui 17/09/26 |  |
| 32 | 1.8.2.3 | Atendimento de Comentário |  | 3d | 2026-09-24 | 2026-09-29 | 31 | 2026-09-17 | 2026-09-22 | 3d | 3d | 0d |  |  |  |  | COORDENAÇÃO |  |  |  |  | Ter 22/09/26 |  |
| 33 | 1.8.2.4 | Aprovação |  | 2d | 2026-09-29 | 2026-10-01 | 32 | 2026-09-22 | 2026-09-24 | 2d | 3d |  |  |  |  |  | COORDENAÇÃO |  |  |  |  | Qui 24/09/26 |  |
| 34 | 1.8.3 | **3DT-F0009-0309-MB-G-00003** |  | 15d | 2026-09-10 | 2026-10-01 |  | 2026-09-03 | 2026-09-24 | 15d | 3d |  |  | 3DT - Desenho 3d | 03 - REDUÇÃO | 09 - FORNO TECNORED | COORDENAÇÃO | MODELO 3D GERAL DOS SISTEMAS | OUTROS | 01 | Planilha de quantitativos e utilidades | Qui 24/09/26 | Qui 03/09/26 |
| 35 | 1.8.3.1 | Emissão inicial |  | 5d | 2026-09-10 | 2026-09-17 | 414 | 2026-09-03 | 2026-09-10 | 5d | 3d | 0d |  |  |  |  | COORDENAÇÃO |  |  |  |  | Qui 10/09/26 |  |
| 36 | 1.8.3.2 | Avaliação do Cliente |  | 5d | 2026-09-17 | 2026-09-24 | 35 | 2026-09-10 | 2026-09-17 | 5d | 3d | 0d |  |  |  |  | COORDENAÇÃO |  |  |  |  | Qui 17/09/26 |  |
| 37 | 1.8.3.3 | Atendimento de Comentário |  | 3d | 2026-09-24 | 2026-09-29 | 36 | 2026-09-17 | 2026-09-22 | 3d | 3d | 0d |  |  |  |  | COORDENAÇÃO |  |  |  |  | Ter 22/09/26 |  |
| 38 | 1.8.3.4 | Aprovação |  | 2d | 2026-09-29 | 2026-10-01 | 37 | 2026-09-22 | 2026-09-24 | 2d | 3d |  |  |  |  |  | COORDENAÇÃO |  |  |  |  | Qui 24/09/26 |  |
| 39 | 1.8.4 | **BK-F0009-0300-MB-G-00001** |  | 30d | 2026-07-01 | 2026-08-12 |  | 2026-06-24 | 2026-08-05 | 30d | 39d |  |  | BK - Data Book | 03 - REDUÇÃO | 00 - GERAL | COORDENAÇÃO | DATABOOK DO PROJETO | OUTROS | 01 | Planilha de quantitativos e utilidades | Qua 05/08/26 | Qua 24/06/26 |
| 40 | 1.8.4.1 | Emissão inicial |  | 15d | 2026-07-01 | 2026-07-22 |  | 2026-06-24 | 2026-07-15 | 15d | 39d | 0d |  |  |  |  | COORDENAÇÃO |  |  |  |  | Qua 15/07/26 |  |
| 41 | 1.8.4.2 | Avaliação do Cliente |  | 5d | 2026-07-22 | 2026-07-29 | 40 | 2026-07-15 | 2026-07-22 | 5d | 39d | 0d |  |  |  |  | COORDENAÇÃO |  |  |  |  | Qua 22/07/26 |  |
| 42 | 1.8.4.3 | Atendimento de Comentário |  | 5d | 2026-07-29 | 2026-08-05 | 41 | 2026-07-22 | 2026-07-29 | 5d | 39d | 0d |  |  |  |  | COORDENAÇÃO |  |  |  |  | Qua 29/07/26 |  |
| 43 | 1.8.4.4 | Aprovação |  | 5d | 2026-08-05 | 2026-08-12 | 42 | 2026-07-29 | 2026-08-05 | 5d | 39d |  |  |  |  |  | COORDENAÇÃO |  |  |  |  | Qua 05/08/26 |  |
| 44 | 1.8.5 | **EG-F0009-0309-MB-G-00001** |  | 30d | 2026-08-20 | 2026-10-01 |  | 2026-08-13 | 2026-09-24 | 30d | 3d |  |  | EG - Especificação Geral | 03 - REDUÇÃO | 09 - FORNO TECNORED | COORDENAÇÃO | PARÂMETROS PARA DESIGN FREEZE | OUTROS | 01 | Parâmetros para design freeze | Qui 24/09/26 | Qui 13/08/26 |
| 45 | 1.8.5.1 | Emissão inicial |  | 15d | 2026-08-20 | 2026-09-10 | 25SF | 2026-08-13 | 2026-09-03 | 15d | 3d | 0d |  |  |  |  | COORDENAÇÃO |  |  |  |  | Qui 03/09/26 |  |
| 46 | 1.8.5.2 | Avaliação do Cliente |  | 5d | 2026-09-10 | 2026-09-17 | 45 | 2026-09-03 | 2026-09-10 | 5d | 3d | 0d |  |  |  |  | COORDENAÇÃO |  |  |  |  | Qui 10/09/26 |  |
| 47 | 1.8.5.3 | Atendimento de Comentário |  | 5d | 2026-09-17 | 2026-09-24 | 46 | 2026-09-10 | 2026-09-17 | 5d | 3d | 0d |  |  |  |  | COORDENAÇÃO |  |  |  |  | Qui 17/09/26 |  |
| 48 | 1.8.5.4 | Aprovação |  | 5d | 2026-09-24 | 2026-10-01 | 47 | 2026-09-17 | 2026-09-24 | 5d | 3d |  |  |  |  |  |  |  |  |  |  | Qui 24/09/26 |  |
| 49 | 4.2.1.8 | MECÂNICA / ARRANJOS 309 | manual | 69.88d | 2026-06-30 | 2026-10-06 | 52SS |  |  |  |  |  |  |  |  |  |  |  |  |  |  |  |  |
| 50 | 5.2.1.6 | GERAL/ COORDENAÇÃO 309 | manual | 67d | 2026-07-01 | 2026-10-01 | 52SS |  |  |  |  |  |  |  |  |  |  |  |  |  |  |  |  |
| 51 | 5.2.1.7 | MECÂNICA / ARRANJOS 309 | manual | 69.88d | 2026-06-30 | 2026-10-06 | 52SS |  |  |  |  |  |  |  |  |  |  |  |  |  |  |  |  |
| 52 | 1.12 | **MECÂNICA / ARRANJOS 309** |  | 70d | 2026-06-30 | 2026-10-06 |  | 2026-06-24 | 2026-09-29 | 69.88d | 0d |  |  |  |  |  |  |  |  |  |  | Ter 29/09/26 | Qua 24/06/26 |
| 53 | 1.12.1 | **AG-F0009-0302-MB-L-00001** |  | 23d | 2026-06-30 | 2026-07-31 |  | 2026-06-24 | 2026-07-24 | 23d | 2d |  | start no earlier than 2026-06-24 | AG - Arranjo (AG) | 03 - REDUÇÃO | 02 - CARREGAMENTO | MECÂNICA | PLANTA BÁSICA - SISTEMA DE CARREGAMENTO | A1 (841x594mm) | 01 | Revisão do sistema de carregamento | Sex 24/07/26 | Qua 24/06/26 |
| 54 | 1.12.1.1 | Emissão inicial |  | 10d | 2026-06-30 | 2026-07-14 | 21 | 2026-06-24 | 2026-07-07 | 10d | 2d | 0d | start no earlier than 2026-06-24 |  |  |  | MECÂNICA |  |  |  |  | Ter 07/07/26 |  |
| 55 | 1.12.1.2 | Avaliação do Cliente |  | 5d | 2026-07-14 | 2026-07-21 | 54 | 2026-07-08 | 2026-07-14 | 5d | 47d | 0d | finish no earlier than 2026-07-07 |  |  |  | MECÂNICA |  |  |  |  | Ter 14/07/26 |  |
| 56 | 1.12.1.3 | Atendimento de Comentário |  | 3d | 2026-07-21 | 2026-07-24 | 55 | 2026-07-15 | 2026-07-17 | 3d | 47d | 0d | finish no earlier than 2026-07-07 |  |  |  | MECÂNICA |  |  |  |  | Sex 17/07/26 |  |
| 57 | 1.12.1.4 | Aprovação |  | 5d | 2026-07-24 | 2026-07-31 | 56 | 2026-07-20 | 2026-07-24 | 5d | 47d |  | finish no earlier than 2026-07-07 |  |  |  | MECÂNICA |  |  |  |  | Sex 24/07/26 |  |

| ID | WBS | Task | Duration | Start | Finish | Predecessors | Baseline start | Baseline finish | Baseline duration | Total slack | Free slack | Constraint | Tipo de documento | Área | Sub-área | Disciplina | Título | Formato | Quantidade | Agrupamento Cecal | Término_LB_R0 | Início_LB_R0 |
| --- | --- | --- | --- | --- | --- | --- | --- | --- | --- | --- | --- | --- | --- | --- | --- | --- | --- | --- | --- | --- | --- | --- |
| 58 | 1.12.2 | **AG-F0009-0302-MB-L-00002** | 20d | 2026-07-14 | 2026-08-11 |  | 2026-07-08 | 2026-08-04 | 20d | 40d |  |  | AG - Arranjo (AG) | 03 - REDUÇÃO | 02 - CARREGAMENTO | MECÂNICA | SISTEMA LINHA BAR | A1 (841x594mm) | 01 | Revisão do sistema de carregamento | Ter 04/08/26 | Qua 08/07/26 |
| 59 | 1.12.2.1 | Emissão inicial | 10d | 2026-07-14 | 2026-07-28 | 54 | 2026-07-08 | 2026-07-21 | 10d | 40d | 0d | finish no earlier than 2026-07-21 |  |  |  | MECÂNICA |  |  |  |  | Ter 21/07/26 |  |
| 60 | 1.12.2.2 | Avaliação do Cliente | 5d | 2026-07-28 | 2026-08-04 | 59 | 2026-07-22 | 2026-07-28 | 5d | 40d | 0d | finish no earlier than 2026-07-21 |  |  |  | MECÂNICA |  |  |  |  | Ter 28/07/26 |  |
| 61 | 1.12.2.3 | Atendimento de Comentário | 3d | 2026-08-04 | 2026-08-07 | 60 | 2026-07-29 | 2026-07-31 | 3d | 40d | 0d | finish no earlier than 2026-07-21 |  |  |  | MECÂNICA |  |  |  |  | Sex 31/07/26 |  |
| 62 | 1.12.2.4 | Aprovação | 2d | 2026-08-07 | 2026-08-11 | 61 | 2026-08-03 | 2026-08-04 | 2d | 40d |  | finish no earlier than 2026-07-21 |  |  |  | MECÂNICA |  |  |  |  | Ter 04/08/26 |  |
| 63 | 1.12.3 | **AG-F0009-0302-MB-L-00003** | 16d | 2026-07-14 | 2026-08-05 |  | 2026-07-08 | 2026-07-29 | 16d | 44d |  |  | AG - Arranjo (AG) | 03 - REDUÇÃO | 02 - CARREGAMENTO | MECÂNICA | SISTEMA LINHA COMBUSTÍVEL LATERAL | A1 (841x594mm) | 01 | Revisão do sistema de carregamento | Qua 29/07/26 | Qua 08/07/26 |
| 64 | 1.12.3.1 | Emissão inicial | 10d | 2026-07-14 | 2026-07-28 | 54 | 2026-07-08 | 2026-07-21 | 10d | 44d | 0d | finish no earlier than 2026-07-21 |  |  |  | MECÂNICA |  |  |  |  | Ter 21/07/26 |  |
| 65 | 1.12.3.2 | Avaliação do Cliente | 1d | 2026-07-28 | 2026-07-29 | 64 | 2026-07-22 | 2026-07-22 | 1d | 44d | 0d | finish no earlier than 2026-07-21 |  |  |  | MECÂNICA |  |  |  |  | Qua 22/07/26 |  |
| 66 | 1.12.3.3 | Atendimento de Comentário | 3d | 2026-07-29 | 2026-08-03 | 65 | 2026-07-23 | 2026-07-27 | 3d | 44d | 0d | finish no earlier than 2026-07-21 |  |  |  | MECÂNICA |  |  |  |  | Seg 27/07/26 |  |
| 67 | 1.12.3.4 | Aprovação | 2d | 2026-08-03 | 2026-08-05 | 66 | 2026-07-28 | 2026-07-29 | 2d | 44d |  | finish no earlier than 2026-07-21 |  |  |  | MECÂNICA |  |  |  |  | Qua 29/07/26 |  |
| 68 | 1.12.4 | **AG-F0009-0302-MB-L-00004** | 20d | 2026-07-14 | 2026-08-11 |  | 2026-07-08 | 2026-08-04 | 20d | 40d |  |  | AG - Arranjo (AG) | 03 - REDUÇÃO | 02 - CARREGAMENTO | MECÂNICA | SISTEMA LINHA BOOSTER | A1 (841x594mm) | 01 | Revisão do sistema de carregamento | Ter 04/08/26 | Qua 08/07/26 |
| 69 | 1.12.4.1 | Emissão inicial | 10d | 2026-07-14 | 2026-07-28 | 54 | 2026-07-08 | 2026-07-21 | 10d | 40d | 0d | finish no earlier than 2026-07-21 |  |  |  | MECÂNICA |  |  |  |  | Ter 21/07/26 |  |
| 70 | 1.12.4.2 | Avaliação do Cliente | 5d | 2026-07-28 | 2026-08-04 | 69 | 2026-07-22 | 2026-07-28 | 5d | 40d | 0d | finish no earlier than 2026-07-21 |  |  |  | MECÂNICA |  |  |  |  | Ter 28/07/26 |  |
| 71 | 1.12.4.3 | Atendimento de Comentário | 3d | 2026-08-04 | 2026-08-07 | 70 | 2026-07-29 | 2026-07-31 | 3d | 40d | 0d | finish no earlier than 2026-07-21 |  |  |  | MECÂNICA |  |  |  |  | Sex 31/07/26 |  |
| 72 | 1.12.4.4 | Aprovação | 2d | 2026-08-07 | 2026-08-11 | 71 | 2026-08-03 | 2026-08-04 | 2d | 40d |  | finish no earlier than 2026-07-21 |  |  |  | MECÂNICA |  |  |  |  | Ter 04/08/26 |  |
| 73 | 1.12.5 | **AG-F0009-0302-MB-L-00005** | 20d | 2026-07-14 | 2026-08-11 |  | 2026-07-08 | 2026-08-04 | 20d | 40d |  |  | AG - Arranjo (AG) | 03 - REDUÇÃO | 02 - CARREGAMENTO | MECÂNICA | LOCAÇÃO SUPORTE TUBULACOES BAR | A1 (841x594mm) | 01 | Revisão do sistema de carregamento | Ter 04/08/26 | Qua 08/07/26 |
| 74 | 1.12.5.1 | Emissão inicial | 10d | 2026-07-14 | 2026-07-28 | 54 | 2026-07-08 | 2026-07-21 | 10d | 40d | 0d | finish no earlier than 2026-07-21 |  |  |  | MECÂNICA |  |  |  |  | Ter 21/07/26 |  |
| 75 | 1.12.5.2 | Avaliação do Cliente | 5d | 2026-07-28 | 2026-08-04 | 74 | 2026-07-22 | 2026-07-28 | 5d | 40d | 0d | finish no earlier than 2026-07-21 |  |  |  | MECÂNICA |  |  |  |  | Ter 28/07/26 |  |
| 76 | 1.12.5.3 | Atendimento de Comentário | 3d | 2026-08-04 | 2026-08-07 | 75 | 2026-07-29 | 2026-07-31 | 3d | 40d | 0d | finish no earlier than 2026-07-21 |  |  |  | MECÂNICA |  |  |  |  | Sex 31/07/26 |  |
| 77 | 1.12.5.4 | Aprovação | 2d | 2026-08-07 | 2026-08-11 | 76 | 2026-08-03 | 2026-08-04 | 2d | 40d |  | finish no earlier than 2026-07-21 |  |  |  | MECÂNICA |  |  |  |  | Ter 04/08/26 |  |
| 78 | 1.12.6 | **AG-F0009-0302-MB-L-00006** | 23d | 2026-07-14 | 2026-08-14 |  | 2026-07-08 | 2026-08-07 | 23d | 37d |  |  | AG - Arranjo (AG) | 03 - REDUÇÃO | 02 - CARREGAMENTO | MECÂNICA | LOCAÇÃO SUPORTE TUBULACOES BAR DETALHES | A1 (841x594mm) | 01 | Revisão do sistema de carregamento | Sex 07/08/26 | Qua 08/07/26 |
| 79 | 1.12.6.1 | Emissão inicial | 10d | 2026-07-14 | 2026-07-28 | 54 | 2026-07-08 | 2026-07-21 | 10d | 37d | 0d | finish no earlier than 2026-07-21 |  |  |  | MECÂNICA |  |  |  |  | Ter 21/07/26 |  |
| 80 | 1.12.6.2 | Avaliação do Cliente | 5d | 2026-07-28 | 2026-08-04 | 79 | 2026-07-22 | 2026-07-28 | 5d | 37d | 0d | finish no earlier than 2026-07-21 |  |  |  | MECÂNICA |  |  |  |  | Ter 28/07/26 |  |
| 81 | 1.12.6.3 | Atendimento de Comentário | 3d | 2026-08-04 | 2026-08-07 | 80 | 2026-07-29 | 2026-07-31 | 3d | 37d | 0d | finish no earlier than 2026-07-21 |  |  |  | MECÂNICA |  |  |  |  | Sex 31/07/26 |  |
| 82 | 1.12.6.4 | Aprovação | 5d | 2026-08-07 | 2026-08-14 | 81 | 2026-08-03 | 2026-08-07 | 5d | 37d |  | finish no earlier than 2026-07-21 |  |  |  | MECÂNICA |  |  |  |  | Sex 07/08/26 |  |

| ID | WBS | Task | Duration | Start | Finish | Predecessors | Baseline start | Baseline finish | Baseline duration | Total slack | Free slack | Constraint | Tipo de documento | Área | Sub-área | Disciplina | Título | Formato | Quantidade | Agrupamento Cecal | Término_LB_R0 | Início_LB_R0 |
| --- | --- | --- | --- | --- | --- | --- | --- | --- | --- | --- | --- | --- | --- | --- | --- | --- | --- | --- | --- | --- | --- | --- |
| 83 | 1.12.7 | **AG-F0009-0302-MB-L-00007** | 20d | 2026-07-14 | 2026-08-11 |  | 2026-07-08 | 2026-08-04 | 20d | 40d |  |  | AG - Arranjo (AG) | 03 - REDUÇÃO | 02 - CARREGAMENTO | MECÂNICA | LOCAÇÃO SUPORTE TUBULACOES COMBUSTIVEL LATERAL | A1 (841x594mm) | 01 | Revisão do sistema de carregamento | Ter 04/08/26 | Qua 08/07/26 |
| 84 | 1.12.7.1 | Emissão inicial | 10d | 2026-07-14 | 2026-07-28 | 54 | 2026-07-08 | 2026-07-21 | 10d | 40d | 0d | finish no earlier than 2026-07-21 |  |  |  | MECÂNICA |  |  |  |  | Ter 21/07/26 |  |
| 85 | 1.12.7.2 | Avaliação do Cliente | 5d | 2026-07-28 | 2026-08-04 | 84 | 2026-07-22 | 2026-07-28 | 5d | 40d | 0d | finish no earlier than 2026-07-21 |  |  |  | MECÂNICA |  |  |  |  | Ter 28/07/26 |  |
| 86 | 1.12.7.3 | Atendimento de Comentário | 3d | 2026-08-04 | 2026-08-07 | 85 | 2026-07-29 | 2026-07-31 | 3d | 40d | 0d | finish no earlier than 2026-07-21 |  |  |  | MECÂNICA |  |  |  |  | Sex 31/07/26 |  |
| 87 | 1.12.7.4 | Aprovação | 2d | 2026-08-07 | 2026-08-11 | 86 | 2026-08-03 | 2026-08-04 | 2d | 40d |  | finish no earlier than 2026-07-21 |  |  |  | MECÂNICA |  |  |  |  | Ter 04/08/26 |  |
| 88 | 1.12.8 | **AG-F0009-0302-MB-L-00008** | 20d | 2026-07-14 | 2026-08-11 |  | 2026-07-08 | 2026-08-04 | 20d | 40d |  |  | AG - Arranjo (AG) | 03 - REDUÇÃO | 02 - CARREGAMENTO | MECÂNICA | LOCAÇÃO SUPORTE TUBULACOES COMBUSTIVEL LATERAL | A1 (841x594mm) | 01 | Revisão do sistema de carregamento | Ter 04/08/26 | Qua 08/07/26 |
| 89 | 1.12.8.1 | Emissão inicial | 10d | 2026-07-14 | 2026-07-28 | 54 | 2026-07-08 | 2026-07-21 | 10d | 40d | 0d | finish no earlier than 2026-07-21 |  |  |  | MECÂNICA |  |  |  |  | Ter 21/07/26 |  |
| 90 | 1.12.8.2 | Avaliação do Cliente | 5d | 2026-07-28 | 2026-08-04 | 89 | 2026-07-22 | 2026-07-28 | 5d | 40d | 0d | finish no earlier than 2026-07-21 |  |  |  | MECÂNICA |  |  |  |  | Ter 28/07/26 |  |
| 91 | 1.12.8.3 | Atendimento de Comentário | 3d | 2026-08-04 | 2026-08-07 | 90 | 2026-07-29 | 2026-07-31 | 3d | 40d | 0d | finish no earlier than 2026-07-21 |  |  |  | MECÂNICA |  |  |  |  | Sex 31/07/26 |  |
| 92 | 1.12.8.4 | Aprovação | 2d | 2026-08-07 | 2026-08-11 | 91 | 2026-08-03 | 2026-08-04 | 2d | 40d |  | finish no earlier than 2026-07-21 |  |  |  | MECÂNICA |  |  |  |  | Ter 04/08/26 |  |
| 93 | 1.12.9 | **AG-F0009-0302-MB-L-00009** | 20d | 2026-07-14 | 2026-08-11 |  | 2026-07-08 | 2026-08-04 | 20d | 40d |  |  | AG - Arranjo (AG) | 03 - REDUÇÃO | 02 - CARREGAMENTO | MECÂNICA | LOCAÇÃO SUPORTE TUBULACOES BOOSTER | A1 (841x594mm) | 01 | Revisão do sistema de carregamento | Ter 04/08/26 | Qua 08/07/26 |
| 94 | 1.12.9.1 | Emissão inicial | 10d | 2026-07-14 | 2026-07-28 | 54 | 2026-07-08 | 2026-07-21 | 10d | 40d | 0d | finish no earlier than 2026-07-21 |  |  |  | MECÂNICA |  |  |  |  | Ter 21/07/26 |  |
| 95 | 1.12.9.2 | Avaliação do Cliente | 5d | 2026-07-28 | 2026-08-04 | 94 | 2026-07-22 | 2026-07-28 | 5d | 40d | 0d | finish no earlier than 2026-07-21 |  |  |  | MECÂNICA |  |  |  |  | Ter 28/07/26 |  |
| 96 | 1.12.9.3 | Atendimento de Comentário | 3d | 2026-08-04 | 2026-08-07 | 95 | 2026-07-29 | 2026-07-31 | 3d | 40d | 0d | finish no earlier than 2026-07-21 |  |  |  | MECÂNICA |  |  |  |  | Sex 31/07/26 |  |
| 97 | 1.12.9.4 | Aprovação | 2d | 2026-08-07 | 2026-08-11 | 96 | 2026-08-03 | 2026-08-04 | 2d | 40d |  | finish no earlier than 2026-07-21 |  |  |  | MECÂNICA |  |  |  |  | Ter 04/08/26 |  |
| 98 | 1.12.10 | **AG-F0009-0302-MB-L-00010** | 20d | 2026-07-14 | 2026-08-11 |  | 2026-07-08 | 2026-08-04 | 20d | 2d |  |  | AG - Arranjo (AG) | 03 - REDUÇÃO | 02 - CARREGAMENTO | MECÂNICA | LOCAÇÃO SUPORTE TUBULACOES BOOSTER DETALHES | A1 (841x594mm) | 01 | Revisão do sistema de carregamento | Ter 04/08/26 | Qua 08/07/26 |
| 99 | 1.12.10.1 | Emissão inicial | 10d | 2026-07-14 | 2026-07-28 | 54 | 2026-07-08 | 2026-07-21 | 10d | 2d | 0d | finish no earlier than 2026-07-21 |  |  |  | MECÂNICA |  |  |  |  | Ter 21/07/26 |  |
| 100 | 1.12.10.2 | Avaliação do Cliente | 5d | 2026-07-28 | 2026-08-04 | 99 | 2026-07-22 | 2026-07-28 | 5d | 40d | 0d | finish no earlier than 2026-07-21 |  |  |  | MECÂNICA |  |  |  |  | Ter 28/07/26 |  |
| 101 | 1.12.10.3 | Atendimento de Comentário | 3d | 2026-08-04 | 2026-08-07 | 100 | 2026-07-29 | 2026-07-31 | 3d | 40d | 0d | finish no earlier than 2026-07-21 |  |  |  | MECÂNICA |  |  |  |  | Sex 31/07/26 |  |
| 102 | 1.12.10.4 | Aprovação | 2d | 2026-08-07 | 2026-08-11 | 101 | 2026-08-03 | 2026-08-04 | 2d | 40d |  | finish no earlier than 2026-07-21 |  |  |  | MECÂNICA |  |  |  |  | Ter 04/08/26 |  |
| 103 | 1.12.11 | **DT-F0009-0302-MB-L-00001** | 20d | 2026-07-14 | 2026-08-11 |  | 2026-07-08 | 2026-08-04 | 20d | 10d |  |  | DT - Detalhe Típico | 03 - REDUÇÃO | 02 - CARREGAMENTO | MECÂNICA | MOEGA DE RECEBIMENTO | A1 (841x594mm) | 01 | Revisão do sistema de carregamento | Ter 04/08/26 | Qua 08/07/26 |
| 104 | 1.12.11.1 | Emissão inicial | 10d | 2026-07-14 | 2026-07-28 | 54 | 2026-07-08 | 2026-07-21 | 10d | 10d | 0d |  |  |  |  | MECÂNICA |  |  |  |  | Ter 21/07/26 |  |
| 105 | 1.12.11.2 | Avaliação do Cliente | 5d | 2026-07-28 | 2026-08-04 | 104 | 2026-07-22 | 2026-07-28 | 5d | 10d | 0d |  |  |  |  | MECÂNICA |  |  |  |  | Ter 28/07/26 |  |
| 106 | 1.12.11.3 | Atendimento de Comentário | 3d | 2026-08-04 | 2026-08-07 | 105 | 2026-07-29 | 2026-07-31 | 3d | 40d | 0d |  |  |  |  | MECÂNICA |  |  |  |  | Sex 31/07/26 |  |
| 107 | 1.12.11.4 | Aprovação | 2d | 2026-08-07 | 2026-08-11 | 106 | 2026-08-03 | 2026-08-04 | 2d | 40d |  |  |  |  |  | MECÂNICA |  |  |  |  | Ter 04/08/26 |  |

| ID | WBS | Task | Duration | Start | Finish | Predecessors | Baseline start | Baseline finish | Baseline duration | Total slack | Free slack | Tipo de documento | Área | Sub-área | Disciplina | Título | Formato | Quantidade | Agrupamento Cecal | Término_LB_R0 | Início_LB_R0 |
| --- | --- | --- | --- | --- | --- | --- | --- | --- | --- | --- | --- | --- | --- | --- | --- | --- | --- | --- | --- | --- | --- |
| 108 | 1.12.12 | **DT-F0009-0302-MB-L-00002** | 20d | 2026-07-14 | 2026-08-11 |  | 2026-07-08 | 2026-08-04 | 20d | 40d |  | DT - Detalhe Típico | 03 - REDUÇÃO | 02 - CARREGAMENTO | MECÂNICA | CORREIA REVERSÍVEL E MÓVEL - LIMITES DE OPERAÇÃO | A1 (841x594mm) | 01 | Revisão do sistema de carregamento | Ter 04/08/26 | Qua 08/07/26 |
| 109 | 1.12.12.1 | Emissão inicial | 10d | 2026-07-14 | 2026-07-28 | 54 | 2026-07-08 | 2026-07-21 | 10d | 40d | 0d |  |  |  | MECÂNICA |  |  |  |  | Ter 21/07/26 |  |
| 110 | 1.12.12.2 | Avaliação do Cliente | 5d | 2026-07-28 | 2026-08-04 | 109 | 2026-07-22 | 2026-07-28 | 5d | 40d | 0d |  |  |  | MECÂNICA |  |  |  |  | Ter 28/07/26 |  |
| 111 | 1.12.12.3 | Atendimento de Comentário | 3d | 2026-08-04 | 2026-08-07 | 110 | 2026-07-29 | 2026-07-31 | 3d | 40d | 0d |  |  |  | MECÂNICA |  |  |  |  | Sex 31/07/26 |  |
| 112 | 1.12.12.4 | Aprovação | 2d | 2026-08-07 | 2026-08-11 | 111 | 2026-08-03 | 2026-08-04 | 2d | 40d |  |  |  |  | MECÂNICA |  |  |  |  | Ter 04/08/26 |  |
| 113 | 1.12.13 | **DT-F0009-0302-MB-L-00003** | 20d | 2026-07-14 | 2026-08-11 |  | 2026-07-08 | 2026-08-04 | 20d | 40d |  | DT - Detalhe Típico | 03 - REDUÇÃO | 02 - CARREGAMENTO | MECÂNICA | CORREIA REVERSÍVEL E MÓVEL - DADOS GERAIS | A1 (841x594mm) | 01 | Revisão do sistema de carregamento | Ter 04/08/26 | Qua 08/07/26 |
| 114 | 1.12.13.1 | Emissão inicial | 10d | 2026-07-14 | 2026-07-28 | 54 | 2026-07-08 | 2026-07-21 | 10d | 40d | 0d |  |  |  | MECÂNICA |  |  |  |  | Ter 21/07/26 |  |
| 115 | 1.12.13.2 | Avaliação do Cliente | 5d | 2026-07-28 | 2026-08-04 | 114 | 2026-07-22 | 2026-07-28 | 5d | 40d | 0d |  |  |  | MECÂNICA |  |  |  |  | Ter 28/07/26 |  |
| 116 | 1.12.13.3 | Atendimento de Comentário | 3d | 2026-08-04 | 2026-08-07 | 115 | 2026-07-29 | 2026-07-31 | 3d | 40d | 0d |  |  |  | MECÂNICA |  |  |  |  | Sex 31/07/26 |  |
| 117 | 1.12.13.4 | Aprovação | 2d | 2026-08-07 | 2026-08-11 | 116 | 2026-08-03 | 2026-08-04 | 2d | 40d |  |  |  |  | MECÂNICA |  |  |  |  | Ter 04/08/26 |  |
| 118 | 1.12.14 | **DT-F0009-0302-MB-L-00004** | 20d | 2026-07-14 | 2026-08-11 |  | 2026-07-08 | 2026-08-04 | 20d | 40d |  | DT - Detalhe Típico | 03 - REDUÇÃO | 02 - CARREGAMENTO | MECÂNICA | CORREIA REVERSÍVEL E MÓVEL ARRANJOS ROLETES | A1 (841x594mm) | 01 | Revisão do sistema de carregamento | Ter 04/08/26 | Qua 08/07/26 |
| 119 | 1.12.14.1 | Emissão inicial | 10d | 2026-07-14 | 2026-07-28 | 54 | 2026-07-08 | 2026-07-21 | 10d | 40d | 0d |  |  |  | MECÂNICA |  |  |  |  | Ter 21/07/26 |  |
| 120 | 1.12.14.2 | Avaliação do Cliente | 5d | 2026-07-28 | 2026-08-04 | 119 | 2026-07-22 | 2026-07-28 | 5d | 40d | 0d |  |  |  | MECÂNICA |  |  |  |  | Ter 28/07/26 |  |
| 121 | 1.12.14.3 | Atendimento de Comentário | 3d | 2026-08-04 | 2026-08-07 | 120 | 2026-07-29 | 2026-07-31 | 3d | 40d | 0d |  |  |  | MECÂNICA |  |  |  |  | Sex 31/07/26 |  |
| 122 | 1.12.14.4 | Aprovação | 2d | 2026-08-07 | 2026-08-11 | 121 | 2026-08-03 | 2026-08-04 | 2d | 40d |  |  |  |  | MECÂNICA |  |  |  |  | Ter 04/08/26 |  |
| 123 | 1.12.15 | **DT-F0009-0302-MB-L-00005** | 20d | 2026-07-14 | 2026-08-11 |  | 2026-07-08 | 2026-08-04 | 20d | 40d |  | DT - Detalhe Típico | 03 - REDUÇÃO | 02 - CARREGAMENTO | MECÂNICA | CORREIA REVERSÍVEL E MÓVEL - SEÇÕES | A1 (841x594mm) | 01 | Revisão do sistema de carregamento | Ter 04/08/26 | Qua 08/07/26 |
| 124 | 1.12.15.1 | Emissão inicial | 10d | 2026-07-14 | 2026-07-28 | 54 | 2026-07-08 | 2026-07-21 | 10d | 40d | 0d |  |  |  | MECÂNICA |  |  |  |  | Ter 21/07/26 |  |
| 125 | 1.12.15.2 | Avaliação do Cliente | 5d | 2026-07-28 | 2026-08-04 | 124 | 2026-07-22 | 2026-07-28 | 5d | 40d | 0d |  |  |  | MECÂNICA |  |  |  |  | Ter 28/07/26 |  |
| 126 | 1.12.15.3 | Atendimento de Comentário | 3d | 2026-08-04 | 2026-08-07 | 125 | 2026-07-29 | 2026-07-31 | 3d | 40d | 0d |  |  |  | MECÂNICA |  |  |  |  | Sex 31/07/26 |  |
| 127 | 1.12.15.4 | Aprovação | 2d | 2026-08-07 | 2026-08-11 | 126 | 2026-08-03 | 2026-08-04 | 2d | 40d |  |  |  |  | MECÂNICA |  |  |  |  | Ter 04/08/26 |  |
| 128 | 1.12.16 | **DT-F0009-0302-MB-L-00006** | 20d | 2026-07-14 | 2026-08-11 |  | 2026-07-08 | 2026-08-04 | 20d | 5d |  | DT - Detalhe Típico | 03 - REDUÇÃO | 02 - CARREGAMENTO | MECÂNICA | SILO DE PROCESSOS BAR FORNO 1 E 2 | A1 (841x594mm) | 01 | Revisão do sistema de carregamento | Ter 04/08/26 | Qua 08/07/26 |
| 129 | 1.12.16.1 | Emissão inicial | 10d | 2026-07-14 | 2026-07-28 | 54 | 2026-07-08 | 2026-07-21 | 10d | 5d | 0d |  |  |  | MECÂNICA |  |  |  |  | Ter 21/07/26 |  |
| 130 | 1.12.16.2 | Avaliação do Cliente | 5d | 2026-07-28 | 2026-08-04 | 129 | 2026-07-22 | 2026-07-28 | 5d | 40d | 0d |  |  |  | MECÂNICA |  |  |  |  | Ter 28/07/26 |  |
| 131 | 1.12.16.3 | Atendimento de Comentário | 3d | 2026-08-04 | 2026-08-07 | 130 | 2026-07-29 | 2026-07-31 | 3d | 40d | 0d |  |  |  | MECÂNICA |  |  |  |  | Sex 31/07/26 |  |
| 132 | 1.12.16.4 | Aprovação | 2d | 2026-08-07 | 2026-08-11 | 131 | 2026-08-03 | 2026-08-04 | 2d | 40d |  |  |  |  | MECÂNICA |  |  |  |  | Ter 04/08/26 |  |

| ID | WBS | Task | Duration | Start | Finish | Predecessors | Baseline start | Baseline finish | Baseline duration | Total slack | Free slack | Tipo de documento | Área | Sub-área | Disciplina | Título | Formato | Quantidade | Agrupamento Cecal | Término_LB_R0 | Início_LB_R0 |
| --- | --- | --- | --- | --- | --- | --- | --- | --- | --- | --- | --- | --- | --- | --- | --- | --- | --- | --- | --- | --- | --- |
| 133 | 1.12.17 | **DT-F0009-0302-MB-L-00007** | 20d | 2026-07-28 | 2026-08-25 |  | 2026-07-22 | 2026-08-18 | 20d | 30d |  | DT - Detalhe Típico | 03 - REDUÇÃO | 02 - CARREGAMENTO | MECÂNICA | SILO DE PROCESSOS COMBUSTÍVEL LATERAL FORNO 1 E 2 | A1 (841x594mm) | 01 | Revisão do sistema de carregamento | Ter 18/08/26 | Qua 22/07/26 |
| 134 | 1.12.17.1 | Emissão inicial | 10d | 2026-07-28 | 2026-08-11 | 129 | 2026-07-22 | 2026-08-04 | 10d | 30d | 0d |  |  |  | MECÂNICA |  |  |  |  | Ter 04/08/26 |  |
| 135 | 1.12.17.2 | Avaliação do Cliente | 5d | 2026-08-11 | 2026-08-18 | 134 | 2026-08-05 | 2026-08-11 | 5d | 30d | 0d |  |  |  | MECÂNICA |  |  |  |  | Ter 11/08/26 |  |
| 136 | 1.12.17.3 | Atendimento de Comentário | 3d | 2026-08-18 | 2026-08-21 | 135 | 2026-08-12 | 2026-08-14 | 3d | 30d | 0d |  |  |  | MECÂNICA |  |  |  |  | Sex 14/08/26 |  |
| 137 | 1.12.17.4 | Aprovação | 2d | 2026-08-21 | 2026-08-25 | 136 | 2026-08-17 | 2026-08-18 | 2d | 30d |  |  |  |  | MECÂNICA |  |  |  |  | Ter 18/08/26 |  |
| 138 | 1.12.18 | **DT-F0009-0302-MB-L-00008** | 20d | 2026-07-28 | 2026-08-25 |  | 2026-07-22 | 2026-08-18 | 20d | 30d |  | DT - Detalhe Típico | 03 - REDUÇÃO | 02 - CARREGAMENTO | MECÂNICA | SILO DE PROCESSOS BOOSTER FORNO 1 E 2 | A1 (841x594mm) | 01 | Revisão do sistema de carregamento | Ter 18/08/26 | Qua 22/07/26 |
| 139 | 1.12.18.1 | Emissão inicial | 10d | 2026-07-28 | 2026-08-11 | 129 | 2026-07-22 | 2026-08-04 | 10d | 30d | 0d |  |  |  | MECÂNICA |  |  |  |  | Ter 04/08/26 |  |
| 140 | 1.12.18.2 | Avaliação do Cliente | 5d | 2026-08-11 | 2026-08-18 | 139 | 2026-08-05 | 2026-08-11 | 5d | 30d | 0d |  |  |  | MECÂNICA |  |  |  |  | Ter 11/08/26 |  |
| 141 | 1.12.18.3 | Atendimento de Comentário | 3d | 2026-08-18 | 2026-08-21 | 140 | 2026-08-12 | 2026-08-14 | 3d | 30d | 0d |  |  |  | MECÂNICA |  |  |  |  | Sex 14/08/26 |  |
| 142 | 1.12.18.4 | Aprovação | 2d | 2026-08-21 | 2026-08-25 | 141 | 2026-08-17 | 2026-08-18 | 2d | 30d |  |  |  |  | MECÂNICA |  |  |  |  | Ter 18/08/26 |  |
| 143 | 1.12.19 | **DT-F0009-0302-MB-L-00009** | 20d | 2026-07-28 | 2026-08-25 |  | 2026-07-22 | 2026-08-18 | 20d | 30d |  | DT - Detalhe Típico | 03 - REDUÇÃO | 02 - CARREGAMENTO | MECÂNICA | SILO DE BUFFER BAR FORNO 1 E 2 | A1 (841x594mm) | 01 | Revisão do sistema de carregamento | Ter 18/08/26 | Qua 22/07/26 |
| 144 | 1.12.19.1 | Emissão inicial | 10d | 2026-07-28 | 2026-08-11 | 129 | 2026-07-22 | 2026-08-04 | 10d | 30d | 0d |  |  |  | MECÂNICA |  |  |  |  | Ter 04/08/26 |  |
| 145 | 1.12.19.2 | Avaliação do Cliente | 5d | 2026-08-11 | 2026-08-18 | 144 | 2026-08-05 | 2026-08-11 | 5d | 30d | 0d |  |  |  | MECÂNICA |  |  |  |  | Ter 11/08/26 |  |
| 146 | 1.12.19.3 | Atendimento de Comentário | 3d | 2026-08-18 | 2026-08-21 | 145 | 2026-08-12 | 2026-08-14 | 3d | 30d | 0d |  |  |  | MECÂNICA |  |  |  |  | Sex 14/08/26 |  |
| 147 | 1.12.19.4 | Aprovação | 2d | 2026-08-21 | 2026-08-25 | 146 | 2026-08-17 | 2026-08-18 | 2d | 30d |  |  |  |  | MECÂNICA |  |  |  |  | Ter 18/08/26 |  |
| 148 | 1.12.20 | **DT-F0009-0302-MB-L-00010** | 20d | 2026-07-28 | 2026-08-25 |  | 2026-07-22 | 2026-08-18 | 20d | 30d |  | DT - Detalhe Típico | 03 - REDUÇÃO | 02 - CARREGAMENTO | MECÂNICA | SILO DE BUFFER COMBUSTÍVEL LATERAL FORNO 1 E 2 | A1 (841x594mm) | 01 | Revisão do sistema de carregamento | Ter 18/08/26 | Qua 22/07/26 |
| 149 | 1.12.20.1 | Emissão inicial | 10d | 2026-07-28 | 2026-08-11 | 129 | 2026-07-22 | 2026-08-04 | 10d | 30d | 0d |  |  |  | MECÂNICA |  |  |  |  | Ter 04/08/26 |  |
| 150 | 1.12.20.2 | Avaliação do Cliente | 5d | 2026-08-11 | 2026-08-18 | 149 | 2026-08-05 | 2026-08-11 | 5d | 30d | 0d |  |  |  | MECÂNICA |  |  |  |  | Ter 11/08/26 |  |
| 151 | 1.12.20.3 | Atendimento de Comentário | 3d | 2026-08-18 | 2026-08-21 | 150 | 2026-08-12 | 2026-08-14 | 3d | 30d | 0d |  |  |  | MECÂNICA |  |  |  |  | Sex 14/08/26 |  |
| 152 | 1.12.20.4 | Aprovação | 2d | 2026-08-21 | 2026-08-25 | 151 | 2026-08-17 | 2026-08-18 | 2d | 30d |  |  |  |  | MECÂNICA |  |  |  |  | Ter 18/08/26 |  |
| 153 | 1.12.21 | **DT-F0009-0302-MB-L-00011** | 25d | 2026-07-28 | 2026-09-01 |  | 2026-07-22 | 2026-08-25 | 25d | 5d |  | DT - Detalhe Típico | 03 - REDUÇÃO | 02 - CARREGAMENTO | MECÂNICA | SILO DE BUFFER BOOSTER FORNO 1 E 2 | A1 (841x594mm) | 01 | Revisão do sistema de carregamento | Ter 25/08/26 | Qua 22/07/26 |
| 154 | 1.12.21.1 | Emissão inicial | 10d | 2026-07-28 | 2026-08-11 | 129 | 2026-07-22 | 2026-08-04 | 10d | 5d | 0d |  |  |  | MECÂNICA |  |  |  |  | Ter 04/08/26 |  |
| 155 | 1.12.21.2 | Avaliação do Cliente | 5d | 2026-08-11 | 2026-08-18 | 154 | 2026-08-05 | 2026-08-11 | 5d | 25d | 0d |  |  |  | MECÂNICA |  |  |  |  | Ter 11/08/26 |  |
| 156 | 1.12.21.3 | Atendimento de Comentário | 5d | 2026-08-18 | 2026-08-25 | 155 | 2026-08-12 | 2026-08-18 | 5d | 25d | 0d |  |  |  | MECÂNICA |  |  |  |  | Ter 18/08/26 |  |
| 157 | 1.12.21.4 | Aprovação | 5d | 2026-08-25 | 2026-09-01 | 156 | 2026-08-19 | 2026-08-25 | 5d | 25d |  |  |  |  | MECÂNICA |  |  |  |  | Ter 25/08/26 |  |

| ID | WBS | Task | Duration | Start | Finish | Predecessors | Baseline start | Baseline finish | Baseline duration | Total slack | Free slack | Tipo de documento | Área | Sub-área | Disciplina | Título | Formato | Quantidade | Agrupamento Cecal | Término_LB_R0 | Início_LB_R0 |
| --- | --- | --- | --- | --- | --- | --- | --- | --- | --- | --- | --- | --- | --- | --- | --- | --- | --- | --- | --- | --- | --- |
| 158 | 1.12.22 | **DT-F0009-0302-MB-L-00012** | 20d | 2026-08-11 | 2026-09-08 |  | 2026-08-05 | 2026-09-01 | 20d | 5d |  | DT - Detalhe Típico | 03 - REDUÇÃO | 02 - CARREGAMENTO | MECÂNICA | TUBULACOES DE DESCARGA SISTEMA DE CARREGAMENTO | A1 (841x594mm) | 01 | Revisão do sistema de carregamento | Ter 01/09/26 | Qua 05/08/26 |
| 159 | 1.12.22.1 | Emissão inicial | 10d | 2026-08-11 | 2026-08-25 | 154 | 2026-08-05 | 2026-08-18 | 10d | 5d | 0d |  |  |  | MECÂNICA |  |  |  |  | Ter 18/08/26 |  |
| 160 | 1.12.22.2 | Avaliação do Cliente | 5d | 2026-08-25 | 2026-09-01 | 159 | 2026-08-19 | 2026-08-25 | 5d | 20d | 0d |  |  |  | MECÂNICA |  |  |  |  | Ter 25/08/26 |  |
| 161 | 1.12.22.3 | Atendimento de Comentário | 3d | 2026-09-01 | 2026-09-04 | 160 | 2026-08-26 | 2026-08-28 | 3d | 20d | 0d |  |  |  | MECÂNICA |  |  |  |  | Sex 28/08/26 |  |
| 162 | 1.12.22.4 | Aprovação | 2d | 2026-09-04 | 2026-09-08 | 161 | 2026-08-31 | 2026-09-01 | 2d | 20d |  |  |  |  | MECÂNICA |  |  |  |  | Ter 01/09/26 |  |
| 163 | 1.12.23 | **DT-F0009-0302-MB-L-00013** | 20d | 2026-08-11 | 2026-09-08 |  | 2026-08-05 | 2026-09-01 | 20d | 20d |  | DT - Detalhe Típico | 03 - REDUÇÃO | 02 - CARREGAMENTO | MECÂNICA | BAR SYSTEM - CALHAS ARRENGEMENT | A1 (841x594mm) | 01 | Revisão do sistema de carregamento | Ter 01/09/26 | Qua 05/08/26 |
| 164 | 1.12.23.1 | Emissão inicial | 10d | 2026-08-11 | 2026-08-25 | 154 | 2026-08-05 | 2026-08-18 | 10d | 20d | 0d |  |  |  | MECÂNICA |  |  |  |  | Ter 18/08/26 |  |
| 165 | 1.12.23.2 | Avaliação do Cliente | 5d | 2026-08-25 | 2026-09-01 | 164 | 2026-08-19 | 2026-08-25 | 5d | 20d | 0d |  |  |  | MECÂNICA |  |  |  |  | Ter 25/08/26 |  |
| 166 | 1.12.23.3 | Atendimento de Comentário | 3d | 2026-09-01 | 2026-09-04 | 165 | 2026-08-26 | 2026-08-28 | 3d | 20d | 0d |  |  |  | MECÂNICA |  |  |  |  | Sex 28/08/26 |  |
| 167 | 1.12.23.4 | Aprovação | 2d | 2026-09-04 | 2026-09-08 | 166 | 2026-08-31 | 2026-09-01 | 2d | 20d |  |  |  |  | MECÂNICA |  |  |  |  | Ter 01/09/26 |  |
| 168 | 1.12.24 | **DT-F0009-0302-MB-L-00014** | 20d | 2026-08-11 | 2026-09-08 |  | 2026-08-05 | 2026-09-01 | 20d | 20d |  | DT - Detalhe Típico | 03 - REDUÇÃO | 02 - CARREGAMENTO | MECÂNICA | BAR CALHAS - MARCA A | A1 (841x594mm) | 01 | Revisão do sistema de carregamento | Ter 01/09/26 | Qua 05/08/26 |
| 169 | 1.12.24.1 | Emissão inicial | 10d | 2026-08-11 | 2026-08-25 | 154 | 2026-08-05 | 2026-08-18 | 10d | 20d | 0d |  |  |  | MECÂNICA |  |  |  |  | Ter 18/08/26 |  |
| 170 | 1.12.24.2 | Avaliação do Cliente | 5d | 2026-08-25 | 2026-09-01 | 169 | 2026-08-19 | 2026-08-25 | 5d | 20d | 0d |  |  |  | MECÂNICA |  |  |  |  | Ter 25/08/26 |  |
| 171 | 1.12.24.3 | Atendimento de Comentário | 3d | 2026-09-01 | 2026-09-04 | 170 | 2026-08-26 | 2026-08-28 | 3d | 20d | 0d |  |  |  | MECÂNICA |  |  |  |  | Sex 28/08/26 |  |
| 172 | 1.12.24.4 | Aprovação | 2d | 2026-09-04 | 2026-09-08 | 171 | 2026-08-31 | 2026-09-01 | 2d | 20d |  |  |  |  | MECÂNICA |  |  |  |  | Ter 01/09/26 |  |
| 173 | 1.12.25 | **DT-F0009-0302-MB-L-00015** | 20d | 2026-08-11 | 2026-09-08 |  | 2026-08-05 | 2026-09-01 | 20d | 20d |  | DT - Detalhe Típico | 03 - REDUÇÃO | 02 - CARREGAMENTO | MECÂNICA | BAR CALHAS - MARCA B | A1 (841x594mm) | 01 | Revisão do sistema de carregamento | Ter 01/09/26 | Qua 05/08/26 |
| 174 | 1.12.25.1 | Emissão inicial | 10d | 2026-08-11 | 2026-08-25 | 154 | 2026-08-05 | 2026-08-18 | 10d | 20d | 0d |  |  |  | MECÂNICA |  |  |  |  | Ter 18/08/26 |  |
| 175 | 1.12.25.2 | Avaliação do Cliente | 5d | 2026-08-25 | 2026-09-01 | 174 | 2026-08-19 | 2026-08-25 | 5d | 20d | 0d |  |  |  | MECÂNICA |  |  |  |  | Ter 25/08/26 |  |
| 176 | 1.12.25.3 | Atendimento de Comentário | 3d | 2026-09-01 | 2026-09-04 | 175 | 2026-08-26 | 2026-08-28 | 3d | 20d | 0d |  |  |  | MECÂNICA |  |  |  |  | Sex 28/08/26 |  |
| 177 | 1.12.25.4 | Aprovação | 2d | 2026-09-04 | 2026-09-08 | 176 | 2026-08-31 | 2026-09-01 | 2d | 20d |  |  |  |  | MECÂNICA |  |  |  |  | Ter 01/09/26 |  |
| 178 | 1.12.26 | **DT-F0009-0302-MB-L-00016** | 20d | 2026-08-11 | 2026-09-08 |  | 2026-08-05 | 2026-09-01 | 20d | 20d |  | DT - Detalhe Típico | 03 - REDUÇÃO | 02 - CARREGAMENTO | MECÂNICA | BAR CALHAS - MARCA C | A1 (841x594mm) | 01 | Revisão do sistema de carregamento | Ter 01/09/26 | Qua 05/08/26 |
| 179 | 1.12.26.1 | Emissão inicial | 10d | 2026-08-11 | 2026-08-25 | 154 | 2026-08-05 | 2026-08-18 | 10d | 20d | 0d |  |  |  | MECÂNICA |  |  |  |  | Ter 18/08/26 |  |
| 180 | 1.12.26.2 | Avaliação do Cliente | 5d | 2026-08-25 | 2026-09-01 | 179 | 2026-08-19 | 2026-08-25 | 5d | 20d | 0d |  |  |  | MECÂNICA |  |  |  |  | Ter 25/08/26 |  |
| 181 | 1.12.26.3 | Atendimento de Comentário | 3d | 2026-09-01 | 2026-09-04 | 180 | 2026-08-26 | 2026-08-28 | 3d | 20d | 0d |  |  |  | MECÂNICA |  |  |  |  | Sex 28/08/26 |  |
| 182 | 1.12.26.4 | Aprovação | 2d | 2026-09-04 | 2026-09-08 | 181 | 2026-08-31 | 2026-09-01 | 2d | 20d |  |  |  |  | MECÂNICA |  |  |  |  | Ter 01/09/26 |  |

| ID | WBS | Task | Duration | Start | Finish | Predecessors | Baseline start | Baseline finish | Baseline duration | Total slack | Free slack | Tipo de documento | Área | Sub-área | Disciplina | Título | Formato | Quantidade | Agrupamento Cecal | Término_LB_R0 | Início_LB_R0 |
| --- | --- | --- | --- | --- | --- | --- | --- | --- | --- | --- | --- | --- | --- | --- | --- | --- | --- | --- | --- | --- | --- |
| 183 | 1.12.27 | **DT-F0009-0302-MB-L-00017** | 20d | 2026-08-11 | 2026-09-08 |  | 2026-08-05 | 2026-09-01 | 20d | 20d |  | DT - Detalhe Típico | 03 - REDUÇÃO | 02 - CARREGAMENTO | MECÂNICA | BAR CALHAS - MARCA D | A1 (841x594mm) | 01 | Revisão do sistema de carregamento | Ter 01/09/26 | Qua 05/08/26 |
| 184 | 1.12.27.1 | Emissão inicial | 10d | 2026-08-11 | 2026-08-25 | 154 | 2026-08-05 | 2026-08-18 | 10d | 20d | 0d |  |  |  | MECÂNICA |  |  |  |  | Ter 18/08/26 |  |
| 185 | 1.12.27.2 | Avaliação do Cliente | 5d | 2026-08-25 | 2026-09-01 | 184 | 2026-08-19 | 2026-08-25 | 5d | 20d | 0d |  |  |  | MECÂNICA |  |  |  |  | Ter 25/08/26 |  |
| 186 | 1.12.27.3 | Atendimento de Comentário | 3d | 2026-09-01 | 2026-09-04 | 185 | 2026-08-26 | 2026-08-28 | 3d | 20d | 0d |  |  |  | MECÂNICA |  |  |  |  | Sex 28/08/26 |  |
| 187 | 1.12.27.4 | Aprovação | 2d | 2026-09-04 | 2026-09-08 | 186 | 2026-08-31 | 2026-09-01 | 2d | 20d |  |  |  |  | MECÂNICA |  |  |  |  | Ter 01/09/26 |  |
| 188 | 1.12.28 | **DT-F0009-0302-MB-L-00018** | 20d | 2026-08-11 | 2026-09-08 |  | 2026-08-05 | 2026-09-01 | 20d | 20d |  | DT - Detalhe Típico | 03 - REDUÇÃO | 02 - CARREGAMENTO | MECÂNICA | BAR CALHAS - DETAIL TUBES | A1 (841x594mm) | 01 | Revisão do sistema de carregamento | Ter 01/09/26 | Qua 05/08/26 |
| 189 | 1.12.28.1 | Emissão inicial | 10d | 2026-08-11 | 2026-08-25 | 154 | 2026-08-05 | 2026-08-18 | 10d | 20d | 0d |  |  |  | MECÂNICA |  |  |  |  | Ter 18/08/26 |  |
| 190 | 1.12.28.2 | Avaliação do Cliente | 5d | 2026-08-25 | 2026-09-01 | 189 | 2026-08-19 | 2026-08-25 | 5d | 20d | 0d |  |  |  | MECÂNICA |  |  |  |  | Ter 25/08/26 |  |
| 191 | 1.12.28.3 | Atendimento de Comentário | 3d | 2026-09-01 | 2026-09-04 | 190 | 2026-08-26 | 2026-08-28 | 3d | 20d | 0d |  |  |  | MECÂNICA |  |  |  |  | Sex 28/08/26 |  |
| 192 | 1.12.28.4 | Aprovação | 2d | 2026-09-04 | 2026-09-08 | 191 | 2026-08-31 | 2026-09-01 | 2d | 20d |  |  |  |  | MECÂNICA |  |  |  |  | Ter 01/09/26 |  |
| 193 | 1.12.29 | **DT-F0009-0302-MB-L-00019** | 20d | 2026-08-11 | 2026-09-08 |  | 2026-08-05 | 2026-09-01 | 20d | 20d |  | DT - Detalhe Típico | 03 - REDUÇÃO | 02 - CARREGAMENTO | MECÂNICA | BAR CALHAS - DETAIL TUBES 2 | A1 (841x594mm) | 01 | Revisão do sistema de carregamento | Ter 01/09/26 | Qua 05/08/26 |
| 194 | 1.12.29.1 | Emissão inicial | 10d | 2026-08-11 | 2026-08-25 | 154 | 2026-08-05 | 2026-08-18 | 10d | 20d | 0d |  |  |  | MECÂNICA |  |  |  |  | Ter 18/08/26 |  |
| 195 | 1.12.29.2 | Avaliação do Cliente | 5d | 2026-08-25 | 2026-09-01 | 194 | 2026-08-19 | 2026-08-25 | 5d | 20d | 0d |  |  |  | MECÂNICA |  |  |  |  | Ter 25/08/26 |  |
| 196 | 1.12.29.3 | Atendimento de Comentário | 3d | 2026-09-01 | 2026-09-04 | 195 | 2026-08-26 | 2026-08-28 | 3d | 20d | 0d |  |  |  | MECÂNICA |  |  |  |  | Sex 28/08/26 |  |
| 197 | 1.12.29.4 | Aprovação | 2d | 2026-09-04 | 2026-09-08 | 196 | 2026-08-31 | 2026-09-01 | 2d | 20d |  |  |  |  | MECÂNICA |  |  |  |  | Ter 01/09/26 |  |
| 198 | 1.12.30 | **DT-F0009-0302-MB-L-00020** | 20d | 2026-08-11 | 2026-09-08 |  | 2026-08-05 | 2026-09-01 | 20d | 10d |  | DT - Detalhe Típico | 03 - REDUÇÃO | 02 - CARREGAMENTO | MECÂNICA | COMBUSTÍVEL LATERAL - TUBULAÇÃO | A1 (841x594mm) | 01 | Revisão do sistema de carregamento | Ter 01/09/26 | Qua 05/08/26 |
| 199 | 1.12.30.1 | Emissão inicial | 10d | 2026-08-11 | 2026-08-25 | 154 | 2026-08-05 | 2026-08-18 | 10d | 10d | 0d |  |  |  | MECÂNICA |  |  |  |  | Ter 18/08/26 |  |
| 200 | 1.12.30.2 | Avaliação do Cliente | 5d | 2026-08-25 | 2026-09-01 | 199 | 2026-08-19 | 2026-08-25 | 5d | 20d | 0d |  |  |  | MECÂNICA |  |  |  |  | Ter 25/08/26 |  |
| 201 | 1.12.30.3 | Atendimento de Comentário | 3d | 2026-09-01 | 2026-09-04 | 200 | 2026-08-26 | 2026-08-28 | 3d | 20d | 0d |  |  |  | MECÂNICA |  |  |  |  | Sex 28/08/26 |  |
| 202 | 1.12.30.4 | Aprovação | 2d | 2026-09-04 | 2026-09-08 | 201 | 2026-08-31 | 2026-09-01 | 2d | 20d |  |  |  |  | MECÂNICA |  |  |  |  | Ter 01/09/26 |  |
| 203 | 1.12.31 | **DT-F0009-0302-MB-L-00021** | 20d | 2026-08-11 | 2026-09-08 |  | 2026-08-05 | 2026-09-01 | 20d | 20d |  | DT - Detalhe Típico | 03 - REDUÇÃO | 02 - CARREGAMENTO | MECÂNICA | COMBUSTÍVEL LATERAL CALHAS - MARCA A | A1 (841x594mm) | 01 | Revisão do sistema de carregamento | Ter 01/09/26 | Qua 05/08/26 |
| 204 | 1.12.31.1 | Emissão inicial | 10d | 2026-08-11 | 2026-08-25 | 154 | 2026-08-05 | 2026-08-18 | 10d | 20d | 0d |  |  |  | MECÂNICA |  |  |  |  | Ter 18/08/26 |  |
| 205 | 1.12.31.2 | Avaliação do Cliente | 5d | 2026-08-25 | 2026-09-01 | 204 | 2026-08-19 | 2026-08-25 | 5d | 20d | 0d |  |  |  | MECÂNICA |  |  |  |  | Ter 25/08/26 |  |
| 206 | 1.12.31.3 | Atendimento de Comentário | 3d | 2026-09-01 | 2026-09-04 | 205 | 2026-08-26 | 2026-08-28 | 3d | 20d | 0d |  |  |  | MECÂNICA |  |  |  |  | Sex 28/08/26 |  |
| 207 | 1.12.31.4 | Aprovação | 2d | 2026-09-04 | 2026-09-08 | 206 | 2026-08-31 | 2026-09-01 | 2d | 20d |  |  |  |  | MECÂNICA |  |  |  |  | Ter 01/09/26 |  |

| ID | WBS | Task | Duration | Start | Finish | Predecessors | Baseline start | Baseline finish | Baseline duration | Total slack | Free slack | Tipo de documento | Área | Sub-área | Disciplina | Título | Formato | Quantidade | Agrupamento Cecal | Término_LB_R0 | Início_LB_R0 |
| --- | --- | --- | --- | --- | --- | --- | --- | --- | --- | --- | --- | --- | --- | --- | --- | --- | --- | --- | --- | --- | --- |
| 208 | 1.12.32 | **DT-F0009-0302-MB-L-00022** | 20d | 2026-08-25 | 2026-09-22 |  | 2026-08-19 | 2026-09-15 | 20d | 10d |  | DT - Detalhe Típico | 03 - REDUÇÃO | 02 - CARREGAMENTO | MECÂNICA | COMBUSTÍVEL LATERAL CALHAS - MARCA B | A1 (841x594mm) | 01 | Revisão do sistema de carregamento | Ter 15/09/26 | Qua 19/08/26 |
| 209 | 1.12.32.1 | Emissão inicial | 10d | 2026-08-25 | 2026-09-08 | 199 | 2026-08-19 | 2026-09-01 | 10d | 10d | 0d |  |  |  | MECÂNICA |  |  |  |  | Ter 01/09/26 |  |
| 210 | 1.12.32.2 | Avaliação do Cliente | 5d | 2026-09-08 | 2026-09-15 | 209 | 2026-09-02 | 2026-09-08 | 5d | 10d | 0d |  |  |  | MECÂNICA |  |  |  |  | Ter 08/09/26 |  |
| 211 | 1.12.32.3 | Atendimento de Comentário | 3d | 2026-09-15 | 2026-09-18 | 210 | 2026-09-09 | 2026-09-11 | 3d | 10d | 0d |  |  |  | MECÂNICA |  |  |  |  | Sex 11/09/26 |  |
| 212 | 1.12.32.4 | Aprovação | 2d | 2026-09-18 | 2026-09-22 | 211 | 2026-09-14 | 2026-09-15 | 2d | 10d |  |  |  |  | MECÂNICA |  |  |  |  | Ter 15/09/26 |  |
| 213 | 1.12.33 | **DT-F0009-0302-MB-L-00023** | 20d | 2026-08-25 | 2026-09-22 |  | 2026-08-19 | 2026-09-15 | 20d | 10d |  | DT - Detalhe Típico | 03 - REDUÇÃO | 02 - CARREGAMENTO | MECÂNICA | COMBUSTÍVEL LATERAL CALHAS - MARCA C | A1 (841x594mm) | 01 | Revisão do sistema de carregamento | Ter 15/09/26 | Qua 19/08/26 |
| 214 | 1.12.33.1 | Emissão inicial | 10d | 2026-08-25 | 2026-09-08 | 199 | 2026-08-19 | 2026-09-01 | 10d | 10d | 0d |  |  |  | MECÂNICA |  |  |  |  | Ter 01/09/26 |  |
| 215 | 1.12.33.2 | Avaliação do Cliente | 5d | 2026-09-08 | 2026-09-15 | 214 | 2026-09-02 | 2026-09-08 | 5d | 10d | 0d |  |  |  | MECÂNICA |  |  |  |  | Ter 08/09/26 |  |
| 216 | 1.12.33.3 | Atendimento de Comentário | 3d | 2026-09-15 | 2026-09-18 | 215 | 2026-09-09 | 2026-09-11 | 3d | 10d | 0d |  |  |  | MECÂNICA |  |  |  |  | Sex 11/09/26 |  |
| 217 | 1.12.33.4 | Aprovação | 2d | 2026-09-18 | 2026-09-22 | 216 | 2026-09-14 | 2026-09-15 | 2d | 10d |  |  |  |  | MECÂNICA |  |  |  |  | Ter 15/09/26 |  |
| 218 | 1.12.34 | **DT-F0009-0302-MB-L-00024** | 20d | 2026-08-25 | 2026-09-22 |  | 2026-08-19 | 2026-09-15 | 20d | 10d |  | DT - Detalhe Típico | 03 - REDUÇÃO | 02 - CARREGAMENTO | MECÂNICA | COMBUSTÍVEL LATERAL CALHAS - MARCA D | A1 (841x594mm) | 01 | Revisão do sistema de carregamento | Ter 15/09/26 | Qua 19/08/26 |
| 219 | 1.12.34.1 | Emissão inicial | 10d | 2026-08-25 | 2026-09-08 | 199 | 2026-08-19 | 2026-09-01 | 10d | 10d | 0d |  |  |  | MECÂNICA |  |  |  |  | Ter 01/09/26 |  |
| 220 | 1.12.34.2 | Avaliação do Cliente | 5d | 2026-09-08 | 2026-09-15 | 219 | 2026-09-02 | 2026-09-08 | 5d | 10d | 0d |  |  |  | MECÂNICA |  |  |  |  | Ter 08/09/26 |  |
| 221 | 1.12.34.3 | Atendimento de Comentário | 3d | 2026-09-15 | 2026-09-18 | 220 | 2026-09-09 | 2026-09-11 | 3d | 10d | 0d |  |  |  | MECÂNICA |  |  |  |  | Sex 11/09/26 |  |
| 222 | 1.12.34.4 | Aprovação | 2d | 2026-09-18 | 2026-09-22 | 221 | 2026-09-14 | 2026-09-15 | 2d | 10d |  |  |  |  | MECÂNICA |  |  |  |  | Ter 15/09/26 |  |
| 223 | 1.12.35 | **DT-F0009-0302-MB-L-00025** | 20d | 2026-08-25 | 2026-09-22 |  | 2026-08-19 | 2026-09-15 | 20d | 10d |  | DT - Detalhe Típico | 03 - REDUÇÃO | 02 - CARREGAMENTO | MECÂNICA | COMBUSTÍVEL LATERAL - DETALHES DOS TUBOS 1 | A1 (841x594mm) | 01 | Revisão do sistema de carregamento | Ter 15/09/26 | Qua 19/08/26 |
| 224 | 1.12.35.1 | Emissão inicial | 10d | 2026-08-25 | 2026-09-08 | 199 | 2026-08-19 | 2026-09-01 | 10d | 10d | 0d |  |  |  | MECÂNICA |  |  |  |  | Ter 01/09/26 |  |
| 225 | 1.12.35.2 | Avaliação do Cliente | 5d | 2026-09-08 | 2026-09-15 | 224 | 2026-09-02 | 2026-09-08 | 5d | 10d | 0d |  |  |  | MECÂNICA |  |  |  |  | Ter 08/09/26 |  |
| 226 | 1.12.35.3 | Atendimento de Comentário | 3d | 2026-09-15 | 2026-09-18 | 225 | 2026-09-09 | 2026-09-11 | 3d | 10d | 0d |  |  |  | MECÂNICA |  |  |  |  | Sex 11/09/26 |  |
| 227 | 1.12.35.4 | Aprovação | 2d | 2026-09-18 | 2026-09-22 | 226 | 2026-09-14 | 2026-09-15 | 2d | 10d |  |  |  |  | MECÂNICA |  |  |  |  | Ter 15/09/26 |  |
| 228 | 1.12.36 | **DT-F0009-0302-MB-L-00026** | 20d | 2026-08-25 | 2026-09-22 |  | 2026-08-19 | 2026-09-15 | 20d | 10d |  | DT - Detalhe Típico | 03 - REDUÇÃO | 02 - CARREGAMENTO | MECÂNICA | COMBUSTÍVEL LATERAL - DETALHES DOS TUBOS 2 | A1 (841x594mm) | 01 | Revisão do sistema de carregamento | Ter 15/09/26 | Qua 19/08/26 |
| 229 | 1.12.36.1 | Emissão inicial | 10d | 2026-08-25 | 2026-09-08 | 199 | 2026-08-19 | 2026-09-01 | 10d | 10d | 0d |  |  |  | MECÂNICA |  |  |  |  | Ter 01/09/26 |  |
| 230 | 1.12.36.2 | Avaliação do Cliente | 5d | 2026-09-08 | 2026-09-15 | 229 | 2026-09-02 | 2026-09-08 | 5d | 10d | 0d |  |  |  | MECÂNICA |  |  |  |  | Ter 08/09/26 |  |
| 231 | 1.12.36.3 | Atendimento de Comentário | 3d | 2026-09-15 | 2026-09-18 | 230 | 2026-09-09 | 2026-09-11 | 3d | 10d | 0d |  |  |  | MECÂNICA |  |  |  |  | Sex 11/09/26 |  |
| 232 | 1.12.36.4 | Aprovação | 2d | 2026-09-18 | 2026-09-22 | 231 | 2026-09-14 | 2026-09-15 | 2d | 10d |  |  |  |  | MECÂNICA |  |  |  |  | Ter 15/09/26 |  |

| ID | WBS | Task | Duration | Start | Finish | Predecessors | Baseline start | Baseline finish | Baseline duration | Total slack | Free slack | Tipo de documento | Área | Sub-área | Disciplina | Título | Formato | Quantidade | Agrupamento Cecal | Término_LB_R0 | Início_LB_R0 |
| --- | --- | --- | --- | --- | --- | --- | --- | --- | --- | --- | --- | --- | --- | --- | --- | --- | --- | --- | --- | --- | --- |
| 233 | 1.12.37 | **DT-F0009-0302-MB-L-00027** | 20d | 2026-08-25 | 2026-09-22 |  | 2026-08-19 | 2026-09-15 | 20d | 10d |  | DT - Detalhe Típico | 03 - REDUÇÃO | 02 - CARREGAMENTO | MECÂNICA | BOOSTER SYSTEM - CALHAS ARRENGEMENT | A1 (841x594mm) | 01 | Revisão do sistema de carregamento | Ter 15/09/26 | Qua 19/08/26 |
| 234 | 1.12.37.1 | Emissão inicial | 10d | 2026-08-25 | 2026-09-08 | 199 | 2026-08-19 | 2026-09-01 | 10d | 10d | 0d |  |  |  | MECÂNICA |  |  |  |  | Ter 01/09/26 |  |
| 235 | 1.12.37.2 | Avaliação do Cliente | 5d | 2026-09-08 | 2026-09-15 | 234 | 2026-09-02 | 2026-09-08 | 5d | 10d | 0d |  |  |  | MECÂNICA |  |  |  |  | Ter 08/09/26 |  |
| 236 | 1.12.37.3 | Atendimento de Comentário | 3d | 2026-09-15 | 2026-09-18 | 235 | 2026-09-09 | 2026-09-11 | 3d | 10d | 0d |  |  |  | MECÂNICA |  |  |  |  | Sex 11/09/26 |  |
| 237 | 1.12.37.4 | Aprovação | 2d | 2026-09-18 | 2026-09-22 | 236 | 2026-09-14 | 2026-09-15 | 2d | 10d |  |  |  |  | MECÂNICA |  |  |  |  | Ter 15/09/26 |  |
| 238 | 1.12.38 | **DT-F0009-0302-MB-L-00028** | 20d | 2026-08-25 | 2026-09-22 |  | 2026-08-19 | 2026-09-15 | 20d | 10d |  | DT - Detalhe Típico | 03 - REDUÇÃO | 02 - CARREGAMENTO | MECÂNICA | BOOSTER CALHAS - MARCAS A | A1 (841x594mm) | 01 | Revisão do sistema de carregamento | Ter 15/09/26 | Qua 19/08/26 |
| 239 | 1.12.38.1 | Emissão inicial | 10d | 2026-08-25 | 2026-09-08 | 199 | 2026-08-19 | 2026-09-01 | 10d | 10d | 0d |  |  |  | MECÂNICA |  |  |  |  | Ter 01/09/26 |  |
| 240 | 1.12.38.2 | Avaliação do Cliente | 5d | 2026-09-08 | 2026-09-15 | 239 | 2026-09-02 | 2026-09-08 | 5d | 10d | 0d |  |  |  | MECÂNICA |  |  |  |  | Ter 08/09/26 |  |
| 241 | 1.12.38.3 | Atendimento de Comentário | 3d | 2026-09-15 | 2026-09-18 | 240 | 2026-09-09 | 2026-09-11 | 3d | 10d | 0d |  |  |  | MECÂNICA |  |  |  |  | Sex 11/09/26 |  |
| 242 | 1.12.38.4 | Aprovação | 2d | 2026-09-18 | 2026-09-22 | 241 | 2026-09-14 | 2026-09-15 | 2d | 10d |  |  |  |  | MECÂNICA |  |  |  |  | Ter 15/09/26 |  |
| 243 | 1.12.39 | **DT-F0009-0302-MB-L-00029** | 20d | 2026-08-25 | 2026-09-22 |  | 2026-08-19 | 2026-09-15 | 20d | 10d |  | DT - Detalhe Típico | 03 - REDUÇÃO | 02 - CARREGAMENTO | MECÂNICA | BOOSTER CALHAS - MARCAS B | A1 (841x594mm) | 01 | Revisão do sistema de carregamento | Ter 15/09/26 | Qua 19/08/26 |
| 244 | 1.12.39.1 | Emissão inicial | 10d | 2026-08-25 | 2026-09-08 | 199 | 2026-08-19 | 2026-09-01 | 10d | 10d | 0d |  |  |  | MECÂNICA |  |  |  |  | Ter 01/09/26 |  |
| 245 | 1.12.39.2 | Avaliação do Cliente | 5d | 2026-09-08 | 2026-09-15 | 244 | 2026-09-02 | 2026-09-08 | 5d | 10d | 0d |  |  |  | MECÂNICA |  |  |  |  | Ter 08/09/26 |  |
| 246 | 1.12.39.3 | Atendimento de Comentário | 3d | 2026-09-15 | 2026-09-18 | 245 | 2026-09-09 | 2026-09-11 | 3d | 10d | 0d |  |  |  | MECÂNICA |  |  |  |  | Sex 11/09/26 |  |
| 247 | 1.12.39.4 | Aprovação | 2d | 2026-09-18 | 2026-09-22 | 246 | 2026-09-14 | 2026-09-15 | 2d | 10d |  |  |  |  | MECÂNICA |  |  |  |  | Ter 15/09/26 |  |
| 248 | 1.12.40 | **DT-F0009-0302-MB-L-00030** | 20d | 2026-08-25 | 2026-09-22 |  | 2026-08-19 | 2026-09-15 | 20d | 10d |  | DT - Detalhe Típico | 03 - REDUÇÃO | 02 - CARREGAMENTO | MECÂNICA | BOOSTER CALHAS - MARCAS C | A1 (841x594mm) | 01 | Revisão do sistema de carregamento | Ter 15/09/26 | Qua 19/08/26 |
| 249 | 1.12.40.1 | Emissão inicial | 10d | 2026-08-25 | 2026-09-08 | 199 | 2026-08-19 | 2026-09-01 | 10d | 10d | 0d |  |  |  | MECÂNICA |  |  |  |  | Ter 01/09/26 |  |
| 250 | 1.12.40.2 | Avaliação do Cliente | 5d | 2026-09-08 | 2026-09-15 | 249 | 2026-09-02 | 2026-09-08 | 5d | 10d | 0d |  |  |  | MECÂNICA |  |  |  |  | Ter 08/09/26 |  |
| 251 | 1.12.40.3 | Atendimento de Comentário | 3d | 2026-09-15 | 2026-09-18 | 250 | 2026-09-09 | 2026-09-11 | 3d | 10d | 0d |  |  |  | MECÂNICA |  |  |  |  | Sex 11/09/26 |  |
| 252 | 1.12.40.4 | Aprovação | 2d | 2026-09-18 | 2026-09-22 | 251 | 2026-09-14 | 2026-09-15 | 2d | 10d |  |  |  |  | MECÂNICA |  |  |  |  | Ter 15/09/26 |  |
| 253 | 1.12.41 | **DT-F0009-0302-MB-L-00031** | 20d | 2026-08-25 | 2026-09-22 |  | 2026-08-19 | 2026-09-15 | 20d | 10d |  | DT - Detalhe Típico | 03 - REDUÇÃO | 02 - CARREGAMENTO | MECÂNICA | BOOSTER CALHAS - DETAIL TUBES | A1 (841x594mm) | 01 | Revisão do sistema de carregamento | Ter 15/09/26 | Qua 19/08/26 |
| 254 | 1.12.41.1 | Emissão inicial | 10d | 2026-08-25 | 2026-09-08 | 199 | 2026-08-19 | 2026-09-01 | 10d | 10d | 0d |  |  |  | MECÂNICA |  |  |  |  | Ter 01/09/26 |  |
| 255 | 1.12.41.2 | Avaliação do Cliente | 5d | 2026-09-08 | 2026-09-15 | 254 | 2026-09-02 | 2026-09-08 | 5d | 10d | 0d |  |  |  | MECÂNICA |  |  |  |  | Ter 08/09/26 |  |
| 256 | 1.12.41.3 | Atendimento de Comentário | 3d | 2026-09-15 | 2026-09-18 | 255 | 2026-09-09 | 2026-09-11 | 3d | 10d | 0d |  |  |  | MECÂNICA |  |  |  |  | Sex 11/09/26 |  |
| 257 | 1.12.41.4 | Aprovação | 2d | 2026-09-18 | 2026-09-22 | 256 | 2026-09-14 | 2026-09-15 | 2d | 10d |  |  |  |  | MECÂNICA |  |  |  |  | Ter 15/09/26 |  |

| ID | WBS | Task | Duration | Start | Finish | Predecessors | Baseline start | Baseline finish | Baseline duration | Total slack | Free slack | Constraint | Tipo de documento | Área | Sub-área | Disciplina | Título | Formato | Quantidade | Agrupamento Cecal | Término_LB_R0 | Início_LB_R0 |
| --- | --- | --- | --- | --- | --- | --- | --- | --- | --- | --- | --- | --- | --- | --- | --- | --- | --- | --- | --- | --- | --- | --- |
| 258 | 1.12.42 | **AG-F0009-0309-MB-L-00001** | 20d | 2026-07-30 | 2026-08-27 | 21 | 2026-07-23 | 2026-08-20 | 20d | 28d |  |  | AG - Arranjo (AG) | 03 - REDUÇÃO | 09 - FORNO TECNORED | MECÂNICA | ARRANJO GERAL DOS FORNOS E FUNDAÇÃO | A1 (841x594mm) | 01 | Readequação da fundação | Qui 20/08/26 | Qui 23/07/26 |
| 259 | 1.12.42.1 | Emissão inicial | 10d | 2026-07-30 | 2026-08-13 | 919 | 2026-07-23 | 2026-08-06 | 10d | 28d | 0d | finish no earlier than 2026-07-07 |  |  |  | MECÂNICA |  |  |  |  | Qui 06/08/26 |  |
| 260 | 1.12.42.2 | Avaliação do Cliente | 5d | 2026-08-13 | 2026-08-20 | 259 | 2026-08-06 | 2026-08-13 | 5d | 28d | 0d | finish no earlier than 2026-07-07 |  |  |  | MECÂNICA |  |  |  |  | Qui 13/08/26 |  |
| 261 | 1.12.42.3 | Atendimento de Comentário | 3d | 2026-08-20 | 2026-08-25 | 260 | 2026-08-13 | 2026-08-18 | 3d | 28d | 0d | finish no earlier than 2026-07-07 |  |  |  | MECÂNICA |  |  |  |  | Ter 18/08/26 |  |
| 262 | 1.12.42.4 | Aprovação | 2d | 2026-08-25 | 2026-08-27 | 261 | 2026-08-18 | 2026-08-20 | 2d | 28d |  | finish no earlier than 2026-07-07 |  |  |  | MECÂNICA |  |  |  |  | Qui 20/08/26 |  |
| 263 | 1.12.43 | **AG-F0009-0309-MB-L-00002** | 20d | 2026-07-16 | 2026-08-13 |  | 2026-07-09 | 2026-08-06 | 20d | 38d |  |  | AG - Arranjo (AG) | 03 - REDUÇÃO | 09 - FORNO TECNORED | MECÂNICA | FR-400A FORNO PRÓPRIO | A1 (841x594mm) | 01 | Revisão do projeto do forno - carcaça e refratário | Qui 06/08/26 | Qui 09/07/26 |
| 264 | 1.12.43.1 | Emissão inicial | 10d | 2026-07-16 | 2026-07-30 | 259SF | 2026-07-09 | 2026-07-23 | 10d | 38d | 0d | finish no earlier than 2026-07-21 |  |  |  | MECÂNICA |  |  |  |  | Qui 23/07/26 |  |
| 265 | 1.12.43.2 | Avaliação do Cliente | 5d | 2026-07-30 | 2026-08-06 | 264 | 2026-07-23 | 2026-07-30 | 5d | 38d | 0d | finish no earlier than 2026-07-21 |  |  |  | MECÂNICA |  |  |  |  | Qui 30/07/26 |  |
| 266 | 1.12.43.3 | Atendimento de Comentário | 3d | 2026-08-06 | 2026-08-11 | 265 | 2026-07-30 | 2026-08-04 | 3d | 38d | 0d | finish no earlier than 2026-07-21 |  |  |  | MECÂNICA |  |  |  |  | Ter 04/08/26 |  |
| 267 | 1.12.43.4 | Aprovação | 2d | 2026-08-11 | 2026-08-13 | 266 | 2026-08-04 | 2026-08-06 | 2d | 38d |  | finish no earlier than 2026-07-21 |  |  |  | MECÂNICA |  |  |  |  | Qui 06/08/26 |  |
| 268 | 1.12.44 | **AG-F0009-0309-MB-L-00003** | 20d | 2026-07-16 | 2026-08-13 |  | 2026-07-09 | 2026-08-06 | 20d | 38d |  |  | AG - Arranjo (AG) | 03 - REDUÇÃO | 09 - FORNO TECNORED | MECÂNICA | FR-400A GEOMETRIA INTERNA | A1 (841x594mm) | 01 | Revisão do projeto do forno - carcaça e refratário | Qui 06/08/26 | Qui 09/07/26 |
| 269 | 1.12.44.1 | Emissão inicial | 10d | 2026-07-16 | 2026-07-30 | 259SF | 2026-07-09 | 2026-07-23 | 10d | 38d | 0d | finish no earlier than 2026-07-21 |  |  |  | MECÂNICA |  |  |  |  | Qui 23/07/26 |  |
| 270 | 1.12.44.2 | Avaliação do Cliente | 5d | 2026-07-30 | 2026-08-06 | 269 | 2026-07-23 | 2026-07-30 | 5d | 38d | 0d | finish no earlier than 2026-07-21 |  |  |  | MECÂNICA |  |  |  |  | Qui 30/07/26 |  |
| 271 | 1.12.44.3 | Atendimento de Comentário | 3d | 2026-08-06 | 2026-08-11 | 270 | 2026-07-30 | 2026-08-04 | 3d | 38d | 0d | finish no earlier than 2026-07-21 |  |  |  | MECÂNICA |  |  |  |  | Ter 04/08/26 |  |
| 272 | 1.12.44.4 | Aprovação | 2d | 2026-08-11 | 2026-08-13 | 271 | 2026-08-04 | 2026-08-06 | 2d | 38d |  | finish no earlier than 2026-07-21 |  |  |  | MECÂNICA |  |  |  |  | Qui 06/08/26 |  |
| 273 | 1.12.45 | **AG-F0009-0309-MB-L-00004** | 20d | 2026-07-16 | 2026-08-13 |  | 2026-07-09 | 2026-08-06 | 20d | 38d |  |  | AG - Arranjo (AG) | 03 - REDUÇÃO | 09 - FORNO TECNORED | MECÂNICA | FORNOS COMPONENTES PRINCIPAIS | A1 (841x594mm) | 01 | Revisão do projeto do forno - carcaça e refratário | Qui 06/08/26 | Qui 09/07/26 |
| 274 | 1.12.45.1 | Emissão inicial | 10d | 2026-07-16 | 2026-07-30 | 259SF | 2026-07-09 | 2026-07-23 | 10d | 38d | 0d | finish no earlier than 2026-07-21 |  |  |  | MECÂNICA |  |  |  |  | Qui 23/07/26 |  |
| 275 | 1.12.45.2 | Avaliação do Cliente | 5d | 2026-07-30 | 2026-08-06 | 274 | 2026-07-23 | 2026-07-30 | 5d | 38d | 0d | finish no earlier than 2026-07-21 |  |  |  | MECÂNICA |  |  |  |  | Qui 30/07/26 |  |
| 276 | 1.12.45.3 | Atendimento de Comentário | 3d | 2026-08-06 | 2026-08-11 | 275 | 2026-07-30 | 2026-08-04 | 3d | 38d | 0d | finish no earlier than 2026-07-21 |  |  |  | MECÂNICA |  |  |  |  | Ter 04/08/26 |  |
| 277 | 1.12.45.4 | Aprovação | 2d | 2026-08-11 | 2026-08-13 | 276 | 2026-08-04 | 2026-08-06 | 2d | 38d |  | finish no earlier than 2026-07-21 |  |  |  | MECÂNICA |  |  |  |  | Qui 06/08/26 |  |
| 278 | 1.12.46 | **AG-F0009-0309-MB-L-00005** | 20d | 2026-07-16 | 2026-08-13 |  | 2026-07-09 | 2026-08-06 | 20d | 38d |  |  | AG - Arranjo (AG) | 03 - REDUÇÃO | 09 - FORNO TECNORED | MECÂNICA | FR-400B FORNO PROPRIO | A1 (841x594mm) | 01 | Revisão do projeto do forno - carcaça e refratário | Qui 06/08/26 | Qui 09/07/26 |
| 279 | 1.12.46.1 | Emissão inicial | 10d | 2026-07-16 | 2026-07-30 | 259SF | 2026-07-09 | 2026-07-23 | 10d | 38d | 0d | finish no earlier than 2026-07-21 |  |  |  | MECÂNICA |  |  |  |  | Qui 23/07/26 |  |
| 280 | 1.12.46.2 | Avaliação do Cliente | 5d | 2026-07-30 | 2026-08-06 | 279 | 2026-07-23 | 2026-07-30 | 5d | 38d | 0d | finish no earlier than 2026-07-21 |  |  |  | MECÂNICA |  |  |  |  | Qui 30/07/26 |  |
| 281 | 1.12.46.3 | Atendimento de Comentário | 3d | 2026-08-06 | 2026-08-11 | 280 | 2026-07-30 | 2026-08-04 | 3d | 38d | 0d | finish no earlier than 2026-07-21 |  |  |  | MECÂNICA |  |  |  |  | Ter 04/08/26 |  |
| 282 | 1.12.46.4 | Aprovação | 2d | 2026-08-11 | 2026-08-13 | 281 | 2026-08-04 | 2026-08-06 | 2d | 38d |  | finish no earlier than 2026-07-21 |  |  |  | MECÂNICA |  |  |  |  | Qui 06/08/26 |  |

| ID | WBS | Task | Duration | Start | Finish | Predecessors | Baseline start | Baseline finish | Baseline duration | Total slack | Free slack | Constraint | Tipo de documento | Área | Sub-área | Disciplina | Título | Formato | Quantidade | Agrupamento Cecal | Término_LB_R0 | Início_LB_R0 |
| --- | --- | --- | --- | --- | --- | --- | --- | --- | --- | --- | --- | --- | --- | --- | --- | --- | --- | --- | --- | --- | --- | --- |
| 283 | 1.12.47 | **AG-F0009-0309-MB-L-00006** | 20d | 2026-07-16 | 2026-08-13 |  | 2026-07-09 | 2026-08-06 | 20d | 38d |  |  | AG - Arranjo (AG) | 03 - REDUÇÃO | 09 - FORNO TECNORED | MECÂNICA | FR-400B GEOMETRIA INTERNA | A1 (841x594mm) | 01 | Revisão do projeto do forno - carcaça e refratário | Qui 06/08/26 | Qui 09/07/26 |
| 284 | 1.12.47.1 | Emissão inicial | 10d | 2026-07-16 | 2026-07-30 | 259SF | 2026-07-09 | 2026-07-23 | 10d | 38d | 0d | finish no earlier than 2026-07-21 |  |  |  | MECÂNICA |  |  |  |  | Qui 23/07/26 |  |
| 285 | 1.12.47.2 | Avaliação do Cliente | 5d | 2026-07-30 | 2026-08-06 | 284 | 2026-07-23 | 2026-07-30 | 5d | 38d | 0d | finish no earlier than 2026-07-21 |  |  |  | MECÂNICA |  |  |  |  | Qui 30/07/26 |  |
| 286 | 1.12.47.3 | Atendimento de Comentário | 3d | 2026-08-06 | 2026-08-11 | 285 | 2026-07-30 | 2026-08-04 | 3d | 38d | 0d | finish no earlier than 2026-07-21 |  |  |  | MECÂNICA |  |  |  |  | Ter 04/08/26 |  |
| 287 | 1.12.47.4 | Aprovação | 2d | 2026-08-11 | 2026-08-13 | 286 | 2026-08-04 | 2026-08-06 | 2d | 38d |  | finish no earlier than 2026-07-21 |  |  |  | MECÂNICA |  |  |  |  | Qui 06/08/26 |  |
| 288 | 1.12.48 | **AG-F0009-0309-MB-L-00007** | 20d | 2026-07-16 | 2026-08-13 |  | 2026-07-09 | 2026-08-06 | 20d | 38d |  |  | AG - Arranjo (AG) | 03 - REDUÇÃO | 09 - FORNO TECNORED | MECÂNICA | ELEVAÇÃO FORNO E SISTEMA DE CARREGAMENTO | A1 (841x594mm) | 01 | Revisão do sistema de carregamento | Qui 06/08/26 | Qui 09/07/26 |
| 289 | 1.12.48.1 | Emissão inicial | 10d | 2026-07-16 | 2026-07-30 | 259SF | 2026-07-09 | 2026-07-23 | 10d | 38d | 0d | finish no earlier than 2026-07-21 |  |  |  | MECÂNICA |  |  |  |  | Qui 23/07/26 |  |
| 290 | 1.12.48.2 | Avaliação do Cliente | 5d | 2026-07-30 | 2026-08-06 | 289 | 2026-07-23 | 2026-07-30 | 5d | 38d | 0d | finish no earlier than 2026-07-21 |  |  |  | MECÂNICA |  |  |  |  | Qui 30/07/26 |  |
| 291 | 1.12.48.3 | Atendimento de Comentário | 3d | 2026-08-06 | 2026-08-11 | 290 | 2026-07-30 | 2026-08-04 | 3d | 38d | 0d | finish no earlier than 2026-07-21 |  |  |  | MECÂNICA |  |  |  |  | Ter 04/08/26 |  |
| 292 | 1.12.48.4 | Aprovação | 2d | 2026-08-11 | 2026-08-13 | 291 | 2026-08-04 | 2026-08-06 | 2d | 38d |  | finish no earlier than 2026-07-21 |  |  |  | MECÂNICA |  |  |  |  | Qui 06/08/26 |  |
| 293 | 1.12.49 | **AG-F0009-0309-MB-L-00008** | 20d | 2026-07-16 | 2026-08-13 |  | 2026-07-09 | 2026-08-06 | 20d | 0d |  |  | AG - Arranjo (AG) | 03 - REDUÇÃO | 09 - FORNO TECNORED | MECÂNICA | ELEVAÇÃO FORNO E SISTEMA DE CARREGAMENTO | A1 (841x594mm) | 01 | Revisão do sistema de carregamento | Qui 06/08/26 | Qui 09/07/26 |
| 294 | 1.12.49.1 | Emissão inicial | 10d | 2026-07-16 | 2026-07-30 | 259SF | 2026-07-09 | 2026-07-23 | 10d | 0d |  | finish no earlier than 2026-07-21 |  |  |  | MECÂNICA |  |  |  |  | Qui 23/07/26 |  |
| 295 | 1.12.49.2 | Avaliação do Cliente | 5d | 2026-07-30 | 2026-08-06 | 294 | 2026-07-23 | 2026-07-30 | 5d | 38d | 0d | finish no earlier than 2026-07-21 |  |  |  | MECÂNICA |  |  |  |  | Qui 30/07/26 |  |
| 296 | 1.12.49.3 | Atendimento de Comentário | 3d | 2026-08-06 | 2026-08-11 | 295 | 2026-07-30 | 2026-08-04 | 3d | 38d | 0d | finish no earlier than 2026-07-21 |  |  |  | MECÂNICA |  |  |  |  | Ter 04/08/26 |  |
| 297 | 1.12.49.4 | Aprovação | 2d | 2026-08-11 | 2026-08-13 | 296 | 2026-08-04 | 2026-08-06 | 2d | 38d |  | finish no earlier than 2026-07-21 |  |  |  | MECÂNICA |  |  |  |  | Qui 06/08/26 |  |
| 298 | 1.12.50 | **DT-F0009-0309-MB-L-00001** | 20d | 2026-07-30 | 2026-08-27 |  | 2026-07-23 | 2026-08-20 | 20d | 28d |  |  | DT - Detalhe Típico | 03 - REDUÇÃO | 09 - FORNO TECNORED | MECÂNICA | MECANISMO CURTAIN WALL | A1 (841x594mm) | 01 | Revisão do projeto do forno - carcaça e refratário | Qui 20/08/26 | Qui 23/07/26 |
| 299 | 1.12.50.1 | Emissão inicial | 10d | 2026-07-30 | 2026-08-13 | 294 | 2026-07-23 | 2026-08-06 | 10d | 28d | 0d |  |  |  |  | MECÂNICA |  |  |  |  | Qui 06/08/26 |  |
| 300 | 1.12.50.2 | Avaliação do Cliente | 5d | 2026-08-13 | 2026-08-20 | 299 | 2026-08-06 | 2026-08-13 | 5d | 28d | 0d |  |  |  |  | MECÂNICA |  |  |  |  | Qui 13/08/26 |  |
| 301 | 1.12.50.3 | Atendimento de Comentário | 3d | 2026-08-20 | 2026-08-25 | 300 | 2026-08-13 | 2026-08-18 | 3d | 28d | 0d |  |  |  |  | MECÂNICA |  |  |  |  | Ter 18/08/26 |  |
| 302 | 1.12.50.4 | Aprovação | 2d | 2026-08-25 | 2026-08-27 | 301 | 2026-08-18 | 2026-08-20 | 2d | 28d |  |  |  |  |  | MECÂNICA |  |  |  |  | Qui 20/08/26 |  |
| 303 | 1.12.51 | **DT-F0009-0309-MB-L-00002** | 20d | 2026-07-30 | 2026-08-27 |  | 2026-07-23 | 2026-08-20 | 20d | 28d |  |  | DT - Detalhe Típico | 03 - REDUÇÃO | 09 - FORNO TECNORED | MECÂNICA | CONJUNTO VENTANEIRA ALGARAVIZ | A1 (841x594mm) | 01 | Revisão do projeto do forno - carcaça e refratário | Qui 20/08/26 | Qui 23/07/26 |
| 304 | 1.12.51.1 | Emissão inicial | 10d | 2026-07-30 | 2026-08-13 | 294 | 2026-07-23 | 2026-08-06 | 10d | 28d | 0d |  |  |  |  | MECÂNICA |  |  |  |  | Qui 06/08/26 |  |
| 305 | 1.12.51.2 | Avaliação do Cliente | 5d | 2026-08-13 | 2026-08-20 | 304 | 2026-08-06 | 2026-08-13 | 5d | 28d | 0d |  |  |  |  | MECÂNICA |  |  |  |  | Qui 13/08/26 |  |
| 306 | 1.12.51.3 | Atendimento de Comentário | 3d | 2026-08-20 | 2026-08-25 | 305 | 2026-08-13 | 2026-08-18 | 3d | 28d | 0d |  |  |  |  | MECÂNICA |  |  |  |  | Ter 18/08/26 |  |
| 307 | 1.12.51.4 | Aprovação | 2d | 2026-08-25 | 2026-08-27 | 306 | 2026-08-18 | 2026-08-20 | 2d | 28d |  |  |  |  |  | MECÂNICA |  |  |  |  | Qui 20/08/26 |  |

| ID | WBS | Task | Duration | Start | Finish | Predecessors | Baseline start | Baseline finish | Baseline duration | Total slack | Free slack | Tipo de documento | Área | Sub-área | Disciplina | Título | Formato | Quantidade | Agrupamento Cecal | Término_LB_R0 | Início_LB_R0 |
| --- | --- | --- | --- | --- | --- | --- | --- | --- | --- | --- | --- | --- | --- | --- | --- | --- | --- | --- | --- | --- | --- |
| 308 | 1.12.52 | **DT-F0009-0309-MB-L-00003** | 20d | 2026-07-30 | 2026-08-27 |  | 2026-07-23 | 2026-08-20 | 20d | 28d |  | DT - Detalhe Típico | 03 - REDUÇÃO | 09 - FORNO TECNORED | MECÂNICA | VENTANEIRAS E COOLING BOX | A1 (841x594mm) | 01 | Revisão do projeto de cobre refrigerado | Qui 20/08/26 | Qui 23/07/26 |
| 309 | 1.12.52.1 | Emissão inicial | 10d | 2026-07-30 | 2026-08-13 | 294 | 2026-07-23 | 2026-08-06 | 10d | 28d | 0d |  |  |  | MECÂNICA |  |  |  |  | Qui 06/08/26 |  |
| 310 | 1.12.52.2 | Avaliação do Cliente | 5d | 2026-08-13 | 2026-08-20 | 309 | 2026-08-06 | 2026-08-13 | 5d | 28d | 0d |  |  |  | MECÂNICA |  |  |  |  | Qui 13/08/26 |  |
| 311 | 1.12.52.3 | Atendimento de Comentário | 3d | 2026-08-20 | 2026-08-25 | 310 | 2026-08-13 | 2026-08-18 | 3d | 28d | 0d |  |  |  | MECÂNICA |  |  |  |  | Ter 18/08/26 |  |
| 312 | 1.12.52.4 | Aprovação | 2d | 2026-08-25 | 2026-08-27 | 311 | 2026-08-18 | 2026-08-20 | 2d | 28d |  |  |  |  | MECÂNICA |  |  |  |  | Qui 20/08/26 |  |
| 313 | 1.12.53 | **DT-F0009-0309-MB-L-00004** | 20d | 2026-07-30 | 2026-08-27 |  | 2026-07-23 | 2026-08-20 | 20d | 0d |  | DT - Detalhe Típico | 03 - REDUÇÃO | 09 - FORNO TECNORED | MECÂNICA | STAVES DE COBRE | A1 (841x594mm) | 01 | Revisão do projeto de cobre refrigerado | Qui 20/08/26 | Qui 23/07/26 |
| 314 | 1.12.53.1 | Emissão inicial | 10d | 2026-07-30 | 2026-08-13 | 294 | 2026-07-23 | 2026-08-06 | 10d | 0d |  |  |  |  | MECÂNICA |  |  |  |  | Qui 06/08/26 |  |
| 315 | 1.12.53.2 | Avaliação do Cliente | 5d | 2026-08-13 | 2026-08-20 | 314 | 2026-08-06 | 2026-08-13 | 5d | 28d | 0d |  |  |  | MECÂNICA |  |  |  |  | Qui 13/08/26 |  |
| 316 | 1.12.53.3 | Atendimento de Comentário | 3d | 2026-08-20 | 2026-08-25 | 315 | 2026-08-13 | 2026-08-18 | 3d | 28d | 0d |  |  |  | MECÂNICA |  |  |  |  | Ter 18/08/26 |  |
| 317 | 1.12.53.4 | Aprovação | 2d | 2026-08-25 | 2026-08-27 | 316 | 2026-08-18 | 2026-08-20 | 2d | 28d |  |  |  |  | MECÂNICA |  |  |  |  | Qui 20/08/26 |  |
| 318 | 1.12.54 | **DT-F0009-0309-MB-L-00005** | 20d | 2026-08-13 | 2026-09-10 |  | 2026-08-06 | 2026-09-03 | 20d | 18d |  | DT - Detalhe Típico | 03 - REDUÇÃO | 09 - FORNO TECNORED | MECÂNICA | STAVES DE FERRO FUNDIDO | A1 (841x594mm) | 01 | Revisão do projeto de cobre refrigerado | Qui 03/09/26 | Qui 06/08/26 |
| 319 | 1.12.54.1 | Emissão inicial | 10d | 2026-08-13 | 2026-08-27 | 314 | 2026-08-06 | 2026-08-20 | 10d | 18d | 0d |  |  |  | MECÂNICA |  |  |  |  | Qui 20/08/26 |  |
| 320 | 1.12.54.2 | Avaliação do Cliente | 5d | 2026-08-27 | 2026-09-03 | 319 | 2026-08-20 | 2026-08-27 | 5d | 18d | 0d |  |  |  | MECÂNICA |  |  |  |  | Qui 27/08/26 |  |
| 321 | 1.12.54.3 | Atendimento de Comentário | 3d | 2026-09-03 | 2026-09-08 | 320 | 2026-08-27 | 2026-09-01 | 3d | 18d | 0d |  |  |  | MECÂNICA |  |  |  |  | Ter 01/09/26 |  |
| 322 | 1.12.54.4 | Aprovação | 2d | 2026-09-08 | 2026-09-10 | 321 | 2026-09-01 | 2026-09-03 | 2d | 18d |  |  |  |  | MECÂNICA |  |  |  |  | Qui 03/09/26 |  |
| 323 | 1.12.55 | **DT-F0009-0309-MB-L-00006** | 20d | 2026-08-13 | 2026-09-10 |  | 2026-08-06 | 2026-09-03 | 20d | 18d |  | DT - Detalhe Típico | 03 - REDUÇÃO | 09 - FORNO TECNORED | MECÂNICA | VENTANEIRAS V2 | A1 (841x594mm) | 01 | Revisão do projeto do forno - carcaça e refratário | Qui 03/09/26 | Qui 06/08/26 |
| 324 | 1.12.55.1 | Emissão inicial | 10d | 2026-08-13 | 2026-08-27 | 314 | 2026-08-06 | 2026-08-20 | 10d | 18d | 0d |  |  |  | MECÂNICA |  |  |  |  | Qui 20/08/26 |  |
| 325 | 1.12.55.2 | Avaliação do Cliente | 5d | 2026-08-27 | 2026-09-03 | 324 | 2026-08-20 | 2026-08-27 | 5d | 18d | 0d |  |  |  | MECÂNICA |  |  |  |  | Qui 27/08/26 |  |
| 326 | 1.12.55.3 | Atendimento de Comentário | 3d | 2026-09-03 | 2026-09-08 | 325 | 2026-08-27 | 2026-09-01 | 3d | 18d | 0d |  |  |  | MECÂNICA |  |  |  |  | Ter 01/09/26 |  |
| 327 | 1.12.55.4 | Aprovação | 2d | 2026-09-08 | 2026-09-10 | 326 | 2026-09-01 | 2026-09-03 | 2d | 18d |  |  |  |  | MECÂNICA |  |  |  |  | Qui 03/09/26 |  |
| 328 | 1.12.56 | **DT-F0009-0309-MB-L-00007** | 20d | 2026-08-13 | 2026-09-10 |  | 2026-08-06 | 2026-09-03 | 20d | 1d | 0d | DT - Detalhe Típico | 03 - REDUÇÃO | 09 - FORNO TECNORED | MECÂNICA | CARCAÇA FORNO | A1 (841x594mm) | 01 | Revisão do projeto do forno - carcaça e refratário | Qui 03/09/26 | Qui 06/08/26 |
| 329 | 1.12.56.1 | Emissão inicial | 10d | 2026-08-13 | 2026-08-27 | 314 | 2026-08-06 | 2026-08-20 | 10d | 1d | 0d |  |  |  | MECÂNICA |  |  |  |  | Qui 20/08/26 |  |
| 330 | 1.12.56.2 | Avaliação do Cliente | 5d | 2026-08-27 | 2026-09-03 | 329 | 2026-08-20 | 2026-08-27 | 5d | 1d | 0d |  |  |  | MECÂNICA |  |  |  |  | Qui 27/08/26 |  |
| 331 | 1.12.56.3 | Atendimento de Comentário | 3d | 2026-09-03 | 2026-09-08 | 330 | 2026-08-27 | 2026-09-01 | 3d | 1d | 0d |  |  |  | MECÂNICA |  |  |  |  | Ter 01/09/26 |  |
| 332 | 1.12.56.4 | Aprovação | 2d | 2026-09-08 | 2026-09-10 | 331 | 2026-09-01 | 2026-09-03 | 2d | 1d |  |  |  |  | MECÂNICA |  |  |  |  | Qui 03/09/26 |  |

| ID | WBS | Task | Duration | Start | Finish | Predecessors | Baseline start | Baseline finish | Baseline duration | Total slack | Free slack | Tipo de documento | Área | Sub-área | Disciplina | Título | Formato | Quantidade | Agrupamento Cecal | Término_LB_R0 | Início_LB_R0 |
| --- | --- | --- | --- | --- | --- | --- | --- | --- | --- | --- | --- | --- | --- | --- | --- | --- | --- | --- | --- | --- | --- |
| 333 | 1.12.57 | **DT-F0009-0309-MB-L-00008** | 20d | 2026-08-13 | 2026-09-10 |  | 2026-08-06 | 2026-09-03 | 20d | 18d |  | DT - Detalhe Típico | 03 - REDUÇÃO | 09 - FORNO TECNORED | MECÂNICA | FURO DE GUSA E CANHÃO DE LAMA | A1 (841x594mm) | 01 | Revisão do projeto do forno - carcaça e refratário | Qui 03/09/26 | Qui 06/08/26 |
| 334 | 1.12.57.1 | Emissão inicial | 10d | 2026-08-13 | 2026-08-27 | 314 | 2026-08-06 | 2026-08-20 | 10d | 18d | 0d |  |  |  | MECÂNICA |  |  |  |  | Qui 20/08/26 |  |
| 335 | 1.12.57.2 | Avaliação do Cliente | 5d | 2026-08-27 | 2026-09-03 | 334 | 2026-08-20 | 2026-08-27 | 5d | 18d | 0d |  |  |  | MECÂNICA |  |  |  |  | Qui 27/08/26 |  |
| 336 | 1.12.57.3 | Atendimento de Comentário | 3d | 2026-09-03 | 2026-09-08 | 335 | 2026-08-27 | 2026-09-01 | 3d | 18d | 0d |  |  |  | MECÂNICA |  |  |  |  | Ter 01/09/26 |  |
| 337 | 1.12.57.4 | Aprovação | 2d | 2026-09-08 | 2026-09-10 | 336 | 2026-09-01 | 2026-09-03 | 2d | 18d |  |  |  |  | MECÂNICA |  |  |  |  | Qui 03/09/26 |  |
| 338 | 1.12.58 | **DT-F0009-0309-MB-L-00009** | 20d | 2026-08-13 | 2026-09-10 |  | 2026-08-06 | 2026-09-03 | 20d | 18d |  | DT - Detalhe Típico | 03 - REDUÇÃO | 09 - FORNO TECNORED | MECÂNICA | REFRATARIO FORNO PROPRIO | A1 (841x594mm) | 01 | Revisão do projeto do forno - carcaça e refratário | Qui 03/09/26 | Qui 06/08/26 |
| 339 | 1.12.58.1 | Emissão inicial | 10d | 2026-08-13 | 2026-08-27 | 314 | 2026-08-06 | 2026-08-20 | 10d | 18d | 0d |  |  |  | MECÂNICA |  |  |  |  | Qui 20/08/26 |  |
| 340 | 1.12.58.2 | Avaliação do Cliente | 5d | 2026-08-27 | 2026-09-03 | 339 | 2026-08-20 | 2026-08-27 | 5d | 18d | 0d |  |  |  | MECÂNICA |  |  |  |  | Qui 27/08/26 |  |
| 341 | 1.12.58.3 | Atendimento de Comentário | 3d | 2026-09-03 | 2026-09-08 | 340 | 2026-08-27 | 2026-09-01 | 3d | 18d | 0d |  |  |  | MECÂNICA |  |  |  |  | Ter 01/09/26 |  |
| 342 | 1.12.58.4 | Aprovação | 2d | 2026-09-08 | 2026-09-10 | 341 | 2026-09-01 | 2026-09-03 | 2d | 18d |  |  |  |  | MECÂNICA |  |  |  |  | Qui 03/09/26 |  |
| 343 | 1.12.59 | **DT-F0009-0309-MB-L-00010** | 20d | 2026-08-13 | 2026-09-10 |  | 2026-08-06 | 2026-09-03 | 20d | 18d |  | DT - Detalhe Típico | 03 - REDUÇÃO | 09 - FORNO TECNORED | MECÂNICA | REFRATARIO TUBULACOES | A1 (841x594mm) | 01 | Revisão do projeto do forno - carcaça e refratário | Qui 03/09/26 | Qui 06/08/26 |
| 344 | 1.12.59.1 | Emissão inicial | 10d | 2026-08-13 | 2026-08-27 | 314 | 2026-08-06 | 2026-08-20 | 10d | 18d | 0d |  |  |  | MECÂNICA |  |  |  |  | Qui 20/08/26 |  |
| 345 | 1.12.59.2 | Avaliação do Cliente | 5d | 2026-08-27 | 2026-09-03 | 344 | 2026-08-20 | 2026-08-27 | 5d | 18d | 0d |  |  |  | MECÂNICA |  |  |  |  | Qui 27/08/26 |  |
| 346 | 1.12.59.3 | Atendimento de Comentário | 3d | 2026-09-03 | 2026-09-08 | 345 | 2026-08-27 | 2026-09-01 | 3d | 18d | 0d |  |  |  | MECÂNICA |  |  |  |  | Ter 01/09/26 |  |
| 347 | 1.12.59.4 | Aprovação | 2d | 2026-09-08 | 2026-09-10 | 346 | 2026-09-01 | 2026-09-03 | 2d | 18d |  |  |  |  | MECÂNICA |  |  |  |  | Qui 03/09/26 |  |
| 348 | 1.12.60 | **DT-F0009-0309-MB-L-00011** | 20d | 2026-08-13 | 2026-09-10 |  | 2026-08-06 | 2026-09-03 | 20d | 18d |  | DT - Detalhe Típico | 03 - REDUÇÃO | 09 - FORNO TECNORED | MECÂNICA | SUPORTE H DE VENTO V1 | A1 (841x594mm) | 01 | Revisão do projeto do forno - carcaça e refratário | Qui 03/09/26 | Qui 06/08/26 |
| 349 | 1.12.60.1 | Emissão inicial | 10d | 2026-08-13 | 2026-08-27 | 314 | 2026-08-06 | 2026-08-20 | 10d | 18d | 0d |  |  |  | MECÂNICA |  |  |  |  | Qui 20/08/26 |  |
| 350 | 1.12.60.2 | Avaliação do Cliente | 5d | 2026-08-27 | 2026-09-03 | 349 | 2026-08-20 | 2026-08-27 | 5d | 18d | 0d |  |  |  | MECÂNICA |  |  |  |  | Qui 27/08/26 |  |
| 351 | 1.12.60.3 | Atendimento de Comentário | 3d | 2026-09-03 | 2026-09-08 | 350 | 2026-08-27 | 2026-09-01 | 3d | 18d | 0d |  |  |  | MECÂNICA |  |  |  |  | Ter 01/09/26 |  |
| 352 | 1.12.60.4 | Aprovação | 2d | 2026-09-08 | 2026-09-10 | 351 | 2026-09-01 | 2026-09-03 | 2d | 18d |  |  |  |  | MECÂNICA |  |  |  |  | Qui 03/09/26 |  |
| 353 | 1.12.61 | **DT-F0009-0309-MB-L-00012** | 20d | 2026-08-13 | 2026-09-10 |  | 2026-08-06 | 2026-09-03 | 20d | 18d |  | DT - Detalhe Típico | 03 - REDUÇÃO | 09 - FORNO TECNORED | MECÂNICA | INSTRUMENTOS CADINHO | A1 (841x594mm) | 01 | Revisão da instrumentação | Qui 03/09/26 | Qui 06/08/26 |
| 354 | 1.12.61.1 | Emissão inicial | 10d | 2026-08-13 | 2026-08-27 | 314 | 2026-08-06 | 2026-08-20 | 10d | 18d | 0d |  |  |  | MECÂNICA |  |  |  |  | Qui 20/08/26 |  |
| 355 | 1.12.61.2 | Avaliação do Cliente | 5d | 2026-08-27 | 2026-09-03 | 354 | 2026-08-20 | 2026-08-27 | 5d | 18d | 0d |  |  |  | MECÂNICA |  |  |  |  | Qui 27/08/26 |  |
| 356 | 1.12.61.3 | Atendimento de Comentário | 3d | 2026-09-03 | 2026-09-08 | 355 | 2026-08-27 | 2026-09-01 | 3d | 18d | 0d |  |  |  | MECÂNICA |  |  |  |  | Ter 01/09/26 |  |
| 357 | 1.12.61.4 | Aprovação | 2d | 2026-09-08 | 2026-09-10 | 356 | 2026-09-01 | 2026-09-03 | 2d | 18d |  |  |  |  | MECÂNICA |  |  |  |  | Qui 03/09/26 |  |

| ID | WBS | Task | Duration | Start | Finish | Predecessors | Baseline start | Baseline finish | Baseline duration | Total slack | Free slack | Tipo de documento | Área | Sub-área | Disciplina | Título | Formato | Quantidade | Agrupamento Cecal | Término_LB_R0 | Início_LB_R0 |
| --- | --- | --- | --- | --- | --- | --- | --- | --- | --- | --- | --- | --- | --- | --- | --- | --- | --- | --- | --- | --- | --- |
| 358 | 1.12.62 | **DT-F0009-0309-MB-L-00013** | 20d | 2026-08-13 | 2026-09-10 |  | 2026-08-06 | 2026-09-03 | 20d | 18d |  | DT - Detalhe Típico | 03 - REDUÇÃO | 09 - FORNO TECNORED | MECÂNICA | INSTRUMENTOS CORPO E TOPO | A1 (841x594mm) | 01 | Revisão da instrumentação | Qui 03/09/26 | Qui 06/08/26 |
| 359 | 1.12.62.1 | Emissão inicial | 10d | 2026-08-13 | 2026-08-27 | 314 | 2026-08-06 | 2026-08-20 | 10d | 18d | 0d |  |  |  | MECÂNICA |  |  |  |  | Qui 20/08/26 |  |
| 360 | 1.12.62.2 | Avaliação do Cliente | 5d | 2026-08-27 | 2026-09-03 | 359 | 2026-08-20 | 2026-08-27 | 5d | 18d | 0d |  |  |  | MECÂNICA |  |  |  |  | Qui 27/08/26 |  |
| 361 | 1.12.62.3 | Atendimento de Comentário | 3d | 2026-09-03 | 2026-09-08 | 360 | 2026-08-27 | 2026-09-01 | 3d | 18d | 0d |  |  |  | MECÂNICA |  |  |  |  | Ter 01/09/26 |  |
| 362 | 1.12.62.4 | Aprovação | 2d | 2026-09-08 | 2026-09-10 | 361 | 2026-09-01 | 2026-09-03 | 2d | 18d |  |  |  |  | MECÂNICA |  |  |  |  | Qui 03/09/26 |  |
| 363 | 1.12.63 | **DT-F0009-0309-MB-L-00014** | 20d | 2026-08-13 | 2026-09-10 |  | 2026-08-06 | 2026-09-03 | 20d | 18d |  | DT - Detalhe Típico | 03 - REDUÇÃO | 09 - FORNO TECNORED | MECÂNICA | OFF TAKE | A1 (841x594mm) | 01 | Revisão da exaustão | Qui 03/09/26 | Qui 06/08/26 |
| 364 | 1.12.63.1 | Emissão inicial | 10d | 2026-08-13 | 2026-08-27 | 314 | 2026-08-06 | 2026-08-20 | 10d | 18d | 0d |  |  |  | MECÂNICA |  |  |  |  | Qui 20/08/26 |  |
| 365 | 1.12.63.2 | Avaliação do Cliente | 5d | 2026-08-27 | 2026-09-03 | 364 | 2026-08-20 | 2026-08-27 | 5d | 18d | 0d |  |  |  | MECÂNICA |  |  |  |  | Qui 27/08/26 |  |
| 366 | 1.12.63.3 | Atendimento de Comentário | 3d | 2026-09-03 | 2026-09-08 | 365 | 2026-08-27 | 2026-09-01 | 3d | 18d | 0d |  |  |  | MECÂNICA |  |  |  |  | Ter 01/09/26 |  |
| 367 | 1.12.63.4 | Aprovação | 2d | 2026-09-08 | 2026-09-10 | 366 | 2026-09-01 | 2026-09-03 | 2d | 18d |  |  |  |  | MECÂNICA |  |  |  |  | Qui 03/09/26 |  |
| 368 | 1.12.64 | **DT-F0009-0309-MB-L-00015** | 20d | 2026-08-13 | 2026-09-10 |  | 2026-08-06 | 2026-09-03 | 20d | 0d |  | DT - Detalhe Típico | 03 - REDUÇÃO | 09 - FORNO TECNORED | MECÂNICA | LIGAÇÃO VÁLVULAS SHUT-OFF | A1 (841x594mm) | 01 | Revisão da exaustão | Qui 03/09/26 | Qui 06/08/26 |
| 369 | 1.12.64.1 | Emissão inicial | 10d | 2026-08-13 | 2026-08-27 | 314 | 2026-08-06 | 2026-08-20 | 10d | 0d |  |  |  |  | MECÂNICA |  |  |  |  | Qui 20/08/26 |  |
| 370 | 1.12.64.2 | Avaliação do Cliente | 5d | 2026-08-27 | 2026-09-03 | 369 | 2026-08-20 | 2026-08-27 | 5d | 18d | 0d |  |  |  | MECÂNICA |  |  |  |  | Qui 27/08/26 |  |
| 371 | 1.12.64.3 | Atendimento de Comentário | 3d | 2026-09-03 | 2026-09-08 | 370 | 2026-08-27 | 2026-09-01 | 3d | 18d | 0d |  |  |  | MECÂNICA |  |  |  |  | Ter 01/09/26 |  |
| 372 | 1.12.64.4 | Aprovação | 2d | 2026-09-08 | 2026-09-10 | 371 | 2026-09-01 | 2026-09-03 | 2d | 18d |  |  |  |  | MECÂNICA |  |  |  |  | Qui 03/09/26 |  |
| 373 | 1.12.65 | **DT-F0009-0309-MB-L-00016** | 20d | 2026-08-27 | 2026-09-24 |  | 2026-08-20 | 2026-09-17 | 20d | 8d |  | DT - Detalhe Típico | 03 - REDUÇÃO | 09 - FORNO TECNORED | MECÂNICA | DOWNCOMER FORNOS E LIGAÇÃO SLG | A1 (841x594mm) | 01 | Revisão da exaustão | Qui 17/09/26 | Qui 20/08/26 |
| 374 | 1.12.65.1 | Emissão inicial | 10d | 2026-08-27 | 2026-09-10 | 369 | 2026-08-20 | 2026-09-03 | 10d | 8d | 0d |  |  |  | MECÂNICA |  |  |  |  | Qui 03/09/26 |  |
| 375 | 1.12.65.2 | Avaliação do Cliente | 5d | 2026-09-10 | 2026-09-17 | 374 | 2026-09-03 | 2026-09-10 | 5d | 8d | 0d |  |  |  | MECÂNICA |  |  |  |  | Qui 10/09/26 |  |
| 376 | 1.12.65.3 | Atendimento de Comentário | 3d | 2026-09-17 | 2026-09-22 | 375 | 2026-09-10 | 2026-09-15 | 3d | 8d | 0d |  |  |  | MECÂNICA |  |  |  |  | Ter 15/09/26 |  |
| 377 | 1.12.65.4 | Aprovação | 2d | 2026-09-22 | 2026-09-24 | 376 | 2026-09-15 | 2026-09-17 | 2d | 8d |  |  |  |  | MECÂNICA |  |  |  |  | Qui 17/09/26 |  |
| 378 | 1.12.66 | **DT-F0009-0309-MB-L-00017** | 20d | 2026-08-27 | 2026-09-24 |  | 2026-08-20 | 2026-09-17 | 20d | 8d |  | DT - Detalhe Típico | 03 - REDUÇÃO | 09 - FORNO TECNORED | MECÂNICA | INSTRUMENTOS TOPO DO FORNO E OFF-TAKE | A1 (841x594mm) | 01 | Revisão da exaustão | Qui 17/09/26 | Qui 20/08/26 |
| 379 | 1.12.66.1 | Emissão inicial | 10d | 2026-08-27 | 2026-09-10 | 369 | 2026-08-20 | 2026-09-03 | 10d | 8d | 0d |  |  |  | MECÂNICA |  |  |  |  | Qui 03/09/26 |  |
| 380 | 1.12.66.2 | Avaliação do Cliente | 5d | 2026-09-10 | 2026-09-17 | 379 | 2026-09-03 | 2026-09-10 | 5d | 8d | 0d |  |  |  | MECÂNICA |  |  |  |  | Qui 10/09/26 |  |
| 381 | 1.12.66.3 | Atendimento de Comentário | 3d | 2026-09-17 | 2026-09-22 | 380 | 2026-09-10 | 2026-09-15 | 3d | 8d | 0d |  |  |  | MECÂNICA |  |  |  |  | Ter 15/09/26 |  |
| 382 | 1.12.66.4 | Aprovação | 2d | 2026-09-22 | 2026-09-24 | 381 | 2026-09-15 | 2026-09-17 | 2d | 8d |  |  |  |  | MECÂNICA |  |  |  |  | Qui 17/09/26 |  |

| ID | WBS | Task | Duration | Start | Finish | Predecessors | Baseline start | Baseline finish | Baseline duration | Total slack | Free slack | Tipo de documento | Área | Sub-área | Disciplina | Título | Formato | Quantidade | Agrupamento Cecal | Término_LB_R0 | Início_LB_R0 |
| --- | --- | --- | --- | --- | --- | --- | --- | --- | --- | --- | --- | --- | --- | --- | --- | --- | --- | --- | --- | --- | --- |
| 383 | 1.12.67 | **DT-F0009-0309-MB-L-00018** | 20d | 2026-08-27 | 2026-09-24 |  | 2026-08-20 | 2026-09-17 | 20d | 8d |  | DT - Detalhe Típico | 03 - REDUÇÃO | 09 - FORNO TECNORED | MECÂNICA | INSTRUMENTOS ALGARAVIZES E H DE VENTO | A1 (841x594mm) | 01 | Revisão da instrumentação | Qui 17/09/26 | Qui 20/08/26 |
| 384 | 1.12.67.1 | Emissão inicial | 10d | 2026-08-27 | 2026-09-10 | 369 | 2026-08-20 | 2026-09-03 | 10d | 8d | 0d |  |  |  | MECÂNICA |  |  |  |  | Qui 03/09/26 |  |
| 385 | 1.12.67.2 | Avaliação do Cliente | 5d | 2026-09-10 | 2026-09-17 | 384 | 2026-09-03 | 2026-09-10 | 5d | 8d | 0d |  |  |  | MECÂNICA |  |  |  |  | Qui 10/09/26 |  |
| 386 | 1.12.67.3 | Atendimento de Comentário | 3d | 2026-09-17 | 2026-09-22 | 385 | 2026-09-10 | 2026-09-15 | 3d | 8d | 0d |  |  |  | MECÂNICA |  |  |  |  | Ter 15/09/26 |  |
| 387 | 1.12.67.4 | Aprovação | 2d | 2026-09-22 | 2026-09-24 | 386 | 2026-09-15 | 2026-09-17 | 2d | 8d |  |  |  |  | MECÂNICA |  |  |  |  | Qui 17/09/26 |  |
| 388 | 1.12.68 | **DT-F0009-0309-MB-L-00019** | 20d | 2026-08-27 | 2026-09-24 |  | 2026-08-20 | 2026-09-17 | 20d | 8d |  | DT - Detalhe Típico | 03 - REDUÇÃO | 09 - FORNO TECNORED | MECÂNICA | LIGACAO H DE VENTO FORNOS 1 E 2 | A1 (841x594mm) | 01 | Revisão do projeto do forno - carcaça e refratário | Qui 17/09/26 | Qui 20/08/26 |
| 389 | 1.12.68.1 | Emissão inicial | 10d | 2026-08-27 | 2026-09-10 | 369 | 2026-08-20 | 2026-09-03 | 10d | 8d | 0d |  |  |  | MECÂNICA |  |  |  |  | Qui 03/09/26 |  |
| 390 | 1.12.68.2 | Avaliação do Cliente | 5d | 2026-09-10 | 2026-09-17 | 389 | 2026-09-03 | 2026-09-10 | 5d | 8d | 0d |  |  |  | MECÂNICA |  |  |  |  | Qui 10/09/26 |  |
| 391 | 1.12.68.3 | Atendimento de Comentário | 3d | 2026-09-17 | 2026-09-22 | 390 | 2026-09-10 | 2026-09-15 | 3d | 8d | 0d |  |  |  | MECÂNICA |  |  |  |  | Ter 15/09/26 |  |
| 392 | 1.12.68.4 | Aprovação | 2d | 2026-09-22 | 2026-09-24 | 391 | 2026-09-15 | 2026-09-17 | 2d | 8d |  |  |  |  | MECÂNICA |  |  |  |  | Qui 17/09/26 |  |
| 393 | 1.12.69 | **DT-F0009-0309-MB-L-00020** | 20d | 2026-08-27 | 2026-09-24 |  | 2026-08-20 | 2026-09-17 | 20d | 8d |  | DT - Detalhe Típico | 03 - REDUÇÃO | 09 - FORNO TECNORED | MECÂNICA | INSTRUMENTOS STAVES DE COBRE | A1 (841x594mm) | 01 | Revisão da instrumentação | Qui 17/09/26 | Qui 20/08/26 |
| 394 | 1.12.69.1 | Emissão inicial | 10d | 2026-08-27 | 2026-09-10 | 369 | 2026-08-20 | 2026-09-03 | 10d | 8d | 0d |  |  |  | MECÂNICA |  |  |  |  | Qui 03/09/26 |  |
| 395 | 1.12.69.2 | Avaliação do Cliente | 5d | 2026-09-10 | 2026-09-17 | 394 | 2026-09-03 | 2026-09-10 | 5d | 8d | 0d |  |  |  | MECÂNICA |  |  |  |  | Qui 10/09/26 |  |
| 396 | 1.12.69.3 | Atendimento de Comentário | 3d | 2026-09-17 | 2026-09-22 | 395 | 2026-09-10 | 2026-09-15 | 3d | 8d | 0d |  |  |  | MECÂNICA |  |  |  |  | Ter 15/09/26 |  |
| 397 | 1.12.69.4 | Aprovação | 2d | 2026-09-22 | 2026-09-24 | 396 | 2026-09-15 | 2026-09-17 | 2d | 8d |  |  |  |  | MECÂNICA |  |  |  |  | Qui 17/09/26 |  |
| 398 | 1.12.70 | **DT-F0009-0309-MB-L-00021** | 20d | 2026-08-27 | 2026-09-24 |  | 2026-08-20 | 2026-09-17 | 20d | 8d |  | DT - Detalhe Típico | 03 - REDUÇÃO | 09 - FORNO TECNORED | MECÂNICA | INSTRUMENTOS CURTAIN-WALL | A1 (841x594mm) | 01 | Revisão da instrumentação | Qui 17/09/26 | Qui 20/08/26 |
| 399 | 1.12.70.1 | Emissão inicial | 10d | 2026-08-27 | 2026-09-10 | 369 | 2026-08-20 | 2026-09-03 | 10d | 8d | 0d |  |  |  | MECÂNICA |  |  |  |  | Qui 03/09/26 |  |
| 400 | 1.12.70.2 | Avaliação do Cliente | 5d | 2026-09-10 | 2026-09-17 | 399 | 2026-09-03 | 2026-09-10 | 5d | 8d | 0d |  |  |  | MECÂNICA |  |  |  |  | Qui 10/09/26 |  |
| 401 | 1.12.70.3 | Atendimento de Comentário | 3d | 2026-09-17 | 2026-09-22 | 400 | 2026-09-10 | 2026-09-15 | 3d | 8d | 0d |  |  |  | MECÂNICA |  |  |  |  | Ter 15/09/26 |  |
| 402 | 1.12.70.4 | Aprovação | 2d | 2026-09-22 | 2026-09-24 | 401 | 2026-09-15 | 2026-09-17 | 2d | 8d |  |  |  |  | MECÂNICA |  |  |  |  | Qui 17/09/26 |  |
| 403 | 1.12.71 | **DT-F0009-0309-MB-L-00022** | 20d | 2026-08-27 | 2026-09-24 |  | 2026-08-20 | 2026-09-17 | 20d | 8d |  | DT - Detalhe Típico | 03 - REDUÇÃO | 09 - FORNO TECNORED | MECÂNICA | VÁLVULA DE AR QUENTE | A1 (841x594mm) | 01 | Revisão da instrumentação | Qui 17/09/26 | Qui 20/08/26 |
| 404 | 1.12.71.1 | Emissão inicial | 10d | 2026-08-27 | 2026-09-10 | 369 | 2026-08-20 | 2026-09-03 | 10d | 8d | 0d |  |  |  | MECÂNICA |  |  |  |  | Qui 03/09/26 |  |
| 405 | 1.12.71.2 | Avaliação do Cliente | 5d | 2026-09-10 | 2026-09-17 | 404 | 2026-09-03 | 2026-09-10 | 5d | 8d | 0d |  |  |  | MECÂNICA |  |  |  |  | Qui 10/09/26 |  |
| 406 | 1.12.71.3 | Atendimento de Comentário | 3d | 2026-09-17 | 2026-09-22 | 405 | 2026-09-10 | 2026-09-15 | 3d | 8d | 0d |  |  |  | MECÂNICA |  |  |  |  | Ter 15/09/26 |  |
| 407 | 1.12.71.4 | Aprovação | 2d | 2026-09-22 | 2026-09-24 | 406 | 2026-09-15 | 2026-09-17 | 2d | 8d |  |  |  |  | MECÂNICA |  |  |  |  | Qui 17/09/26 |  |

| ID | WBS | Task | Type | Duration | Start | Finish | Predecessors | Baseline start | Baseline finish | Baseline duration | Total slack | Free slack | Tipo de documento | Área | Sub-área | Disciplina | Título | Formato | Quantidade | Agrupamento Cecal | Término_LB_R0 | Início_LB_R0 |
| --- | --- | --- | --- | --- | --- | --- | --- | --- | --- | --- | --- | --- | --- | --- | --- | --- | --- | --- | --- | --- | --- | --- |
| 408 | 1.12.72 | **DT-F0009-0309-MB-L-00023** |  | 20d | 2026-08-27 | 2026-09-24 |  | 2026-08-20 | 2026-09-17 | 20d | 8d |  | DT - Detalhe Típico | 03 - REDUÇÃO | 09 - FORNO TECNORED | MECÂNICA | VÁLVULA DE TIRAGEM AR QUENTE | A1 (841x594mm) | 01 | Revisão da instrumentação | Qui 17/09/26 | Qui 20/08/26 |
| 409 | 1.12.72.1 | Emissão inicial |  | 10d | 2026-08-27 | 2026-09-10 | 369 | 2026-08-20 | 2026-09-03 | 10d | 8d | 0d |  |  |  | MECÂNICA |  |  |  |  | Qui 03/09/26 |  |
| 410 | 1.12.72.2 | Avaliação do Cliente |  | 5d | 2026-09-10 | 2026-09-17 | 409 | 2026-09-03 | 2026-09-10 | 5d | 8d | 0d |  |  |  | MECÂNICA |  |  |  |  | Qui 10/09/26 |  |
| 411 | 1.12.72.3 | Atendimento de Comentário |  | 3d | 2026-09-17 | 2026-09-22 | 410 | 2026-09-10 | 2026-09-15 | 3d | 8d | 0d |  |  |  | MECÂNICA |  |  |  |  | Ter 15/09/26 |  |
| 412 | 1.12.72.4 | Aprovação |  | 2d | 2026-09-22 | 2026-09-24 | 411 | 2026-09-15 | 2026-09-17 | 2d | 8d |  |  |  |  | MECÂNICA |  |  |  |  | Qui 17/09/26 |  |
| 413 | 1.12.73 | **DT-F0009-0309-MB-L-00024** |  | 20d | 2026-08-27 | 2026-09-24 |  | 2026-08-20 | 2026-09-17 | 20d | 0d |  | DT - Detalhe Típico | 03 - REDUÇÃO | 09 - FORNO TECNORED | MECÂNICA | VÁLVULA BLEEDER | A1 (841x594mm) | 01 | Revisão da instrumentação | Qui 17/09/26 | Qui 20/08/26 |
| 414 | 1.12.73.1 | Emissão inicial |  | 10d | 2026-08-27 | 2026-09-10 | 369 | 2026-08-20 | 2026-09-03 | 10d | 0d |  |  |  |  | MECÂNICA |  |  |  |  | Qui 03/09/26 |  |
| 415 | 1.12.73.2 | Avaliação do Cliente |  | 5d | 2026-09-10 | 2026-09-17 | 414 | 2026-09-03 | 2026-09-10 | 5d | 8d | 0d |  |  |  | MECÂNICA |  |  |  |  | Qui 10/09/26 |  |
| 416 | 1.12.73.3 | Atendimento de Comentário |  | 3d | 2026-09-17 | 2026-09-22 | 415 | 2026-09-10 | 2026-09-15 | 3d | 8d | 0d |  |  |  | MECÂNICA |  |  |  |  | Ter 15/09/26 |  |
| 417 | 1.12.73.4 | Aprovação |  | 2d | 2026-09-22 | 2026-09-24 | 416 | 2026-09-15 | 2026-09-17 | 2d | 8d |  |  |  |  | MECÂNICA |  |  |  |  | Qui 17/09/26 |  |
| 418 | 1.12.74 | **RT-F0009-0309-MB-L-00001** |  | 18d | 2026-09-10 | 2026-10-06 |  | 2026-09-03 | 2026-09-29 | 18d | 0d |  | RT - Relatório Técnico | 03 - REDUÇÃO | 09 - FORNO TECNORED | MECÂNICA | PLANO DE CARGAS FORNO | A1 (841x594mm) | 01 | Readequação da fundação | Ter 29/09/26 | Qui 03/09/26 |
| 419 | 1.12.74.1 | Emissão inicial |  | 8d | 2026-09-10 | 2026-09-22 | 414 | 2026-09-03 | 2026-09-15 | 8d | 0d |  |  |  |  | MECÂNICA |  |  |  |  | Ter 15/09/26 |  |
| 420 | 1.12.74.2 | Avaliação do Cliente |  | 5d | 2026-09-22 | 2026-09-29 | 419 | 2026-09-15 | 2026-09-22 | 5d | 0d |  |  |  |  | MECÂNICA |  |  |  |  | Ter 22/09/26 |  |
| 421 | 1.12.74.3 | Atendimento de Comentário |  | 3d | 2026-09-29 | 2026-10-02 | 420 | 2026-09-22 | 2026-09-25 | 3d | 0d |  |  |  |  | MECÂNICA |  |  |  |  | Sex 25/09/26 |  |
| 422 | 1.12.74.4 | Aprovação |  | 2d | 2026-10-02 | 2026-10-06 | 421 | 2026-09-25 | 2026-09-29 | 2d | 0d |  |  |  |  | MECÂNICA |  |  |  |  | Ter 29/09/26 |  |
| 423 | 4.2.1.10 | MECÂNICA / EQUIPAMENTOS 309 | manual | 70d | 2026-06-23 | 2026-09-28 | 425SS |  |  |  |  |  |  |  |  |  |  |  |  |  |  |  |
| 424 | 5.2.1.9 | MECÂNICA / EQUIPAMENTOS 309 | manual | 70d | 2026-06-30 | 2026-10-06 | 425SS |  |  |  |  |  |  |  |  |  |  |  |  |  |  |  |
| 425 | 1.15 | **MECÂNICA / EQUIPAMENTOS 309** |  | 70d | 2026-06-30 | 2026-10-06 |  | 2026-06-23 | 2026-09-29 | 70d | 0d |  |  |  |  |  |  |  |  |  | Ter 29/09/26 | Ter 23/06/26 |
| 426 | 1.15.1 | **CP-F0009-0309-MB-M-00001** |  | 15d | 2026-06-30 | 2026-07-21 |  | 2026-06-23 | 2026-07-14 | 15d | 30d | 20d | CP - Critério de Projeto | 03 - REDUÇÃO | 09 - FORNO TECNORED | MECÂNICA | CRITÉRIO DE PROJETO MECÂNICO | A4 (210x297mm) | 20 | Revisão dos balanços de massa e energia utilidades | Ter 14/07/26 | Ter 23/06/26 |
| 427 | 1.15.1.1 | Emissão inicial |  | 5d | 2026-06-30 | 2026-07-07 | 21 | 2026-06-23 | 2026-06-30 | 5d | 30d | 0d |  |  |  | MECÂNICA |  |  |  |  | Ter 30/06/26 |  |
| 428 | 1.15.1.2 | Avaliação do Cliente |  | 5d | 2026-07-07 | 2026-07-14 | 427 | 2026-06-30 | 2026-07-07 | 5d | 30d | 0d |  |  |  | MECÂNICA |  |  |  |  | Ter 07/07/26 |  |
| 429 | 1.15.1.3 | Atendimento de Comentário |  | 3d | 2026-07-14 | 2026-07-17 | 428 | 2026-07-07 | 2026-07-10 | 3d | 30d | 0d |  |  |  | MECÂNICA |  |  |  |  | Sex 10/07/26 |  |
| 430 | 1.15.1.4 | Aprovação |  | 2d | 2026-07-17 | 2026-07-21 | 429 | 2026-07-10 | 2026-07-14 | 2d | 30d |  |  |  |  | MECÂNICA |  |  |  |  | Ter 14/07/26 |  |
| 431 | 1.15.2 | **ET-F0009-0309-MB-M-00001** |  | 17d | 2026-09-10 | 2026-10-05 | 426 | 2026-09-03 | 2026-09-28 | 17d | 1d |  | ET - Especificação Técnica | 03 - REDUÇÃO | 09 - FORNO TECNORED | MECÂNICA | ESPECIFICAÇÃO TÉCNICA STAVES DE COBRE | A4 (210x297mm) | 02 | Revisão do projeto de cobre refrigerado | Seg 28/09/26 | Qui 03/09/26 |
| 432 | 1.15.2.1 | Emissão inicial |  | 7d | 2026-09-10 | 2026-09-21 | 328 | 2026-09-03 | 2026-09-14 | 7d | 1d | 0d |  |  |  | MECÂNICA |  |  |  |  | Seg 14/09/26 |  |
| 433 | 1.15.2.2 | Avaliação do Cliente |  | 5d | 2026-09-21 | 2026-09-28 | 432 | 2026-09-14 | 2026-09-21 | 5d | 1d | 0d |  |  |  | MECÂNICA |  |  |  |  | Seg 21/09/26 |  |
| 434 | 1.15.2.3 | Atendimento de Comentário |  | 3d | 2026-09-28 | 2026-10-01 | 433 | 2026-09-21 | 2026-09-24 | 3d | 1d | 0d |  |  |  | MECÂNICA |  |  |  |  | Qui 24/09/26 |  |
| 435 | 1.15.2.4 | Aprovação |  | 2d | 2026-10-01 | 2026-10-05 | 434 | 2026-09-24 | 2026-09-28 | 2d | 1d |  |  |  |  | MECÂNICA |  |  |  |  | Seg 28/09/26 |  |

| ID | WBS | Task | Duration | Start | Finish | Predecessors | Baseline start | Baseline finish | Baseline duration | Total slack | Free slack | Tipo de documento | Área | Sub-área | Disciplina | Título | Formato | Quantidade | Agrupamento Cecal | Término_LB_R0 | Início_LB_R0 |
| --- | --- | --- | --- | --- | --- | --- | --- | --- | --- | --- | --- | --- | --- | --- | --- | --- | --- | --- | --- | --- | --- |
| 436 | 1.15.3 | **ET-F0009-0309-MB-M-00002** | 17d | 2026-09-10 | 2026-10-05 | 426 | 2026-09-03 | 2026-09-28 | 17d | 1d |  | ET - Especificação Técnica | 03 - REDUÇÃO | 09 - FORNO TECNORED | MECÂNICA | ESPECIFICAÇÃO TÉCNICA STAVES DE FERRO FUNDIDO | A4 (210x297mm) | 02 | Revisão do projeto de cobre refrigerado | Seg 28/09/26 | Qui 03/09/26 |
| 437 | 1.15.3.1 | Emissão inicial | 7d | 2026-09-10 | 2026-09-21 | 328 | 2026-09-03 | 2026-09-14 | 7d | 1d | 0d |  |  |  | MECÂNICA |  |  |  |  | Seg 14/09/26 |  |
| 438 | 1.15.3.2 | Avaliação do Cliente | 5d | 2026-09-21 | 2026-09-28 | 437 | 2026-09-14 | 2026-09-21 | 5d | 1d | 0d |  |  |  | MECÂNICA |  |  |  |  | Seg 21/09/26 |  |
| 439 | 1.15.3.3 | Atendimento de Comentário | 3d | 2026-09-28 | 2026-10-01 | 438 | 2026-09-21 | 2026-09-24 | 3d | 1d | 0d |  |  |  | MECÂNICA |  |  |  |  | Qui 24/09/26 |  |
| 440 | 1.15.3.4 | Aprovação | 2d | 2026-10-01 | 2026-10-05 | 439 | 2026-09-24 | 2026-09-28 | 2d | 1d |  |  |  |  | MECÂNICA |  |  |  |  | Seg 28/09/26 |  |
| 441 | 1.15.4 | **ET-F0009-0309-MB-M-00003** | 17d | 2026-09-10 | 2026-10-05 | 426 | 2026-09-03 | 2026-09-28 | 17d | 1d |  | ET - Especificação Técnica | 03 - REDUÇÃO | 09 - FORNO TECNORED | MECÂNICA | ESPECIFICAÇÃO TÉCNICA VENTANEIRAS E COOLING BOX | A4 (210x297mm) | 02 | Revisão do projeto de cobre refrigerado | Seg 28/09/26 | Qui 03/09/26 |
| 442 | 1.15.4.1 | Emissão inicial | 7d | 2026-09-10 | 2026-09-21 | 328 | 2026-09-03 | 2026-09-14 | 7d | 1d | 0d |  |  |  | MECÂNICA |  |  |  |  | Seg 14/09/26 |  |
| 443 | 1.15.4.2 | Avaliação do Cliente | 5d | 2026-09-21 | 2026-09-28 | 442 | 2026-09-14 | 2026-09-21 | 5d | 1d | 0d |  |  |  | MECÂNICA |  |  |  |  | Seg 21/09/26 |  |
| 444 | 1.15.4.3 | Atendimento de Comentário | 3d | 2026-09-28 | 2026-10-01 | 443 | 2026-09-21 | 2026-09-24 | 3d | 1d | 0d |  |  |  | MECÂNICA |  |  |  |  | Qui 24/09/26 |  |
| 445 | 1.15.4.4 | Aprovação | 2d | 2026-10-01 | 2026-10-05 | 444 | 2026-09-24 | 2026-09-28 | 2d | 1d |  |  |  |  | MECÂNICA |  |  |  |  | Seg 28/09/26 |  |
| 446 | 1.15.5 | **ET-F0009-0309-MB-M-00004** | 17d | 2026-09-10 | 2026-10-05 | 426 | 2026-09-03 | 2026-09-28 | 17d | 1d |  | ET - Especificação Técnica | 03 - REDUÇÃO | 09 - FORNO TECNORED | MECÂNICA | ESPECIFICAÇÃO TÉCNICA CURTAIN WALL | A4 (210x297mm) | 02 | Revisão do projeto de cobre refrigerado | Seg 28/09/26 | Qui 03/09/26 |
| 447 | 1.15.5.1 | Emissão inicial | 7d | 2026-09-10 | 2026-09-21 | 328 | 2026-09-03 | 2026-09-14 | 7d | 1d | 0d |  |  |  | MECÂNICA |  |  |  |  | Seg 14/09/26 |  |
| 448 | 1.15.5.2 | Avaliação do Cliente | 5d | 2026-09-21 | 2026-09-28 | 447 | 2026-09-14 | 2026-09-21 | 5d | 1d | 0d |  |  |  | MECÂNICA |  |  |  |  | Seg 21/09/26 |  |
| 449 | 1.15.5.3 | Atendimento de Comentário | 3d | 2026-09-28 | 2026-10-01 | 448 | 2026-09-21 | 2026-09-24 | 3d | 1d | 0d |  |  |  | MECÂNICA |  |  |  |  | Qui 24/09/26 |  |
| 450 | 1.15.5.4 | Aprovação | 2d | 2026-10-01 | 2026-10-05 | 449 | 2026-09-24 | 2026-09-28 | 2d | 1d |  |  |  |  | MECÂNICA |  |  |  |  | Seg 28/09/26 |  |
| 451 | 1.15.6 | **FD-F0009-0309-MB-M-00001** | 27d | 2026-08-11 | 2026-09-17 |  | 2026-08-04 | 2026-09-10 | 27d | 13d |  | FD - Folha de Dados | 03 - REDUÇÃO | 09 - FORNO TECNORED | MECÂNICA | FOLHA DE DADOS ESPECIFICAÇÃO TÉCNICA TORRES DE RESFRIAMENTO | A4 (210x297mm) | 10 | Revisão do projeto de cobre refrigerado | Qui 10/09/26 | Ter 04/08/26 |
| 452 | 1.15.6.1 | Emissão inicial | 15d | 2026-08-11 | 2026-09-01 | 1029, 21 | 2026-08-04 | 2026-08-25 | 15d | 13d | 0d |  |  |  | MECÂNICA |  |  |  |  | Ter 25/08/26 |  |
| 453 | 1.15.6.2 | Avaliação do Cliente | 5d | 2026-09-01 | 2026-09-08 | 452 | 2026-08-25 | 2026-09-01 | 5d | 13d | 0d |  |  |  | MECÂNICA |  |  |  |  | Ter 01/09/26 |  |
| 454 | 1.15.6.3 | Atendimento de Comentário | 5d | 2026-09-08 | 2026-09-15 | 453 | 2026-09-01 | 2026-09-08 | 5d | 13d | 0d |  |  |  | MECÂNICA |  |  |  |  | Ter 08/09/26 |  |
| 455 | 1.15.6.4 | Aprovação | 2d | 2026-09-15 | 2026-09-17 | 454 | 2026-09-08 | 2026-09-10 | 2d | 13d |  |  |  |  | MECÂNICA |  |  |  |  | Qui 10/09/26 |  |
| 456 | 1.15.7 | **FD-F0009-0309-MB-M-00002** | 20d | 2026-09-08 | 2026-10-06 |  | 2026-09-01 | 2026-09-29 | 20d | 0d |  | FD - Folha de Dados | 03 - REDUÇÃO | 09 - FORNO TECNORED | MECÂNICA | FOLHA DE DADOS ESPECIFICAÇÃO TÉCNICA BOMBAS | A4 (210x297mm) | 10 | Revisão do projeto de cobre refrigerado | Ter 29/09/26 | Ter 01/09/26 |
| 457 | 1.15.7.1 | Emissão inicial | 10d | 2026-09-08 | 2026-09-22 | 1075 | 2026-09-01 | 2026-09-15 | 10d | 0d |  |  |  |  | MECÂNICA |  |  |  |  | Ter 15/09/26 |  |
| 458 | 1.15.7.2 | Avaliação do Cliente | 5d | 2026-09-22 | 2026-09-29 | 457 | 2026-09-15 | 2026-09-22 | 5d | 0d |  |  |  |  | MECÂNICA |  |  |  |  | Ter 22/09/26 |  |
| 459 | 1.15.7.3 | Atendimento de Comentário | 3d | 2026-09-29 | 2026-10-02 | 458 | 2026-09-22 | 2026-09-25 | 3d | 0d |  |  |  |  | MECÂNICA |  |  |  |  | Sex 25/09/26 |  |
| 460 | 1.15.7.4 | Aprovação | 2d | 2026-10-02 | 2026-10-06 | 459 | 2026-09-25 | 2026-09-29 | 2d | 0d |  |  |  |  | MECÂNICA |  |  |  |  | Ter 29/09/26 |  |

| ID | WBS | Task | Duration | Start | Finish | Predecessors | Baseline start | Baseline finish | Baseline duration | Total slack | Free slack | Tipo de documento | Área | Sub-área | Disciplina | Título | Formato | Quantidade | Agrupamento Cecal | Término_LB_R0 | Início_LB_R0 |
| --- | --- | --- | --- | --- | --- | --- | --- | --- | --- | --- | --- | --- | --- | --- | --- | --- | --- | --- | --- | --- | --- |
| 461 | 1.15.8 | **FD-F0009-0309-MB-M-00003** | 25d | 2026-08-18 | 2026-09-22 |  | 2026-08-11 | 2026-09-15 | 25d | 10d |  | FD - Folha de Dados | 03 - REDUÇÃO | 09 - FORNO TECNORED | MECÂNICA | FOLHA DE DADOS TROCADORES DE CALOR | A4 (210x297mm) | 10 | Revisão do projeto de cobre refrigerado | Ter 15/09/26 | Ter 11/08/26 |
| 462 | 1.15.8.1 | Emissão inicial | 15d | 2026-08-18 | 2026-09-08 | 457SF | 2026-08-11 | 2026-09-01 | 15d | 10d | 0d |  |  |  | MECÂNICA |  |  |  |  | Ter 01/09/26 |  |
| 463 | 1.15.8.2 | Avaliação do Cliente | 5d | 2026-09-08 | 2026-09-15 | 462 | 2026-09-01 | 2026-09-08 | 5d | 10d | 0d |  |  |  | MECÂNICA |  |  |  |  | Ter 08/09/26 |  |
| 464 | 1.15.8.3 | Atendimento de Comentário | 3d | 2026-09-15 | 2026-09-18 | 463 | 2026-09-08 | 2026-09-11 | 3d | 10d | 0d |  |  |  | MECÂNICA |  |  |  |  | Sex 11/09/26 |  |
| 465 | 1.15.8.4 | Aprovação | 2d | 2026-09-18 | 2026-09-22 | 464 | 2026-09-11 | 2026-09-15 | 2d | 10d |  |  |  |  | MECÂNICA |  |  |  |  | Ter 15/09/26 |  |
| 466 | 1.15.9 | **FD-F0009-0309-MB-M-00004** | 27d | 2026-08-18 | 2026-09-24 |  | 2026-08-11 | 2026-09-17 | 27d | 8d |  | FD - Folha de Dados | 03 - REDUÇÃO | 09 - FORNO TECNORED | MECÂNICA | FOLHA DE DADOS BICOS SPRAY DE CARGA | A4 (210x297mm) | 05 | Revisão do projeto de cobre refrigerado | Qui 17/09/26 | Ter 11/08/26 |
| 467 | 1.15.9.1 | Emissão inicial | 15d | 2026-08-18 | 2026-09-08 | 457SF | 2026-08-11 | 2026-09-01 | 15d | 8d | 0d |  |  |  | MECÂNICA |  |  |  |  | Ter 01/09/26 |  |
| 468 | 1.15.9.2 | Avaliação do Cliente | 5d | 2026-09-08 | 2026-09-15 | 467 | 2026-09-01 | 2026-09-08 | 5d | 8d | 0d |  |  |  | MECÂNICA |  |  |  |  | Ter 08/09/26 |  |
| 469 | 1.15.9.3 | Atendimento de Comentário | 5d | 2026-09-15 | 2026-09-22 | 468 | 2026-09-08 | 2026-09-15 | 5d | 8d | 0d |  |  |  | MECÂNICA |  |  |  |  | Ter 15/09/26 |  |
| 470 | 1.15.9.4 | Aprovação | 2d | 2026-09-22 | 2026-09-24 | 469 | 2026-09-15 | 2026-09-17 | 2d | 8d |  |  |  |  | MECÂNICA |  |  |  |  | Qui 17/09/26 |  |
| 471 | 1.15.10 | **FD-F0009-0309-MB-M-00005** | 25d | 2026-08-18 | 2026-09-22 |  | 2026-08-11 | 2026-09-15 | 25d | 10d |  | FD - Folha de Dados | 03 - REDUÇÃO | 09 - FORNO TECNORED | MECÂNICA | FOLHA DE DADOS FILTRO DUPLO CESTO | A4 (210x297mm) | 05 | Revisão do projeto de cobre refrigerado | Ter 15/09/26 | Ter 11/08/26 |
| 472 | 1.15.10.1 | Emissão inicial | 15d | 2026-08-18 | 2026-09-08 | 457SF | 2026-08-11 | 2026-09-01 | 15d | 10d | 0d |  |  |  | MECÂNICA |  |  |  |  | Ter 01/09/26 |  |
| 473 | 1.15.10.2 | Avaliação do Cliente | 5d | 2026-09-08 | 2026-09-15 | 472 | 2026-09-01 | 2026-09-08 | 5d | 10d | 0d |  |  |  | MECÂNICA |  |  |  |  | Ter 08/09/26 |  |
| 474 | 1.15.10.3 | Atendimento de Comentário | 3d | 2026-09-15 | 2026-09-18 | 473 | 2026-09-08 | 2026-09-11 | 3d | 10d | 0d |  |  |  | MECÂNICA |  |  |  |  | Sex 11/09/26 |  |
| 475 | 1.15.10.4 | Aprovação | 2d | 2026-09-18 | 2026-09-22 | 474 | 2026-09-11 | 2026-09-15 | 2d | 10d |  |  |  |  | MECÂNICA |  |  |  |  | Ter 15/09/26 |  |
| 476 | 1.15.11 | **FD-F0009-0309-MB-M-00006** | 25d | 2026-08-18 | 2026-09-22 |  | 2026-08-11 | 2026-09-15 | 25d | 10d |  | FD - Folha de Dados | 03 - REDUÇÃO | 09 - FORNO TECNORED | MECÂNICA | FOLHA DE DADOS BOMBAS PERISTÁLTICAS PARA TORRE RESFRIAMENTO | A4 (210x297mm) | 02 | Revisão do projeto de cobre refrigerado | Ter 15/09/26 | Ter 11/08/26 |
| 477 | 1.15.11.1 | Emissão inicial | 15d | 2026-08-18 | 2026-09-08 | 457SF | 2026-08-11 | 2026-09-01 | 15d | 10d | 0d |  |  |  | MECÂNICA |  |  |  |  | Ter 01/09/26 |  |
| 478 | 1.15.11.2 | Avaliação do Cliente | 5d | 2026-09-08 | 2026-09-15 | 477 | 2026-09-01 | 2026-09-08 | 5d | 10d | 0d |  |  |  | MECÂNICA |  |  |  |  | Ter 08/09/26 |  |
| 479 | 1.15.11.3 | Atendimento de Comentário | 3d | 2026-09-15 | 2026-09-18 | 478 | 2026-09-08 | 2026-09-11 | 3d | 10d | 0d |  |  |  | MECÂNICA |  |  |  |  | Sex 11/09/26 |  |
| 480 | 1.15.11.4 | Aprovação | 2d | 2026-09-18 | 2026-09-22 | 479 | 2026-09-11 | 2026-09-15 | 2d | 10d |  |  |  |  | MECÂNICA |  |  |  |  | Ter 15/09/26 |  |
| 481 | 1.15.12 | **FD-F0009-0309-MB-M-00007** | 25d | 2026-08-18 | 2026-09-22 |  | 2026-08-11 | 2026-09-15 | 25d | 10d |  | FD - Folha de Dados | 03 - REDUÇÃO | 09 - FORNO TECNORED | MECÂNICA | FOLHA DE DADOS UNIDADES HIDRÀULICAS PARA VÀLVULAS | A4 (210x297mm) | 02 | Readequação das utilidades no prédio do forno | Ter 15/09/26 | Ter 11/08/26 |
| 482 | 1.15.12.1 | Emissão inicial | 15d | 2026-08-18 | 2026-09-08 | 457SF | 2026-08-11 | 2026-09-01 | 15d | 10d | 0d |  |  |  | MECÂNICA |  |  |  |  | Ter 01/09/26 |  |
| 483 | 1.15.12.2 | Avaliação do Cliente | 5d | 2026-09-08 | 2026-09-15 | 482 | 2026-09-01 | 2026-09-08 | 5d | 10d | 0d |  |  |  | MECÂNICA |  |  |  |  | Ter 08/09/26 |  |
| 484 | 1.15.12.3 | Atendimento de Comentário | 3d | 2026-09-15 | 2026-09-18 | 483 | 2026-09-08 | 2026-09-11 | 3d | 10d | 0d |  |  |  | MECÂNICA |  |  |  |  | Sex 11/09/26 |  |
| 485 | 1.15.12.4 | Aprovação | 2d | 2026-09-18 | 2026-09-22 | 484 | 2026-09-11 | 2026-09-15 | 2d | 10d |  |  |  |  | MECÂNICA |  |  |  |  | Ter 15/09/26 |  |

| ID | WBS | Task | Duration | Start | Finish | Predecessors | Baseline start | Baseline finish | Baseline duration | Total slack | Free slack | Tipo de documento | Área | Sub-área | Disciplina | Título | Formato | Quantidade | Agrupamento Cecal | Término_LB_R0 | Início_LB_R0 |
| --- | --- | --- | --- | --- | --- | --- | --- | --- | --- | --- | --- | --- | --- | --- | --- | --- | --- | --- | --- | --- | --- |
| 486 | 1.15.13 | **FD-F0009-0309-MB-M-00008** | 25d | 2026-08-18 | 2026-09-22 |  | 2026-08-11 | 2026-09-15 | 25d | 10d |  | FD - Folha de Dados | 03 - REDUÇÃO | 09 - FORNO TECNORED | MECÂNICA | FOLHA DE DADOS VASO DE DESAREAÇÃO | A4 (210x297mm) | 02 | Readequação da casa de bombas | Ter 15/09/26 | Ter 11/08/26 |
| 487 | 1.15.13.1 | Emissão inicial | 15d | 2026-08-18 | 2026-09-08 | 457SF | 2026-08-11 | 2026-09-01 | 15d | 10d | 0d |  |  |  | MECÂNICA |  |  |  |  | Ter 01/09/26 |  |
| 488 | 1.15.13.2 | Avaliação do Cliente | 5d | 2026-09-08 | 2026-09-15 | 487 | 2026-09-01 | 2026-09-08 | 5d | 10d | 0d |  |  |  | MECÂNICA |  |  |  |  | Ter 08/09/26 |  |
| 489 | 1.15.13.3 | Atendimento de Comentário | 3d | 2026-09-15 | 2026-09-18 | 488 | 2026-09-08 | 2026-09-11 | 3d | 10d | 0d |  |  |  | MECÂNICA |  |  |  |  | Sex 11/09/26 |  |
| 490 | 1.15.13.4 | Aprovação | 2d | 2026-09-18 | 2026-09-22 | 489 | 2026-09-11 | 2026-09-15 | 2d | 10d |  |  |  |  | MECÂNICA |  |  |  |  | Ter 15/09/26 |  |
| 491 | 1.15.14 | **FD-F0009-0309-MB-M-00009** | 25d | 2026-08-18 | 2026-09-22 |  | 2026-08-11 | 2026-09-15 | 25d | 10d |  | FD - Folha de Dados | 03 - REDUÇÃO | 09 - FORNO TECNORED | MECÂNICA | FOLHA DE DADOS VASO DE EXPANSÃO | A4 (210x297mm) | 02 | Readequação da casa de bombas | Ter 15/09/26 | Ter 11/08/26 |
| 492 | 1.15.14.1 | Emissão inicial | 15d | 2026-08-18 | 2026-09-08 | 457SF | 2026-08-11 | 2026-09-01 | 15d | 10d | 0d |  |  |  | MECÂNICA |  |  |  |  | Ter 01/09/26 |  |
| 493 | 1.15.14.2 | Avaliação do Cliente | 5d | 2026-09-08 | 2026-09-15 | 492 | 2026-09-01 | 2026-09-08 | 5d | 10d | 0d |  |  |  | MECÂNICA |  |  |  |  | Ter 08/09/26 |  |
| 494 | 1.15.14.3 | Atendimento de Comentário | 3d | 2026-09-15 | 2026-09-18 | 493 | 2026-09-08 | 2026-09-11 | 3d | 10d | 0d |  |  |  | MECÂNICA |  |  |  |  | Sex 11/09/26 |  |
| 495 | 1.15.14.4 | Aprovação | 2d | 2026-09-18 | 2026-09-22 | 494 | 2026-09-11 | 2026-09-15 | 2d | 10d |  |  |  |  | MECÂNICA |  |  |  |  | Ter 15/09/26 |  |
| 496 | 1.15.15 | **FD-F0009-0309-MB-M-00010** | 25d | 2026-08-18 | 2026-09-22 |  | 2026-08-11 | 2026-09-15 | 25d | 10d |  | FD - Folha de Dados | 03 - REDUÇÃO | 09 - FORNO TECNORED | MECÂNICA | FOLHA DE DADOS VASOS DE EXPANSAO NITROGENIO | A4 (210x297mm) | 02 | Readequação da casa de bombas | Ter 15/09/26 | Ter 11/08/26 |
| 497 | 1.15.15.1 | Emissão inicial | 15d | 2026-08-18 | 2026-09-08 | 457SF | 2026-08-11 | 2026-09-01 | 15d | 10d | 0d |  |  |  | MECÂNICA |  |  |  |  | Ter 01/09/26 |  |
| 498 | 1.15.15.2 | Avaliação do Cliente | 5d | 2026-09-08 | 2026-09-15 | 497 | 2026-09-01 | 2026-09-08 | 5d | 10d | 0d |  |  |  | MECÂNICA |  |  |  |  | Ter 08/09/26 |  |
| 499 | 1.15.15.3 | Atendimento de Comentário | 3d | 2026-09-15 | 2026-09-18 | 498 | 2026-09-08 | 2026-09-11 | 3d | 10d | 0d |  |  |  | MECÂNICA |  |  |  |  | Sex 11/09/26 |  |
| 500 | 1.15.15.4 | Aprovação | 2d | 2026-09-18 | 2026-09-22 | 499 | 2026-09-11 | 2026-09-15 | 2d | 10d |  |  |  |  | MECÂNICA |  |  |  |  | Ter 15/09/26 |  |
| 501 | 1.15.16 | **FD-F0009-0309-MB-M-00011** | 25d | 2026-08-18 | 2026-09-22 |  | 2026-08-11 | 2026-09-15 | 25d | 10d |  | FD - Folha de Dados | 03 - REDUÇÃO | 09 - FORNO TECNORED | MECÂNICA | FOLHA DE DADOS FILTRO CHAPÉU DE BRUXA | A4 (210x297mm) | 02 | Readequação da casa de bombas | Ter 15/09/26 | Ter 11/08/26 |
| 502 | 1.15.16.1 | Emissão inicial | 15d | 2026-08-18 | 2026-09-08 | 457SF | 2026-08-11 | 2026-09-01 | 15d | 10d | 0d |  |  |  | MECÂNICA |  |  |  |  | Ter 01/09/26 |  |
| 503 | 1.15.16.2 | Avaliação do Cliente | 5d | 2026-09-08 | 2026-09-15 | 502 | 2026-09-01 | 2026-09-08 | 5d | 10d | 0d |  |  |  | MECÂNICA |  |  |  |  | Ter 08/09/26 |  |
| 504 | 1.15.16.3 | Atendimento de Comentário | 3d | 2026-09-15 | 2026-09-18 | 503 | 2026-09-08 | 2026-09-11 | 3d | 10d | 0d |  |  |  | MECÂNICA |  |  |  |  | Sex 11/09/26 |  |
| 505 | 1.15.16.4 | Aprovação | 2d | 2026-09-18 | 2026-09-22 | 504 | 2026-09-11 | 2026-09-15 | 2d | 10d |  |  |  |  | MECÂNICA |  |  |  |  | Ter 15/09/26 |  |
| 506 | 1.15.17 | **LE-F0009-0309-MB-M-00001** | 25d | 2026-08-18 | 2026-09-22 |  | 2026-08-11 | 2026-09-15 | 25d | 10d |  | LE - Lista de Equipamentos | 03 - REDUÇÃO | 09 - FORNO TECNORED | MECÂNICA | LISTA DE EQUIPAMENTOS MECÂNICOS | A4 (210x297mm) | 05 | Readequação da casa de bombas | Ter 15/09/26 | Ter 11/08/26 |
| 507 | 1.15.17.1 | Emissão inicial | 15d | 2026-08-18 | 2026-09-08 | 457SF | 2026-08-11 | 2026-09-01 | 15d | 10d | 0d |  |  |  | MECÂNICA |  |  |  |  | Ter 01/09/26 |  |
| 508 | 1.15.17.2 | Avaliação do Cliente | 5d | 2026-09-08 | 2026-09-15 | 507 | 2026-09-01 | 2026-09-08 | 5d | 10d | 0d |  |  |  | MECÂNICA |  |  |  |  | Ter 08/09/26 |  |
| 509 | 1.15.17.3 | Atendimento de Comentário | 3d | 2026-09-15 | 2026-09-18 | 508 | 2026-09-08 | 2026-09-11 | 3d | 10d | 0d |  |  |  | MECÂNICA |  |  |  |  | Sex 11/09/26 |  |
| 510 | 1.15.17.4 | Aprovação | 2d | 2026-09-18 | 2026-09-22 | 509 | 2026-09-11 | 2026-09-15 | 2d | 10d |  |  |  |  | MECÂNICA |  |  |  |  | Ter 15/09/26 |  |

| ID | WBS | Task | Duration | Start | Finish | Predecessors | Baseline start | Baseline finish | Baseline duration | Total slack | Free slack | Tipo de documento | Área | Sub-área | Disciplina | Título | Formato | Quantidade | Agrupamento Cecal | Término_LB_R0 | Início_LB_R0 |
| --- | --- | --- | --- | --- | --- | --- | --- | --- | --- | --- | --- | --- | --- | --- | --- | --- | --- | --- | --- | --- | --- |
| 511 | 1.15.18 | **LM-F0009-0309-MB-M-00001** | 25d | 2026-08-18 | 2026-09-22 |  | 2026-08-11 | 2026-09-15 | 25d | 10d |  | LM - Lista de Materiais | 03 - REDUÇÃO | 09 - FORNO TECNORED | MECÂNICA | LISTA DE MATERIAIS FORNO TECNORED | A4 (210x297mm) | 05 | Planilha de quantitativo do forno e carregamento | Ter 15/09/26 | Ter 11/08/26 |
| 512 | 1.15.18.1 | Emissão inicial | 15d | 2026-08-18 | 2026-09-08 | 457SF | 2026-08-11 | 2026-09-01 | 15d | 10d | 0d |  |  |  | MECÂNICA |  |  |  |  | Ter 01/09/26 |  |
| 513 | 1.15.18.2 | Avaliação do Cliente | 5d | 2026-09-08 | 2026-09-15 | 512 | 2026-09-01 | 2026-09-08 | 5d | 10d | 0d |  |  |  | MECÂNICA |  |  |  |  | Ter 08/09/26 |  |
| 514 | 1.15.18.3 | Atendimento de Comentário | 3d | 2026-09-15 | 2026-09-18 | 513 | 2026-09-08 | 2026-09-11 | 3d | 10d | 0d |  |  |  | MECÂNICA |  |  |  |  | Sex 11/09/26 |  |
| 515 | 1.15.18.4 | Aprovação | 2d | 2026-09-18 | 2026-09-22 | 514 | 2026-09-11 | 2026-09-15 | 2d | 10d |  |  |  |  | MECÂNICA |  |  |  |  | Ter 15/09/26 |  |
| 516 | 1.15.19 | **PQ-F0009-0309-MB-M-00001** | 25d | 2026-08-18 | 2026-09-22 |  | 2026-08-11 | 2026-09-15 | 25d | 10d |  | PQ - Planilha de Quantidades | 03 - REDUÇÃO | 09 - FORNO TECNORED | MECÂNICA | PLANILHA QUANTITATIVO EQUIPAMENTOS UTILIDADES | A4 (210x297mm) | 10 | Planilha de quantitativo do forno e carregamento | Ter 15/09/26 | Ter 11/08/26 |
| 517 | 1.15.19.1 | Emissão inicial | 15d | 2026-08-18 | 2026-09-08 | 457SF | 2026-08-11 | 2026-09-01 | 15d | 10d | 0d |  |  |  | MECÂNICA |  |  |  |  | Ter 01/09/26 |  |
| 518 | 1.15.19.2 | Avaliação do Cliente | 5d | 2026-09-08 | 2026-09-15 | 517 | 2026-09-01 | 2026-09-08 | 5d | 10d | 0d |  |  |  | MECÂNICA |  |  |  |  | Ter 08/09/26 |  |
| 519 | 1.15.19.3 | Atendimento de Comentário | 3d | 2026-09-15 | 2026-09-18 | 518 | 2026-09-08 | 2026-09-11 | 3d | 10d | 0d |  |  |  | MECÂNICA |  |  |  |  | Sex 11/09/26 |  |
| 520 | 1.15.19.4 | Aprovação | 2d | 2026-09-18 | 2026-09-22 | 519 | 2026-09-11 | 2026-09-15 | 2d | 10d |  |  |  |  | MECÂNICA |  |  |  |  | Ter 15/09/26 |  |
| 521 | 1.15.20 | **PQ-F0009-0309-MB-M-00002** | 25d | 2026-08-18 | 2026-09-22 | 426 | 2026-08-11 | 2026-09-15 | 25d | 10d |  | PQ - Planilha de Quantidades | 03 - REDUÇÃO | 09 - FORNO TECNORED | MECÂNICA | PLANILHA QUANTITATIVO DE EQUIPAMENTOS CARREGAMENTO | A1 (841x594mm) | 10 | Planilha de quantitativo do forno e carregamento | Ter 15/09/26 | Ter 11/08/26 |
| 522 | 1.15.20.1 | Emissão inicial | 15d | 2026-08-18 | 2026-09-08 | 518SF | 2026-08-11 | 2026-09-01 | 15d | 10d | 0d |  |  |  | MECÂNICA |  |  |  |  | Ter 01/09/26 |  |
| 523 | 1.15.20.2 | Avaliação do Cliente | 5d | 2026-09-08 | 2026-09-15 | 522 | 2026-09-01 | 2026-09-08 | 5d | 10d | 0d |  |  |  | MECÂNICA |  |  |  |  | Ter 08/09/26 |  |
| 524 | 1.15.20.3 | Atendimento de Comentário | 3d | 2026-09-15 | 2026-09-18 | 523 | 2026-09-08 | 2026-09-11 | 3d | 10d | 0d |  |  |  | MECÂNICA |  |  |  |  | Sex 11/09/26 |  |
| 525 | 1.15.20.4 | Aprovação | 2d | 2026-09-18 | 2026-09-22 | 524 | 2026-09-11 | 2026-09-15 | 2d | 10d |  |  |  |  | MECÂNICA |  |  |  |  | Ter 15/09/26 |  |
| 526 | 1.15.21 | **PQ-F0009-0309-MB-M-00003** | 25d | 2026-08-18 | 2026-09-22 | 426 | 2026-08-11 | 2026-09-15 | 25d | 10d |  | PQ - Planilha de Quantidades | 03 - REDUÇÃO | 09 - FORNO TECNORED | MECÂNICA | PLANILHA QUANTITATIVO SISTEMA CARREGAMENTO | A4 (210x297mm) | 10 | Planilha de quantitativo do forno e carregamento | Ter 15/09/26 | Ter 11/08/26 |
| 527 | 1.15.21.1 | Emissão inicial | 15d | 2026-08-18 | 2026-09-08 | 518SF | 2026-08-11 | 2026-09-01 | 15d | 10d | 0d |  |  |  | MECÂNICA |  |  |  |  | Ter 01/09/26 |  |
| 528 | 1.15.21.2 | Avaliação do Cliente | 5d | 2026-09-08 | 2026-09-15 | 527 | 2026-09-01 | 2026-09-08 | 5d | 10d | 0d |  |  |  | MECÂNICA |  |  |  |  | Ter 08/09/26 |  |
| 529 | 1.15.21.3 | Atendimento de Comentário | 3d | 2026-09-15 | 2026-09-18 | 528 | 2026-09-08 | 2026-09-11 | 3d | 10d | 0d |  |  |  | MECÂNICA |  |  |  |  | Sex 11/09/26 |  |
| 530 | 1.15.21.4 | Aprovação | 2d | 2026-09-18 | 2026-09-22 | 529 | 2026-09-11 | 2026-09-15 | 2d | 10d |  |  |  |  | MECÂNICA |  |  |  |  | Ter 15/09/26 |  |
| 531 | 1.15.22 | **PQ-F0009-0309-MB-M-00004** | 25d | 2026-08-18 | 2026-09-22 | 426 | 2026-08-11 | 2026-09-15 | 25d | 10d |  | PQ - Planilha de Quantidades | 03 - REDUÇÃO | 09 - FORNO TECNORED | MECÂNICA | PLANILHA QUANTITATIVO FORNO | A4 (210x297mm) | 18 | Planilha de quantitativo do forno e carregamento | Ter 15/09/26 | Ter 11/08/26 |
| 532 | 1.15.22.1 | Emissão inicial | 15d | 2026-08-18 | 2026-09-08 | 518SF | 2026-08-11 | 2026-09-01 | 15d | 10d | 0d |  |  |  | MECÂNICA |  |  |  |  | Ter 01/09/26 |  |
| 533 | 1.15.22.2 | Avaliação do Cliente | 5d | 2026-09-08 | 2026-09-15 | 532 | 2026-09-01 | 2026-09-08 | 5d | 10d | 0d |  |  |  | MECÂNICA |  |  |  |  | Ter 08/09/26 |  |
| 534 | 1.15.22.3 | Atendimento de Comentário | 3d | 2026-09-15 | 2026-09-18 | 533 | 2026-09-08 | 2026-09-11 | 3d | 10d | 0d |  |  |  | MECÂNICA |  |  |  |  | Sex 11/09/26 |  |
| 535 | 1.15.22.4 | Aprovação | 2d | 2026-09-18 | 2026-09-22 | 534 | 2026-09-11 | 2026-09-15 | 2d | 10d |  |  |  |  | MECÂNICA |  |  |  |  | Ter 15/09/26 |  |

| ID | WBS | Task | Type | Duration | Start | Finish | Predecessors | Baseline start | Baseline finish | Baseline duration | Total slack | Free slack | Tipo de documento | Área | Sub-área | Disciplina | Formato | Quantidade | Agrupamento Cecal | Término_LB_R0 | Início_LB_R0 |
| --- | --- | --- | --- | --- | --- | --- | --- | --- | --- | --- | --- | --- | --- | --- | --- | --- | --- | --- | --- | --- | --- |
| 536 | 1.15.23 | **RT-F0009-0309-MB-M-00001** |  | 18d | 2026-09-10 | 2026-10-06 |  | 2026-09-03 | 2026-09-29 | 18d | 0d |  | RT - Relatório Técnico | 03 - REDUÇÃO | 09 - FORNO TECNORED | MECÂNICA | A4 (210x297mm) | 10 | Revisão do projeto do forno - carcaça e refratário | Ter 29/09/26 | Qui 03/09/26 |
| 537 | 1.15.23.1 | Emissão inicial |  | 8d | 2026-09-10 | 2026-09-22 | 414 | 2026-09-03 | 2026-09-15 | 8d | 0d |  |  |  |  | MECÂNICA |  |  |  | Ter 15/09/26 |  |
| 538 | 1.15.23.2 | Avaliação do Cliente |  | 5d | 2026-09-22 | 2026-09-29 | 537 | 2026-09-15 | 2026-09-22 | 5d | 0d |  |  |  |  | MECÂNICA |  |  |  | Ter 22/09/26 |  |
| 539 | 1.15.23.3 | Atendimento de Comentário |  | 3d | 2026-09-29 | 2026-10-02 | 538 | 2026-09-22 | 2026-09-25 | 3d | 0d |  |  |  |  | MECÂNICA |  |  |  | Sex 25/09/26 |  |
| 540 | 1.15.23.4 | Aprovação |  | 2d | 2026-10-02 | 2026-10-06 | 539 | 2026-09-25 | 2026-09-29 | 2d | 0d |  |  |  |  | MECÂNICA |  |  |  | Ter 29/09/26 |  |
| 541 | 4.2.1.12 | TUBULAÇÃO E SISTEMAS 309 | manual | 30d | 2026-08-04 | 2026-09-14 | 543SS |  |  |  |  |  |  |  |  |  |  |  |  |  |  |
| 542 | 5.2.1.11 | TUBULAÇÃO E SISTEMAS 309 | manual | 30d | 2026-08-11 | 2026-09-22 | 543SS |  |  |  |  |  |  |  |  |  |  |  |  |  |  |
| 543 | 1.18 | **TUBULAÇÃO E SISTEMAS 309** |  | 30d | 2026-08-11 | 2026-09-22 |  | 2026-08-04 | 2026-09-15 | 30d | 10d | 0d |  |  |  |  |  |  |  | Ter 15/09/26 | Ter 04/08/26 |
| 544 | 1.18.1 | **AG-F0009-0309-MB-T-00001** |  | 25d | 2026-08-18 | 2026-09-22 |  | 2026-08-11 | 2026-09-15 | 25d | 10d |  | AG - Arranjo (AG) | 03 - REDUÇÃO | 09 - FORNO TECNORED | TUBULAÇÃO / UTILIDADES | A0 (1189x841mm) | 01 | Readequação das utilidades no prédio do forno | Ter 15/09/26 | Ter 11/08/26 |
| 545 | 1.18.1.1 | Emissão inicial |  | 10d | 2026-08-18 | 2026-09-01 | 1035 | 2026-08-11 | 2026-08-25 | 10d | 10d | 0d |  |  |  | TUBULAÇÃO / UTILIDADES |  |  |  | Ter 25/08/26 |  |
| 546 | 1.18.1.2 | Avaliação do Cliente |  | 5d | 2026-09-01 | 2026-09-08 | 545 | 2026-08-25 | 2026-09-01 | 5d | 10d | 0d |  |  |  | TUBULAÇÃO / UTILIDADES |  |  |  | Ter 01/09/26 |  |
| 547 | 1.18.1.3 | Atendimento de Comentário |  | 5d | 2026-09-08 | 2026-09-15 | 546 | 2026-09-01 | 2026-09-08 | 5d | 10d | 0d |  |  |  | TUBULAÇÃO / UTILIDADES |  |  |  | Ter 08/09/26 |  |
| 548 | 1.18.1.4 | Aprovação |  | 5d | 2026-09-15 | 2026-09-22 | 547 | 2026-09-08 | 2026-09-15 | 5d | 10d |  |  |  |  | TUBULAÇÃO / UTILIDADES |  |  |  | Ter 15/09/26 |  |
| 549 | 1.18.2 | **AG-F0009-0309-MB-T-00002** |  | 25d | 2026-08-18 | 2026-09-22 |  | 2026-08-11 | 2026-09-15 | 25d | 10d |  | AG - Arranjo (AG) | 03 - REDUÇÃO | 09 - FORNO TECNORED | TUBULAÇÃO / UTILIDADES | A1 (841x594mm) | 01 | Readequação das utilidades no prédio do forno | Ter 15/09/26 | Ter 11/08/26 |
| 550 | 1.18.2.1 | Emissão inicial |  | 10d | 2026-08-18 | 2026-09-01 | 546SF | 2026-08-11 | 2026-08-25 | 10d | 10d | 0d |  |  |  | TUBULAÇÃO / UTILIDADES |  |  |  | Ter 25/08/26 |  |
| 551 | 1.18.2.2 | Avaliação do Cliente |  | 5d | 2026-09-01 | 2026-09-08 | 550 | 2026-08-25 | 2026-09-01 | 5d | 10d | 0d |  |  |  | TUBULAÇÃO / UTILIDADES |  |  |  | Ter 01/09/26 |  |
| 552 | 1.18.2.3 | Atendimento de Comentário |  | 5d | 2026-09-08 | 2026-09-15 | 551 | 2026-09-01 | 2026-09-08 | 5d | 10d | 0d |  |  |  | TUBULAÇÃO / UTILIDADES |  |  |  | Ter 08/09/26 |  |
| 553 | 1.18.2.4 | Aprovação |  | 5d | 2026-09-15 | 2026-09-22 | 552 | 2026-09-08 | 2026-09-15 | 5d | 10d |  |  |  |  | TUBULAÇÃO / UTILIDADES |  |  |  | Ter 15/09/26 |  |
| 554 | 1.18.3 | **AG-F0009-0309-MB-T-00003** |  | 25d | 2026-08-18 | 2026-09-22 |  | 2026-08-11 | 2026-09-15 | 25d | 10d |  | AG - Arranjo (AG) | 03 - REDUÇÃO | 09 - FORNO TECNORED | TUBULAÇÃO / UTILIDADES | A1 (841x594mm) | 01 | Readequação das utilidades no prédio do forno | Ter 15/09/26 | Ter 11/08/26 |
| 555 | 1.18.3.1 | Emissão inicial |  | 10d | 2026-08-18 | 2026-09-01 | 546SF | 2026-08-11 | 2026-08-25 | 10d | 10d | 0d |  |  |  | TUBULAÇÃO / UTILIDADES |  |  |  | Ter 25/08/26 |  |
| 556 | 1.18.3.2 | Avaliação do Cliente |  | 5d | 2026-09-01 | 2026-09-08 | 555 | 2026-08-25 | 2026-09-01 | 5d | 10d | 0d |  |  |  | TUBULAÇÃO / UTILIDADES |  |  |  | Ter 01/09/26 |  |
| 557 | 1.18.3.3 | Atendimento de Comentário |  | 5d | 2026-09-08 | 2026-09-15 | 556 | 2026-09-01 | 2026-09-08 | 5d | 10d | 0d |  |  |  | TUBULAÇÃO / UTILIDADES |  |  |  | Ter 08/09/26 |  |
| 558 | 1.18.3.4 | Aprovação |  | 5d | 2026-09-15 | 2026-09-22 | 557 | 2026-09-08 | 2026-09-15 | 5d | 10d |  |  |  |  | TUBULAÇÃO / UTILIDADES |  |  |  | Ter 15/09/26 |  |
| 559 | 1.18.4 | **AG-F0009-0309-MB-T-00004** |  | 25d | 2026-08-18 | 2026-09-22 |  | 2026-08-11 | 2026-09-15 | 25d | 10d |  | AG - Arranjo (AG) | 03 - REDUÇÃO | 09 - FORNO TECNORED | TUBULAÇÃO / UTILIDADES | A1 (841x594mm) | 01 | Readequação das utilidades no prédio do forno | Ter 15/09/26 | Ter 11/08/26 |
| 560 | 1.18.4.1 | Emissão inicial |  | 10d | 2026-08-18 | 2026-09-01 | 546SF | 2026-08-11 | 2026-08-25 | 10d | 10d | 0d |  |  |  | TUBULAÇÃO / UTILIDADES |  |  |  | Ter 25/08/26 |  |
| 561 | 1.18.4.2 | Avaliação do Cliente |  | 5d | 2026-09-01 | 2026-09-08 | 560 | 2026-08-25 | 2026-09-01 | 5d | 10d | 0d |  |  |  | TUBULAÇÃO / UTILIDADES |  |  |  | Ter 01/09/26 |  |
| 562 | 1.18.4.3 | Atendimento de Comentário |  | 5d | 2026-09-08 | 2026-09-15 | 561 | 2026-09-01 | 2026-09-08 | 5d | 10d | 0d |  |  |  | TUBULAÇÃO / UTILIDADES |  |  |  | Ter 08/09/26 |  |
| 563 | 1.18.4.4 | Aprovação |  | 5d | 2026-09-15 | 2026-09-22 | 562 | 2026-09-08 | 2026-09-15 | 5d | 10d |  |  |  |  | TUBULAÇÃO / UTILIDADES |  |  |  | Ter 15/09/26 |  |

Notes:
- 536: Título: ANÁLISE DE FLEXIBILIDADE PRELIMINAR DA TUBULACAO DE AR QUENTE
- 544: Título: LAY-OUT DE EQUIPAMENTOS
- 549: Título: PLANTA BÁSICA CASA DE BOMBAS
- 554: Título: PLANTA BÁSICA CORTE CASA DE BOMBAS
- 559: Título: PLANTA BÁSICA PIPE-RACK DA CASA DE BOMBAS PLANTA E CORTE

| ID | WBS | Task | Duration | Start | Finish | Predecessors | Baseline start | Baseline finish | Baseline duration | Total slack | Free slack | Tipo de documento | Área | Sub-área | Disciplina | Título | Formato | Quantidade | Agrupamento Cecal | Término_LB_R0 | Início_LB_R0 |
| --- | --- | --- | --- | --- | --- | --- | --- | --- | --- | --- | --- | --- | --- | --- | --- | --- | --- | --- | --- | --- | --- |
| 564 | 1.18.5 | **AG-F0009-0309-MB-T-00005** | 25d | 2026-08-18 | 2026-09-22 |  | 2026-08-11 | 2026-09-15 | 25d | 10d |  | AG - Arranjo (AG) | 03 - REDUÇÃO | 09 - FORNO TECNORED | TUBULAÇÃO / UTILIDADES | PLANTA BÁSICA PIPE-RACK PARA FORNO PLANTA E CORTE | A1 (841x594mm) | 01 | Readequação das utilidades no prédio do forno | Ter 15/09/26 | Ter 11/08/26 |
| 565 | 1.18.5.1 | Emissão inicial | 10d | 2026-08-18 | 2026-09-01 | 546SF | 2026-08-11 | 2026-08-25 | 10d | 10d | 0d |  |  |  | TUBULAÇÃO / UTILIDADES |  |  |  |  | Ter 25/08/26 |  |
| 566 | 1.18.5.2 | Avaliação do Cliente | 5d | 2026-09-01 | 2026-09-08 | 565 | 2026-08-25 | 2026-09-01 | 5d | 10d | 0d |  |  |  | TUBULAÇÃO / UTILIDADES |  |  |  |  | Ter 01/09/26 |  |
| 567 | 1.18.5.3 | Atendimento de Comentário | 5d | 2026-09-08 | 2026-09-15 | 566 | 2026-09-01 | 2026-09-08 | 5d | 10d | 0d |  |  |  | TUBULAÇÃO / UTILIDADES |  |  |  |  | Ter 08/09/26 |  |
| 568 | 1.18.5.4 | Aprovação | 5d | 2026-09-15 | 2026-09-22 | 567 | 2026-09-08 | 2026-09-15 | 5d | 10d |  |  |  |  | TUBULAÇÃO / UTILIDADES |  |  |  |  | Ter 15/09/26 |  |
| 569 | 1.18.6 | **LK-F0009-0309-MB-T-00001** | 20d | 2026-08-25 | 2026-09-22 |  | 2026-08-18 | 2026-09-15 | 20d | 10d |  | LK - Lista de Tie in | 03 - REDUÇÃO | 09 - FORNO TECNORED | TUBULAÇÃO / UTILIDADES | LISTA DE TIE-INS | A4 (210x297mm) | 10 | Readequação das utilidades no prédio do forno | Ter 15/09/26 | Ter 18/08/26 |
| 570 | 1.18.6.1 | Emissão inicial | 5d | 2026-08-25 | 2026-09-01 | 546SF | 2026-08-18 | 2026-08-25 | 5d | 10d | 0d |  |  |  | TUBULAÇÃO / UTILIDADES |  |  |  |  | Ter 25/08/26 |  |
| 571 | 1.18.6.2 | Avaliação do Cliente | 5d | 2026-09-01 | 2026-09-08 | 570 | 2026-08-25 | 2026-09-01 | 5d | 10d | 0d |  |  |  | TUBULAÇÃO / UTILIDADES |  |  |  |  | Ter 01/09/26 |  |
| 572 | 1.18.6.3 | Atendimento de Comentário | 5d | 2026-09-08 | 2026-09-15 | 571 | 2026-09-01 | 2026-09-08 | 5d | 10d | 0d |  |  |  | TUBULAÇÃO / UTILIDADES |  |  |  |  | Ter 08/09/26 |  |
| 573 | 1.18.6.4 | Aprovação | 5d | 2026-09-15 | 2026-09-22 | 572 | 2026-09-08 | 2026-09-15 | 5d | 10d |  |  |  |  | TUBULAÇÃO / UTILIDADES |  |  |  |  | Ter 15/09/26 |  |
| 574 | 1.18.7 | **LM-F0009-0309-MB-T-00001** | 30d | 2026-08-11 | 2026-09-22 |  | 2026-08-04 | 2026-09-15 | 30d | 10d |  | LM - Lista de Materiais | 03 - REDUÇÃO | 09 - FORNO TECNORED | TUBULAÇÃO / UTILIDADES | LISTA DE MATERIAIS | A4 (210x297mm) | 10 | Readequação das utilidades no prédio do forno | Ter 15/09/26 | Ter 04/08/26 |
| 575 | 1.18.7.1 | Emissão inicial | 15d | 2026-08-11 | 2026-09-01 | 546SF | 2026-08-04 | 2026-08-25 | 15d | 10d | 0d |  |  |  | TUBULAÇÃO / UTILIDADES |  |  |  |  | Ter 25/08/26 |  |
| 576 | 1.18.7.2 | Avaliação do Cliente | 5d | 2026-09-01 | 2026-09-08 | 575 | 2026-08-25 | 2026-09-01 | 5d | 10d | 0d |  |  |  | TUBULAÇÃO / UTILIDADES |  |  |  |  | Ter 01/09/26 |  |
| 577 | 1.18.7.3 | Atendimento de Comentário | 5d | 2026-09-08 | 2026-09-15 | 576 | 2026-09-01 | 2026-09-08 | 5d | 10d | 0d |  |  |  | TUBULAÇÃO / UTILIDADES |  |  |  |  | Ter 08/09/26 |  |
| 578 | 1.18.7.4 | Aprovação | 5d | 2026-09-15 | 2026-09-22 | 577 | 2026-09-08 | 2026-09-15 | 5d | 10d |  |  |  |  | TUBULAÇÃO / UTILIDADES |  |  |  |  | Ter 15/09/26 |  |
| 579 | 1.18.8 | **LS-F0009-0309-MB-T-00001** | 25d | 2026-08-18 | 2026-09-22 |  | 2026-08-11 | 2026-09-15 | 25d | 10d |  | LS - Lista de Suportes | 03 - REDUÇÃO | 09 - FORNO TECNORED | TUBULAÇÃO / UTILIDADES | LISTA DE SUPORTES | A4 (210x297mm) | 10 | Readequação das utilidades no prédio do forno | Ter 15/09/26 | Ter 11/08/26 |
| 580 | 1.18.8.1 | Emissão inicial | 10d | 2026-08-18 | 2026-09-01 | 546SF | 2026-08-11 | 2026-08-25 | 10d | 10d | 0d |  |  |  | TUBULAÇÃO / UTILIDADES |  |  |  |  | Ter 25/08/26 |  |
| 581 | 1.18.8.2 | Avaliação do Cliente | 5d | 2026-09-01 | 2026-09-08 | 580 | 2026-08-25 | 2026-09-01 | 5d | 10d | 0d |  |  |  | TUBULAÇÃO / UTILIDADES |  |  |  |  | Ter 01/09/26 |  |
| 582 | 1.18.8.3 | Atendimento de Comentário | 5d | 2026-09-08 | 2026-09-15 | 581 | 2026-09-01 | 2026-09-08 | 5d | 10d | 0d |  |  |  | TUBULAÇÃO / UTILIDADES |  |  |  |  | Ter 08/09/26 |  |
| 583 | 1.18.8.4 | Aprovação | 5d | 2026-09-15 | 2026-09-22 | 582 | 2026-09-08 | 2026-09-15 | 5d | 10d |  |  |  |  | TUBULAÇÃO / UTILIDADES |  |  |  |  | Ter 15/09/26 |  |
| 584 | 1.18.9 | **MD-F0009-0309-MB-T-00001** | 30d | 2026-08-11 | 2026-09-22 |  | 2026-08-04 | 2026-09-15 | 30d | 10d |  | MD - Memorial Descritivo | 03 - REDUÇÃO | 09 - FORNO TECNORED | TUBULAÇÃO / UTILIDADES | MEMORIAL DESCRITIVO DE MONTAGEM MECÂNICA | A4 (210x297mm) | 10 | Readequação das utilidades no prédio do forno | Ter 15/09/26 | Ter 04/08/26 |
| 585 | 1.18.9.1 | Emissão inicial | 15d | 2026-08-11 | 2026-09-01 | 546SF | 2026-08-04 | 2026-08-25 | 15d | 10d | 0d |  |  |  | TUBULAÇÃO / UTILIDADES |  |  |  |  | Ter 25/08/26 |  |
| 586 | 1.18.9.2 | Avaliação do Cliente | 5d | 2026-09-01 | 2026-09-08 | 585 | 2026-08-25 | 2026-09-01 | 5d | 10d | 0d |  |  |  | TUBULAÇÃO / UTILIDADES |  |  |  |  | Ter 01/09/26 |  |
| 587 | 1.18.9.3 | Atendimento de Comentário | 5d | 2026-09-08 | 2026-09-15 | 586 | 2026-09-01 | 2026-09-08 | 5d | 10d | 0d |  |  |  | TUBULAÇÃO / UTILIDADES |  |  |  |  | Ter 08/09/26 |  |
| 588 | 1.18.9.4 | Aprovação | 5d | 2026-09-15 | 2026-09-22 | 587 | 2026-09-08 | 2026-09-15 | 5d | 10d |  |  |  |  | TUBULAÇÃO / UTILIDADES |  |  |  |  | Ter 15/09/26 |  |

| ID | WBS | Task | Type | Duration | Start | Finish | Predecessors | Baseline start | Baseline finish | Baseline duration | Total slack | Free slack | Tipo de documento | Área | Sub-área | Disciplina | Título | Formato | Quantidade | Agrupamento Cecal | Término_LB_R0 | Início_LB_R0 |
| --- | --- | --- | --- | --- | --- | --- | --- | --- | --- | --- | --- | --- | --- | --- | --- | --- | --- | --- | --- | --- | --- | --- |
| 589 | 1.18.10 | **MD-F0009-0309-MB-T-00002** |  | 30d | 2026-08-11 | 2026-09-22 |  | 2026-08-04 | 2026-09-15 | 30d | 10d |  | MD - Memorial Descritivo | 03 - REDUÇÃO | 09 - FORNO TECNORED | TUBULAÇÃO / UTILIDADES | MEMORIAL DESCRITIVO PESO DA TUBULAÇÃO DO FORNO | A4 (210x297mm) | 10 | Readequação das utilidades no prédio do forno | Ter 15/09/26 | Ter 04/08/26 |
| 590 | 1.18.10.1 | Emissão inicial |  | 15d | 2026-08-11 | 2026-09-01 | 546SF | 2026-08-04 | 2026-08-25 | 15d | 10d | 0d |  |  |  | TUBULAÇÃO / UTILIDADES |  |  |  |  | Ter 25/08/26 |  |
| 591 | 1.18.10.2 | Avaliação do Cliente |  | 5d | 2026-09-01 | 2026-09-08 | 590 | 2026-08-25 | 2026-09-01 | 5d | 10d | 0d |  |  |  | TUBULAÇÃO / UTILIDADES |  |  |  |  | Ter 01/09/26 |  |
| 592 | 1.18.10.3 | Atendimento de Comentário |  | 5d | 2026-09-08 | 2026-09-15 | 591 | 2026-09-01 | 2026-09-08 | 5d | 10d | 0d |  |  |  | TUBULAÇÃO / UTILIDADES |  |  |  |  | Ter 08/09/26 |  |
| 593 | 1.18.10.4 | Aprovação |  | 5d | 2026-09-15 | 2026-09-22 | 592 | 2026-09-08 | 2026-09-15 | 5d | 10d |  |  |  |  | TUBULAÇÃO / UTILIDADES |  |  |  |  | Ter 15/09/26 |  |
| 594 | 4.2.1.14 | ARQUITETURA 309 | manual | 35d | 2026-07-29 | 2026-09-15 | 596SS |  |  |  |  |  |  |  |  |  |  |  |  |  |  |  |
| 595 | 5.2.1.13 | ARQUITETURA 309 | manual | 35d | 2026-08-04 | 2026-09-22 | 596SS |  |  |  |  |  |  |  |  |  |  |  |  |  |  |  |
| 596 | 1.21 | **ARQUITETURA 309** |  | 35d | 2026-08-04 | 2026-09-22 |  | 2026-07-29 | 2026-09-15 | 35d | 10d | 0d |  |  |  |  |  |  |  |  | Ter 15/09/26 | Qua 29/07/26 |
| 597 | 1.21.1 | **AG-F0009-0309-MB-A-00001** |  | 25d | 2026-08-04 | 2026-09-08 |  | 2026-07-29 | 2026-09-01 | 25d | 10d |  | AG - Arranjo (AG) | 03 - REDUÇÃO | 09 - FORNO TECNORED | ARQUITETURA | ARQUITETURA PRÉDIO PRODUTIVO - BASE FORNO | A1 (841x594mm) | 01 | Readequação da fundação | Ter 01/09/26 | Qua 29/07/26 |
| 598 | 1.21.1.1 | Emissão inicial |  | 10d | 2026-08-04 | 2026-08-18 | 105, 294 | 2026-07-29 | 2026-08-11 | 10d | 10d | 0d |  |  |  | ARQUITETURA |  |  |  |  | Ter 11/08/26 |  |
| 599 | 1.21.1.2 | Avaliação do Cliente |  | 5d | 2026-08-18 | 2026-08-25 | 598 | 2026-08-12 | 2026-08-18 | 5d | 20d | 0d |  |  |  | ARQUITETURA |  |  |  |  | Ter 18/08/26 |  |
| 600 | 1.21.1.3 | Atendimento de Comentário |  | 5d | 2026-08-25 | 2026-09-01 | 599 | 2026-08-19 | 2026-08-25 | 5d | 20d | 0d |  |  |  | ARQUITETURA |  |  |  |  | Ter 25/08/26 |  |
| 601 | 1.21.1.4 | Aprovação |  | 5d | 2026-09-01 | 2026-09-08 | 600 | 2026-08-26 | 2026-09-01 | 5d | 20d |  |  |  |  | ARQUITETURA |  |  |  |  | Ter 01/09/26 |  |
| 602 | 1.21.2 | **AG-F0009-0309-MB-A-00002** |  | 25d | 2026-08-18 | 2026-09-22 |  | 2026-08-12 | 2026-09-15 | 25d | 10d |  | AG - Arranjo (AG) | 03 - REDUÇÃO | 09 - FORNO TECNORED | ARQUITETURA | ARQUITETURA PRÉDIO PRODUTIVO - BASE FORNO | A1 (841x594mm) | 01 | Readequação da fundação | Ter 15/09/26 | Qua 12/08/26 |
| 603 | 1.21.2.1 | Emissão inicial |  | 10d | 2026-08-18 | 2026-09-01 | 598 | 2026-08-12 | 2026-08-25 | 10d | 10d | 0d |  |  |  | ARQUITETURA |  |  |  |  | Ter 25/08/26 |  |
| 604 | 1.21.2.2 | Avaliação do Cliente |  | 5d | 2026-09-01 | 2026-09-08 | 603 | 2026-08-26 | 2026-09-01 | 5d | 10d | 0d |  |  |  | ARQUITETURA |  |  |  |  | Ter 01/09/26 |  |
| 605 | 1.21.2.3 | Atendimento de Comentário |  | 5d | 2026-09-08 | 2026-09-15 | 604 | 2026-09-02 | 2026-09-08 | 5d | 10d | 0d |  |  |  | ARQUITETURA |  |  |  |  | Ter 08/09/26 |  |
| 606 | 1.21.2.4 | Aprovação |  | 5d | 2026-09-15 | 2026-09-22 | 605 | 2026-09-09 | 2026-09-15 | 5d | 10d |  |  |  |  | ARQUITETURA |  |  |  |  | Ter 15/09/26 |  |
| 607 | 1.21.3 | **AG-F0009-0309-MB-A-00003** |  | 25d | 2026-08-18 | 2026-09-22 |  | 2026-08-12 | 2026-09-15 | 25d | 10d |  | AG - Arranjo (AG) | 03 - REDUÇÃO | 09 - FORNO TECNORED | ARQUITETURA | ARQUITETURA TORRE DE RESFRIAMENTO | A1 (841x594mm) | 01 | Revisão do projeto de cobre refrigerado | Ter 15/09/26 | Qua 12/08/26 |
| 608 | 1.21.3.1 | Emissão inicial |  | 10d | 2026-08-18 | 2026-09-01 | 604SF | 2026-08-12 | 2026-08-26 | 10d | 10d | 0d |  |  |  | ARQUITETURA |  |  |  |  | Qua 26/08/26 |  |
| 609 | 1.21.3.2 | Avaliação do Cliente |  | 5d | 2026-09-01 | 2026-09-08 | 608 | 2026-08-26 | 2026-09-01 | 5d | 10d | 0d |  |  |  | ARQUITETURA |  |  |  |  | Ter 01/09/26 |  |
| 610 | 1.21.3.3 | Atendimento de Comentário |  | 5d | 2026-09-08 | 2026-09-15 | 609 | 2026-09-02 | 2026-09-08 | 5d | 10d | 0d |  |  |  | ARQUITETURA |  |  |  |  | Ter 08/09/26 |  |
| 611 | 1.21.3.4 | Aprovação |  | 5d | 2026-09-15 | 2026-09-22 | 610 | 2026-09-09 | 2026-09-15 | 5d | 10d |  |  |  |  | ARQUITETURA |  |  |  |  | Ter 15/09/26 |  |
| 612 | 1.21.4 | **AG-F0009-0309-MB-A-00004** |  | 25d | 2026-08-18 | 2026-09-22 |  | 2026-08-12 | 2026-09-15 | 25d | 10d |  | AG - Arranjo (AG) | 03 - REDUÇÃO | 09 - FORNO TECNORED | ARQUITETURA | ARQUITETURA TORRE DE RESRIAMENTO E CASA DE BOMBAS | A1 (841x594mm) | 01 | Readequação da casa de bombas | Ter 15/09/26 | Qua 12/08/26 |
| 613 | 1.21.4.1 | Emissão inicial |  | 10d | 2026-08-18 | 2026-09-01 | 604SF | 2026-08-12 | 2026-08-26 | 10d | 10d | 0d |  |  |  | ARQUITETURA |  |  |  |  | Qua 26/08/26 |  |
| 614 | 1.21.4.2 | Avaliação do Cliente |  | 5d | 2026-09-01 | 2026-09-08 | 613 | 2026-08-26 | 2026-09-01 | 5d | 10d | 0d |  |  |  | ARQUITETURA |  |  |  |  | Ter 01/09/26 |  |
| 615 | 1.21.4.3 | Atendimento de Comentário |  | 5d | 2026-09-08 | 2026-09-15 | 614 | 2026-09-02 | 2026-09-08 | 5d | 10d | 0d |  |  |  | ARQUITETURA |  |  |  |  | Ter 08/09/26 |  |
| 616 | 1.21.4.4 | Aprovação |  | 5d | 2026-09-15 | 2026-09-22 | 615 | 2026-09-09 | 2026-09-15 | 5d | 10d |  |  |  |  | ARQUITETURA |  |  |  |  | Ter 15/09/26 |  |

| ID | WBS | Task | Type | Duration | Start | Finish | Predecessors | Baseline start | Baseline finish | Baseline duration | Total slack | Free slack | Constraint | Tipo de documento | Área | Sub-área | Disciplina | Título | Formato | Quantidade | Agrupamento Cecal | Término_LB_R0 | Início_LB_R0 |
| --- | --- | --- | --- | --- | --- | --- | --- | --- | --- | --- | --- | --- | --- | --- | --- | --- | --- | --- | --- | --- | --- | --- | --- |
| 617 | 1.21.5 | **MD-F0009-0309-MB-A-00001** |  | 30d | 2026-08-11 | 2026-09-22 |  | 2026-08-05 | 2026-09-15 | 30d | 10d |  |  | MD - Memorial Descritivo | 03 - REDUÇÃO | 09 - FORNO TECNORED | ARQUITETURA | MEMORIAL DESCRITIVO DOS SERVIÇOS DE CONSTRUÇÃO CIVIL | A4 (210x297mm) | 10 | Readequação da fundação | Ter 15/09/26 | Qua 05/08/26 |
| 618 | 1.21.5.1 | Emissão inicial |  | 15d | 2026-08-11 | 2026-09-01 | 604SF | 2026-08-05 | 2026-08-26 | 15d | 10d | 0d |  |  |  |  | ARQUITETURA |  |  |  |  | Qua 26/08/26 |  |
| 619 | 1.21.5.2 | Avaliação do Cliente |  | 5d | 2026-09-01 | 2026-09-08 | 618 | 2026-08-26 | 2026-09-01 | 5d | 10d | 0d |  |  |  |  | ARQUITETURA |  |  |  |  | Ter 01/09/26 |  |
| 620 | 1.21.5.3 | Atendimento de Comentário |  | 5d | 2026-09-08 | 2026-09-15 | 619 | 2026-09-02 | 2026-09-08 | 5d | 10d | 0d |  |  |  |  | ARQUITETURA |  |  |  |  | Ter 08/09/26 |  |
| 621 | 1.21.5.4 | Aprovação |  | 5d | 2026-09-15 | 2026-09-22 | 620 | 2026-09-09 | 2026-09-15 | 5d | 10d |  |  |  |  |  | ARQUITETURA |  |  |  |  | Ter 15/09/26 |  |
| 622 | 1.21.6 | **PQ-F0009-0309-MB-A-00001** |  | 29d | 2026-08-12 | 2026-09-22 |  | 2026-08-06 | 2026-09-15 | 29d | 10d |  |  | PQ - Planilha de Quantidades | 03 - REDUÇÃO | 09 - FORNO TECNORED | ARQUITETURA | PLANILHA DE QUANTITATIVOS PARA COMPOR CAPEX | A4 (210x297mm) | 10 | Planilha de quantitativo do forno e carregamento | Ter 15/09/26 | Qui 06/08/26 |
| 623 | 1.21.6.1 | Emissão inicial |  | 14d | 2026-08-12 | 2026-09-01 | 604SF | 2026-08-06 | 2026-08-26 | 14d | 10d | 0d | start no earlier than 2026-07-29 |  |  |  | ARQUITETURA |  |  |  |  | Qua 26/08/26 |  |
| 624 | 1.21.6.2 | Avaliação do Cliente |  | 5d | 2026-09-01 | 2026-09-08 | 623 | 2026-08-26 | 2026-09-01 | 5d | 10d | 0d |  |  |  |  | ARQUITETURA |  |  |  |  | Ter 01/09/26 |  |
| 625 | 1.21.6.3 | Atendimento de Comentário |  | 5d | 2026-09-08 | 2026-09-15 | 624 | 2026-09-02 | 2026-09-08 | 5d | 10d | 0d |  |  |  |  | ARQUITETURA |  |  |  |  | Ter 08/09/26 |  |
| 626 | 1.21.6.4 | Aprovação |  | 5d | 2026-09-15 | 2026-09-22 | 625 | 2026-09-09 | 2026-09-15 | 5d | 10d |  | start no earlier than 2026-08-18 |  |  |  | ARQUITETURA |  |  |  |  | Ter 15/09/26 |  |
| 627 | 4.2.1.16 | CIVIL / INFRAESTRUTURA 309 | manual | 25d | 2026-07-29 | 2026-09-01 | 629SS |  |  |  |  |  |  |  |  |  |  |  |  |  |  |  |  |
| 628 | 5.2.1.15 | CIVIL / INFRAESTRUTURA 309 | manual | 25d | 2026-08-04 | 2026-09-08 | 629SS |  |  |  |  |  |  |  |  |  |  |  |  |  |  |  |  |
| 629 | 1.24 | **CIVIL / INFRAESTRUTURA 309** |  | 25d | 2026-08-04 | 2026-09-08 |  | 2026-07-29 | 2026-09-01 | 25d | 20d | 0d |  |  |  |  |  |  |  |  |  | Ter 01/09/26 | Qua 29/07/26 |
| 630 | 1.24.1 | **AG-F0009-0309-MB-B-00001** |  | 25d | 2026-08-04 | 2026-09-08 |  | 2026-07-29 | 2026-09-01 | 25d | 20d |  |  | AG - Arranjo (AG) | 03 - REDUÇÃO | 09 - FORNO TECNORED | CIVIL | IMPLANTAÇÃO GERAL | A0 (1189x841mm) | 01 | Readequação da fundação | Ter 01/09/26 | Qua 29/07/26 |
| 631 | 1.24.1.1 | Emissão inicial |  | 10d | 2026-08-04 | 2026-08-18 | 105, 294 | 2026-07-29 | 2026-08-11 | 10d | 20d | 0d |  |  |  |  | CIVIL |  |  |  |  | Ter 11/08/26 |  |
| 632 | 1.24.1.2 | Avaliação do Cliente |  | 5d | 2026-08-18 | 2026-08-25 | 631 | 2026-08-12 | 2026-08-18 | 5d | 20d | 0d |  |  |  |  | CIVIL |  |  |  |  | Ter 18/08/26 |  |
| 633 | 1.24.1.3 | Atendimento de Comentário |  | 5d | 2026-08-25 | 2026-09-01 | 632 | 2026-08-19 | 2026-08-25 | 5d | 20d | 0d |  |  |  |  | CIVIL |  |  |  |  | Ter 25/08/26 |  |
| 634 | 1.24.1.4 | Aprovação |  | 5d | 2026-09-01 | 2026-09-08 | 633 | 2026-08-26 | 2026-09-01 | 5d | 20d |  |  |  |  |  | CIVIL |  |  |  |  | Ter 01/09/26 |  |
| 635 | 4.2.1.18 | ELÉTRICA 309 | manual | 62.13d | 2026-06-23 | 2026-09-17 | 637SS |  |  |  |  |  |  |  |  |  |  |  |  |  |  |  |  |
| 636 | 5.2.1.17 | ELÉTRICA 309 | manual | 61d | 2026-06-30 | 2026-09-23 | 637SS |  |  |  |  |  |  |  |  |  |  |  |  |  |  |  |  |
| 637 | 1.27 | **ELÉTRICA 309** |  | 61d | 2026-06-30 | 2026-09-23 |  | 2026-06-23 | 2026-09-17 | 62.12d | 9d | 0d |  |  |  |  |  |  |  |  |  | Qui 17/09/26 | Ter 23/06/26 |
| 638 | 1.27.1 | **CP-F0009-0309-MB-E-00001** |  | 20d | 2026-06-30 | 2026-07-28 |  | 2026-06-23 | 2026-07-21 | 20d | 50d |  |  | CP - Critério de Projeto | 03 - REDUÇÃO | 09 - FORNO TECNORED | ELÉTRICA | CRITERIO DE PROJETO BÁSICO | A4 (210x297mm) | 10 | Revisão das cargas elétricas | Ter 21/07/26 | Ter 23/06/26 |
| 639 | 1.27.1.1 | Emissão inicial |  | 10d | 2026-06-30 | 2026-07-14 | 21 | 2026-06-23 | 2026-07-07 | 10d | 50d | 0d |  |  |  |  | ELÉTRICA |  |  |  |  | Ter 07/07/26 |  |
| 640 | 1.27.1.2 | Avaliação do Cliente |  | 5d | 2026-07-14 | 2026-07-21 | 639 | 2026-07-07 | 2026-07-14 | 5d | 50d | 0d |  |  |  |  | ELÉTRICA |  |  |  |  | Ter 14/07/26 |  |
| 641 | 1.27.1.3 | Atendimento de Comentário |  | 3d | 2026-07-21 | 2026-07-24 | 640 | 2026-07-14 | 2026-07-17 | 3d | 50d | 0d |  |  |  |  | ELÉTRICA |  |  |  |  | Sex 17/07/26 |  |
| 642 | 1.27.1.4 | Aprovação |  | 2d | 2026-07-24 | 2026-07-28 | 641 | 2026-07-17 | 2026-07-21 | 2d | 50d |  |  |  |  |  | ELÉTRICA |  |  |  |  | Ter 21/07/26 |  |

| ID | WBS | Task | Duration | Start | Finish | Predecessors | Baseline start | Baseline finish | Baseline duration | Total slack | Free slack | Tipo de documento | Área | Sub-área | Disciplina | Título | Formato | Quantidade | Agrupamento Cecal | Término_LB_R0 | Início_LB_R0 |
| --- | --- | --- | --- | --- | --- | --- | --- | --- | --- | --- | --- | --- | --- | --- | --- | --- | --- | --- | --- | --- | --- |
| 643 | 1.27.2 | **AG-F0009-0309-MB-E-00001** | 20d | 2026-07-30 | 2026-08-27 |  | 2026-07-23 | 2026-08-20 | 20d | 9d |  | AG - Arranjo (AG) | 03 - REDUÇÃO | 09 - FORNO TECNORED | ELÉTRICA | LAY-OUT SALA ELETRICA / CCM's | A1 (841x594mm) | 01 | Revisão das cargas elétricas | Qui 20/08/26 | Qui 23/07/26 |
| 644 | 1.27.2.1 | Emissão inicial | 10d | 2026-07-30 | 2026-08-13 | 99, 294, 1030 | 2026-07-23 | 2026-08-06 | 10d | 9d | 0d |  |  |  | ELÉTRICA |  |  |  |  | Qui 06/08/26 |  |
| 645 | 1.27.2.2 | Avaliação do Cliente | 5d | 2026-08-13 | 2026-08-20 | 644 | 2026-08-06 | 2026-08-13 | 5d | 9d | 0d |  |  |  | ELÉTRICA |  |  |  |  | Qui 13/08/26 |  |
| 646 | 1.27.2.3 | Atendimento de Comentário | 3d | 2026-08-20 | 2026-08-25 | 645 | 2026-08-13 | 2026-08-18 | 3d | 28d | 0d |  |  |  | ELÉTRICA |  |  |  |  | Ter 18/08/26 |  |
| 647 | 1.27.2.4 | Aprovação | 2d | 2026-08-25 | 2026-08-27 | 646 | 2026-08-18 | 2026-08-20 | 2d | 28d |  |  |  |  | ELÉTRICA |  |  |  |  | Qui 20/08/26 |  |
| 648 | 1.27.3 | **AG-F0009-0309-MB-E-00002** | 20d | 2026-07-30 | 2026-08-27 |  | 2026-07-23 | 2026-08-20 | 20d | 28d |  | AG - Arranjo (AG) | 03 - REDUÇÃO | 09 - FORNO TECNORED | ELÉTRICA | PLANTA BÁSICA DE DISTRIBUIÇÃO DE FORÇA CASA DE BOMBAS | A3 (420x297mm) | 01 | Revisão das cargas elétricas | Qui 20/08/26 | Qui 23/07/26 |
| 649 | 1.27.3.1 | Emissão inicial | 10d | 2026-07-30 | 2026-08-13 | 645SF | 2026-07-23 | 2026-08-06 | 10d | 28d | 0d |  |  |  | ELÉTRICA |  |  |  |  | Qui 06/08/26 |  |
| 650 | 1.27.3.2 | Avaliação do Cliente | 5d | 2026-08-13 | 2026-08-20 | 649 | 2026-08-06 | 2026-08-13 | 5d | 28d | 0d |  |  |  | ELÉTRICA |  |  |  |  | Qui 13/08/26 |  |
| 651 | 1.27.3.3 | Atendimento de Comentário | 3d | 2026-08-20 | 2026-08-25 | 650 | 2026-08-13 | 2026-08-18 | 3d | 28d | 0d |  |  |  | ELÉTRICA |  |  |  |  | Ter 18/08/26 |  |
| 652 | 1.27.3.4 | Aprovação | 2d | 2026-08-25 | 2026-08-27 | 651 | 2026-08-18 | 2026-08-20 | 2d | 28d |  |  |  |  | ELÉTRICA |  |  |  |  | Qui 20/08/26 |  |
| 653 | 1.27.4 | **AG-F0009-0309-MB-E-00003** | 22d | 2026-07-30 | 2026-08-31 |  | 2026-07-23 | 2026-08-24 | 22d | 26d |  | AG - Arranjo (AG) | 03 - REDUÇÃO | 09 - FORNO TECNORED | ELÉTRICA | PLANTA BÁSICA DE DISTRIBUIÇÃO DE FORÇA FORNO | A1 (841x594mm) | 01 | Revisão das cargas elétricas | Seg 24/08/26 | Qui 23/07/26 |
| 654 | 1.27.4.1 | Emissão inicial | 10d | 2026-07-30 | 2026-08-13 | 645SF | 2026-07-23 | 2026-08-06 | 10d | 26d | 0d |  |  |  | ELÉTRICA |  |  |  |  | Qui 06/08/26 |  |
| 655 | 1.27.4.2 | Avaliação do Cliente | 5d | 2026-08-13 | 2026-08-20 | 654 | 2026-08-06 | 2026-08-13 | 5d | 26d | 0d |  |  |  | ELÉTRICA |  |  |  |  | Qui 13/08/26 |  |
| 656 | 1.27.4.3 | Atendimento de Comentário | 5d | 2026-08-20 | 2026-08-27 | 655 | 2026-08-13 | 2026-08-20 | 5d | 26d | 0d |  |  |  | ELÉTRICA |  |  |  |  | Qui 20/08/26 |  |
| 657 | 1.27.4.4 | Aprovação | 2d | 2026-08-27 | 2026-08-31 | 656 | 2026-08-20 | 2026-08-24 | 2d | 26d |  |  |  |  | ELÉTRICA |  |  |  |  | Seg 24/08/26 |  |
| 658 | 1.27.5 | **AG-F0009-0309-MB-E-00004** | 20d | 2026-07-30 | 2026-08-27 |  | 2026-07-23 | 2026-08-20 | 20d | 28d |  | AG - Arranjo (AG) | 03 - REDUÇÃO | 09 - FORNO TECNORED | ELÉTRICA | PLANTA BÁSICA DE ILUMINAÇÃO CASA DE BOMBAS | A1 (841x594mm) | 01 | Readequação da lista de carga, iluminação, bandejamento | Qui 20/08/26 | Qui 23/07/26 |
| 659 | 1.27.5.1 | Emissão inicial | 10d | 2026-07-30 | 2026-08-13 | 645SF | 2026-07-23 | 2026-08-06 | 10d | 28d | 0d |  |  |  | ELÉTRICA |  |  |  |  | Qui 06/08/26 |  |
| 660 | 1.27.5.2 | Avaliação do Cliente | 5d | 2026-08-13 | 2026-08-20 | 659 | 2026-08-06 | 2026-08-13 | 5d | 28d | 0d |  |  |  | ELÉTRICA |  |  |  |  | Qui 13/08/26 |  |
| 661 | 1.27.5.3 | Atendimento de Comentário | 3d | 2026-08-20 | 2026-08-25 | 660 | 2026-08-13 | 2026-08-18 | 3d | 28d | 0d |  |  |  | ELÉTRICA |  |  |  |  | Ter 18/08/26 |  |
| 662 | 1.27.5.4 | Aprovação | 2d | 2026-08-25 | 2026-08-27 | 661 | 2026-08-18 | 2026-08-20 | 2d | 28d |  |  |  |  | ELÉTRICA |  |  |  |  | Qui 20/08/26 |  |
| 663 | 1.27.6 | **AG-F0009-0309-MB-E-00005** | 20d | 2026-07-30 | 2026-08-27 |  | 2026-07-23 | 2026-08-20 | 20d | 9d |  | AG - Arranjo (AG) | 03 - REDUÇÃO | 09 - FORNO TECNORED | ELÉTRICA | PLANTA BÁSICA DE ILUMINAÇÃO FORNO | A1 (841x594mm) | 01 | Readequação da lista de carga, iluminação, bandejamento | Qui 20/08/26 | Qui 23/07/26 |
| 664 | 1.27.6.1 | Emissão inicial | 10d | 2026-07-30 | 2026-08-13 | 645SF | 2026-07-23 | 2026-08-06 | 10d | 9d | 0d |  |  |  | ELÉTRICA |  |  |  |  | Qui 06/08/26 |  |
| 665 | 1.27.6.2 | Avaliação do Cliente | 5d | 2026-08-13 | 2026-08-20 | 664 | 2026-08-06 | 2026-08-13 | 5d | 28d | 0d |  |  |  | ELÉTRICA |  |  |  |  | Qui 13/08/26 |  |
| 666 | 1.27.6.3 | Atendimento de Comentário | 3d | 2026-08-20 | 2026-08-25 | 665 | 2026-08-13 | 2026-08-18 | 3d | 28d | 0d |  |  |  | ELÉTRICA |  |  |  |  | Ter 18/08/26 |  |
| 667 | 1.27.6.4 | Aprovação | 2d | 2026-08-25 | 2026-08-27 | 666 | 2026-08-18 | 2026-08-20 | 2d | 28d |  |  |  |  | ELÉTRICA |  |  |  |  | Qui 20/08/26 |  |

| ID | WBS | Task | Duration | Start | Finish | Predecessors | Baseline start | Baseline finish | Baseline duration | Total slack | Free slack | Tipo de documento | Área | Sub-área | Disciplina | Título | Formato | Quantidade | Agrupamento Cecal | Término_LB_R0 | Início_LB_R0 |
| --- | --- | --- | --- | --- | --- | --- | --- | --- | --- | --- | --- | --- | --- | --- | --- | --- | --- | --- | --- | --- | --- |
| 668 | 1.27.7 | **AG-F0009-0309-MB-E-00006** | 16d | 2026-07-30 | 2026-08-21 |  | 2026-07-23 | 2026-08-14 | 16d | 32d |  | AG - Arranjo (AG) | 03 - REDUÇÃO | 09 - FORNO TECNORED | ELÉTRICA | PLANTA BÁSICA DE ATERRAMENTO | A1 (841x594mm) | 01 | Revisão das cargas elétricas | Sex 14/08/26 | Qui 23/07/26 |
| 669 | 1.27.7.1 | Emissão inicial | 10d | 2026-07-30 | 2026-08-13 | 645SF | 2026-07-23 | 2026-08-06 | 10d | 32d | 0d |  |  |  | ELÉTRICA |  |  |  |  | Qui 06/08/26 |  |
| 670 | 1.27.7.2 | Avaliação do Cliente | 1d | 2026-08-13 | 2026-08-14 | 669 | 2026-08-06 | 2026-08-07 | 1d | 32d | 0d |  |  |  | ELÉTRICA |  |  |  |  | Sex 07/08/26 |  |
| 671 | 1.27.7.3 | Atendimento de Comentário | 3d | 2026-08-14 | 2026-08-19 | 670 | 2026-08-07 | 2026-08-12 | 3d | 32d | 0d |  |  |  | ELÉTRICA |  |  |  |  | Qua 12/08/26 |  |
| 672 | 1.27.7.4 | Aprovação | 2d | 2026-08-19 | 2026-08-21 | 671 | 2026-08-12 | 2026-08-14 | 2d | 32d |  |  |  |  | ELÉTRICA |  |  |  |  | Sex 14/08/26 |  |
| 673 | 1.27.8 | **AG-F0009-0309-MB-E-00007** | 20d | 2026-07-30 | 2026-08-27 |  | 2026-07-23 | 2026-08-20 | 20d | 28d |  | AG - Arranjo (AG) | 03 - REDUÇÃO | 09 - FORNO TECNORED | ELÉTRICA | PLANTA BÁSICA DE ATERRAMENTO | A1 (841x594mm) | 01 | Revisão das cargas elétricas | Qui 20/08/26 | Qui 23/07/26 |
| 674 | 1.27.8.1 | Emissão inicial | 10d | 2026-07-30 | 2026-08-13 | 645SF | 2026-07-23 | 2026-08-06 | 10d | 28d | 0d |  |  |  | ELÉTRICA |  |  |  |  | Qui 06/08/26 |  |
| 675 | 1.27.8.2 | Avaliação do Cliente | 5d | 2026-08-13 | 2026-08-20 | 674 | 2026-08-06 | 2026-08-13 | 5d | 28d | 0d |  |  |  | ELÉTRICA |  |  |  |  | Qui 13/08/26 |  |
| 676 | 1.27.8.3 | Atendimento de Comentário | 3d | 2026-08-20 | 2026-08-25 | 675 | 2026-08-13 | 2026-08-18 | 3d | 28d | 0d |  |  |  | ELÉTRICA |  |  |  |  | Ter 18/08/26 |  |
| 677 | 1.27.8.4 | Aprovação | 2d | 2026-08-25 | 2026-08-27 | 676 | 2026-08-18 | 2026-08-20 | 2d | 28d |  |  |  |  | ELÉTRICA |  |  |  |  | Qui 20/08/26 |  |
| 678 | 1.27.9 | **AG-F0009-0309-MB-E-00008** | 20d | 2026-07-30 | 2026-08-27 |  | 2026-07-23 | 2026-08-20 | 20d | 28d |  | AG - Arranjo (AG) | 03 - REDUÇÃO | 09 - FORNO TECNORED | ELÉTRICA | PLANTA BÁSICA DE DISTRIBUIÇÃO GERAL | A1 (841x594mm) | 01 | Revisão das cargas elétricas | Qui 20/08/26 | Qui 23/07/26 |
| 679 | 1.27.9.1 | Emissão inicial | 10d | 2026-07-30 | 2026-08-13 | 645SF | 2026-07-23 | 2026-08-06 | 10d | 28d | 0d |  |  |  | ELÉTRICA |  |  |  |  | Qui 06/08/26 |  |
| 680 | 1.27.9.2 | Avaliação do Cliente | 5d | 2026-08-13 | 2026-08-20 | 679 | 2026-08-06 | 2026-08-13 | 5d | 28d | 0d |  |  |  | ELÉTRICA |  |  |  |  | Qui 13/08/26 |  |
| 681 | 1.27.9.3 | Atendimento de Comentário | 3d | 2026-08-20 | 2026-08-25 | 680 | 2026-08-13 | 2026-08-18 | 3d | 28d | 0d |  |  |  | ELÉTRICA |  |  |  |  | Ter 18/08/26 |  |
| 682 | 1.27.9.4 | Aprovação | 2d | 2026-08-25 | 2026-08-27 | 681 | 2026-08-18 | 2026-08-20 | 2d | 28d |  |  |  |  | ELÉTRICA |  |  |  |  | Qui 20/08/26 |  |
| 683 | 1.27.10 | **CC-F0009-0309-MB-E-00001** | 25d | 2026-08-13 | 2026-09-17 |  | 2026-08-06 | 2026-09-10 | 25d | 9d |  | CC - Lista de Cargas e Consumidores | 03 - REDUÇÃO | 09 - FORNO TECNORED | ELÉTRICA | CARGA ELÈTRICA E ESTUDO DE DEMANDA | A4 (210x297mm) | 08 | Revisão das cargas elétricas | Qui 10/09/26 | Qui 06/08/26 |
| 684 | 1.27.10.1 | Emissão inicial | 15d | 2026-08-13 | 2026-09-03 | 664 | 2026-08-06 | 2026-08-27 | 15d | 9d | 0d |  |  |  | ELÉTRICA |  |  |  |  | Qui 27/08/26 |  |
| 685 | 1.27.10.2 | Avaliação do Cliente | 5d | 2026-09-03 | 2026-09-10 | 684 | 2026-08-27 | 2026-09-03 | 5d | 9d | 0d |  |  |  | ELÉTRICA |  |  |  |  | Qui 03/09/26 |  |
| 686 | 1.27.10.3 | Atendimento de Comentário | 3d | 2026-09-10 | 2026-09-15 | 685 | 2026-09-03 | 2026-09-08 | 3d | 13d | 0d |  |  |  | ELÉTRICA |  |  |  |  | Ter 08/09/26 |  |
| 687 | 1.27.10.4 | Aprovação | 2d | 2026-09-15 | 2026-09-17 | 686 | 2026-09-08 | 2026-09-10 | 2d | 13d |  |  |  |  | ELÉTRICA |  |  |  |  | Qui 10/09/26 |  |
| 688 | 1.27.11 | **DU-F0009-0309-MB-E-00001** | 25d | 2026-08-13 | 2026-09-17 |  | 2026-08-06 | 2026-09-10 | 25d | 13d |  | DU - Diagrama Unifilar (DU) | 03 - REDUÇÃO | 09 - FORNO TECNORED | ELÉTRICA | DIAGRAMA ELETRICO - MC-0300MB-01 | A4 (210x297mm) | 01 | Revisão das cargas elétricas | Qui 10/09/26 | Qui 06/08/26 |
| 689 | 1.27.11.1 | Emissão inicial | 15d | 2026-08-13 | 2026-09-03 | 685SF | 2026-08-06 | 2026-08-27 | 15d | 13d | 0d |  |  |  | ELÉTRICA |  |  |  |  | Qui 27/08/26 |  |
| 690 | 1.27.11.2 | Avaliação do Cliente | 5d | 2026-09-03 | 2026-09-10 | 689 | 2026-08-27 | 2026-09-03 | 5d | 13d | 0d |  |  |  | ELÉTRICA |  |  |  |  | Qui 03/09/26 |  |
| 691 | 1.27.11.3 | Atendimento de Comentário | 3d | 2026-09-10 | 2026-09-15 | 690 | 2026-09-03 | 2026-09-08 | 3d | 13d | 0d |  |  |  | ELÉTRICA |  |  |  |  | Ter 08/09/26 |  |
| 692 | 1.27.11.4 | Aprovação | 2d | 2026-09-15 | 2026-09-17 | 691 | 2026-09-08 | 2026-09-10 | 2d | 13d |  |  |  |  | ELÉTRICA |  |  |  |  | Qui 10/09/26 |  |

| ID | WBS | Task | Duration | Start | Finish | Predecessors | Baseline start | Baseline finish | Baseline duration | Total slack | Free slack | Constraint | Tipo de documento | Área | Sub-área | Disciplina | Formato | Quantidade | Agrupamento Cecal | Término_LB_R0 | Início_LB_R0 |
| --- | --- | --- | --- | --- | --- | --- | --- | --- | --- | --- | --- | --- | --- | --- | --- | --- | --- | --- | --- | --- | --- |
| 693 | 1.27.12 | **DU-F0009-0309-MB-E-00002** | 27d | 2026-08-13 | 2026-09-21 |  | 2026-08-06 | 2026-09-14 | 27d | 11d |  |  | DU - Diagrama Unifilar (DU) | 03 - REDUÇÃO | 09 - FORNO TECNORED | ELÉTRICA | A4 (210x297mm) | 01 | Revisão das cargas elétricas | Seg 14/09/26 | Qui 06/08/26 |
| 694 | 1.27.12.1 | Emissão inicial | 15d | 2026-08-13 | 2026-09-03 | 685SF | 2026-08-06 | 2026-08-27 | 15d | 11d | 0d |  |  |  |  | ELÉTRICA |  |  |  | Qui 27/08/26 |  |
| 695 | 1.27.12.2 | Avaliação do Cliente | 5d | 2026-09-03 | 2026-09-10 | 694 | 2026-08-27 | 2026-09-03 | 5d | 11d | 0d |  |  |  |  | ELÉTRICA |  |  |  | Qui 03/09/26 |  |
| 696 | 1.27.12.3 | Atendimento de Comentário | 5d | 2026-09-10 | 2026-09-17 | 695 | 2026-09-03 | 2026-09-10 | 5d | 11d | 0d |  |  |  |  | ELÉTRICA |  |  |  | Qui 10/09/26 |  |
| 697 | 1.27.12.4 | Aprovação | 2d | 2026-09-17 | 2026-09-21 | 696 | 2026-09-10 | 2026-09-14 | 2d | 11d |  |  |  |  |  | ELÉTRICA |  |  |  | Seg 14/09/26 |  |
| 698 | 1.27.13 | **DU-F0009-0309-MB-E-00003** | 25d | 2026-08-13 | 2026-09-17 |  | 2026-08-06 | 2026-09-10 | 25d | 13d |  |  | DU - Diagrama Unifilar (DU) | 03 - REDUÇÃO | 09 - FORNO TECNORED | ELÉTRICA | A4 (210x297mm) | 01 | Revisão das cargas elétricas | Qui 10/09/26 | Qui 06/08/26 |
| 699 | 1.27.13.1 | Emissão inicial | 15d | 2026-08-13 | 2026-09-03 | 685SF | 2026-08-06 | 2026-08-27 | 15d | 13d | 0d |  |  |  |  | ELÉTRICA |  |  |  | Qui 27/08/26 |  |
| 700 | 1.27.13.2 | Avaliação do Cliente | 5d | 2026-09-03 | 2026-09-10 | 699 | 2026-08-27 | 2026-09-03 | 5d | 13d | 0d |  |  |  |  | ELÉTRICA |  |  |  | Qui 03/09/26 |  |
| 701 | 1.27.13.3 | Atendimento de Comentário | 3d | 2026-09-10 | 2026-09-15 | 700 | 2026-09-03 | 2026-09-08 | 3d | 13d | 0d |  |  |  |  | ELÉTRICA |  |  |  | Ter 08/09/26 |  |
| 702 | 1.27.13.4 | Aprovação | 2d | 2026-09-15 | 2026-09-17 | 701 | 2026-09-08 | 2026-09-10 | 2d | 13d |  |  |  |  |  | ELÉTRICA |  |  |  | Qui 10/09/26 |  |
| 703 | 1.27.14 | **ET-F0009-0309-MB-E-00001** | 27d | 2026-08-17 | 2026-09-23 |  | 2026-08-12 | 2026-09-17 | 27d | 9d |  |  | ET - Especificação Técnica | 03 - REDUÇÃO | 09 - FORNO TECNORED | ELÉTRICA | A4 (210x297mm) | 10 | Revisão das cargas elétricas | Qui 17/09/26 | Qua 12/08/26 |
| 704 | 1.27.14.1 | Emissão inicial | 15d | 2026-08-17 | 2026-09-07 | 685SF+2d | 2026-08-12 | 2026-09-01 | 15d | 9d | 0d | start no earlier than 2026-08-12 |  |  |  | ELÉTRICA |  |  |  | Ter 01/09/26 |  |
| 705 | 1.27.14.2 | Avaliação do Cliente | 5d | 2026-09-07 | 2026-09-14 | 704 | 2026-09-02 | 2026-09-08 | 5d | 9d | 0d |  |  |  |  | ELÉTRICA |  |  |  | Ter 08/09/26 |  |
| 706 | 1.27.14.3 | Atendimento de Comentário | 5d | 2026-09-14 | 2026-09-21 | 705 | 2026-09-09 | 2026-09-15 | 5d | 9d | 0d |  |  |  |  | ELÉTRICA |  |  |  | Ter 15/09/26 |  |
| 707 | 1.27.14.4 | Aprovação | 2d | 2026-09-21 | 2026-09-23 | 706 | 2026-09-16 | 2026-09-17 | 2d | 9d |  |  |  |  |  | ELÉTRICA |  |  |  | Qui 17/09/26 |  |
| 708 | 1.27.15 | **LB-F0009-0309-MB-E-00001** | 25d | 2026-08-17 | 2026-09-21 |  | 2026-08-10 | 2026-09-14 | 25d | 11d |  |  | LB - Lista de Cabos | 03 - REDUÇÃO | 09 - FORNO TECNORED | ELÉTRICA | A4 (210x297mm) | 10 | Readequação da lista de carga, iluminação, bandejamento | Seg 14/09/26 | Seg 10/08/26 |
| 709 | 1.27.15.1 | Emissão inicial | 15d | 2026-08-17 | 2026-09-07 | 685SF+2d | 2026-08-10 | 2026-08-31 | 15d | 11d | 0d |  |  |  |  | ELÉTRICA |  |  |  | Seg 31/08/26 |  |
| 710 | 1.27.15.2 | Avaliação do Cliente | 5d | 2026-09-07 | 2026-09-14 | 709 | 2026-08-31 | 2026-09-07 | 5d | 11d | 0d |  |  |  |  | ELÉTRICA |  |  |  | Seg 07/09/26 |  |
| 711 | 1.27.15.3 | Atendimento de Comentário | 3d | 2026-09-14 | 2026-09-17 | 710 | 2026-09-07 | 2026-09-10 | 3d | 11d | 0d |  |  |  |  | ELÉTRICA |  |  |  | Qui 10/09/26 |  |
| 712 | 1.27.15.4 | Aprovação | 2d | 2026-09-17 | 2026-09-21 | 711 | 2026-09-10 | 2026-09-14 | 2d | 11d |  |  |  |  |  | ELÉTRICA |  |  |  | Seg 14/09/26 |  |
| 713 | 1.27.16 | **LM-F0009-0309-MB-E-00001** | 25d | 2026-08-17 | 2026-09-21 |  | 2026-08-10 | 2026-09-14 | 25d | 11d |  |  | LM - Lista de Materiais | 03 - REDUÇÃO | 09 - FORNO TECNORED | ELÉTRICA | A4 (210x297mm) | 10 | Readequação da lista de carga, iluminação, bandejamento | Seg 14/09/26 | Seg 10/08/26 |
| 714 | 1.27.16.1 | Emissão inicial | 15d | 2026-08-17 | 2026-09-07 | 710SF | 2026-08-10 | 2026-08-31 | 15d | 11d | 0d |  |  |  |  | ELÉTRICA |  |  |  | Seg 31/08/26 |  |
| 715 | 1.27.16.2 | Avaliação do Cliente | 5d | 2026-09-07 | 2026-09-14 | 714 | 2026-08-31 | 2026-09-07 | 5d | 11d | 0d |  |  |  |  | ELÉTRICA |  |  |  | Seg 07/09/26 |  |
| 716 | 1.27.16.3 | Atendimento de Comentário | 3d | 2026-09-14 | 2026-09-17 | 715 | 2026-09-07 | 2026-09-10 | 3d | 11d | 0d |  |  |  |  | ELÉTRICA |  |  |  | Qui 10/09/26 |  |
| 717 | 1.27.16.4 | Aprovação | 2d | 2026-09-17 | 2026-09-21 | 716 | 2026-09-10 | 2026-09-14 | 2d | 11d |  |  |  |  |  | ELÉTRICA |  |  |  | Seg 14/09/26 |  |

Notes:
- 693: Título: DIAGRAMA ELETRICO - MC-0300MB-02
- 698: Título: DIAGRAMA ELETRICO - MC-0300MB-03
- 703: Título: ESPECIFICAÇÃO TÉCNICA BÁSICA PARA COTAÇÃO DE PAINÉIS ELÉTRICOS
- 708: Título: LISTA DE CABOS DE FORÇA, COMANDO E ILUMINAÇÃO
- 713: Título: LISTA BÁSICA DE MATERIAIS FORÇA, ILUMINAÇÃO, ATERRAMENTO E SPDA

| ID | WBS | Task | Type | Duration | Start | Finish | Predecessors | Baseline start | Baseline finish | Baseline duration | Total slack | Free slack | Tipo de documento | Área | Sub-área | Disciplina | Formato | Quantidade | Agrupamento Cecal | Término_LB_R0 | Início_LB_R0 |
| --- | --- | --- | --- | --- | --- | --- | --- | --- | --- | --- | --- | --- | --- | --- | --- | --- | --- | --- | --- | --- | --- |
| 718 | 1.27.17 | **LR-F0009-0309-MB-E-00001** |  | 25d | 2026-08-17 | 2026-09-21 |  | 2026-08-10 | 2026-09-14 | 25d | 11d |  | LR - Lista de Motores | 03 - REDUÇÃO | 09 - FORNO TECNORED | ELÉTRICA | A4 (210x297mm) | 10 | Revisão das cargas elétricas | Seg 14/09/26 | Seg 10/08/26 |
| 719 | 1.27.17.1 | Emissão inicial |  | 15d | 2026-08-17 | 2026-09-07 | 710SF | 2026-08-10 | 2026-08-31 | 15d | 11d | 0d |  |  |  | ELÉTRICA |  |  |  | Seg 31/08/26 |  |
| 720 | 1.27.17.2 | Avaliação do Cliente |  | 5d | 2026-09-07 | 2026-09-14 | 719 | 2026-08-31 | 2026-09-07 | 5d | 11d | 0d |  |  |  | ELÉTRICA |  |  |  | Seg 07/09/26 |  |
| 721 | 1.27.17.3 | Atendimento de Comentário |  | 3d | 2026-09-14 | 2026-09-17 | 720 | 2026-09-07 | 2026-09-10 | 3d | 11d | 0d |  |  |  | ELÉTRICA |  |  |  | Qui 10/09/26 |  |
| 722 | 1.27.17.4 | Aprovação |  | 2d | 2026-09-17 | 2026-09-21 | 721 | 2026-09-10 | 2026-09-14 | 2d | 11d |  |  |  |  | ELÉTRICA |  |  |  | Seg 14/09/26 |  |
| 723 | 1.27.18 | **MD-F0009-0309-MB-E-00001** |  | 25d | 2026-08-17 | 2026-09-21 |  | 2026-08-10 | 2026-09-14 | 25d | 11d |  | MD - Memorial Descritivo | 03 - REDUÇÃO | 09 - FORNO TECNORED | ELÉTRICA | A4 (210x297mm) | 10 | Planilha de quantitativo do forno e carregamento | Seg 14/09/26 | Seg 10/08/26 |
| 724 | 1.27.18.1 | Emissão inicial |  | 15d | 2026-08-17 | 2026-09-07 | 710SF | 2026-08-10 | 2026-08-31 | 15d | 11d | 0d |  |  |  | ELÉTRICA |  |  |  | Seg 31/08/26 |  |
| 725 | 1.27.18.2 | Avaliação do Cliente |  | 5d | 2026-09-07 | 2026-09-14 | 724 | 2026-08-31 | 2026-09-07 | 5d | 11d | 0d |  |  |  | ELÉTRICA |  |  |  | Seg 07/09/26 |  |
| 726 | 1.27.18.3 | Atendimento de Comentário |  | 3d | 2026-09-14 | 2026-09-17 | 725 | 2026-09-07 | 2026-09-10 | 3d | 11d | 0d |  |  |  | ELÉTRICA |  |  |  | Qui 10/09/26 |  |
| 727 | 1.27.18.4 | Aprovação |  | 2d | 2026-09-17 | 2026-09-21 | 726 | 2026-09-10 | 2026-09-14 | 2d | 11d |  |  |  |  | ELÉTRICA |  |  |  | Seg 14/09/26 |  |
| 728 | 1.27.19 | **OI-F0009-0309-MB-E-00001** |  | 25d | 2026-08-17 | 2026-09-21 |  | 2026-08-10 | 2026-09-14 | 25d | 11d |  | PQ - Planilha de Quantidades | 03 - REDUÇÃO | 09 - FORNO TECNORED | ELÉTRICA | A1 (841x594mm) | 10 | Planilha de quantitativo do forno e carregamento | Seg 14/09/26 | Seg 10/08/26 |
| 729 | 1.27.19.1 | Emissão inicial |  | 15d | 2026-08-17 | 2026-09-07 | 710SF | 2026-08-10 | 2026-08-31 | 15d | 11d | 0d |  |  |  | ELÉTRICA |  |  |  | Seg 31/08/26 |  |
| 730 | 1.27.19.2 | Avaliação do Cliente |  | 5d | 2026-09-07 | 2026-09-14 | 729 | 2026-08-31 | 2026-09-07 | 5d | 11d | 0d |  |  |  | ELÉTRICA |  |  |  | Seg 07/09/26 |  |
| 731 | 1.27.19.3 | Atendimento de Comentário |  | 3d | 2026-09-14 | 2026-09-17 | 730 | 2026-09-07 | 2026-09-10 | 3d | 11d | 0d |  |  |  | ELÉTRICA |  |  |  | Qui 10/09/26 |  |
| 732 | 1.27.19.4 | Aprovação |  | 2d | 2026-09-17 | 2026-09-21 | 731 | 2026-09-10 | 2026-09-14 | 2d | 11d |  |  |  |  | ELÉTRICA |  |  |  | Seg 14/09/26 |  |
| 733 | 4.2.1.20 | AUTOMAÇÃO 309 | manual | 70d | 2026-06-23 | 2026-09-28 | 735SS |  |  |  |  |  |  |  |  |  |  |  |  |  |  |
| 734 | 5.2.1.19 | AUTOMAÇÃO 309 | manual | 70d | 2026-06-30 | 2026-10-06 | 735SS |  |  |  |  |  |  |  |  |  |  |  |  |  |  |
| 735 | 1.30 | **AUTOMAÇÃO 309** |  | 70d | 2026-06-30 | 2026-10-06 |  | 2026-06-23 | 2026-09-29 | 70d | 0d |  |  |  |  |  |  |  |  | Ter 29/09/26 | Ter 23/06/26 |
| 736 | 1.30.1 | **CP-F0009-0309-MB-J-00001** |  | 25d | 2026-06-30 | 2026-08-04 |  | 2026-06-23 | 2026-07-28 | 25d | 45d |  | CP - Critério de Projeto | 03 - REDUÇÃO | 09 - FORNO TECNORED | AUTOMAÇÃO E INSTRUMENTAÇÃO | A4 (210x297mm) | 10 | Revisão da instrumentação | Ter 28/07/26 | Ter 23/06/26 |
| 737 | 1.30.1.1 | Emissão inicial |  | 15d | 2026-06-30 | 2026-07-21 | 21 | 2026-06-23 | 2026-07-14 | 15d | 45d | 0d |  |  |  | AUTOMAÇÃO E INSTRUMENTAÇÃO |  |  |  | Ter 14/07/26 |  |
| 738 | 1.30.1.2 | Avaliação do Cliente |  | 5d | 2026-07-21 | 2026-07-28 | 737 | 2026-07-14 | 2026-07-21 | 5d | 45d | 0d |  |  |  | AUTOMAÇÃO E INSTRUMENTAÇÃO |  |  |  | Ter 21/07/26 |  |
| 739 | 1.30.1.3 | Atendimento de Comentário |  | 3d | 2026-07-28 | 2026-07-31 | 738 | 2026-07-21 | 2026-07-24 | 3d | 45d | 0d |  |  |  | AUTOMAÇÃO E INSTRUMENTAÇÃO |  |  |  | Sex 24/07/26 |  |
| 740 | 1.30.1.4 | Aprovação |  | 2d | 2026-07-31 | 2026-08-04 | 739 | 2026-07-24 | 2026-07-28 | 2d | 45d |  |  |  |  | AUTOMAÇÃO E INSTRUMENTAÇÃO |  |  |  | Ter 28/07/26 |  |
| 741 | 1.30.2 | **CP-F0009-0309-MB-J-00002** |  | 25d | 2026-06-30 | 2026-08-04 | 21 | 2026-06-23 | 2026-07-28 | 25d | 45d |  | CP - Critério de Projeto | 03 - REDUÇÃO | 09 - FORNO TECNORED | AUTOMAÇÃO E INSTRUMENTAÇÃO | A4 (210x297mm) | 10 | Revisão da instrumentação | Ter 28/07/26 | Ter 23/06/26 |
| 742 | 1.30.2.1 | Emissão inicial |  | 15d | 2026-06-30 | 2026-07-21 | 21 | 2026-06-23 | 2026-07-14 | 15d | 45d | 0d |  |  |  | AUTOMAÇÃO E INSTRUMENTAÇÃO |  |  |  | Ter 14/07/26 |  |
| 743 | 1.30.2.2 | Avaliação do Cliente |  | 5d | 2026-07-21 | 2026-07-28 | 742 | 2026-07-14 | 2026-07-21 | 5d | 45d | 0d |  |  |  | AUTOMAÇÃO E INSTRUMENTAÇÃO |  |  |  | Ter 21/07/26 |  |
| 744 | 1.30.2.3 | Atendimento de Comentário |  | 3d | 2026-07-28 | 2026-07-31 | 743 | 2026-07-21 | 2026-07-24 | 3d | 45d | 0d |  |  |  | AUTOMAÇÃO E INSTRUMENTAÇÃO |  |  |  | Sex 24/07/26 |  |
| 745 | 1.30.2.4 | Aprovação |  | 2d | 2026-07-31 | 2026-08-04 | 744 | 2026-07-24 | 2026-07-28 | 2d | 45d |  |  |  |  | AUTOMAÇÃO E INSTRUMENTAÇÃO |  |  |  | Ter 28/07/26 |  |

Notes:
- 718: Título: LISTA DE MOTORES
- 723: Título: MEMORIAL DESCRITIVO PARA CUSTO DE MONTAGEM ELÉTRICA, EQUIPAMENTOS E MATERIAIS DE MONTAGEM DE CAMPO
- 728: Título: PLANILHA QUANTITATIVO INSTRUMENTAÇÃO
- 736: Título: CRITÉRIO DE PROJETO DE AUTOMAÇÃO
- 741: Título: CRITÉRIO DE PROJETO DE INSTRUMENTAÇÃO

| ID | WBS | Task | Duration | Start | Finish | Predecessors | Baseline start | Baseline finish | Baseline duration | Total slack | Free slack | Tipo de documento | Área | Sub-área | Disciplina | Título | Formato | Quantidade | Agrupamento Cecal | Término_LB_R0 | Início_LB_R0 |
| --- | --- | --- | --- | --- | --- | --- | --- | --- | --- | --- | --- | --- | --- | --- | --- | --- | --- | --- | --- | --- | --- |
| 746 | 1.30.3 | **AG-F0009-0309-MB-J-00001** | 20d | 2026-07-30 | 2026-08-27 |  | 2026-07-23 | 2026-08-20 | 20d | 0d |  | AG - Arranjo (AG) | 03 - REDUÇÃO | 09 - FORNO TECNORED | AUTOMAÇÃO E INSTRUMENTAÇÃO | PLANTA BÁSICA DE INSTRUMENTAÇÃO ELEVAÇÃO 6600 | A1 (841x594mm) | 01 | Revisão da instrumentação | Qui 20/08/26 | Qui 23/07/26 |
| 747 | 1.30.3.1 | Emissão inicial | 10d | 2026-07-30 | 2026-08-13 | 99, 294, 21 | 2026-07-23 | 2026-08-06 | 10d | 0d |  |  |  |  | AUTOMAÇÃO E INSTRUMENTAÇÃO |  |  |  |  | Qui 06/08/26 |  |
| 748 | 1.30.3.2 | Avaliação do Cliente | 5d | 2026-08-13 | 2026-08-20 | 747 | 2026-08-06 | 2026-08-13 | 5d | 28d | 0d |  |  |  | AUTOMAÇÃO E INSTRUMENTAÇÃO |  |  |  |  | Qui 13/08/26 |  |
| 749 | 1.30.3.3 | Atendimento de Comentário | 3d | 2026-08-20 | 2026-08-25 | 748 | 2026-08-13 | 2026-08-18 | 3d | 28d | 0d |  |  |  | AUTOMAÇÃO E INSTRUMENTAÇÃO |  |  |  |  | Ter 18/08/26 |  |
| 750 | 1.30.3.4 | Aprovação | 2d | 2026-08-25 | 2026-08-27 | 749 | 2026-08-18 | 2026-08-20 | 2d | 28d |  |  |  |  | AUTOMAÇÃO E INSTRUMENTAÇÃO |  |  |  |  | Qui 20/08/26 |  |
| 751 | 1.30.4 | **AG-F0009-0309-MB-J-00002** | 23d | 2026-07-16 | 2026-08-18 |  | 2026-07-09 | 2026-08-11 | 23d | 35d |  | AG - Arranjo (AG) | 03 - REDUÇÃO | 09 - FORNO TECNORED | AUTOMAÇÃO E INSTRUMENTAÇÃO | PLANTA BÁSICA DE INSTRUMENTAÇÃO ELEVAÇÃO 10405 | A1 (841x594mm) | 01 | Revisão da instrumentação | Ter 11/08/26 | Qui 09/07/26 |
| 752 | 1.30.4.1 | Emissão inicial | 10d | 2026-07-16 | 2026-07-30 | 747SF | 2026-07-09 | 2026-07-23 | 10d | 35d | 0d |  |  |  | AUTOMAÇÃO E INSTRUMENTAÇÃO |  |  |  |  | Qui 23/07/26 |  |
| 753 | 1.30.4.2 | Avaliação do Cliente | 5d | 2026-07-30 | 2026-08-06 | 752 | 2026-07-23 | 2026-07-30 | 5d | 35d | 0d |  |  |  | AUTOMAÇÃO E INSTRUMENTAÇÃO |  |  |  |  | Qui 30/07/26 |  |
| 754 | 1.30.4.3 | Atendimento de Comentário | 3d | 2026-08-06 | 2026-08-11 | 753 | 2026-07-30 | 2026-08-04 | 3d | 35d | 0d |  |  |  | AUTOMAÇÃO E INSTRUMENTAÇÃO |  |  |  |  | Ter 04/08/26 |  |
| 755 | 1.30.4.4 | Aprovação | 5d | 2026-08-11 | 2026-08-18 | 754 | 2026-08-04 | 2026-08-11 | 5d | 35d |  |  |  |  | AUTOMAÇÃO E INSTRUMENTAÇÃO |  |  |  |  | Ter 11/08/26 |  |
| 756 | 1.30.5 | **AG-F0009-0309-MB-J-00003** | 20d | 2026-07-16 | 2026-08-13 |  | 2026-07-09 | 2026-08-06 | 20d | 38d |  | AG - Arranjo (AG) | 03 - REDUÇÃO | 09 - FORNO TECNORED | AUTOMAÇÃO E INSTRUMENTAÇÃO | PLANTA BÁSICA DE INSTRUMENTAÇÃO ELEVAÇÃO 16502 | A1 (841x594mm) | 01 | Revisão da instrumentação | Qui 06/08/26 | Qui 09/07/26 |
| 757 | 1.30.5.1 | Emissão inicial | 10d | 2026-07-16 | 2026-07-30 | 747SF | 2026-07-09 | 2026-07-23 | 10d | 38d | 0d |  |  |  | AUTOMAÇÃO E INSTRUMENTAÇÃO |  |  |  |  | Qui 23/07/26 |  |
| 758 | 1.30.5.2 | Avaliação do Cliente | 5d | 2026-07-30 | 2026-08-06 | 757 | 2026-07-23 | 2026-07-30 | 5d | 38d | 0d |  |  |  | AUTOMAÇÃO E INSTRUMENTAÇÃO |  |  |  |  | Qui 30/07/26 |  |
| 759 | 1.30.5.3 | Atendimento de Comentário | 3d | 2026-08-06 | 2026-08-11 | 758 | 2026-07-30 | 2026-08-04 | 3d | 38d | 0d |  |  |  | AUTOMAÇÃO E INSTRUMENTAÇÃO |  |  |  |  | Ter 04/08/26 |  |
| 760 | 1.30.5.4 | Aprovação | 2d | 2026-08-11 | 2026-08-13 | 759 | 2026-08-04 | 2026-08-06 | 2d | 38d |  |  |  |  | AUTOMAÇÃO E INSTRUMENTAÇÃO |  |  |  |  | Qui 06/08/26 |  |
| 761 | 1.30.6 | **AG-F0009-0309-MB-J-00004** | 20d | 2026-07-16 | 2026-08-13 |  | 2026-07-09 | 2026-08-06 | 20d | 0d |  | AG - Arranjo (AG) | 03 - REDUÇÃO | 09 - FORNO TECNORED | AUTOMAÇÃO E INSTRUMENTAÇÃO | PLANTA BÁSICA DE INSTRUMENTAÇÃO ELEVAÇÃO 23872 | A1 (841x594mm) | 01 | Revisão da instrumentação | Qui 06/08/26 | Qui 09/07/26 |
| 762 | 1.30.6.1 | Emissão inicial | 10d | 2026-07-16 | 2026-07-30 | 747SF | 2026-07-09 | 2026-07-23 | 10d | 0d |  |  |  |  | AUTOMAÇÃO E INSTRUMENTAÇÃO |  |  |  |  | Qui 23/07/26 |  |
| 763 | 1.30.6.2 | Avaliação do Cliente | 5d | 2026-07-30 | 2026-08-06 | 762 | 2026-07-23 | 2026-07-30 | 5d | 38d | 0d |  |  |  | AUTOMAÇÃO E INSTRUMENTAÇÃO |  |  |  |  | Qui 30/07/26 |  |
| 764 | 1.30.6.3 | Atendimento de Comentário | 3d | 2026-08-06 | 2026-08-11 | 763 | 2026-07-30 | 2026-08-04 | 3d | 38d | 0d |  |  |  | AUTOMAÇÃO E INSTRUMENTAÇÃO |  |  |  |  | Ter 04/08/26 |  |
| 765 | 1.30.6.4 | Aprovação | 2d | 2026-08-11 | 2026-08-13 | 764 | 2026-08-04 | 2026-08-06 | 2d | 38d |  |  |  |  | AUTOMAÇÃO E INSTRUMENTAÇÃO |  |  |  |  | Qui 06/08/26 |  |
| 766 | 1.30.7 | **AG-F0009-0309-MB-J-00005** | 22d | 2026-07-30 | 2026-08-31 |  | 2026-07-23 | 2026-08-24 | 22d | 0d |  | AG - Arranjo (AG) | 03 - REDUÇÃO | 09 - FORNO TECNORED | AUTOMAÇÃO E INSTRUMENTAÇÃO | PLANTA BÁSICA DE INSTRUMENTAÇÃO ELEVAÇÃO 30064 | A1 (841x594mm) | 01 | Revisão da instrumentação | Seg 24/08/26 | Qui 23/07/26 |
| 767 | 1.30.7.1 | Emissão inicial | 10d | 2026-07-30 | 2026-08-13 | 762 | 2026-07-23 | 2026-08-06 | 10d | 0d |  |  |  |  | AUTOMAÇÃO E INSTRUMENTAÇÃO |  |  |  |  | Qui 06/08/26 |  |
| 768 | 1.30.7.2 | Avaliação do Cliente | 5d | 2026-08-13 | 2026-08-20 | 767 | 2026-08-06 | 2026-08-13 | 5d | 0d |  |  |  |  | AUTOMAÇÃO E INSTRUMENTAÇÃO |  |  |  |  | Qui 13/08/26 |  |
| 769 | 1.30.7.3 | Atendimento de Comentário | 5d | 2026-08-20 | 2026-08-27 | 768 | 2026-08-13 | 2026-08-20 | 5d | 26d | 0d |  |  |  | AUTOMAÇÃO E INSTRUMENTAÇÃO |  |  |  |  | Qui 20/08/26 |  |
| 770 | 1.30.7.4 | Aprovação | 2d | 2026-08-27 | 2026-08-31 | 769 | 2026-08-20 | 2026-08-24 | 2d | 26d |  |  |  |  | AUTOMAÇÃO E INSTRUMENTAÇÃO |  |  |  |  | Seg 24/08/26 |  |

| ID | WBS | Task | Duration | Start | Finish | Predecessors | Baseline start | Baseline finish | Baseline duration | Total slack | Free slack | Tipo de documento | Área | Sub-área | Disciplina | Título | Formato | Quantidade | Agrupamento Cecal | Término_LB_R0 | Início_LB_R0 |
| --- | --- | --- | --- | --- | --- | --- | --- | --- | --- | --- | --- | --- | --- | --- | --- | --- | --- | --- | --- | --- | --- |
| 771 | 1.30.8 | **AG-F0009-0309-MB-J-00006** | 20d | 2026-07-30 | 2026-08-27 |  | 2026-07-23 | 2026-08-20 | 20d | 28d |  | AG - Arranjo (AG) | 03 - REDUÇÃO | 09 - FORNO TECNORED | AUTOMAÇÃO E INSTRUMENTAÇÃO | PLANTA BÁSICA DE INSTRUMENTAÇÃO ELEVAÇÃO 35115 | A1 (841x594mm) | 01 | Revisão da instrumentação | Qui 20/08/26 | Qui 23/07/26 |
| 772 | 1.30.8.1 | Emissão inicial | 10d | 2026-07-30 | 2026-08-13 | 768SF | 2026-07-23 | 2026-08-06 | 10d | 28d | 0d |  |  |  | AUTOMAÇÃO E INSTRUMENTAÇÃO |  |  |  |  | Qui 06/08/26 |  |
| 773 | 1.30.8.2 | Avaliação do Cliente | 5d | 2026-08-13 | 2026-08-20 | 772 | 2026-08-06 | 2026-08-13 | 5d | 28d | 0d |  |  |  | AUTOMAÇÃO E INSTRUMENTAÇÃO |  |  |  |  | Qui 13/08/26 |  |
| 774 | 1.30.8.3 | Atendimento de Comentário | 3d | 2026-08-20 | 2026-08-25 | 773 | 2026-08-13 | 2026-08-18 | 3d | 28d | 0d |  |  |  | AUTOMAÇÃO E INSTRUMENTAÇÃO |  |  |  |  | Ter 18/08/26 |  |
| 775 | 1.30.8.4 | Aprovação | 2d | 2026-08-25 | 2026-08-27 | 774 | 2026-08-18 | 2026-08-20 | 2d | 28d |  |  |  |  | AUTOMAÇÃO E INSTRUMENTAÇÃO |  |  |  |  | Qui 20/08/26 |  |
| 776 | 1.30.9 | **AG-F0009-0309-MB-J-00007** | 22d | 2026-07-30 | 2026-08-31 |  | 2026-07-23 | 2026-08-24 | 22d | 26d |  | AG - Arranjo (AG) | 03 - REDUÇÃO | 09 - FORNO TECNORED | AUTOMAÇÃO E INSTRUMENTAÇÃO | PLANTA BÁSICA DE INSTRUMENTAÇÃO ELEVAÇÃO 39322 | A1 (841x594mm) | 01 | Revisão da instrumentação | Seg 24/08/26 | Qui 23/07/26 |
| 777 | 1.30.9.1 | Emissão inicial | 10d | 2026-07-30 | 2026-08-13 | 768SF | 2026-07-23 | 2026-08-06 | 10d | 26d | 0d |  |  |  | AUTOMAÇÃO E INSTRUMENTAÇÃO |  |  |  |  | Qui 06/08/26 |  |
| 778 | 1.30.9.2 | Avaliação do Cliente | 5d | 2026-08-13 | 2026-08-20 | 777 | 2026-08-06 | 2026-08-13 | 5d | 26d | 0d |  |  |  | AUTOMAÇÃO E INSTRUMENTAÇÃO |  |  |  |  | Qui 13/08/26 |  |
| 779 | 1.30.9.3 | Atendimento de Comentário | 5d | 2026-08-20 | 2026-08-27 | 778 | 2026-08-13 | 2026-08-20 | 5d | 26d | 0d |  |  |  | AUTOMAÇÃO E INSTRUMENTAÇÃO |  |  |  |  | Qui 20/08/26 |  |
| 780 | 1.30.9.4 | Aprovação | 2d | 2026-08-27 | 2026-08-31 | 779 | 2026-08-20 | 2026-08-24 | 2d | 26d |  |  |  |  | AUTOMAÇÃO E INSTRUMENTAÇÃO |  |  |  |  | Seg 24/08/26 |  |
| 781 | 1.30.10 | **AG-F0009-0309-MB-J-00008** | 20d | 2026-07-30 | 2026-08-27 |  | 2026-07-23 | 2026-08-20 | 20d | 28d |  | AG - Arranjo (AG) | 03 - REDUÇÃO | 09 - FORNO TECNORED | AUTOMAÇÃO E INSTRUMENTAÇÃO | PLANTA BÁSICA DE INSTRUMENTAÇÃO TORRE RESFRIAMENTO | A1 (841x594mm) | 01 | Revisão da instrumentação | Qui 20/08/26 | Qui 23/07/26 |
| 782 | 1.30.10.1 | Emissão inicial | 10d | 2026-07-30 | 2026-08-13 | 768SF | 2026-07-23 | 2026-08-06 | 10d | 28d | 0d |  |  |  | AUTOMAÇÃO E INSTRUMENTAÇÃO |  |  |  |  | Qui 06/08/26 |  |
| 783 | 1.30.10.2 | Avaliação do Cliente | 5d | 2026-08-13 | 2026-08-20 | 782 | 2026-08-06 | 2026-08-13 | 5d | 28d | 0d |  |  |  | AUTOMAÇÃO E INSTRUMENTAÇÃO |  |  |  |  | Qui 13/08/26 |  |
| 784 | 1.30.10.3 | Atendimento de Comentário | 3d | 2026-08-20 | 2026-08-25 | 783 | 2026-08-13 | 2026-08-18 | 3d | 28d | 0d |  |  |  | AUTOMAÇÃO E INSTRUMENTAÇÃO |  |  |  |  | Ter 18/08/26 |  |
| 785 | 1.30.10.4 | Aprovação | 2d | 2026-08-25 | 2026-08-27 | 784 | 2026-08-18 | 2026-08-20 | 2d | 28d |  |  |  |  | AUTOMAÇÃO E INSTRUMENTAÇÃO |  |  |  |  | Qui 20/08/26 |  |
| 786 | 1.30.11 | **AG-F0009-0309-MB-J-00009** | 20d | 2026-07-30 | 2026-08-27 |  | 2026-07-23 | 2026-08-20 | 20d | 0d |  | AG - Arranjo (AG) | 03 - REDUÇÃO | 09 - FORNO TECNORED | AUTOMAÇÃO E INSTRUMENTAÇÃO | PLANTA BÁSICA DE INSTRUMENTAÇÃO FIBRA OPTICA | A1 (841x594mm) | 01 | Revisão da instrumentação | Qui 20/08/26 | Qui 23/07/26 |
| 787 | 1.30.11.1 | Emissão inicial | 10d | 2026-07-30 | 2026-08-13 | 768SF | 2026-07-23 | 2026-08-06 | 10d | 0d |  |  |  |  | AUTOMAÇÃO E INSTRUMENTAÇÃO |  |  |  |  | Qui 06/08/26 |  |
| 788 | 1.30.11.2 | Avaliação do Cliente | 5d | 2026-08-13 | 2026-08-20 | 787 | 2026-08-06 | 2026-08-13 | 5d | 28d | 0d |  |  |  | AUTOMAÇÃO E INSTRUMENTAÇÃO |  |  |  |  | Qui 13/08/26 |  |
| 789 | 1.30.11.3 | Atendimento de Comentário | 3d | 2026-08-20 | 2026-08-25 | 788 | 2026-08-13 | 2026-08-18 | 3d | 28d | 0d |  |  |  | AUTOMAÇÃO E INSTRUMENTAÇÃO |  |  |  |  | Ter 18/08/26 |  |
| 790 | 1.30.11.4 | Aprovação | 2d | 2026-08-25 | 2026-08-27 | 789 | 2026-08-18 | 2026-08-20 | 2d | 28d |  |  |  |  | AUTOMAÇÃO E INSTRUMENTAÇÃO |  |  |  |  | Qui 20/08/26 |  |
| 791 | 1.30.12 | **LB-F0009-0309-MB-J-00001** | 27d | 2026-08-13 | 2026-09-21 |  | 2026-08-06 | 2026-09-14 | 27d | 0d |  | LB - Lista de Cabos | 03 - REDUÇÃO | 09 - FORNO TECNORED | AUTOMAÇÃO E INSTRUMENTAÇÃO | LISTA DE CABOS BÁSICA | A4 (210x297mm) | 10 | Revisão da instrumentação | Seg 14/09/26 | Qui 06/08/26 |
| 792 | 1.30.12.1 | Emissão inicial | 15d | 2026-08-13 | 2026-09-03 | 1020, 787 | 2026-08-06 | 2026-08-27 | 15d | 0d |  |  |  |  | AUTOMAÇÃO E INSTRUMENTAÇÃO |  |  |  |  | Qui 27/08/26 |  |
| 793 | 1.30.12.2 | Avaliação do Cliente | 5d | 2026-09-03 | 2026-09-10 | 792 | 2026-08-27 | 2026-09-03 | 5d | 0d |  |  |  |  | AUTOMAÇÃO E INSTRUMENTAÇÃO |  |  |  |  | Qui 03/09/26 |  |
| 794 | 1.30.12.3 | Atendimento de Comentário | 5d | 2026-09-10 | 2026-09-17 | 793 | 2026-09-03 | 2026-09-10 | 5d | 11d | 0d |  |  |  | AUTOMAÇÃO E INSTRUMENTAÇÃO |  |  |  |  | Qui 10/09/26 |  |
| 795 | 1.30.12.4 | Aprovação | 2d | 2026-09-17 | 2026-09-21 | 794 | 2026-09-10 | 2026-09-14 | 2d | 11d |  |  |  |  | AUTOMAÇÃO E INSTRUMENTAÇÃO |  |  |  |  | Seg 14/09/26 |  |

| ID | WBS | Task | Duration | Start | Finish | Predecessors | Baseline start | Baseline finish | Baseline duration | Total slack | Free slack | Tipo de documento | Área | Sub-área | Disciplina | Formato | Quantidade | Agrupamento Cecal | Término_LB_R0 | Início_LB_R0 |
| --- | --- | --- | --- | --- | --- | --- | --- | --- | --- | --- | --- | --- | --- | --- | --- | --- | --- | --- | --- | --- |
| 796 | 1.30.13 | **LI-F0009-0300-MB-J-00001** | 25d | 2026-08-13 | 2026-09-17 |  | 2026-08-06 | 2026-09-10 | 25d | 13d |  | LI - Lista de Instrumentos | 03 - REDUÇÃO | 00 - GERAL | AUTOMAÇÃO E INSTRUMENTAÇÃO | OUTROS | 01 | Revisão da instrumentação | Qui 10/09/26 | Qui 06/08/26 |
| 797 | 1.30.13.1 | Emissão inicial | 15d | 2026-08-13 | 2026-09-03 | 793SF | 2026-08-06 | 2026-08-27 | 15d | 13d | 0d |  |  |  | AUTOMAÇÃO E INSTRUMENTAÇÃO |  |  |  | Qui 27/08/26 |  |
| 798 | 1.30.13.2 | Avaliação do Cliente | 5d | 2026-09-03 | 2026-09-10 | 797 | 2026-08-27 | 2026-09-03 | 5d | 13d | 0d |  |  |  | AUTOMAÇÃO E INSTRUMENTAÇÃO |  |  |  | Qui 03/09/26 |  |
| 799 | 1.30.13.3 | Atendimento de Comentário | 3d | 2026-09-10 | 2026-09-15 | 798 | 2026-09-03 | 2026-09-08 | 3d | 13d | 0d |  |  |  | AUTOMAÇÃO E INSTRUMENTAÇÃO |  |  |  | Ter 08/09/26 |  |
| 800 | 1.30.13.4 | Aprovação | 2d | 2026-09-15 | 2026-09-17 | 799 | 2026-09-08 | 2026-09-10 | 2d | 13d |  |  |  |  | AUTOMAÇÃO E INSTRUMENTAÇÃO |  |  |  | Qui 10/09/26 |  |
| 801 | 1.30.14 | **LI-F0009-0302-MB-J-00001** | 25d | 2026-08-13 | 2026-09-17 |  | 2026-08-06 | 2026-09-10 | 25d | 13d |  | LI - Lista de Instrumentos | 03 - REDUÇÃO | 02 - CARREGAMENTO | AUTOMAÇÃO E INSTRUMENTAÇÃO | OUTROS | 01 | Revisão da instrumentação | Qui 10/09/26 | Qui 06/08/26 |
| 802 | 1.30.14.1 | Emissão inicial | 15d | 2026-08-13 | 2026-09-03 | 793SF | 2026-08-06 | 2026-08-27 | 15d | 13d | 0d |  |  |  | AUTOMAÇÃO E INSTRUMENTAÇÃO |  |  |  | Qui 27/08/26 |  |
| 803 | 1.30.14.2 | Avaliação do Cliente | 5d | 2026-09-03 | 2026-09-10 | 802 | 2026-08-27 | 2026-09-03 | 5d | 13d | 0d |  |  |  | AUTOMAÇÃO E INSTRUMENTAÇÃO |  |  |  | Qui 03/09/26 |  |
| 804 | 1.30.14.3 | Atendimento de Comentário | 3d | 2026-09-10 | 2026-09-15 | 803 | 2026-09-03 | 2026-09-08 | 3d | 13d | 0d |  |  |  | AUTOMAÇÃO E INSTRUMENTAÇÃO |  |  |  | Ter 08/09/26 |  |
| 805 | 1.30.14.4 | Aprovação | 2d | 2026-09-15 | 2026-09-17 | 804 | 2026-09-08 | 2026-09-10 | 2d | 13d |  |  |  |  | AUTOMAÇÃO E INSTRUMENTAÇÃO |  |  |  | Qui 10/09/26 |  |
| 806 | 1.30.15 | **LI-F0009-0302-MB-J-00002** | 25d | 2026-08-13 | 2026-09-17 |  | 2026-08-06 | 2026-09-10 | 25d | 13d |  | LI - Lista de Instrumentos | 03 - REDUÇÃO | 02 - CARREGAMENTO | AUTOMAÇÃO E INSTRUMENTAÇÃO | OUTROS | 01 | Revisão da instrumentação | Qui 10/09/26 | Qui 06/08/26 |
| 807 | 1.30.15.1 | Emissão inicial | 15d | 2026-08-13 | 2026-09-03 | 793SF | 2026-08-06 | 2026-08-27 | 15d | 13d | 0d |  |  |  | AUTOMAÇÃO E INSTRUMENTAÇÃO |  |  |  | Qui 27/08/26 |  |
| 808 | 1.30.15.2 | Avaliação do Cliente | 5d | 2026-09-03 | 2026-09-10 | 807 | 2026-08-27 | 2026-09-03 | 5d | 13d | 0d |  |  |  | AUTOMAÇÃO E INSTRUMENTAÇÃO |  |  |  | Qui 03/09/26 |  |
| 809 | 1.30.15.3 | Atendimento de Comentário | 3d | 2026-09-10 | 2026-09-15 | 808 | 2026-09-03 | 2026-09-08 | 3d | 13d | 0d |  |  |  | AUTOMAÇÃO E INSTRUMENTAÇÃO |  |  |  | Ter 08/09/26 |  |
| 810 | 1.30.15.4 | Aprovação | 2d | 2026-09-15 | 2026-09-17 | 809 | 2026-09-08 | 2026-09-10 | 2d | 13d |  |  |  |  | AUTOMAÇÃO E INSTRUMENTAÇÃO |  |  |  | Qui 10/09/26 |  |
| 811 | 1.30.16 | **LI-F0009-0302-MB-J-00003** | 27d | 2026-08-13 | 2026-09-21 |  | 2026-08-06 | 2026-09-14 | 27d | 11d |  | LI - Lista de Instrumentos | 03 - REDUÇÃO | 02 - CARREGAMENTO | AUTOMAÇÃO E INSTRUMENTAÇÃO | OUTROS | 01 | Revisão da instrumentação | Seg 14/09/26 | Qui 06/08/26 |
| 812 | 1.30.16.1 | Emissão inicial | 15d | 2026-08-13 | 2026-09-03 | 793SF | 2026-08-06 | 2026-08-27 | 15d | 11d | 0d |  |  |  | AUTOMAÇÃO E INSTRUMENTAÇÃO |  |  |  | Qui 27/08/26 |  |
| 813 | 1.30.16.2 | Avaliação do Cliente | 5d | 2026-09-03 | 2026-09-10 | 812 | 2026-08-27 | 2026-09-03 | 5d | 11d | 0d |  |  |  | AUTOMAÇÃO E INSTRUMENTAÇÃO |  |  |  | Qui 03/09/26 |  |
| 814 | 1.30.16.3 | Atendimento de Comentário | 5d | 2026-09-10 | 2026-09-17 | 813 | 2026-09-03 | 2026-09-10 | 5d | 11d | 0d |  |  |  | AUTOMAÇÃO E INSTRUMENTAÇÃO |  |  |  | Qui 10/09/26 |  |
| 815 | 1.30.16.4 | Aprovação | 2d | 2026-09-17 | 2026-09-21 | 814 | 2026-09-10 | 2026-09-14 | 2d | 11d |  |  |  |  | AUTOMAÇÃO E INSTRUMENTAÇÃO |  |  |  | Seg 14/09/26 |  |
| 816 | 1.30.17 | **LI-F0009-0302-MB-J-00004** | 25d | 2026-08-13 | 2026-09-17 |  | 2026-08-06 | 2026-09-10 | 25d | 13d |  | LI - Lista de Instrumentos | 03 - REDUÇÃO | 02 - CARREGAMENTO | AUTOMAÇÃO E INSTRUMENTAÇÃO | OUTROS | 01 | Revisão da instrumentação | Qui 10/09/26 | Qui 06/08/26 |
| 817 | 1.30.17.1 | Emissão inicial | 15d | 2026-08-13 | 2026-09-03 | 793SF | 2026-08-06 | 2026-08-27 | 15d | 13d | 0d |  |  |  | AUTOMAÇÃO E INSTRUMENTAÇÃO |  |  |  | Qui 27/08/26 |  |
| 818 | 1.30.17.2 | Avaliação do Cliente | 5d | 2026-09-03 | 2026-09-10 | 817 | 2026-08-27 | 2026-09-03 | 5d | 13d | 0d |  |  |  | AUTOMAÇÃO E INSTRUMENTAÇÃO |  |  |  | Qui 03/09/26 |  |
| 819 | 1.30.17.3 | Atendimento de Comentário | 3d | 2026-09-10 | 2026-09-15 | 818 | 2026-09-03 | 2026-09-08 | 3d | 13d | 0d |  |  |  | AUTOMAÇÃO E INSTRUMENTAÇÃO |  |  |  | Ter 08/09/26 |  |
| 820 | 1.30.17.4 | Aprovação | 2d | 2026-09-15 | 2026-09-17 | 819 | 2026-09-08 | 2026-09-10 | 2d | 13d |  |  |  |  | AUTOMAÇÃO E INSTRUMENTAÇÃO |  |  |  | Qui 10/09/26 |  |

Notes:
- 796: Título: LISTA de IO
- 801: Título: LISTA DE INSTRUMENTOS RECEIVING HOPPER, REVERSIBLE MOVABLE BELT AND PROCESS HOPPER – FLUXOGRAMA - FG-F0008-0302-MB-P-00001
- 806: Título: LISTA DE INSTRUMENTOS BUFFERS HOPPER - FR-400A – FLUXOGRAMA - FG-F0008-0302-MB-P-00002
- 811: Título: LISTA DE INSTRUMENTOS BUFFERS HOPPER - FR-400B – FLUXOGRAMA - FG-F0008-0302-MB-P-00003
- 816: Título: LISTA DE INSTRUMENTOS FR-400A - BOOSTER, BAR AND FUEL CHARGING – FLUXOGRAMA - FG-F0008-0302-MB-P-00004

| ID | WBS | Task | Duration | Start | Finish | Predecessors | Baseline start | Baseline finish | Baseline duration | Total slack | Free slack | Tipo de documento | Área | Sub-área | Disciplina | Formato | Quantidade | Agrupamento Cecal | Término_LB_R0 | Início_LB_R0 |
| --- | --- | --- | --- | --- | --- | --- | --- | --- | --- | --- | --- | --- | --- | --- | --- | --- | --- | --- | --- | --- |
| 821 | 1.30.18 | **LI-F0009-0302-MB-J-00005** | 27d | 2026-08-13 | 2026-09-21 |  | 2026-08-06 | 2026-09-14 | 27d | 11d |  | LI - Lista de Instrumentos | 03 - REDUÇÃO | 02 - CARREGAMENTO | AUTOMAÇÃO E INSTRUMENTAÇÃO | OUTROS | 01 | Revisão da instrumentação | Seg 14/09/26 | Qui 06/08/26 |
| 822 | 1.30.18.1 | Emissão inicial | 15d | 2026-08-13 | 2026-09-03 | 793SF | 2026-08-06 | 2026-08-27 | 15d | 11d | 0d |  |  |  | AUTOMAÇÃO E INSTRUMENTAÇÃO |  |  |  | Qui 27/08/26 |  |
| 823 | 1.30.18.2 | Avaliação do Cliente | 5d | 2026-09-03 | 2026-09-10 | 822 | 2026-08-27 | 2026-09-03 | 5d | 11d | 0d |  |  |  | AUTOMAÇÃO E INSTRUMENTAÇÃO |  |  |  | Qui 03/09/26 |  |
| 824 | 1.30.18.3 | Atendimento de Comentário | 5d | 2026-09-10 | 2026-09-17 | 823 | 2026-09-03 | 2026-09-10 | 5d | 11d | 0d |  |  |  | AUTOMAÇÃO E INSTRUMENTAÇÃO |  |  |  | Qui 10/09/26 |  |
| 825 | 1.30.18.4 | Aprovação | 2d | 2026-09-17 | 2026-09-21 | 824 | 2026-09-10 | 2026-09-14 | 2d | 11d |  |  |  |  | AUTOMAÇÃO E INSTRUMENTAÇÃO |  |  |  | Seg 14/09/26 |  |
| 826 | 1.30.19 | **LI-F0009-0302-MB-J-00006** | 25d | 2026-08-13 | 2026-09-17 |  | 2026-08-06 | 2026-09-10 | 25d | 13d |  | LI - Lista de Instrumentos | 03 - REDUÇÃO | 02 - CARREGAMENTO | AUTOMAÇÃO E INSTRUMENTAÇÃO | OUTROS | 01 | Revisão da instrumentação | Qui 10/09/26 | Qui 06/08/26 |
| 827 | 1.30.19.1 | Emissão inicial | 15d | 2026-08-13 | 2026-09-03 | 793SF | 2026-08-06 | 2026-08-27 | 15d | 13d | 0d |  |  |  | AUTOMAÇÃO E INSTRUMENTAÇÃO |  |  |  | Qui 27/08/26 |  |
| 828 | 1.30.19.2 | Avaliação do Cliente | 5d | 2026-09-03 | 2026-09-10 | 827 | 2026-08-27 | 2026-09-03 | 5d | 13d | 0d |  |  |  | AUTOMAÇÃO E INSTRUMENTAÇÃO |  |  |  | Qui 03/09/26 |  |
| 829 | 1.30.19.3 | Atendimento de Comentário | 3d | 2026-09-10 | 2026-09-15 | 828 | 2026-09-03 | 2026-09-08 | 3d | 13d | 0d |  |  |  | AUTOMAÇÃO E INSTRUMENTAÇÃO |  |  |  | Ter 08/09/26 |  |
| 830 | 1.30.19.4 | Aprovação | 2d | 2026-09-15 | 2026-09-17 | 829 | 2026-09-08 | 2026-09-10 | 2d | 13d |  |  |  |  | AUTOMAÇÃO E INSTRUMENTAÇÃO |  |  |  | Qui 10/09/26 |  |
| 831 | 1.30.20 | **LI-F0009-0307-MB-J-00001** | 27d | 2026-08-13 | 2026-09-21 |  | 2026-08-06 | 2026-09-14 | 27d | 11d |  | LI - Lista de Instrumentos | 03 - REDUÇÃO | 07 - RESFRIAMENTO | AUTOMAÇÃO E INSTRUMENTAÇÃO | OUTROS | 01 | Revisão da instrumentação | Seg 14/09/26 | Qui 06/08/26 |
| 832 | 1.30.20.1 | Emissão inicial | 15d | 2026-08-13 | 2026-09-03 | 793SF | 2026-08-06 | 2026-08-27 | 15d | 11d | 0d |  |  |  | AUTOMAÇÃO E INSTRUMENTAÇÃO |  |  |  | Qui 27/08/26 |  |
| 833 | 1.30.20.2 | Avaliação do Cliente | 5d | 2026-09-03 | 2026-09-10 | 832 | 2026-08-27 | 2026-09-03 | 5d | 11d | 0d |  |  |  | AUTOMAÇÃO E INSTRUMENTAÇÃO |  |  |  | Qui 03/09/26 |  |
| 834 | 1.30.20.3 | Atendimento de Comentário | 5d | 2026-09-10 | 2026-09-17 | 833 | 2026-09-03 | 2026-09-10 | 5d | 11d | 0d |  |  |  | AUTOMAÇÃO E INSTRUMENTAÇÃO |  |  |  | Qui 10/09/26 |  |
| 835 | 1.30.20.4 | Aprovação | 2d | 2026-09-17 | 2026-09-21 | 834 | 2026-09-10 | 2026-09-14 | 2d | 11d |  |  |  |  | AUTOMAÇÃO E INSTRUMENTAÇÃO |  |  |  | Seg 14/09/26 |  |
| 836 | 1.30.21 | **LI-F0009-0309-MB-J-00001** | 25d | 2026-08-13 | 2026-09-17 |  | 2026-08-06 | 2026-09-10 | 25d | 13d |  | LI - Lista de Instrumentos | 03 - REDUÇÃO | 09 - FORNO TECNORED | AUTOMAÇÃO E INSTRUMENTAÇÃO | A4 (210x297mm) | 10 | Revisão da instrumentação | Qui 10/09/26 | Qui 06/08/26 |
| 837 | 1.30.21.1 | Emissão inicial | 15d | 2026-08-13 | 2026-09-03 | 793SF | 2026-08-06 | 2026-08-27 | 15d | 13d | 0d |  |  |  | AUTOMAÇÃO E INSTRUMENTAÇÃO |  |  |  | Qui 27/08/26 |  |
| 838 | 1.30.21.2 | Avaliação do Cliente | 5d | 2026-09-03 | 2026-09-10 | 837 | 2026-08-27 | 2026-09-03 | 5d | 13d | 0d |  |  |  | AUTOMAÇÃO E INSTRUMENTAÇÃO |  |  |  | Qui 03/09/26 |  |
| 839 | 1.30.21.3 | Atendimento de Comentário | 3d | 2026-09-10 | 2026-09-15 | 838 | 2026-09-03 | 2026-09-08 | 3d | 13d | 0d |  |  |  | AUTOMAÇÃO E INSTRUMENTAÇÃO |  |  |  | Ter 08/09/26 |  |
| 840 | 1.30.21.4 | Aprovação | 2d | 2026-09-15 | 2026-09-17 | 839 | 2026-09-08 | 2026-09-10 | 2d | 13d |  |  |  |  | AUTOMAÇÃO E INSTRUMENTAÇÃO |  |  |  | Qui 10/09/26 |  |
| 841 | 1.30.22 | **LI-F0009-0309-MB-J-00002** | 25d | 2026-08-13 | 2026-09-17 |  | 2026-08-06 | 2026-09-10 | 25d | 13d |  | LI - Lista de Instrumentos | 03 - REDUÇÃO | 09 - FORNO TECNORED | AUTOMAÇÃO E INSTRUMENTAÇÃO | OUTROS | 01 | Revisão da instrumentação | Qui 10/09/26 | Qui 06/08/26 |
| 842 | 1.30.22.1 | Emissão inicial | 15d | 2026-08-13 | 2026-09-03 | 793SF | 2026-08-06 | 2026-08-27 | 15d | 13d | 0d |  |  |  | AUTOMAÇÃO E INSTRUMENTAÇÃO |  |  |  | Qui 27/08/26 |  |
| 843 | 1.30.22.2 | Avaliação do Cliente | 5d | 2026-09-03 | 2026-09-10 | 842 | 2026-08-27 | 2026-09-03 | 5d | 13d | 0d |  |  |  | AUTOMAÇÃO E INSTRUMENTAÇÃO |  |  |  | Qui 03/09/26 |  |
| 844 | 1.30.22.3 | Atendimento de Comentário | 3d | 2026-09-10 | 2026-09-15 | 843 | 2026-09-03 | 2026-09-08 | 3d | 13d | 0d |  |  |  | AUTOMAÇÃO E INSTRUMENTAÇÃO |  |  |  | Ter 08/09/26 |  |
| 845 | 1.30.22.4 | Aprovação | 2d | 2026-09-15 | 2026-09-17 | 844 | 2026-09-08 | 2026-09-10 | 2d | 13d |  |  |  |  | AUTOMAÇÃO E INSTRUMENTAÇÃO |  |  |  | Qui 10/09/26 |  |

Notes:
- 821: Título: LISTA DE INSTRUMENTOS FR-400B - BOOSTER, BAR AND FUEL CHARGING – FLUXOGRAMA - FG-F0008-0302-MB-P-00005
- 826: Título: LISTA DE INSTRUMENTOS TECNORED SEMI CLEAN GAS AND N2 DISTRIBUTION – FLUXOGRAMA - FG-F0008-0302-MB-P-00006
- 831: Título: LISTA DE INSTRUMENTOS COOLING SYSTEM - HOT VALVES SECTIONING – FLUXOGRAMA - FG-F0008-0307-MB-P-00001
- 836: Título: LISTA DE INSTRUMENTOS PRIMARY AND SECUNDARY CIRCUIT - FURNACE 1 & 2 - COOLING SYSTEM - PUMP HOUSE – FLUXOGRAMA - FG-F0008-0309-MB-P-00001
- 841: Título: LISTA DE INSTRUMENTOS COOLING SYSTEM - COOLING BOX – FLUXOGRAMA - FG-F0008-0309-MB-P-00002

| ID | WBS | Task | Duration | Start | Finish | Predecessors | Baseline start | Baseline finish | Baseline duration | Total slack | Free slack | Tipo de documento | Área | Sub-área | Disciplina | Formato | Quantidade | Agrupamento Cecal | Término_LB_R0 | Início_LB_R0 |
| --- | --- | --- | --- | --- | --- | --- | --- | --- | --- | --- | --- | --- | --- | --- | --- | --- | --- | --- | --- | --- |
| 846 | 1.30.23 | **LI-F0009-0309-MB-J-00003** | 25d | 2026-08-13 | 2026-09-17 |  | 2026-08-06 | 2026-09-10 | 25d | 13d |  | LI - Lista de Instrumentos | 03 - REDUÇÃO | 09 - FORNO TECNORED | AUTOMAÇÃO E INSTRUMENTAÇÃO | OUTROS | 01 | Revisão da instrumentação | Qui 10/09/26 | Qui 06/08/26 |
| 847 | 1.30.23.1 | Emissão inicial | 15d | 2026-08-13 | 2026-09-03 | 793SF | 2026-08-06 | 2026-08-27 | 15d | 13d | 0d |  |  |  | AUTOMAÇÃO E INSTRUMENTAÇÃO |  |  |  | Qui 27/08/26 |  |
| 848 | 1.30.23.2 | Avaliação do Cliente | 5d | 2026-09-03 | 2026-09-10 | 847 | 2026-08-27 | 2026-09-03 | 5d | 13d | 0d |  |  |  | AUTOMAÇÃO E INSTRUMENTAÇÃO |  |  |  | Qui 03/09/26 |  |
| 849 | 1.30.23.3 | Atendimento de Comentário | 3d | 2026-09-10 | 2026-09-15 | 848 | 2026-09-03 | 2026-09-08 | 3d | 13d | 0d |  |  |  | AUTOMAÇÃO E INSTRUMENTAÇÃO |  |  |  | Ter 08/09/26 |  |
| 850 | 1.30.23.4 | Aprovação | 2d | 2026-09-15 | 2026-09-17 | 849 | 2026-09-08 | 2026-09-10 | 2d | 13d |  |  |  |  | AUTOMAÇÃO E INSTRUMENTAÇÃO |  |  |  | Qui 10/09/26 |  |
| 851 | 1.30.24 | **LI-F0009-0309-MB-J-00004** | 25d | 2026-08-13 | 2026-09-17 |  | 2026-08-06 | 2026-09-10 | 25d | 13d |  | LI - Lista de Instrumentos | 03 - REDUÇÃO | 09 - FORNO TECNORED | AUTOMAÇÃO E INSTRUMENTAÇÃO | OUTROS | 01 | Revisão da instrumentação | Qui 10/09/26 | Qui 06/08/26 |
| 852 | 1.30.24.1 | Emissão inicial | 15d | 2026-08-13 | 2026-09-03 | 793SF | 2026-08-06 | 2026-08-27 | 15d | 13d | 0d |  |  |  | AUTOMAÇÃO E INSTRUMENTAÇÃO |  |  |  | Qui 27/08/26 |  |
| 853 | 1.30.24.2 | Avaliação do Cliente | 5d | 2026-09-03 | 2026-09-10 | 852 | 2026-08-27 | 2026-09-03 | 5d | 13d | 0d |  |  |  | AUTOMAÇÃO E INSTRUMENTAÇÃO |  |  |  | Qui 03/09/26 |  |
| 854 | 1.30.24.3 | Atendimento de Comentário | 3d | 2026-09-10 | 2026-09-15 | 853 | 2026-09-03 | 2026-09-08 | 3d | 13d | 0d |  |  |  | AUTOMAÇÃO E INSTRUMENTAÇÃO |  |  |  | Ter 08/09/26 |  |
| 855 | 1.30.24.4 | Aprovação | 2d | 2026-09-15 | 2026-09-17 | 854 | 2026-09-08 | 2026-09-10 | 2d | 13d |  |  |  |  | AUTOMAÇÃO E INSTRUMENTAÇÃO |  |  |  | Qui 10/09/26 |  |
| 856 | 1.30.25 | **LI-F0009-0309-MB-J-00005** | 25d | 2026-08-13 | 2026-09-17 |  | 2026-08-06 | 2026-09-10 | 25d | 13d |  | LI - Lista de Instrumentos | 03 - REDUÇÃO | 09 - FORNO TECNORED | AUTOMAÇÃO E INSTRUMENTAÇÃO | OUTROS | 01 | Revisão da instrumentação | Qui 10/09/26 | Qui 06/08/26 |
| 857 | 1.30.25.1 | Emissão inicial | 15d | 2026-08-13 | 2026-09-03 | 793SF | 2026-08-06 | 2026-08-27 | 15d | 13d | 0d |  |  |  | AUTOMAÇÃO E INSTRUMENTAÇÃO |  |  |  | Qui 27/08/26 |  |
| 858 | 1.30.25.2 | Avaliação do Cliente | 5d | 2026-09-03 | 2026-09-10 | 857 | 2026-08-27 | 2026-09-03 | 5d | 13d | 0d |  |  |  | AUTOMAÇÃO E INSTRUMENTAÇÃO |  |  |  | Qui 03/09/26 |  |
| 859 | 1.30.25.3 | Atendimento de Comentário | 3d | 2026-09-10 | 2026-09-15 | 858 | 2026-09-03 | 2026-09-08 | 3d | 13d | 0d |  |  |  | AUTOMAÇÃO E INSTRUMENTAÇÃO |  |  |  | Ter 08/09/26 |  |
| 860 | 1.30.25.4 | Aprovação | 2d | 2026-09-15 | 2026-09-17 | 859 | 2026-09-08 | 2026-09-10 | 2d | 13d |  |  |  |  | AUTOMAÇÃO E INSTRUMENTAÇÃO |  |  |  | Qui 10/09/26 |  |
| 861 | 1.30.26 | **LI-F0009-0309-MB-J-00006** | 27d | 2026-08-13 | 2026-09-21 |  | 2026-08-06 | 2026-09-14 | 27d | 11d |  | LI - Lista de Instrumentos | 03 - REDUÇÃO | 09 - FORNO TECNORED | AUTOMAÇÃO E INSTRUMENTAÇÃO | OUTROS | 01 | Revisão da instrumentação | Seg 14/09/26 | Qui 06/08/26 |
| 862 | 1.30.26.1 | Emissão inicial | 15d | 2026-08-13 | 2026-09-03 | 793SF | 2026-08-06 | 2026-08-27 | 15d | 11d | 0d |  |  |  | AUTOMAÇÃO E INSTRUMENTAÇÃO |  |  |  | Qui 27/08/26 |  |
| 863 | 1.30.26.2 | Avaliação do Cliente | 5d | 2026-09-03 | 2026-09-10 | 862 | 2026-08-27 | 2026-09-03 | 5d | 11d | 0d |  |  |  | AUTOMAÇÃO E INSTRUMENTAÇÃO |  |  |  | Qui 03/09/26 |  |
| 864 | 1.30.26.3 | Atendimento de Comentário | 5d | 2026-09-10 | 2026-09-17 | 863 | 2026-09-03 | 2026-09-10 | 5d | 11d | 0d |  |  |  | AUTOMAÇÃO E INSTRUMENTAÇÃO |  |  |  | Qui 10/09/26 |  |
| 865 | 1.30.26.4 | Aprovação | 2d | 2026-09-17 | 2026-09-21 | 864 | 2026-09-10 | 2026-09-14 | 2d | 11d |  |  |  |  | AUTOMAÇÃO E INSTRUMENTAÇÃO |  |  |  | Seg 14/09/26 |  |
| 866 | 1.30.27 | **LI-F0009-0309-MB-J-00007** | 25d | 2026-08-13 | 2026-09-17 |  | 2026-08-06 | 2026-09-10 | 25d | 13d |  | LI - Lista de Instrumentos | 03 - REDUÇÃO | 09 - FORNO TECNORED | AUTOMAÇÃO E INSTRUMENTAÇÃO | OUTROS | 01 | Revisão da instrumentação | Qui 10/09/26 | Qui 06/08/26 |
| 867 | 1.30.27.1 | Emissão inicial | 15d | 2026-08-13 | 2026-09-03 | 793SF | 2026-08-06 | 2026-08-27 | 15d | 13d | 0d |  |  |  | AUTOMAÇÃO E INSTRUMENTAÇÃO |  |  |  | Qui 27/08/26 |  |
| 868 | 1.30.27.2 | Avaliação do Cliente | 5d | 2026-09-03 | 2026-09-10 | 867 | 2026-08-27 | 2026-09-03 | 5d | 13d | 0d |  |  |  | AUTOMAÇÃO E INSTRUMENTAÇÃO |  |  |  | Qui 03/09/26 |  |
| 869 | 1.30.27.3 | Atendimento de Comentário | 3d | 2026-09-10 | 2026-09-15 | 868 | 2026-09-03 | 2026-09-08 | 3d | 13d | 0d |  |  |  | AUTOMAÇÃO E INSTRUMENTAÇÃO |  |  |  | Ter 08/09/26 |  |
| 870 | 1.30.27.4 | Aprovação | 2d | 2026-09-15 | 2026-09-17 | 869 | 2026-09-08 | 2026-09-10 | 2d | 13d |  |  |  |  | AUTOMAÇÃO E INSTRUMENTAÇÃO |  |  |  | Qui 10/09/26 |  |

Notes:
- 846: Título: LISTA DE INSTRUMENTOS COOLING SYSTEM - TUYERES CIRCUIT – FLUXOGRAMA - FG-F0008-0309-MB-P-00003
- 851: Título: LISTA DE INSTRUMENTOS COOLING SYSTEM - COOPER STAVES – FLUXOGRAMA - FG-F0008-0309-MB-P-00004
- 856: Título: LISTA DE INSTRUMENTOS COOLING SYSTEM - CAST IRON STAVES – FLUXOGRAMA - FG-F0008-0309-MB-P-00005
- 861: Título: LISTA DE INSTRUMENTOS COOLING SYSTEM - COURTAIN WALL – FLUXOGRAMA - FG-F0008-0309-MB-P-00006
- 866: Título: LISTA DE INSTRUMENTOS COOLING SYSTEM - TAPHOLE, CHANNEL AND DOORS COOLING CIRCUIT – FLUXOGRAMA - FG-F0008-0309-MB-P-00007

| ID | WBS | Task | Duration | Start | Finish | Predecessors | Baseline start | Baseline finish | Baseline duration | Total slack | Free slack | Tipo de documento | Área | Sub-área | Disciplina | Formato | Quantidade | Agrupamento Cecal | Término_LB_R0 | Início_LB_R0 |
| --- | --- | --- | --- | --- | --- | --- | --- | --- | --- | --- | --- | --- | --- | --- | --- | --- | --- | --- | --- | --- |
| 871 | 1.30.28 | **LI-F0009-0309-MB-J-00008** | 27d | 2026-08-13 | 2026-09-21 |  | 2026-08-06 | 2026-09-14 | 27d | 11d |  | LI - Lista de Instrumentos | 03 - REDUÇÃO | 09 - FORNO TECNORED | AUTOMAÇÃO E INSTRUMENTAÇÃO | OUTROS | 01 | Revisão da instrumentação | Seg 14/09/26 | Qui 06/08/26 |
| 872 | 1.30.28.1 | Emissão inicial | 15d | 2026-08-13 | 2026-09-03 | 793SF | 2026-08-06 | 2026-08-27 | 15d | 11d | 0d |  |  |  | AUTOMAÇÃO E INSTRUMENTAÇÃO |  |  |  | Qui 27/08/26 |  |
| 873 | 1.30.28.2 | Avaliação do Cliente | 5d | 2026-09-03 | 2026-09-10 | 872 | 2026-08-27 | 2026-09-03 | 5d | 11d | 0d |  |  |  | AUTOMAÇÃO E INSTRUMENTAÇÃO |  |  |  | Qui 03/09/26 |  |
| 874 | 1.30.28.3 | Atendimento de Comentário | 5d | 2026-09-10 | 2026-09-17 | 873 | 2026-09-03 | 2026-09-10 | 5d | 11d | 0d |  |  |  | AUTOMAÇÃO E INSTRUMENTAÇÃO |  |  |  | Qui 10/09/26 |  |
| 875 | 1.30.28.4 | Aprovação | 2d | 2026-09-17 | 2026-09-21 | 874 | 2026-09-10 | 2026-09-14 | 2d | 11d |  |  |  |  | AUTOMAÇÃO E INSTRUMENTAÇÃO |  |  |  | Seg 14/09/26 |  |
| 876 | 1.30.29 | **LI-F0009-0309-MB-J-00009** | 25d | 2026-08-13 | 2026-09-17 |  | 2026-08-06 | 2026-09-10 | 25d | 0d |  | LI - Lista de Instrumentos | 03 - REDUÇÃO | 09 - FORNO TECNORED | AUTOMAÇÃO E INSTRUMENTAÇÃO | OUTROS | 01 | Revisão da instrumentação | Qui 10/09/26 | Qui 06/08/26 |
| 877 | 1.30.29.1 | Emissão inicial | 15d | 2026-08-13 | 2026-09-03 | 793SF | 2026-08-06 | 2026-08-27 | 15d | 0d |  |  |  |  | AUTOMAÇÃO E INSTRUMENTAÇÃO |  |  |  | Qui 27/08/26 |  |
| 878 | 1.30.29.2 | Avaliação do Cliente | 5d | 2026-09-03 | 2026-09-10 | 877 | 2026-08-27 | 2026-09-03 | 5d | 13d | 0d |  |  |  | AUTOMAÇÃO E INSTRUMENTAÇÃO |  |  |  | Qui 03/09/26 |  |
| 879 | 1.30.29.3 | Atendimento de Comentário | 3d | 2026-09-10 | 2026-09-15 | 878 | 2026-09-03 | 2026-09-08 | 3d | 13d | 0d |  |  |  | AUTOMAÇÃO E INSTRUMENTAÇÃO |  |  |  | Ter 08/09/26 |  |
| 880 | 1.30.29.4 | Aprovação | 2d | 2026-09-15 | 2026-09-17 | 879 | 2026-09-08 | 2026-09-10 | 2d | 13d |  |  |  |  | AUTOMAÇÃO E INSTRUMENTAÇÃO |  |  |  | Qui 10/09/26 |  |
| 881 | 1.30.30 | **LM-F0009-0309-MB-J-00001** | 21d | 2026-09-03 | 2026-10-02 |  | 2026-08-27 | 2026-09-25 | 21d | 2d |  | LM - Lista de Materiais | 03 - REDUÇÃO | 09 - FORNO TECNORED | AUTOMAÇÃO E INSTRUMENTAÇÃO | A1 (841x594mm) | 10 | Planilha de quantitativo do forno e carregamento | Sex 25/09/26 | Qui 27/08/26 |
| 882 | 1.30.30.1 | Emissão inicial | 11d | 2026-09-03 | 2026-09-18 | 877 | 2026-08-27 | 2026-09-11 | 11d | 2d | 0d |  |  |  | AUTOMAÇÃO E INSTRUMENTAÇÃO |  |  |  | Sex 11/09/26 |  |
| 883 | 1.30.30.2 | Avaliação do Cliente | 5d | 2026-09-18 | 2026-09-25 | 882 | 2026-09-11 | 2026-09-18 | 5d | 2d | 0d |  |  |  | AUTOMAÇÃO E INSTRUMENTAÇÃO |  |  |  | Sex 18/09/26 |  |
| 884 | 1.30.30.3 | Atendimento de Comentário | 3d | 2026-09-25 | 2026-09-30 | 883 | 2026-09-18 | 2026-09-23 | 3d | 2d | 0d |  |  |  | AUTOMAÇÃO E INSTRUMENTAÇÃO |  |  |  | Qua 23/09/26 |  |
| 885 | 1.30.30.4 | Aprovação | 2d | 2026-09-30 | 2026-10-02 | 884 | 2026-09-23 | 2026-09-25 | 2d | 2d |  |  |  |  | AUTOMAÇÃO E INSTRUMENTAÇÃO |  |  |  | Sex 25/09/26 |  |
| 886 | 1.30.31 | **MD-F0009-0309-MB-J-00001** | 23d | 2026-09-03 | 2026-10-06 |  | 2026-08-27 | 2026-09-29 | 23d | 0d |  | MD - Memorial Descritivo | 03 - REDUÇÃO | 09 - FORNO TECNORED | AUTOMAÇÃO E INSTRUMENTAÇÃO | A4 (210x297mm) | 10 | Planilha de quantitativo do forno e carregamento | Ter 29/09/26 | Qui 27/08/26 |
| 887 | 1.30.31.1 | Emissão inicial | 13d | 2026-09-03 | 2026-09-22 | 877 | 2026-08-27 | 2026-09-15 | 13d | 0d |  |  |  |  | AUTOMAÇÃO E INSTRUMENTAÇÃO |  |  |  | Ter 15/09/26 |  |
| 888 | 1.30.31.2 | Avaliação do Cliente | 5d | 2026-09-22 | 2026-09-29 | 887 | 2026-09-15 | 2026-09-22 | 5d | 0d |  |  |  |  | AUTOMAÇÃO E INSTRUMENTAÇÃO |  |  |  | Ter 22/09/26 |  |
| 889 | 1.30.31.3 | Atendimento de Comentário | 3d | 2026-09-29 | 2026-10-02 | 888 | 2026-09-22 | 2026-09-25 | 3d | 0d |  |  |  |  | AUTOMAÇÃO E INSTRUMENTAÇÃO |  |  |  | Sex 25/09/26 |  |
| 890 | 1.30.31.4 | Aprovação | 2d | 2026-10-02 | 2026-10-06 | 889 | 2026-09-25 | 2026-09-29 | 2d | 0d |  |  |  |  | AUTOMAÇÃO E INSTRUMENTAÇÃO |  |  |  | Ter 29/09/26 |  |
| 891 | 1.30.32 | **ET-F0009-0309-MB-J-00001** | 25d | 2026-08-13 | 2026-09-17 |  | 2026-08-06 | 2026-09-10 | 25d | 13d |  | PQ - Planilha de Quantidades | 03 - REDUÇÃO | 09 - FORNO TECNORED | AUTOMAÇÃO E INSTRUMENTAÇÃO | A1 (841x594mm) | 10 | Revisão da instrumentação | Qui 10/09/26 | Qui 06/08/26 |
| 892 | 1.30.32.1 | Emissão inicial | 15d | 2026-08-13 | 2026-09-03 | 887SF | 2026-08-06 | 2026-08-27 | 15d | 13d | 0d |  |  |  | AUTOMAÇÃO E INSTRUMENTAÇÃO |  |  |  | Qui 27/08/26 |  |
| 893 | 1.30.32.2 | Avaliação do Cliente | 5d | 2026-09-03 | 2026-09-10 | 892 | 2026-08-27 | 2026-09-03 | 5d | 13d | 0d |  |  |  | AUTOMAÇÃO E INSTRUMENTAÇÃO |  |  |  | Qui 03/09/26 |  |
| 894 | 1.30.32.3 | Atendimento de Comentário | 3d | 2026-09-10 | 2026-09-15 | 893 | 2026-09-03 | 2026-09-08 | 3d | 13d | 0d |  |  |  | AUTOMAÇÃO E INSTRUMENTAÇÃO |  |  |  | Ter 08/09/26 |  |
| 895 | 1.30.32.4 | Aprovação | 2d | 2026-09-15 | 2026-09-17 | 894 | 2026-09-08 | 2026-09-10 | 2d | 13d |  |  |  |  | AUTOMAÇÃO E INSTRUMENTAÇÃO |  |  |  | Qui 10/09/26 |  |

Notes:
- 871: Título: LISTA DE INSTRUMENTOS COOLING SYSTEM - BOTTOM COOLING SYSTEM – FLUXOGRAMA - FG-F0008-0309-MB-P-00008
- 876: Título: LISTA DE INSTRUMENTOS TECNORED FURNACE PROPER – FLUXOGRAMA - FG-F0008-0309-MB-P-00009
- 881: Título: LISTA DE MATERAIS BÁSICA
- 886: Título: MEMORIAL DESCRITIVO DE AUTOMAÇÃO
- 891: Título: PLANILHA QUANTITATIVO AUTOMAÇÃO

| ID | WBS | Task | Type | Duration | Start | Finish | Predecessors | Baseline start | Baseline finish | Baseline duration | Total slack | Free slack | Tipo de documento | Área | Sub-área | Disciplina | Formato | Quantidade | Agrupamento Cecal | Término_LB_R0 | Início_LB_R0 |
| --- | --- | --- | --- | --- | --- | --- | --- | --- | --- | --- | --- | --- | --- | --- | --- | --- | --- | --- | --- | --- | --- |
| 896 | 1.30.33 | **PQ-F0009-0309-MB-J-00001** |  | 25d | 2026-08-13 | 2026-09-17 |  | 2026-08-06 | 2026-09-10 | 25d | 13d |  | PQ - Planilha de Quantidades | 03 - REDUÇÃO | 09 - FORNO TECNORED | AUTOMAÇÃO E INSTRUMENTAÇÃO | A1 (841x594mm) | 10 | Planilha de quantitativo do forno e carregamento | Qui 10/09/26 | Qui 06/08/26 |
| 897 | 1.30.33.1 | Emissão inicial |  | 15d | 2026-08-13 | 2026-09-03 | 887SF | 2026-08-06 | 2026-08-27 | 15d | 13d | 0d |  |  |  | AUTOMAÇÃO E INSTRUMENTAÇÃO |  |  |  | Qui 27/08/26 |  |
| 898 | 1.30.33.2 | Avaliação do Cliente |  | 5d | 2026-09-03 | 2026-09-10 | 897 | 2026-08-27 | 2026-09-03 | 5d | 13d | 0d |  |  |  | AUTOMAÇÃO E INSTRUMENTAÇÃO |  |  |  | Qui 03/09/26 |  |
| 899 | 1.30.33.3 | Atendimento de Comentário |  | 3d | 2026-09-10 | 2026-09-15 | 898 | 2026-09-03 | 2026-09-08 | 3d | 13d | 0d |  |  |  | AUTOMAÇÃO E INSTRUMENTAÇÃO |  |  |  | Ter 08/09/26 |  |
| 900 | 1.30.33.4 | Aprovação |  | 2d | 2026-09-15 | 2026-09-17 | 899 | 2026-09-08 | 2026-09-10 | 2d | 13d |  |  |  |  | AUTOMAÇÃO E INSTRUMENTAÇÃO |  |  |  | Qui 10/09/26 |  |
| 901 | 4.2.1.22 | PROCESSO GUSA 309 | manual | 65.13d | 2026-06-23 | 2026-09-22 | 903SS |  |  |  |  |  |  |  |  |  |  |  |  |  |  |
| 902 | 5.2.1.21 | PROCESSO GUSA 309 | manual | 65d | 2026-06-30 | 2026-09-29 | 903SS |  |  |  |  |  |  |  |  |  |  |  |  |  |  |
| 903 | 1.33 | **PROCESSO GUSA 309** |  | 65d | 2026-06-30 | 2026-09-29 |  | 2026-04-23 | 2026-09-22 | 109d | 0d |  |  |  |  |  |  |  |  | Ter 22/09/26 | Ter 23/06/26 |
| 904 | 1.33.1 | **CP-F0009-0309-MB-P-00001** |  | 25d | 2026-06-30 | 2026-08-04 |  | 2026-06-23 | 2026-07-28 | 25d | 25d | 15d | CP - Critério de Projeto | 03 - REDUÇÃO | 09 - FORNO TECNORED | PROCESSO | A4 (210x297mm) | 10 | Readequação das utilidades no prédio do forno | Ter 28/07/26 | Ter 23/06/26 |
| 905 | 1.33.1.1 | Emissão inicial |  | 15d | 2026-06-30 | 2026-07-21 | 21 | 2026-06-23 | 2026-07-14 | 15d | 25d | 0d |  |  |  | PROCESSO |  |  |  | Ter 14/07/26 |  |
| 906 | 1.33.1.2 | Avaliação do Cliente |  | 5d | 2026-07-21 | 2026-07-28 | 905 | 2026-07-14 | 2026-07-21 | 5d | 25d | 0d |  |  |  | PROCESSO |  |  |  | Ter 21/07/26 |  |
| 907 | 1.33.1.3 | Atendimento de Comentário |  | 3d | 2026-07-28 | 2026-07-31 | 906 | 2026-07-21 | 2026-07-24 | 3d | 25d | 0d |  |  |  | PROCESSO |  |  |  | Sex 24/07/26 |  |
| 908 | 1.33.1.4 | Aprovação |  | 2d | 2026-07-31 | 2026-08-04 | 907 | 2026-07-24 | 2026-07-28 | 2d | 25d |  |  |  |  | PROCESSO |  |  |  | Ter 28/07/26 |  |
| 909 | 1.33.2 | **FG-F0009-0300-MB-P-00001** |  | 20d | 2026-06-30 | 2026-07-28 |  | 2026-06-23 | 2026-07-21 | 20d | 28d |  | FG - Fluxogramas / P | 03 - REDUÇÃO | 00 - GERAL | PROCESSO | A1 (841x594mm) | 01 | Revisão dos fluxogramas | Ter 21/07/26 | Ter 23/06/26 |
| 910 | 1.33.2.1 | Emissão inicial |  | 10d | 2026-06-30 | 2026-07-14 | 21 | 2026-06-23 | 2026-07-07 | 10d | 28d | 0d |  |  |  | PROCESSO |  |  |  | Ter 07/07/26 |  |
| 911 | 1.33.2.2 | Avaliação do Cliente |  | 5d | 2026-07-14 | 2026-07-21 | 910 | 2026-07-07 | 2026-07-14 | 5d | 28d | 0d |  |  |  | PROCESSO |  |  |  | Ter 14/07/26 |  |
| 912 | 1.33.2.3 | Atendimento de Comentário |  | 3d | 2026-07-21 | 2026-07-24 | 911 | 2026-07-14 | 2026-07-17 | 3d | 50d | 0d |  |  |  | PROCESSO |  |  |  | Sex 17/07/26 |  |
| 913 | 1.33.2.4 | Aprovação |  | 2d | 2026-07-24 | 2026-07-28 | 912 | 2026-07-17 | 2026-07-21 | 2d | 50d |  |  |  |  | PROCESSO |  |  |  | Ter 21/07/26 |  |
| 914 | 1.33.3 | **FG-F0009-0300-MB-P-00002** |  | 20d | 2026-06-30 | 2026-07-28 |  | 2026-06-23 | 2026-07-21 | 20d | 50d |  | FG - Fluxogramas / P | 03 - REDUÇÃO | 00 - GERAL | PROCESSO | A1 (841x594mm) | 01 | Revisão dos fluxogramas | Ter 21/07/26 | Ter 23/06/26 |
| 915 | 1.33.3.1 | Emissão inicial |  | 10d | 2026-06-30 | 2026-07-14 | 911SF | 2026-06-23 | 2026-07-07 | 10d | 50d | 0d |  |  |  | PROCESSO |  |  |  | Ter 07/07/26 |  |
| 916 | 1.33.3.2 | Avaliação do Cliente |  | 5d | 2026-07-14 | 2026-07-21 | 915 | 2026-07-07 | 2026-07-14 | 5d | 50d | 0d |  |  |  | PROCESSO |  |  |  | Ter 14/07/26 |  |
| 917 | 1.33.3.3 | Atendimento de Comentário |  | 3d | 2026-07-21 | 2026-07-24 | 916 | 2026-07-14 | 2026-07-17 | 3d | 50d | 0d |  |  |  | PROCESSO |  |  |  | Sex 17/07/26 |  |
| 918 | 1.33.3.4 | Aprovação |  | 2d | 2026-07-24 | 2026-07-28 | 917 | 2026-07-17 | 2026-07-21 | 2d | 50d |  |  |  |  | PROCESSO |  |  |  | Ter 21/07/26 |  |
| 919 | 1.33.4 | **FG-F0009-0302-MB-P-00001** |  | 22d | 2026-06-30 | 2026-07-30 |  | 2026-06-23 | 2026-07-23 | 22d | 28d | 0d | FG - Fluxogramas / P | 03 - REDUÇÃO | 02 - CARREGAMENTO | PROCESSO | A1 (841x594mm) | 01 | Revisão da instrumentação | Qui 23/07/26 | Ter 23/06/26 |
| 920 | 1.33.4.1 | Emissão inicial |  | 10d | 2026-06-30 | 2026-07-14 | 911SF | 2026-06-23 | 2026-07-07 | 10d | 28d | 0d |  |  |  | PROCESSO |  |  |  | Ter 07/07/26 |  |
| 921 | 1.33.4.2 | Avaliação do Cliente |  | 5d | 2026-07-14 | 2026-07-21 | 920 | 2026-07-07 | 2026-07-14 | 5d | 28d | 0d |  |  |  | PROCESSO |  |  |  | Ter 14/07/26 |  |
| 922 | 1.33.4.3 | Atendimento de Comentário |  | 5d | 2026-07-21 | 2026-07-28 | 921 | 2026-07-14 | 2026-07-21 | 5d | 28d | 0d |  |  |  | PROCESSO |  |  |  | Ter 21/07/26 |  |
| 923 | 1.33.4.4 | Aprovação |  | 2d | 2026-07-28 | 2026-07-30 | 922 | 2026-07-21 | 2026-07-23 | 2d | 28d |  |  |  |  | PROCESSO |  |  |  | Qui 23/07/26 |  |

Notes:
- 896: Título: PLANILHA QUANTITATIVO AUTOMAÇÃO
- 904: Título: CRITÉRIO DE PROJETO DE UTILIDADES
- 909: Título: PFD - PROCESSO GERAL
- 914: Título: PFD - DISTRIBUICAO N2
- 919: Título: P&ID -CARREGAMENTO FORNO CORREIA PRINCIPAL ATÉ SILOS PROCESSOS

| ID | WBS | Task | Duration | Start | Finish | Predecessors | Baseline start | Baseline finish | Baseline duration | Total slack | Free slack | Tipo de documento | Área | Sub-área | Disciplina | Formato | Quantidade | Agrupamento Cecal | Término_LB_R0 | Início_LB_R0 |
| --- | --- | --- | --- | --- | --- | --- | --- | --- | --- | --- | --- | --- | --- | --- | --- | --- | --- | --- | --- | --- |
| 924 | 1.33.5 | **FG-F0009-0302-MB-P-00002** | 20d | 2026-06-30 | 2026-07-28 |  | 2026-06-23 | 2026-07-21 | 20d | 50d |  | FG - Fluxogramas / P | 03 - REDUÇÃO | 02 - CARREGAMENTO | PROCESSO | A1 (841x594mm) | 01 | Revisão da instrumentação | Ter 21/07/26 | Ter 23/06/26 |
| 925 | 1.33.5.1 | Emissão inicial | 10d | 2026-06-30 | 2026-07-14 | 911SF | 2026-06-23 | 2026-07-07 | 10d | 50d | 0d |  |  |  | PROCESSO |  |  |  | Ter 07/07/26 |  |
| 926 | 1.33.5.2 | Avaliação do Cliente | 5d | 2026-07-14 | 2026-07-21 | 925 | 2026-07-07 | 2026-07-14 | 5d | 50d | 0d |  |  |  | PROCESSO |  |  |  | Ter 14/07/26 |  |
| 927 | 1.33.5.3 | Atendimento de Comentário | 3d | 2026-07-21 | 2026-07-24 | 926 | 2026-07-14 | 2026-07-17 | 3d | 50d | 0d |  |  |  | PROCESSO |  |  |  | Sex 17/07/26 |  |
| 928 | 1.33.5.4 | Aprovação | 2d | 2026-07-24 | 2026-07-28 | 927 | 2026-07-17 | 2026-07-21 | 2d | 50d |  |  |  |  | PROCESSO |  |  |  | Ter 21/07/26 |  |
| 929 | 1.33.6 | **FG-F0009-0302-MB-P-00003** | 22d | 2026-07-14 | 2026-08-13 |  | 2026-07-07 | 2026-08-06 | 22d | 28d |  | FG - Fluxogramas / P | 03 - REDUÇÃO | 02 - CARREGAMENTO | PROCESSO | A1 (841x594mm) | 01 | Revisão da instrumentação | Qui 06/08/26 | Ter 07/07/26 |
| 930 | 1.33.6.1 | Emissão inicial | 10d | 2026-07-14 | 2026-07-28 | 910 | 2026-07-07 | 2026-07-21 | 10d | 28d | 0d |  |  |  | PROCESSO |  |  |  | Ter 21/07/26 |  |
| 931 | 1.33.6.2 | Avaliação do Cliente | 5d | 2026-07-28 | 2026-08-04 | 930 | 2026-07-21 | 2026-07-28 | 5d | 28d | 0d |  |  |  | PROCESSO |  |  |  | Ter 28/07/26 |  |
| 932 | 1.33.6.3 | Atendimento de Comentário | 5d | 2026-08-04 | 2026-08-11 | 931 | 2026-07-28 | 2026-08-04 | 5d | 38d | 0d |  |  |  | PROCESSO |  |  |  | Ter 04/08/26 |  |
| 933 | 1.33.6.4 | Aprovação | 2d | 2026-08-11 | 2026-08-13 | 932 | 2026-08-04 | 2026-08-06 | 2d | 38d |  |  |  |  | PROCESSO |  |  |  | Qui 06/08/26 |  |
| 934 | 1.33.7 | **FG-F0009-0302-MB-P-00004** | 20d | 2026-07-14 | 2026-08-11 |  | 2026-07-07 | 2026-08-04 | 20d | 40d |  | FG - Fluxogramas / P | 03 - REDUÇÃO | 02 - CARREGAMENTO | PROCESSO | A1 (841x594mm) | 01 | Revisão da instrumentação | Ter 04/08/26 | Ter 07/07/26 |
| 935 | 1.33.7.1 | Emissão inicial | 10d | 2026-07-14 | 2026-07-28 | 931SF | 2026-07-07 | 2026-07-21 | 10d | 40d | 0d |  |  |  | PROCESSO |  |  |  | Ter 21/07/26 |  |
| 936 | 1.33.7.2 | Avaliação do Cliente | 5d | 2026-07-28 | 2026-08-04 | 935 | 2026-07-21 | 2026-07-28 | 5d | 40d | 0d |  |  |  | PROCESSO |  |  |  | Ter 28/07/26 |  |
| 937 | 1.33.7.3 | Atendimento de Comentário | 3d | 2026-08-04 | 2026-08-07 | 936 | 2026-07-28 | 2026-07-31 | 3d | 40d | 0d |  |  |  | PROCESSO |  |  |  | Sex 31/07/26 |  |
| 938 | 1.33.7.4 | Aprovação | 2d | 2026-08-07 | 2026-08-11 | 937 | 2026-07-31 | 2026-08-04 | 2d | 40d |  |  |  |  | PROCESSO |  |  |  | Ter 04/08/26 |  |
| 939 | 1.33.8 | **FG-F0009-0302-MB-P-00005** | 20d | 2026-07-14 | 2026-08-11 |  | 2026-07-07 | 2026-08-04 | 20d | 40d |  | FG - Fluxogramas / P | 03 - REDUÇÃO | 02 - CARREGAMENTO | PROCESSO | A1 (841x594mm) | 01 | Revisão da instrumentação | Ter 04/08/26 | Ter 07/07/26 |
| 940 | 1.33.8.1 | Emissão inicial | 10d | 2026-07-14 | 2026-07-28 | 931SF | 2026-07-07 | 2026-07-21 | 10d | 40d | 0d |  |  |  | PROCESSO |  |  |  | Ter 21/07/26 |  |
| 941 | 1.33.8.2 | Avaliação do Cliente | 5d | 2026-07-28 | 2026-08-04 | 940 | 2026-07-21 | 2026-07-28 | 5d | 40d | 0d |  |  |  | PROCESSO |  |  |  | Ter 28/07/26 |  |
| 942 | 1.33.8.3 | Atendimento de Comentário | 3d | 2026-08-04 | 2026-08-07 | 941 | 2026-07-28 | 2026-07-31 | 3d | 40d | 0d |  |  |  | PROCESSO |  |  |  | Sex 31/07/26 |  |
| 943 | 1.33.8.4 | Aprovação | 2d | 2026-08-07 | 2026-08-11 | 942 | 2026-07-31 | 2026-08-04 | 2d | 40d |  |  |  |  | PROCESSO |  |  |  | Ter 04/08/26 |  |
| 944 | 1.33.9 | **FG-F0009-0302-MB-P-00006** | 22d | 2026-07-14 | 2026-08-13 |  | 2026-07-07 | 2026-08-06 | 22d | 28d |  | FG - Fluxogramas / P | 03 - REDUÇÃO | 02 - CARREGAMENTO | PROCESSO | A1 (841x594mm) | 01 | Revisão da instrumentação | Qui 06/08/26 | Ter 07/07/26 |
| 945 | 1.33.9.1 | Emissão inicial | 10d | 2026-07-14 | 2026-07-28 | 931SF | 2026-07-07 | 2026-07-21 | 10d | 28d | 0d |  |  |  | PROCESSO |  |  |  | Ter 21/07/26 |  |
| 946 | 1.33.9.2 | Avaliação do Cliente | 5d | 2026-07-28 | 2026-08-04 | 945 | 2026-07-21 | 2026-07-28 | 5d | 38d | 0d |  |  |  | PROCESSO |  |  |  | Ter 28/07/26 |  |
| 947 | 1.33.9.3 | Atendimento de Comentário | 5d | 2026-08-04 | 2026-08-11 | 946 | 2026-07-28 | 2026-08-04 | 5d | 38d | 0d |  |  |  | PROCESSO |  |  |  | Ter 04/08/26 |  |
| 948 | 1.33.9.4 | Aprovação | 2d | 2026-08-11 | 2026-08-13 | 947 | 2026-08-04 | 2026-08-06 | 2d | 38d |  |  |  |  | PROCESSO |  |  |  | Qui 06/08/26 |  |

Notes:
- 924: Título: P&ID - SILO PROCESSO ATÉ SILO BUFFER FORNO 1
- 929: Título: P&ID - SILO PROCESSO ATÉ SILO BUFFER FORNO 2
- 934: Título: P&ID - SILO BUFFER ATÉ FORNO LADO FORNO 1
- 939: Título: P&ID - SILO BUFFER ATÉ FORNO LADO FORNO 2
- 944: Título: P&ID - SISTEMA DE EQUALIZAÇÃO FORNO NITROGENIO E GAS DE PROCESSO

| ID | WBS | Task | Duration | Start | Finish | Predecessors | Baseline start | Baseline finish | Baseline duration | Total slack | Free slack | Tipo de documento | Área | Sub-área | Disciplina | Título | Formato | Quantidade | Agrupamento Cecal | Término_LB_R0 | Início_LB_R0 |
| --- | --- | --- | --- | --- | --- | --- | --- | --- | --- | --- | --- | --- | --- | --- | --- | --- | --- | --- | --- | --- | --- |
| 949 | 1.33.10 | **FG-F0009-0302-MB-P-00007** | 20d | 2026-07-28 | 2026-08-25 |  | 2026-07-21 | 2026-08-18 | 20d | 28d |  | FG - Fluxogramas / P | 03 - REDUÇÃO | 02 - CARREGAMENTO | PROCESSO | PFD - SISTEMA CARREGAMENTO | A1 (841x594mm) | 01 | Revisão dos fluxogramas | Ter 18/08/26 | Ter 21/07/26 |
| 950 | 1.33.10.1 | Emissão inicial | 10d | 2026-07-28 | 2026-08-11 | 945 | 2026-07-21 | 2026-08-04 | 10d | 28d | 0d |  |  |  | PROCESSO |  |  |  |  | Ter 04/08/26 |  |
| 951 | 1.33.10.2 | Avaliação do Cliente | 5d | 2026-08-11 | 2026-08-18 | 950 | 2026-08-04 | 2026-08-11 | 5d | 28d | 0d |  |  |  | PROCESSO |  |  |  |  | Ter 11/08/26 |  |
| 952 | 1.33.10.3 | Atendimento de Comentário | 3d | 2026-08-18 | 2026-08-21 | 951 | 2026-08-11 | 2026-08-14 | 3d | 30d | 0d |  |  |  | PROCESSO |  |  |  |  | Sex 14/08/26 |  |
| 953 | 1.33.10.4 | Aprovação | 2d | 2026-08-21 | 2026-08-25 | 952 | 2026-08-14 | 2026-08-18 | 2d | 30d |  |  |  |  | PROCESSO |  |  |  |  | Ter 18/08/26 |  |
| 954 | 1.33.11 | **FG-F0009-0302-MB-P-00008** | 20d | 2026-07-28 | 2026-08-25 |  | 2026-07-21 | 2026-08-18 | 20d | 30d |  | FG - Fluxogramas / P | 03 - REDUÇÃO | 02 - CARREGAMENTO | PROCESSO | FLUXOGRAMA DE PROCESSO | A4 (210x297mm) | 01 | Revisão dos fluxogramas | Ter 18/08/26 | Ter 21/07/26 |
| 955 | 1.33.11.1 | Emissão inicial | 10d | 2026-07-28 | 2026-08-11 | 951SF | 2026-07-21 | 2026-08-04 | 10d | 30d | 0d |  |  |  | PROCESSO |  |  |  |  | Ter 04/08/26 |  |
| 956 | 1.33.11.2 | Avaliação do Cliente | 5d | 2026-08-11 | 2026-08-18 | 955 | 2026-08-04 | 2026-08-11 | 5d | 30d | 0d |  |  |  | PROCESSO |  |  |  |  | Ter 11/08/26 |  |
| 957 | 1.33.11.3 | Atendimento de Comentário | 3d | 2026-08-18 | 2026-08-21 | 956 | 2026-08-11 | 2026-08-14 | 3d | 30d | 0d |  |  |  | PROCESSO |  |  |  |  | Sex 14/08/26 |  |
| 958 | 1.33.11.4 | Aprovação | 2d | 2026-08-21 | 2026-08-25 | 957 | 2026-08-14 | 2026-08-18 | 2d | 30d |  |  |  |  | PROCESSO |  |  |  |  | Ter 18/08/26 |  |
| 959 | 1.33.12 | **FG-F0009-0302-MB-P-00009** | 20d | 2026-07-28 | 2026-08-25 |  | 2026-07-21 | 2026-08-18 | 20d | 30d |  | FG - Fluxogramas / P | 03 - REDUÇÃO | 02 - CARREGAMENTO | PROCESSO | FLUXOGRAMA DE PROCESSO | A4 (210x297mm) | 01 | Revisão dos fluxogramas | Ter 18/08/26 | Ter 21/07/26 |
| 960 | 1.33.12.1 | Emissão inicial | 10d | 2026-07-28 | 2026-08-11 | 951SF | 2026-07-21 | 2026-08-04 | 10d | 30d | 0d |  |  |  | PROCESSO |  |  |  |  | Ter 04/08/26 |  |
| 961 | 1.33.12.2 | Avaliação do Cliente | 5d | 2026-08-11 | 2026-08-18 | 960 | 2026-08-04 | 2026-08-11 | 5d | 30d | 0d |  |  |  | PROCESSO |  |  |  |  | Ter 11/08/26 |  |
| 962 | 1.33.12.3 | Atendimento de Comentário | 3d | 2026-08-18 | 2026-08-21 | 961 | 2026-08-11 | 2026-08-14 | 3d | 30d | 0d |  |  |  | PROCESSO |  |  |  |  | Sex 14/08/26 |  |
| 963 | 1.33.12.4 | Aprovação | 2d | 2026-08-21 | 2026-08-25 | 962 | 2026-08-14 | 2026-08-18 | 2d | 30d |  |  |  |  | PROCESSO |  |  |  |  | Ter 18/08/26 |  |
| 964 | 1.33.13 | **FG-F0009-0302-MB-P-00010** | 22d | 2026-07-28 | 2026-08-27 |  | 2026-07-21 | 2026-08-20 | 22d | 28d |  | FG - Fluxogramas / P | 03 - REDUÇÃO | 02 - CARREGAMENTO | PROCESSO | FLUXOGRAMA DE PROCESSO | A4 (210x297mm) | 01 | Revisão dos fluxogramas | Qui 20/08/26 | Ter 21/07/26 |
| 965 | 1.33.13.1 | Emissão inicial | 10d | 2026-07-28 | 2026-08-11 | 951SF | 2026-07-21 | 2026-08-04 | 10d | 28d | 0d |  |  |  | PROCESSO |  |  |  |  | Ter 04/08/26 |  |
| 966 | 1.33.13.2 | Avaliação do Cliente | 5d | 2026-08-11 | 2026-08-18 | 965 | 2026-08-04 | 2026-08-11 | 5d | 28d | 0d |  |  |  | PROCESSO |  |  |  |  | Ter 11/08/26 |  |
| 967 | 1.33.13.3 | Atendimento de Comentário | 5d | 2026-08-18 | 2026-08-25 | 966 | 2026-08-11 | 2026-08-18 | 5d | 28d | 0d |  |  |  | PROCESSO |  |  |  |  | Ter 18/08/26 |  |
| 968 | 1.33.13.4 | Aprovação | 2d | 2026-08-25 | 2026-08-27 | 967 | 2026-08-18 | 2026-08-20 | 2d | 28d |  |  |  |  | PROCESSO |  |  |  |  | Qui 20/08/26 |  |
| 969 | 1.33.14 | **FG-F0009-0302-MB-P-00011** | 20d | 2026-07-28 | 2026-08-25 |  | 2026-07-21 | 2026-08-18 | 20d | 30d |  | FG - Fluxogramas / P | 03 - REDUÇÃO | 02 - CARREGAMENTO | PROCESSO | FLUXOGRAMA DE PROCESSO | A4 (210x297mm) | 01 | Revisão dos fluxogramas | Ter 18/08/26 | Ter 21/07/26 |
| 970 | 1.33.14.1 | Emissão inicial | 10d | 2026-07-28 | 2026-08-11 | 951SF | 2026-07-21 | 2026-08-04 | 10d | 30d | 0d |  |  |  | PROCESSO |  |  |  |  | Ter 04/08/26 |  |
| 971 | 1.33.14.2 | Avaliação do Cliente | 5d | 2026-08-11 | 2026-08-18 | 970 | 2026-08-04 | 2026-08-11 | 5d | 30d | 0d |  |  |  | PROCESSO |  |  |  |  | Ter 11/08/26 |  |
| 972 | 1.33.14.3 | Atendimento de Comentário | 3d | 2026-08-18 | 2026-08-21 | 971 | 2026-08-11 | 2026-08-14 | 3d | 30d | 0d |  |  |  | PROCESSO |  |  |  |  | Sex 14/08/26 |  |
| 973 | 1.33.14.4 | Aprovação | 2d | 2026-08-21 | 2026-08-25 | 972 | 2026-08-14 | 2026-08-18 | 2d | 30d |  |  |  |  | PROCESSO |  |  |  |  | Ter 18/08/26 |  |

| ID | WBS | Task | Duration | Start | Finish | Predecessors | Baseline start | Baseline finish | Baseline duration | Total slack | Free slack | Tipo de documento | Área | Sub-área | Disciplina | Título | Formato | Quantidade | Agrupamento Cecal | Término_LB_R0 | Início_LB_R0 |
| --- | --- | --- | --- | --- | --- | --- | --- | --- | --- | --- | --- | --- | --- | --- | --- | --- | --- | --- | --- | --- | --- |
| 974 | 1.33.15 | **FG-F0009-0307-MB-P-00001** | 20d | 2026-06-30 | 2026-07-28 |  | 2026-06-23 | 2026-07-21 | 20d | 0d |  | FG - Fluxogramas / P | 03 - REDUÇÃO | 07 - RESFRIAMENTO | PROCESSO | P&ID - SISTEMA DE REFRIGERAÇÃO HOT VALVES SECCIONAMENTO | A1 (841x594mm) | 01 | Revisão da instrumentação | Ter 21/07/26 | Ter 23/06/26 |
| 975 | 1.33.15.1 | Emissão inicial | 10d | 2026-06-30 | 2026-07-14 | 21 | 2026-06-23 | 2026-07-07 | 10d | 0d |  |  |  |  | PROCESSO |  |  |  |  | Ter 07/07/26 |  |
| 976 | 1.33.15.2 | Avaliação do Cliente | 5d | 2026-07-14 | 2026-07-21 | 975 | 2026-07-07 | 2026-07-14 | 5d | 0d |  |  |  |  | PROCESSO |  |  |  |  | Ter 14/07/26 |  |
| 977 | 1.33.15.3 | Atendimento de Comentário | 3d | 2026-07-21 | 2026-07-24 | 976 | 2026-07-14 | 2026-07-17 | 3d | 50d | 0d |  |  |  | PROCESSO |  |  |  |  | Sex 17/07/26 |  |
| 978 | 1.33.15.4 | Aprovação | 2d | 2026-07-24 | 2026-07-28 | 977 | 2026-07-17 | 2026-07-21 | 2d | 50d |  |  |  |  | PROCESSO |  |  |  |  | Ter 21/07/26 |  |
| 979 | 1.33.16 | **FG-F0009-0307-MB-P-00002** | 20d | 2026-06-30 | 2026-07-28 |  | 2026-06-23 | 2026-07-21 | 20d | 50d |  | FG - Fluxogramas / P | 03 - REDUÇÃO | 07 - RESFRIAMENTO | PROCESSO | PFD - SISTEMA DE RESFRIAMENTO | A1 (841x594mm) | 01 | Revisão dos fluxogramas | Ter 21/07/26 | Ter 23/06/26 |
| 980 | 1.33.16.1 | Emissão inicial | 10d | 2026-06-30 | 2026-07-14 | 976SF | 2026-06-23 | 2026-07-07 | 10d | 50d | 0d |  |  |  | PROCESSO |  |  |  |  | Ter 07/07/26 |  |
| 981 | 1.33.16.2 | Avaliação do Cliente | 5d | 2026-07-14 | 2026-07-21 | 980 | 2026-07-07 | 2026-07-14 | 5d | 50d | 0d |  |  |  | PROCESSO |  |  |  |  | Ter 14/07/26 |  |
| 982 | 1.33.16.3 | Atendimento de Comentário | 3d | 2026-07-21 | 2026-07-24 | 981 | 2026-07-14 | 2026-07-17 | 3d | 50d | 0d |  |  |  | PROCESSO |  |  |  |  | Sex 17/07/26 |  |
| 983 | 1.33.16.4 | Aprovação | 2d | 2026-07-24 | 2026-07-28 | 982 | 2026-07-17 | 2026-07-21 | 2d | 50d |  |  |  |  | PROCESSO |  |  |  |  | Ter 21/07/26 |  |
| 984 | 1.33.17 | **FG-F0009-0309-MB-P-00001** | 22d | 2026-06-30 | 2026-07-30 |  | 2026-06-23 | 2026-07-23 | 22d | 48d |  | FG - Fluxogramas / P | 03 - REDUÇÃO | 09 - FORNO TECNORED | PROCESSO | P&ID - CIRCUITO PRIMÁRIO E SECUNDÁRIO FORNO 1 E FORNO 2 | A1 (841x594mm) | 01 | Revisão da instrumentação | Qui 23/07/26 | Ter 23/06/26 |
| 985 | 1.33.17.1 | Emissão inicial | 10d | 2026-06-30 | 2026-07-14 | 976SF | 2026-06-23 | 2026-07-07 | 10d | 48d | 0d |  |  |  | PROCESSO |  |  |  |  | Ter 07/07/26 |  |
| 986 | 1.33.17.2 | Avaliação do Cliente | 5d | 2026-07-14 | 2026-07-21 | 985 | 2026-07-07 | 2026-07-14 | 5d | 48d | 0d |  |  |  | PROCESSO |  |  |  |  | Ter 14/07/26 |  |
| 987 | 1.33.17.3 | Atendimento de Comentário | 5d | 2026-07-21 | 2026-07-28 | 986 | 2026-07-14 | 2026-07-21 | 5d | 48d | 0d |  |  |  | PROCESSO |  |  |  |  | Ter 21/07/26 |  |
| 988 | 1.33.17.4 | Aprovação | 2d | 2026-07-28 | 2026-07-30 | 987 | 2026-07-21 | 2026-07-23 | 2d | 48d |  |  |  |  | PROCESSO |  |  |  |  | Qui 23/07/26 |  |
| 989 | 1.33.18 | **FG-F0009-0309-MB-P-00002** | 20d | 2026-06-30 | 2026-07-28 |  | 2026-06-23 | 2026-07-21 | 20d | 50d |  | FG - Fluxogramas / P | 03 - REDUÇÃO | 09 - FORNO TECNORED | PROCESSO | P&ID - CIRCUITO REFRIGERAÇÃO COOLING BOX | A1 (841x594mm) | 01 | Revisão da instrumentação | Ter 21/07/26 | Ter 23/06/26 |
| 990 | 1.33.18.1 | Emissão inicial | 10d | 2026-06-30 | 2026-07-14 | 976SF | 2026-06-23 | 2026-07-07 | 10d | 50d | 0d |  |  |  | PROCESSO |  |  |  |  | Ter 07/07/26 |  |
| 991 | 1.33.18.2 | Avaliação do Cliente | 5d | 2026-07-14 | 2026-07-21 | 990 | 2026-07-07 | 2026-07-14 | 5d | 50d | 0d |  |  |  | PROCESSO |  |  |  |  | Ter 14/07/26 |  |
| 992 | 1.33.18.3 | Atendimento de Comentário | 3d | 2026-07-21 | 2026-07-24 | 991 | 2026-07-14 | 2026-07-17 | 3d | 50d | 0d |  |  |  | PROCESSO |  |  |  |  | Sex 17/07/26 |  |
| 993 | 1.33.18.4 | Aprovação | 2d | 2026-07-24 | 2026-07-28 | 992 | 2026-07-17 | 2026-07-21 | 2d | 50d |  |  |  |  | PROCESSO |  |  |  |  | Ter 21/07/26 |  |
| 994 | 1.33.19 | **FG-F0009-0309-MB-P-00003** | 20d | 2026-06-30 | 2026-07-28 |  | 2026-06-23 | 2026-07-21 | 20d | 50d |  | FG - Fluxogramas / P | 03 - REDUÇÃO | 09 - FORNO TECNORED | PROCESSO | P&ID - CIRCUITO REFRIGERAÇÃO VENTANEIRAS | A1 (841x594mm) | 01 | Revisão da instrumentação | Ter 21/07/26 | Ter 23/06/26 |
| 995 | 1.33.19.1 | Emissão inicial | 10d | 2026-06-30 | 2026-07-14 | 976SF | 2026-06-23 | 2026-07-07 | 10d | 50d | 0d |  |  |  | PROCESSO |  |  |  |  | Ter 07/07/26 |  |
| 996 | 1.33.19.2 | Avaliação do Cliente | 5d | 2026-07-14 | 2026-07-21 | 995 | 2026-07-07 | 2026-07-14 | 5d | 50d | 0d |  |  |  | PROCESSO |  |  |  |  | Ter 14/07/26 |  |
| 997 | 1.33.19.3 | Atendimento de Comentário | 3d | 2026-07-21 | 2026-07-24 | 996 | 2026-07-14 | 2026-07-17 | 3d | 50d | 0d |  |  |  | PROCESSO |  |  |  |  | Sex 17/07/26 |  |
| 998 | 1.33.19.4 | Aprovação | 2d | 2026-07-24 | 2026-07-28 | 997 | 2026-07-17 | 2026-07-21 | 2d | 50d |  |  |  |  | PROCESSO |  |  |  |  | Ter 21/07/26 |  |

| ID | WBS | Task | Duration | Start | Finish | Predecessors | Baseline start | Baseline finish | Baseline duration | Total slack | Free slack | Tipo de documento | Área | Sub-área | Disciplina | Título | Formato | Quantidade | Agrupamento Cecal | Término_LB_R0 | Início_LB_R0 |
| --- | --- | --- | --- | --- | --- | --- | --- | --- | --- | --- | --- | --- | --- | --- | --- | --- | --- | --- | --- | --- | --- |
| 999 | 1.33.20 | **FG-F0009-0309-MB-P-00004** | 20d | 2026-06-30 | 2026-07-28 |  | 2026-06-23 | 2026-07-21 | 20d | 0d |  | FG - Fluxogramas / P | 03 - REDUÇÃO | 09 - FORNO TECNORED | PROCESSO | P&ID - CIRCUITO REFRIGERAÇÃO STAVES LATERAIS | A1 (841x594mm) | 01 | Revisão da instrumentação | Ter 21/07/26 | Ter 23/06/26 |
| 1000 | 1.33.20.1 | Emissão inicial | 10d | 2026-06-30 | 2026-07-14 | 976SF | 2026-06-23 | 2026-07-07 | 10d | 0d |  |  |  |  | PROCESSO |  |  |  |  | Ter 07/07/26 |  |
| 1001 | 1.33.20.2 | Avaliação do Cliente | 5d | 2026-07-14 | 2026-07-21 | 1000 | 2026-07-07 | 2026-07-14 | 5d | 50d | 0d |  |  |  | PROCESSO |  |  |  |  | Ter 14/07/26 |  |
| 1002 | 1.33.20.3 | Atendimento de Comentário | 3d | 2026-07-21 | 2026-07-24 | 1001 | 2026-07-14 | 2026-07-17 | 3d | 50d | 0d |  |  |  | PROCESSO |  |  |  |  | Sex 17/07/26 |  |
| 1003 | 1.33.20.4 | Aprovação | 2d | 2026-07-24 | 2026-07-28 | 1002 | 2026-07-17 | 2026-07-21 | 2d | 50d |  |  |  |  | PROCESSO |  |  |  |  | Ter 21/07/26 |  |
| 1004 | 1.33.21 | **FG-F0009-0309-MB-P-00005** | 20d | 2026-07-14 | 2026-08-11 |  | 2026-07-07 | 2026-08-04 | 20d | 0d |  | FG - Fluxogramas / P | 03 - REDUÇÃO | 09 - FORNO TECNORED | PROCESSO | P&ID - CIRCUITO REFRIGERAÇÃO STAVES FERRO FUNDIDO | A1 (841x594mm) | 01 | Revisão da instrumentação | Ter 04/08/26 | Ter 07/07/26 |
| 1005 | 1.33.21.1 | Emissão inicial | 10d | 2026-07-14 | 2026-07-28 | 1000 | 2026-07-07 | 2026-07-21 | 10d | 0d |  |  |  |  | PROCESSO |  |  |  |  | Ter 21/07/26 |  |
| 1006 | 1.33.21.2 | Avaliação do Cliente | 5d | 2026-07-28 | 2026-08-04 | 1005 | 2026-07-21 | 2026-07-28 | 5d | 0d |  |  |  |  | PROCESSO |  |  |  |  | Ter 28/07/26 |  |
| 1007 | 1.33.21.3 | Atendimento de Comentário | 3d | 2026-08-04 | 2026-08-07 | 1006 | 2026-07-28 | 2026-07-31 | 3d | 40d | 0d |  |  |  | PROCESSO |  |  |  |  | Sex 31/07/26 |  |
| 1008 | 1.33.21.4 | Aprovação | 2d | 2026-08-07 | 2026-08-11 | 1007 | 2026-07-31 | 2026-08-04 | 2d | 40d |  |  |  |  | PROCESSO |  |  |  |  | Ter 04/08/26 |  |
| 1009 | 1.33.22 | **FG-F0009-0309-MB-P-00006** | 20d | 2026-07-14 | 2026-08-11 |  | 2026-07-07 | 2026-08-04 | 20d | 40d |  | FG - Fluxogramas / P | 03 - REDUÇÃO | 09 - FORNO TECNORED | PROCESSO | P&ID - CIRCUITO REFRIGERAÇÃO CURTAIN-WALL | A1 (841x594mm) | 01 | Revisão da instrumentação | Ter 04/08/26 | Ter 07/07/26 |
| 1010 | 1.33.22.1 | Emissão inicial | 10d | 2026-07-14 | 2026-07-28 | 1006SF | 2026-07-07 | 2026-07-21 | 10d | 40d | 0d |  |  |  | PROCESSO |  |  |  |  | Ter 21/07/26 |  |
| 1011 | 1.33.22.2 | Avaliação do Cliente | 5d | 2026-07-28 | 2026-08-04 | 1010 | 2026-07-21 | 2026-07-28 | 5d | 40d | 0d |  |  |  | PROCESSO |  |  |  |  | Ter 28/07/26 |  |
| 1012 | 1.33.22.3 | Atendimento de Comentário | 3d | 2026-08-04 | 2026-08-07 | 1011 | 2026-07-28 | 2026-07-31 | 3d | 40d | 0d |  |  |  | PROCESSO |  |  |  |  | Sex 31/07/26 |  |
| 1013 | 1.33.22.4 | Aprovação | 2d | 2026-08-07 | 2026-08-11 | 1012 | 2026-07-31 | 2026-08-04 | 2d | 40d |  |  |  |  | PROCESSO |  |  |  |  | Ter 04/08/26 |  |
| 1014 | 1.33.23 | **FG-F0009-0309-MB-P-00007** | 20d | 2026-07-14 | 2026-08-11 |  | 2026-07-07 | 2026-08-04 | 20d | 40d |  | FG - Fluxogramas / P | 03 - REDUÇÃO | 09 - FORNO TECNORED | PROCESSO | P&ID - CIRCUITO REFRIGERAÇÃO CADINHO | A1 (841x594mm) | 01 | Revisão da instrumentação | Ter 04/08/26 | Ter 07/07/26 |
| 1015 | 1.33.23.1 | Emissão inicial | 10d | 2026-07-14 | 2026-07-28 | 1006SF | 2026-07-07 | 2026-07-21 | 10d | 40d | 0d |  |  |  | PROCESSO |  |  |  |  | Ter 21/07/26 |  |
| 1016 | 1.33.23.2 | Avaliação do Cliente | 5d | 2026-07-28 | 2026-08-04 | 1015 | 2026-07-21 | 2026-07-28 | 5d | 40d | 0d |  |  |  | PROCESSO |  |  |  |  | Ter 28/07/26 |  |
| 1017 | 1.33.23.3 | Atendimento de Comentário | 3d | 2026-08-04 | 2026-08-07 | 1016 | 2026-07-28 | 2026-07-31 | 3d | 40d | 0d |  |  |  | PROCESSO |  |  |  |  | Sex 31/07/26 |  |
| 1018 | 1.33.23.4 | Aprovação | 2d | 2026-08-07 | 2026-08-11 | 1017 | 2026-07-31 | 2026-08-04 | 2d | 40d |  |  |  |  | PROCESSO |  |  |  |  | Ter 04/08/26 |  |
| 1019 | 1.33.24 | **FG-F0009-0309-MB-P-00008** | 20d | 2026-07-14 | 2026-08-11 |  | 2026-07-07 | 2026-08-04 | 20d | 12d |  | FG - Fluxogramas / P | 03 - REDUÇÃO | 09 - FORNO TECNORED | PROCESSO | P&ID - CIRCUITO REFRIGERAÇÃO SOLEIRA | A1 (841x594mm) | 01 | Revisão da instrumentação | Ter 04/08/26 | Ter 07/07/26 |
| 1020 | 1.33.24.1 | Emissão inicial | 10d | 2026-07-14 | 2026-07-28 | 1006SF | 2026-07-07 | 2026-07-21 | 10d | 12d | 0d |  |  |  | PROCESSO |  |  |  |  | Ter 21/07/26 |  |
| 1021 | 1.33.24.2 | Avaliação do Cliente | 5d | 2026-07-28 | 2026-08-04 | 1020 | 2026-07-21 | 2026-07-28 | 5d | 40d | 0d |  |  |  | PROCESSO |  |  |  |  | Ter 28/07/26 |  |
| 1022 | 1.33.24.3 | Atendimento de Comentário | 3d | 2026-08-04 | 2026-08-07 | 1021 | 2026-07-28 | 2026-07-31 | 3d | 40d | 0d |  |  |  | PROCESSO |  |  |  |  | Sex 31/07/26 |  |
| 1023 | 1.33.24.4 | Aprovação | 2d | 2026-08-07 | 2026-08-11 | 1022 | 2026-07-31 | 2026-08-04 | 2d | 40d |  |  |  |  | PROCESSO |  |  |  |  | Ter 04/08/26 |  |

| ID | WBS | Task | Duration | Start | Finish | Predecessors | Baseline start | Baseline finish | Baseline duration | Total slack | Free slack | Tipo de documento | Área | Sub-área | Disciplina | Formato | Quantidade | Agrupamento Cecal | Término_LB_R0 | Início_LB_R0 |
| --- | --- | --- | --- | --- | --- | --- | --- | --- | --- | --- | --- | --- | --- | --- | --- | --- | --- | --- | --- | --- |
| 1024 | 1.33.25 | **FG-F0009-0309-MB-P-00009** | 20d | 2026-07-14 | 2026-08-11 |  | 2026-07-07 | 2026-08-04 | 20d | 40d |  | FG - Fluxogramas / P | 03 - REDUÇÃO | 09 - FORNO TECNORED | PROCESSO | A1 (841x594mm) | 01 | Revisão da instrumentação | Ter 04/08/26 | Ter 07/07/26 |
| 1025 | 1.33.25.1 | Emissão inicial | 10d | 2026-07-14 | 2026-07-28 | 1006SF | 2026-07-07 | 2026-07-21 | 10d | 40d | 0d |  |  |  | PROCESSO |  |  |  | Ter 21/07/26 |  |
| 1026 | 1.33.25.2 | Avaliação do Cliente | 5d | 2026-07-28 | 2026-08-04 | 1025 | 2026-07-21 | 2026-07-28 | 5d | 40d | 0d |  |  |  | PROCESSO |  |  |  | Ter 28/07/26 |  |
| 1027 | 1.33.25.3 | Atendimento de Comentário | 3d | 2026-08-04 | 2026-08-07 | 1026 | 2026-07-28 | 2026-07-31 | 3d | 40d | 0d |  |  |  | PROCESSO |  |  |  | Sex 31/07/26 |  |
| 1028 | 1.33.25.4 | Aprovação | 2d | 2026-08-07 | 2026-08-11 | 1027 | 2026-07-31 | 2026-08-04 | 2d | 40d |  |  |  |  | PROCESSO |  |  |  | Ter 04/08/26 |  |
| 1029 | 1.33.26 | **FG-F0009-0309-MB-P-00010** | 20d | 2026-07-14 | 2026-08-11 |  | 2026-07-07 | 2026-08-04 | 20d | 0d |  | FG - Fluxogramas / P | 03 - REDUÇÃO | 09 - FORNO TECNORED | PROCESSO | A1 (841x594mm) | 01 | Revisão dos fluxogramas | Ter 04/08/26 | Ter 07/07/26 |
| 1030 | 1.33.26.1 | Emissão inicial | 10d | 2026-07-14 | 2026-07-28 | 1006SF | 2026-07-07 | 2026-07-21 | 10d | 0d |  |  |  |  | PROCESSO |  |  |  | Ter 21/07/26 |  |
| 1031 | 1.33.26.2 | Avaliação do Cliente | 5d | 2026-07-28 | 2026-08-04 | 1030 | 2026-07-21 | 2026-07-28 | 5d | 13d | 0d |  |  |  | PROCESSO |  |  |  | Ter 28/07/26 |  |
| 1032 | 1.33.26.3 | Atendimento de Comentário | 3d | 2026-08-04 | 2026-08-07 | 1031 | 2026-07-28 | 2026-07-31 | 3d | 13d | 0d |  |  |  | PROCESSO |  |  |  | Sex 31/07/26 |  |
| 1033 | 1.33.26.4 | Aprovação | 2d | 2026-08-07 | 2026-08-11 | 1032 | 2026-07-31 | 2026-08-04 | 2d | 13d |  |  |  |  | PROCESSO |  |  |  | Ter 04/08/26 |  |
| 1034 | 1.33.27 | **LL-F0009-0309-MB-P-00001** | 25d | 2026-07-28 | 2026-09-01 |  | 2026-07-21 | 2026-08-25 | 25d | 10d |  | LL - Lista de Linhas | 03 - REDUÇÃO | 09 - FORNO TECNORED | PROCESSO | A4 (210x297mm) | 10 | Readequação das utilidades no prédio do forno | Ter 25/08/26 | Ter 21/07/26 |
| 1035 | 1.33.27.1 | Emissão inicial | 15d | 2026-07-28 | 2026-08-18 | 1030 | 2026-07-21 | 2026-08-11 | 15d | 10d | 0d |  |  |  | PROCESSO |  |  |  | Ter 11/08/26 |  |
| 1036 | 1.33.27.2 | Avaliação do Cliente | 5d | 2026-08-18 | 2026-08-25 | 1035 | 2026-08-11 | 2026-08-18 | 5d | 25d | 0d |  |  |  | PROCESSO |  |  |  | Ter 18/08/26 |  |
| 1037 | 1.33.27.3 | Atendimento de Comentário | 3d | 2026-08-25 | 2026-08-28 | 1036 | 2026-08-18 | 2026-08-21 | 3d | 25d | 0d |  |  |  | PROCESSO |  |  |  | Sex 21/08/26 |  |
| 1038 | 1.33.27.4 | Aprovação | 2d | 2026-08-28 | 2026-09-01 | 1037 | 2026-08-21 | 2026-08-25 | 2d | 25d |  |  |  |  | PROCESSO |  |  |  | Ter 25/08/26 |  |
| 1039 | 1.33.28 | **MC-F0009-0302-MB-P-00001** | 25d | 2026-07-28 | 2026-09-01 |  | 2026-07-21 | 2026-08-25 | 25d | 25d |  | MC - Memória de Cálculo | 03 - REDUÇÃO | 02 - CARREGAMENTO | PROCESSO | A4 (210x297mm) | 10 | Revisão dos balanços de massa e energia utilidades | Ter 25/08/26 | Ter 21/07/26 |
| 1040 | 1.33.28.1 | Emissão inicial | 15d | 2026-07-28 | 2026-08-18 | 1030 | 2026-07-21 | 2026-08-11 | 15d | 25d | 0d |  |  |  | PROCESSO |  |  |  | Ter 11/08/26 |  |
| 1041 | 1.33.28.2 | Avaliação do Cliente | 5d | 2026-08-18 | 2026-08-25 | 1040 | 2026-08-11 | 2026-08-18 | 5d | 25d | 0d |  |  |  | PROCESSO |  |  |  | Ter 18/08/26 |  |
| 1042 | 1.33.28.3 | Atendimento de Comentário | 3d | 2026-08-25 | 2026-08-28 | 1041 | 2026-08-18 | 2026-08-21 | 3d | 25d | 0d |  |  |  | PROCESSO |  |  |  | Sex 21/08/26 |  |
| 1043 | 1.33.28.4 | Aprovação | 2d | 2026-08-28 | 2026-09-01 | 1042 | 2026-08-21 | 2026-08-25 | 2d | 25d |  |  |  |  | PROCESSO |  |  |  | Ter 25/08/26 |  |
| 1044 | 1.33.29 | **MC-F0009-0309-MB-P-00001** | 28d | 2026-07-28 | 2026-09-04 |  | 2026-07-21 | 2026-08-28 | 28d | 22d |  | MC - Memória de Cálculo | 03 - REDUÇÃO | 09 - FORNO TECNORED | PROCESSO | A4 (210x297mm) | 10 | Revisão dos balanços de massa e energia utilidades | Sex 28/08/26 | Ter 21/07/26 |
| 1045 | 1.33.29.1 | Emissão inicial | 15d | 2026-07-28 | 2026-08-18 | 1030 | 2026-07-21 | 2026-08-11 | 15d | 22d | 0d |  |  |  | PROCESSO |  |  |  | Ter 11/08/26 |  |
| 1046 | 1.33.29.2 | Avaliação do Cliente | 5d | 2026-08-18 | 2026-08-25 | 1045 | 2026-08-11 | 2026-08-18 | 5d | 22d | 0d |  |  |  | PROCESSO |  |  |  | Ter 18/08/26 |  |
| 1047 | 1.33.29.3 | Atendimento de Comentário | 3d | 2026-08-25 | 2026-08-28 | 1046 | 2026-08-18 | 2026-08-21 | 3d | 22d | 0d |  |  |  | PROCESSO |  |  |  | Sex 21/08/26 |  |
| 1048 | 1.33.29.4 | Aprovação | 5d | 2026-08-28 | 2026-09-04 | 1047 | 2026-08-21 | 2026-08-28 | 5d | 22d |  |  |  |  | PROCESSO |  |  |  | Sex 28/08/26 |  |

Notes:
- 1024: Título: P&ID - FORNO TECNORED
- 1029: Título: PFD - FORNO PROPRIO
- 1034: Título: ÍNDICE DE LINHAS
- 1039: Título: MEMORIAL DE CÁLCULO - PRÉ DIMENSIONAMENTO CAPACIDADE SISTEMA CARREGAMENTO
- 1044: Título: MEMORIAL DE CÁLCULO - ÁGUA INDUSTRIAL E ÁGUA DE PROCESSO (SPRAY DA CARGA)

| ID | WBS | Task | Duration | Start | Finish | Predecessors | Baseline start | Baseline finish | Baseline duration | Total slack | Free slack | Tipo de documento | Área | Sub-área | Disciplina | Formato | Quantidade | Agrupamento Cecal | Término_LB_R0 | Início_LB_R0 |
| --- | --- | --- | --- | --- | --- | --- | --- | --- | --- | --- | --- | --- | --- | --- | --- | --- | --- | --- | --- | --- |
| 1049 | 1.33.30 | **MC-F0009-0309-MB-P-00002** | 25d | 2026-07-28 | 2026-09-01 |  | 2026-07-21 | 2026-08-25 | 25d | 25d |  | MC - Memória de Cálculo | 03 - REDUÇÃO | 09 - FORNO TECNORED | PROCESSO | A4 (210x297mm) | 10 | Revisão dos balanços de massa e energia utilidades | Ter 25/08/26 | Ter 21/07/26 |
| 1050 | 1.33.30.1 | Emissão inicial | 15d | 2026-07-28 | 2026-08-18 | 1030 | 2026-07-21 | 2026-08-11 | 15d | 25d | 0d |  |  |  | PROCESSO |  |  |  | Ter 11/08/26 |  |
| 1051 | 1.33.30.2 | Avaliação do Cliente | 5d | 2026-08-18 | 2026-08-25 | 1050 | 2026-08-11 | 2026-08-18 | 5d | 25d | 0d |  |  |  | PROCESSO |  |  |  | Ter 18/08/26 |  |
| 1052 | 1.33.30.3 | Atendimento de Comentário | 3d | 2026-08-25 | 2026-08-28 | 1051 | 2026-08-18 | 2026-08-21 | 3d | 25d | 0d |  |  |  | PROCESSO |  |  |  | Sex 21/08/26 |  |
| 1053 | 1.33.30.4 | Aprovação | 2d | 2026-08-28 | 2026-09-01 | 1052 | 2026-08-21 | 2026-08-25 | 2d | 25d |  |  |  |  | PROCESSO |  |  |  | Ter 25/08/26 |  |
| 1054 | 1.33.31 | **MC-F0009-0309-MB-P-00003** | 25d | 2026-07-28 | 2026-09-01 |  | 2026-07-21 | 2026-08-25 | 25d | 25d |  | MC - Memória de Cálculo | 03 - REDUÇÃO | 09 - FORNO TECNORED | PROCESSO | A4 (210x297mm) | 10 | Revisão dos balanços de massa e energia utilidades | Ter 25/08/26 | Ter 21/07/26 |
| 1055 | 1.33.31.1 | Emissão inicial | 15d | 2026-07-28 | 2026-08-18 | 1030 | 2026-07-21 | 2026-08-11 | 15d | 25d | 0d |  |  |  | PROCESSO |  |  |  | Ter 11/08/26 |  |
| 1056 | 1.33.31.2 | Avaliação do Cliente | 5d | 2026-08-18 | 2026-08-25 | 1055 | 2026-08-11 | 2026-08-18 | 5d | 25d | 0d |  |  |  | PROCESSO |  |  |  | Ter 18/08/26 |  |
| 1057 | 1.33.31.3 | Atendimento de Comentário | 3d | 2026-08-25 | 2026-08-28 | 1056 | 2026-08-18 | 2026-08-21 | 3d | 25d | 0d |  |  |  | PROCESSO |  |  |  | Sex 21/08/26 |  |
| 1058 | 1.33.31.4 | Aprovação | 2d | 2026-08-28 | 2026-09-01 | 1057 | 2026-08-21 | 2026-08-25 | 2d | 25d |  |  |  |  | PROCESSO |  |  |  | Ter 25/08/26 |  |
| 1059 | 1.33.32 | **MC-F0009-0309-MB-P-00004** | 25d | 2026-07-28 | 2026-09-01 |  | 2026-07-21 | 2026-08-25 | 25d | 0d |  | MC - Memória de Cálculo | 03 - REDUÇÃO | 09 - FORNO TECNORED | PROCESSO | A4 (210x297mm) | 10 | Revisão dos balanços de massa e energia utilidades | Ter 25/08/26 | Ter 21/07/26 |
| 1060 | 1.33.32.1 | Emissão inicial | 15d | 2026-07-28 | 2026-08-18 | 1030 | 2026-07-21 | 2026-08-11 | 15d | 0d |  |  |  |  | PROCESSO |  |  |  | Ter 11/08/26 |  |
| 1061 | 1.33.32.2 | Avaliação do Cliente | 5d | 2026-08-18 | 2026-08-25 | 1060 | 2026-08-11 | 2026-08-18 | 5d | 25d | 0d |  |  |  | PROCESSO |  |  |  | Ter 18/08/26 |  |
| 1062 | 1.33.32.3 | Atendimento de Comentário | 3d | 2026-08-25 | 2026-08-28 | 1061 | 2026-08-18 | 2026-08-21 | 3d | 25d | 0d |  |  |  | PROCESSO |  |  |  | Sex 21/08/26 |  |
| 1063 | 1.33.32.4 | Aprovação | 2d | 2026-08-28 | 2026-09-01 | 1062 | 2026-08-21 | 2026-08-25 | 2d | 25d |  |  |  |  | PROCESSO |  |  |  | Ter 25/08/26 |  |
| 1064 | 1.33.33 | **MC-F0009-0309-MB-P-00005** | 25d | 2026-08-18 | 2026-09-22 |  | 2026-08-11 | 2026-09-15 | 25d | 10d |  | MC - Memória de Cálculo | 03 - REDUÇÃO | 09 - FORNO TECNORED | PROCESSO | A4 (210x297mm) | 10 | Revisão dos balanços de massa e energia utilidades | Ter 15/09/26 | Ter 11/08/26 |
| 1065 | 1.33.33.1 | Emissão inicial | 15d | 2026-08-18 | 2026-09-08 | 1060 | 2026-08-11 | 2026-09-01 | 15d | 10d | 0d |  |  |  | PROCESSO |  |  |  | Ter 01/09/26 |  |
| 1066 | 1.33.33.2 | Avaliação do Cliente | 5d | 2026-09-08 | 2026-09-15 | 1065 | 2026-09-01 | 2026-09-08 | 5d | 10d | 0d |  |  |  | PROCESSO |  |  |  | Ter 08/09/26 |  |
| 1067 | 1.33.33.3 | Atendimento de Comentário | 3d | 2026-09-15 | 2026-09-18 | 1066 | 2026-09-08 | 2026-09-11 | 3d | 10d | 0d |  |  |  | PROCESSO |  |  |  | Sex 11/09/26 |  |
| 1068 | 1.33.33.4 | Aprovação | 2d | 2026-09-18 | 2026-09-22 | 1067 | 2026-09-11 | 2026-09-15 | 2d | 10d |  |  |  |  | PROCESSO |  |  |  | Ter 15/09/26 |  |
| 1069 | 1.33.34 | **MC-F0009-0309-MB-P-00006** | 25d | 2026-08-18 | 2026-09-22 |  | 2026-08-11 | 2026-09-15 | 25d | 10d |  | MC - Memória de Cálculo | 03 - REDUÇÃO | 09 - FORNO TECNORED | PROCESSO | A4 (210x297mm) | 10 | Revisão dos balanços de massa e energia utilidades | Ter 15/09/26 | Ter 11/08/26 |
| 1070 | 1.33.34.1 | Emissão inicial | 15d | 2026-08-18 | 2026-09-08 | 1060 | 2026-08-11 | 2026-09-01 | 15d | 10d | 0d |  |  |  | PROCESSO |  |  |  | Ter 01/09/26 |  |
| 1071 | 1.33.34.2 | Avaliação do Cliente | 5d | 2026-09-08 | 2026-09-15 | 1070 | 2026-09-01 | 2026-09-08 | 5d | 10d | 0d |  |  |  | PROCESSO |  |  |  | Ter 08/09/26 |  |
| 1072 | 1.33.34.3 | Atendimento de Comentário | 3d | 2026-09-15 | 2026-09-18 | 1071 | 2026-09-08 | 2026-09-11 | 3d | 10d | 0d |  |  |  | PROCESSO |  |  |  | Sex 11/09/26 |  |
| 1073 | 1.33.34.4 | Aprovação | 2d | 2026-09-18 | 2026-09-22 | 1072 | 2026-09-11 | 2026-09-15 | 2d | 10d |  |  |  |  | PROCESSO |  |  |  | Ter 15/09/26 |  |

Notes:
- 1049: Título: MEMORIAL DE CÁLCULO - PRÉ DIMENSIONAMENTO DE ÁGUA DE RESFRIAMENTO
- 1054: Título: BALANÇO TÉRMICO - ÁGUA DE RESFRIAMENTO
- 1059: Título: MEMORIAL DE CÁLCULO - PRÉ DIMENSIONAMENTO DE NITROGÊNIO
- 1064: Título: MEMORIAL DE CÁLCULO - PRÉ DIMENSIONAMENTO DE OXIGÊNIO
- 1069: Título: MEMORIAL DE CÁLCULO - DISTRIBUIÇÃO DE ÁGUA POTÁVEL

| ID | WBS | Task | Type | Duration | Start | Finish | Predecessors | Complete | Baseline start | Baseline finish | Baseline duration | Total slack | Free slack | Tipo de documento | Área | Sub-área | Disciplina | Título | Formato | Quantidade | Agrupamento Cecal | Término_LB_R0 | Início_LB_R0 |
| --- | --- | --- | --- | --- | --- | --- | --- | --- | --- | --- | --- | --- | --- | --- | --- | --- | --- | --- | --- | --- | --- | --- | --- |
| 1074 | 1.33.35 | **MC-F0009-0309-MB-P-00007** |  | 28d | 2026-08-18 | 2026-09-25 |  |  | 2026-08-11 | 2026-09-18 | 28d | 0d |  | MC - Memória de Cálculo | 03 - REDUÇÃO | 09 - FORNO TECNORED | PROCESSO | MEMORIAL DE CÁLCULO - AR COMPRIMIDO | A4 (210x297mm) | 10 | Revisão dos balanços de massa e energia utilidades | Sex 18/09/26 | Ter 11/08/26 |
| 1075 | 1.33.35.1 | Emissão inicial |  | 15d | 2026-08-18 | 2026-09-08 | 1060 |  | 2026-08-11 | 2026-09-01 | 15d | 0d |  |  |  |  | PROCESSO |  |  |  |  | Ter 01/09/26 |  |
| 1076 | 1.33.35.2 | Avaliação do Cliente |  | 5d | 2026-09-08 | 2026-09-15 | 1075 |  | 2026-09-01 | 2026-09-08 | 5d | 7d | 0d |  |  |  | PROCESSO |  |  |  |  | Ter 08/09/26 |  |
| 1077 | 1.33.35.3 | Atendimento de Comentário |  | 3d | 2026-09-15 | 2026-09-18 | 1076 |  | 2026-09-08 | 2026-09-11 | 3d | 7d | 0d |  |  |  | PROCESSO |  |  |  |  | Sex 11/09/26 |  |
| 1078 | 1.33.35.4 | Aprovação |  | 5d | 2026-09-18 | 2026-09-25 | 1077 |  | 2026-09-11 | 2026-09-18 | 5d | 7d |  |  |  |  | PROCESSO |  |  |  |  | Sex 18/09/26 |  |
| 1079 | 1.33.36 | **MD-F0009-0302-MB-P-00001** |  | 25d | 2026-08-25 | 2026-09-29 |  |  | 2026-04-23 | 2026-09-22 | 25d | 5d |  | MD - Memorial Descritivo | 03 - REDUÇÃO | 02 - CARREGAMENTO | PROCESSO | MEMORIAL DESCRITIVO SISTEMA DE CARREGAMENTO | A4 (210x297mm) | 10 | Revisão do sistema de carregamento | Ter 22/09/26 | Qua 19/08/26 |
| 1080 | 1.33.36.1 | Emissão inicial |  | 15d | 2026-08-25 | 2026-09-15 | 159 |  | 2026-04-23 | 2026-09-08 | 15d | 5d | 0d |  |  |  | PROCESSO |  |  |  |  | Ter 08/09/26 |  |
| 1081 | 1.33.36.2 | Avaliação do Cliente |  | 5d | 2026-09-15 | 2026-09-22 | 1080 |  | 2026-05-14 | 2026-09-15 | 5d | 5d | 0d |  |  |  | PROCESSO |  |  |  |  | Ter 15/09/26 |  |
| 1082 | 1.33.36.3 | Atendimento de Comentário |  | 3d | 2026-09-22 | 2026-09-25 | 1081 |  | 2026-05-21 | 2026-09-18 | 3d | 5d | 0d |  |  |  | PROCESSO |  |  |  |  | Sex 18/09/26 |  |
| 1083 | 1.33.36.4 | Aprovação |  | 2d | 2026-09-25 | 2026-09-29 | 1082 |  | 2026-05-26 | 2026-09-22 | 2d | 5d |  |  |  |  | PROCESSO |  |  |  |  | Ter 22/09/26 |  |
| 1084 | 1.33.37 | **MD-F0009-0309-MB-P-00001** |  | 25d | 2026-08-25 | 2026-09-29 |  |  | 2026-08-19 | 2026-09-22 | 25d | 5d |  | MD - Memorial Descritivo | 03 - REDUÇÃO | 09 - FORNO TECNORED | PROCESSO | MEMORIAL DESCRITIVO DE PROCESSO | A4 (210x297mm) | 10 | Revisão dos fluxogramas | Ter 22/09/26 | Qua 19/08/26 |
| 1085 | 1.33.37.1 | Emissão inicial |  | 15d | 2026-08-25 | 2026-09-15 | 159 |  | 2026-08-19 | 2026-09-08 | 15d | 5d | 0d |  |  |  | PROCESSO |  |  |  |  | Ter 08/09/26 |  |
| 1086 | 1.33.37.2 | Avaliação do Cliente |  | 5d | 2026-09-15 | 2026-09-22 | 1085 |  | 2026-09-09 | 2026-09-15 | 5d | 5d | 0d |  |  |  | PROCESSO |  |  |  |  | Ter 15/09/26 |  |
| 1087 | 1.33.37.3 | Atendimento de Comentário |  | 3d | 2026-09-22 | 2026-09-25 | 1086 |  | 2026-09-16 | 2026-09-18 | 3d | 5d | 0d |  |  |  | PROCESSO |  |  |  |  | Sex 18/09/26 |  |
| 1088 | 1.33.37.4 | Aprovação |  | 2d | 2026-09-25 | 2026-09-29 | 1087 |  | 2026-09-21 | 2026-09-22 | 2d | 5d |  |  |  |  | PROCESSO |  |  |  |  | Ter 22/09/26 |  |
| 1089 | 1.33.38 | **MD-F0009-0309-MB-P-00002** |  | 25d | 2026-08-25 | 2026-09-29 |  |  | 2026-08-19 | 2026-09-22 | 25d | 5d |  | MD - Memorial Descritivo | 03 - REDUÇÃO | 09 - FORNO TECNORED | PROCESSO | MEMORIAL DESCRITIVO DE PROCESSO FORNO | A4 (210x297mm) | 10 | Revisão dos fluxogramas | Ter 22/09/26 | Qua 19/08/26 |
| 1090 | 1.33.38.1 | Emissão inicial |  | 15d | 2026-08-25 | 2026-09-15 | 159 |  | 2026-08-19 | 2026-09-08 | 15d | 5d | 0d |  |  |  | PROCESSO |  |  |  |  | Ter 08/09/26 |  |
| 1091 | 1.33.38.2 | Avaliação do Cliente |  | 5d | 2026-09-15 | 2026-09-22 | 1090 |  | 2026-09-09 | 2026-09-15 | 5d | 5d | 0d |  |  |  | PROCESSO |  |  |  |  | Ter 15/09/26 |  |
| 1092 | 1.33.38.3 | Atendimento de Comentário |  | 3d | 2026-09-22 | 2026-09-25 | 1091 |  | 2026-09-16 | 2026-09-18 | 3d | 5d | 0d |  |  |  | PROCESSO |  |  |  |  | Sex 18/09/26 |  |
| 1093 | 1.33.38.4 | Aprovação |  | 2d | 2026-09-25 | 2026-09-29 | 1092 |  | 2026-09-21 | 2026-09-22 | 2d | 5d |  |  |  |  | PROCESSO |  |  |  |  | Ter 22/09/26 |  |
| 1094 | 1.33.39 | **RT-F0009-0309-MB-P-00001** |  | 20d | 2026-08-25 | 2026-09-22 | 904 |  | 2026-08-19 | 2026-09-15 | 20d | 10d |  | RT - Relatório Técnico | 03 - REDUÇÃO | 09 - FORNO TECNORED | PROCESSO | ANALISE DO PRELIMINAR ESTRUTURAL DA CARCAÇA FORNO | A4 (210x297mm) | 15 | Revisão do projeto do forno - carcaça e refratário | Ter 15/09/26 | Qua 19/08/26 |
| 1095 | 1.33.39.1 | Emissão inicial |  | 10d | 2026-08-25 | 2026-09-08 | 159 |  | 2026-08-19 | 2026-09-01 | 10d | 10d | 0d |  |  |  | PROCESSO |  |  |  |  | Ter 01/09/26 |  |
| 1096 | 1.33.39.2 | Avaliação do Cliente |  | 5d | 2026-09-08 | 2026-09-15 | 1095 |  | 2026-09-02 | 2026-09-08 | 5d | 10d | 0d |  |  |  | PROCESSO |  |  |  |  | Ter 08/09/26 |  |
| 1097 | 1.33.39.3 | Atendimento de Comentário |  | 3d | 2026-09-15 | 2026-09-18 | 1096 |  | 2026-09-09 | 2026-09-11 | 3d | 10d | 0d |  |  |  | PROCESSO |  |  |  |  | Sex 11/09/26 |  |
| 1098 | 1.33.39.4 | Aprovação |  | 2d | 2026-09-18 | 2026-09-22 | 1097 |  | 2026-09-14 | 2026-09-15 | 2d | 10d |  |  |  |  | PROCESSO |  |  |  |  | Ter 15/09/26 |  |
| 1099 | 4.2.1.24 | DOCUMENTOS QUE NÃO SERÃO REVISADOS | manual | 1d | 2026-04-23 A | 2026-04-23 A | 1101SS | 100% |  |  |  |  |  |  |  |  |  |  |  |  |  |  |  |
| 1100 | 5.2.1.23 | DOCUMENTOS QUE NÃO SERÃO REVISADOS | manual | 1d | 2026-04-23 | 2026-04-23 | 1101SS |  |  |  |  |  |  |  |  |  |  |  |  |  |  |  |  |

| ID | WBS | Task | Duration | Start | Finish | Complete | Baseline start | Baseline finish | Baseline duration | Término_LB_R0 | Início_LB_R0 | Disciplina |
| --- | --- | --- | --- | --- | --- | --- | --- | --- | --- | --- | --- | --- |
| 1101 | 1.36 | **DOCUMENTOS QUE NÃO SERÃO REVISADOS** | 1d? | 2026-04-23 A | 2026-04-23 A | 100% | 2026-04-23 | 2026-04-23 | 1d? | Qui 23/04/26 | Qui 23/04/26 |  |
| 1102 | 1.36.1 | AG-F0005-0309-MB-A-00003 | 1d? | 2026-04-23 A | 2026-04-23 A | 100% | 2026-04-23 | 2026-04-23 | 1d? | Qui 23/04/26 |  | NÃO REVISADOS |
| 1103 | 1.36.2 | AG-F0005-0309-MB-A-00004 | 1d? | 2026-04-23 A | 2026-04-23 A | 100% | 2026-04-23 | 2026-04-23 | 1d? | Qui 23/04/26 |  | NÃO REVISADOS |
| 1104 | 1.36.3 | AG-F0005-0309-MB-A-00005 | 1d? | 2026-04-23 A | 2026-04-23 A | 100% | 2026-04-23 | 2026-04-23 | 1d? | Qui 23/04/26 |  |  |
| 1105 | 1.36.4 | MC-F0005-0309-MB-C-00001 | 1d? | 2026-04-23 A | 2026-04-23 A | 100% | 2026-04-23 | 2026-04-23 | 1d? | Qui 23/04/26 |  | NÃO REVISADOS |
| 1106 | 1.36.5 | MC-F0005-0309-MB-C-00002 | 1d? | 2026-04-23 A | 2026-04-23 A | 100% | 2026-04-23 | 2026-04-23 | 1d? | Qui 23/04/26 |  | NÃO REVISADOS |
| 1107 | 1.36.6 | MC-F0005-0309-MB-C-00003 | 1d? | 2026-04-23 A | 2026-04-23 A | 100% | 2026-04-23 | 2026-04-23 | 1d? | Qui 23/04/26 |  | NÃO REVISADOS |
| 1108 | 1.36.7 | MC-F0005-0309-MB-C-00004 | 1d? | 2026-04-23 A | 2026-04-23 A | 100% | 2026-04-23 | 2026-04-23 | 1d? | Qui 23/04/26 |  | NÃO REVISADOS |
| 1109 | 1.36.8 | MC-F0005-0309-MB-C-00005 | 1d? | 2026-04-23 A | 2026-04-23 A | 100% | 2026-04-23 | 2026-04-23 | 1d? | Qui 23/04/26 |  | NÃO REVISADOS |
| 1110 | 1.36.9 | OI-F0005-0309-MB-G-00001 | 1d? | 2026-04-23 A | 2026-04-23 A | 100% | 2026-04-23 | 2026-04-23 | 1d? | Qui 23/04/26 |  | NÃO REVISADOS |
| 1111 | 1.36.10 | OI-F0005-0309-MB-G-00002 | 1d? | 2026-04-23 A | 2026-04-23 A | 100% | 2026-04-23 | 2026-04-23 | 1d? | Qui 23/04/26 |  | NÃO REVISADOS |
| 1112 | 1.36.11 | PX-F0005-0309-MB-G-00001 | 1d? | 2026-04-23 A | 2026-04-23 A | 100% | 2026-04-23 | 2026-04-23 | 1d? | Qui 23/04/26 |  | NÃO REVISADOS |
| 1113 | 1.36.12 | MD-F0005-0309-MB-G-00001 | 1d? | 2026-04-23 A | 2026-04-23 A | 100% | 2026-04-23 | 2026-04-23 | 1d? | Qui 23/04/26 |  | NÃO REVISADOS |
| 1114 | 1.36.13 | FD-F0005-0309-MB-J-00001 | 1d? | 2026-04-23 A | 2026-04-23 A | 100% | 2026-04-23 | 2026-04-23 | 1d? | Qui 23/04/26 |  | NÃO REVISADOS |
| 1115 | 1.36.14 | FD-F0005-0309-MB-J-00010 | 1d? | 2026-04-23 A | 2026-04-23 A | 100% | 2026-04-23 | 2026-04-23 | 1d? | Qui 23/04/26 |  | NÃO REVISADOS |
| 1116 | 1.36.15 | FD-F0005-0309-MB-J-00011 | 1d? | 2026-04-23 A | 2026-04-23 A | 100% | 2026-04-23 | 2026-04-23 | 1d? | Qui 23/04/26 |  | NÃO REVISADOS |
| 1117 | 1.36.16 | FD-F0005-0309-MB-J-00014 | 1d? | 2026-04-23 A | 2026-04-23 A | 100% | 2026-04-23 | 2026-04-23 | 1d? | Qui 23/04/26 |  | NÃO REVISADOS |
| 1118 | 1.36.17 | FD-F0005-0309-MB-J-00015 | 1d? | 2026-04-23 A | 2026-04-23 A | 100% | 2026-04-23 | 2026-04-23 | 1d? | Qui 23/04/26 |  | NÃO REVISADOS |
| 1119 | 1.36.18 | FD-F0005-0309-MB-J-00017 | 1d? | 2026-04-23 A | 2026-04-23 A | 100% | 2026-04-23 | 2026-04-23 | 1d? | Qui 23/04/26 |  | NÃO REVISADOS |
| 1120 | 1.36.19 | FD-F0005-0309-MB-J-00022 | 1d? | 2026-04-23 A | 2026-04-23 A | 100% | 2026-04-23 | 2026-04-23 | 1d? | Qui 23/04/26 |  | NÃO REVISADOS |
| 1121 | 1.36.20 | FD-F0005-0309-MB-J-00023 | 1d? | 2026-04-23 A | 2026-04-23 A | 100% | 2026-04-23 | 2026-04-23 | 1d? | Qui 23/04/26 |  | NÃO REVISADOS |
| 1122 | 1.36.21 | FD-F0005-0309-MB-J-00024 | 1d? | 2026-04-23 A | 2026-04-23 A | 100% | 2026-04-23 | 2026-04-23 | 1d? | Qui 23/04/26 |  | NÃO REVISADOS |
| 1123 | 1.36.22 | ET-F0005-0309-MB-J-00001 | 1d? | 2026-04-23 A | 2026-04-23 A | 100% | 2026-04-23 | 2026-04-23 | 1d? | Qui 23/04/26 |  | NÃO REVISADOS |
| 1124 | 1.36.23 | ET-F0005-0309-MB-J-00002 | 1d? | 2026-04-23 A | 2026-04-23 A | 100% | 2026-04-23 | 2026-04-23 | 1d? | Qui 23/04/26 |  | NÃO REVISADOS |
| 1125 | 1.36.24 | AC-F0005-0309-MB-J-00001 | 1d? | 2026-04-23 A | 2026-04-23 A | 100% | 2026-04-23 | 2026-04-23 | 1d? | Qui 23/04/26 |  | NÃO REVISADOS |
| 1126 | 1.36.25 | FD-F0005-0300-MB-J-00001 | 1d? | 2026-04-23 A | 2026-04-23 A | 100% | 2026-04-23 | 2026-04-23 | 1d? | Qui 23/04/26 |  | NÃO REVISADOS |
| 1127 | 1.36.26 | FD-F0005-0300-MB-J-00002 | 1d? | 2026-04-23 A | 2026-04-23 A | 100% | 2026-04-23 | 2026-04-23 | 1d? | Qui 23/04/26 |  | NÃO REVISADOS |
| 1128 | 1.36.27 | FD-F0005-0300-MB-J-00003 | 1d? | 2026-04-23 A | 2026-04-23 A | 100% | 2026-04-23 | 2026-04-23 | 1d? | Qui 23/04/26 |  | NÃO REVISADOS |
| 1129 | 1.36.28 | FD-F0005-0300-MB-J-00004 | 1d? | 2026-04-23 A | 2026-04-23 A | 100% | 2026-04-23 | 2026-04-23 | 1d? | Qui 23/04/26 |  | NÃO REVISADOS |
| 1130 | 1.36.29 | FD-F0005-0300-MB-J-00005 | 1d? | 2026-04-23 A | 2026-04-23 A | 100% | 2026-04-23 | 2026-04-23 | 1d? | Qui 23/04/26 |  | NÃO REVISADOS |
| 1131 | 1.36.30 | FD-F0005-0300-MB-J-00006 | 1d? | 2026-04-23 A | 2026-04-23 A | 100% | 2026-04-23 | 2026-04-23 | 1d? | Qui 23/04/26 |  | NÃO REVISADOS |
| 1132 | 1.36.31 | FD-F0005-0300-MB-J-00007 | 1d? | 2026-04-23 A | 2026-04-23 A | 100% | 2026-04-23 | 2026-04-23 | 1d? | Qui 23/04/26 |  | NÃO REVISADOS |
| 1133 | 1.36.32 | FD-F0005-0300-MB-J-00008 | 1d? | 2026-04-23 A | 2026-04-23 A | 100% | 2026-04-23 | 2026-04-23 | 1d? | Qui 23/04/26 |  | NÃO REVISADOS |
| 1134 | 1.36.33 | FD-F0005-0300-MB-J-00009 | 1d? | 2026-04-23 A | 2026-04-23 A | 100% | 2026-04-23 | 2026-04-23 | 1d? | Qui 23/04/26 |  | NÃO REVISADOS |
| 1135 | 1.36.34 | AG-F0005-0309-MB-G-00001 | 1d? | 2026-04-23 A | 2026-04-23 A | 100% | 2026-04-23 | 2026-04-23 | 1d? | Qui 23/04/26 |  | NÃO REVISADOS |
| 1136 | 1.36.35 | AG-F0005-0309-MB-G-00002 | 1d? | 2026-04-23 A | 2026-04-23 A | 100% | 2026-04-23 | 2026-04-23 | 1d? | Qui 23/04/26 |  | NÃO REVISADOS |
| 1137 | 1.36.36 | AG-F0005-0309-MB-G-00003 | 1d? | 2026-04-23 A | 2026-04-23 A | 100% | 2026-04-23 | 2026-04-23 | 1d? | Qui 23/04/26 |  | NÃO REVISADOS |
| 1138 | 1.36.37 | RT-F0005-0302-MB-L-00002 | 1d? | 2026-04-23 A | 2026-04-23 A | 100% | 2026-04-23 | 2026-04-23 | 1d? | Qui 23/04/26 |  | NÃO REVISADOS |
| 1139 | 1.36.38 | RT-F0005-0302-MB-L-00003 | 1d? | 2026-04-23 A | 2026-04-23 A | 100% | 2026-04-23 | 2026-04-23 | 1d? | Qui 23/04/26 |  | NÃO REVISADOS |
| 1140 | 1.36.39 | RT-F0005-0302-MB-L-00004 | 1d? | 2026-04-23 A | 2026-04-23 A | 100% | 2026-04-23 | 2026-04-23 | 1d? | Qui 23/04/26 |  | NÃO REVISADOS |
| 1141 | 1.36.40 | RT-F0005-0302-MB-L-00005 | 1d? | 2026-04-23 A | 2026-04-23 A | 100% | 2026-04-23 | 2026-04-23 | 1d? | Qui 23/04/26 |  | NÃO REVISADOS |
| 1142 | 1.36.41 | RT-F0005-0302-MB-L-00006 | 1d? | 2026-04-23 A | 2026-04-23 A | 100% | 2026-04-23 | 2026-04-23 | 1d? | Qui 23/04/26 |  | NÃO REVISADOS |
| 1143 | 1.36.42 | RT-F0005-0302-MB-L-00007 | 1d? | 2026-04-23 A | 2026-04-23 A | 100% | 2026-04-23 | 2026-04-23 | 1d? | Qui 23/04/26 |  | NÃO REVISADOS |
| 1144 | 1.36.43 | DT-F0005-0309-MB-L-00020 | 1d? | 2026-04-23 A | 2026-04-23 A | 100% | 2026-04-23 | 2026-04-23 | 1d? | Qui 23/04/26 |  | NÃO REVISADOS |
| 1145 | 1.36.44 | OI-F0005-0309-MB-M-00001 | 1d? | 2026-04-23 A | 2026-04-23 A | 100% | 2026-04-23 | 2026-04-23 | 1d? | Qui 23/04/26 |  | NÃO REVISADOS |
| 1146 | 1.36.45 | RT-F0005-0309-MB-P-00002 | 1d? | 2026-04-23 A | 2026-04-23 A | 100% | 2026-04-23 | 2026-04-23 | 1d? | Qui 23/04/26 |  | NÃO REVISADOS |
| 1147 | 1.36.46 | RT-F0005-0309-MB-P-00003 | 1d? | 2026-04-23 A | 2026-04-23 A | 100% | 2026-04-23 | 2026-04-23 | 1d? | Qui 23/04/26 |  | NÃO REVISADOS |
| 1148 | 1.36.47 | MC-F0005-0309-MB-S-00001 | 1d? | 2026-04-23 A | 2026-04-23 A | 100% | 2026-04-23 | 2026-04-23 | 1d? | Qui 23/04/26 |  | NÃO REVISADOS |
| 1149 | 1.36.48 | MC-F0005-0309-MB-S-00002 | 1d? | 2026-04-23 A | 2026-04-23 A | 100% | 2026-04-23 | 2026-04-23 | 1d? | Qui 23/04/26 |  | NÃO REVISADOS |
| 1150 | 1.36.49 | FD-F0005-0309-MB-T-00001 | 1d? | 2026-04-23 A | 2026-04-23 A | 100% | 2026-04-23 | 2026-04-23 | 1d? | Qui 23/04/26 |  | NÃO REVISADOS |
| 1151 | 1.36.50 | FD-F0005-0309-MB-T-00002 | 1d? | 2026-04-23 A | 2026-04-23 A | 100% | 2026-04-23 | 2026-04-23 | 1d? | Qui 23/04/26 |  | NÃO REVISADOS |
| 1152 | 1.36.51 | CP-F0005-0309-MB-S-00001 | 1d? | 2026-04-23 A | 2026-04-23 A | 100% | 2026-04-23 | 2026-04-23 | 1d? | Qui 23/04/26 |  | NÃO REVISADOS |
| 1153 | 1.36.52 | DT-F0005-0309-MB-E-00001 | 1d? | 2026-04-23 A | 2026-04-23 A | 100% | 2026-04-23 | 2026-04-23 | 1d? | Qui 23/04/26 |  | NÃO REVISADOS |
| 1154 | 1.36.53 | LE-F0009-0309-MB-M-00002 | 1d? | 2026-04-23 A | 2026-04-23 A | 100% | 2026-04-23 | 2026-04-23 | 1d? | Qui 23/04/26 |  | NÃO REVISADOS |
| 1155 | 1.36.54 | MC-F0009-0309-MB-E-00001 | 1d? | 2026-04-23 A | 2026-04-23 A | 100% | 2026-04-23 | 2026-04-23 | 1d? | Qui 23/04/26 |  | NÃO REVISADOS |
| 1156 | 1.36.55 | MC-F0009-0309-MB-E-00002 | 1d? | 2026-04-23 A | 2026-04-23 A | 100% | 2026-04-23 | 2026-04-23 | 1d? | Qui 23/04/26 |  | NÃO REVISADOS |
| 1157 | 1.36.56 | MC-F0009-0309-MB-E-00003 | 1d? | 2026-04-23 A | 2026-04-23 A | 100% | 2026-04-23 | 2026-04-23 | 1d? | Qui 23/04/26 |  | NÃO REVISADOS |
| 1158 | 1.36.57 | MC-F0009-0309-MB-S-00001 | 1d? | 2026-04-23 A | 2026-04-23 A | 100% | 2026-04-23 | 2026-04-23 | 1d? | Qui 23/04/26 |  | NÃO REVISADOS |
| 1159 | 1.36.58 | PL-F0009-0309-MB-S-00001 | 1d? | 2026-04-23 A | 2026-04-23 A | 100% | 2026-04-23 | 2026-04-23 | 1d? | Qui 23/04/26 |  | NÃO REVISADOS |
| 1160 | 1.36.59 | PQ-F0009-0309-MB-J-00001 | 1d? | 2026-04-23 A | 2026-04-23 A | 100% | 2026-04-23 | 2026-04-23 | 1d? | Qui 23/04/26 |  |  |
| 1161 | 1.36.60 | RT-F0005-0309-MB-T-00001 | 1d? | 2026-04-23 A | 2026-04-23 A | 100% | 2026-04-23 | 2026-04-23 | 1d? | Qui 23/04/26 |  | NÃO REVISADOS |
| 1162 | 1.36.61 | RT-F0005-0309-MB-T-00002 | 1d? | 2026-04-23 A | 2026-04-23 A | 100% | 2026-04-23 | 2026-04-23 | 1d? | Qui 23/04/26 |  | NÃO REVISADOS |

Notes:
- 1102: Título: SALA OPERADORES
- 1103: Título: VESTIÁRIO / SANITÁRIO
- 1105: Título: PRÉ-DIMENSIONAMENTO DE CONCRETO FUNDAÇÃO FORNO
- 1106: Título: PRÉ-DIMENSIONAMENTO DE CONCRETO TORRE DE RESFRIAMENTO
- 1107: Título: PRÉ-DIMENSIONAMENTO DE CONCRETO SALA ELÉTRICA
- 1108: Título: PRÉ-DIMENSIONAMENTO DE CONCRETO SALA OPERADORES
- 1109: Título: PRÉ-DIMENSIONAMENTO DE CONCRETO PIPE RACK
- 1110: Título: ESTIMATIVA DE CUSTO MONTAGEM ELÉTRICA
- 1111: Título: ESTIMATIVA DE CUSTO INSTRUMENTAÇÃO
- 1112: Título: PLANILHA CAPEX
- 1113: Título: MEMORIAL DESCRITIVO - DADOS PARA PREENCHIMENTO DO MCE
- 1114: Título: FOLHA DE DADOS MEDIDORES ELETROMAGNÉTICOS
- 1115: Título: FOLHA DE DADOS RADAR TYPE LEVEL TRANSMITTER
- 1116: Título: FOLHA DE DADOS TEMPERATURE TRANSMITTER
- 1117: Título: FOLHA DE DADOS ROTAMETER WITH TRANSMITTER
- 1118: Título: FOLHA DE DADOS MAGNETOSTRICTIVE LEVEL TRANSMITTER
- 1119: Título: FOLHA DE DADOS ULTRASONIC LEVEL SWITCH
- 1120: Título: FOLHA DE DADOS ULTRASONIC LEVEL TRANSMITTER
- 1121: Título: FOLHA DE DADOS ROTAMETER
- 1122: Título: FOLHA DE DADOS ULTRASONIC LEVEL GAUGE
- 1123: Título: ESPECIFICAÇÃO TÉCNICA ANALIZADOR
- 1124: Título: ESPECIFICAÇÃO TÉCNICA SISTEMA DE CONTROLE
- 1125: Título: ARQUITETURA DE REDE
- 1126: Título: FOLHAS DE DADOS DIFFERENTIAL PRESSURE TRANSMITTER
- 1127: Título: FOLHA DE DADOSTEMPERATURE SENSOR
- 1128: Título: FOLHA DE DADOS PRESSURE GAUGE
- 1129: Título: FOLHA DE DADOS ORIFICE PLATE
- 1130: Título: FOLHA DE DADOS PRESSURE REGULATOR
- 1131: Título: FOLHA DE DADOS VORTEX TRANSMITTER
- 1132: Título: FOLHA DE DADOS PNEUMATIC ACTUATED BUTTERFLY VALVE
- 1133: Título: FOLHAS DE DADOS PRESSURE AND LEVEL TRANSMITTER
- 1134: Título: FOLHA DE DADOS PNEUMATIC ACTUATED BALL VALVE
- 1135: Título: PLANTA E CORTES DE LEGALIZAÇÃO - IMPLANTAÇÃO PARCIAL
- 1136: Título: PLANTA E CORTES DE LEGALIZAÇÃO - PLANTA NÍVEL 0,00m / +3,224m
- 1137: Título: "PLANTA E CORTES DE LEGALIZAÇÃO - CORTES A-A, B-B, C-C, D-D E
- 1138: Título: PLANO DE CARGA NIVEL CORREIA REVERSIVEL E MOVEL
- 1139: Título: PLANO DE CARGA NIVEL SILOS DE PROCESSO
- 1140: Título: PLANO DE CARGA NIVEL SILOS DE BUFFER
- 1141: Título: PLANO DE CARGA SUPORTES TUBULACAO BAR
- 1142: Título: PLANO DE CARGA SUPORTES TUBULACAO COMBUSTIVEL LATERAL
- 1143: Título: PLANO DE CARGA SUPORTES TUBULACAO BOOSTER
- 1144: Título: VÁLVULA DE ISOLAMENTO DE GÁS DO TOPO
- 1145: Título: ESTIMATIVA DE CUSTOS EQUIPAMENTOS UTILIDADES
- 1146: Título: ANÁLISE DO PRELIMINAR ESTRUTURAL DA CARCAÇA FORNO
- 1147: Título: SIMULAÇOES TERMICAS PARA SISTEMA REFRIGERACAO E REFRATARIOS
- 1148: Título: MEMÓRIA DE CÁLCULO DE METÁLICA PLAFATORMA FILTRO
- 1149: Título: MEMÓRIA DE CÁLCULO DE METÁLICA SALA OPERADORES
- 1150: Título: FOLHA DE DADOS JUNTAS DE EXPANSÃO
- 1151: Título: FOLHA DE DADOS SUPORTE DE MOLAS
- 1152: Título: FOLHA DE DADOS SUPORTE DE MOLAS
- 1153: Título: FOLHA DE DADOS SUPORTE DE MOLAS
- 1154: Título: FOLHA DE DADOS SUPORTE DE MOLAS
- 1155: Título: FOLHA DE DADOS SUPORTE DE MOLAS
- 1156: Título: FOLHA DE DADOS SUPORTE DE MOLAS
- 1157: Título: FOLHA DE DADOS SUPORTE DE MOLAS
- 1158: Título: FOLHA DE DADOS SUPORTE DE MOLAS
- 1159: Título: FOLHA DE DADOS SUPORTE DE MOLAS
- 1161: Título: PLANO DE CARGA SUPORTES TUBULACAO BOOSTER
- 1162: Título: PLANO DE CARGA SUPORTES TUBULACAO BOOSTER
