# CR-F0009-0000-MB-F-00001 - 19062026

Schedule from MS Project, 2026-03-31 to 2026-12-23, status date 2026-06-16, A marks actual dates.

## Calendars

- Padrão: Mon-Fri 09:00-12:00, 13:00-18:00; Sat-Sun off.

## Resources

| Resource |
| --- |
| ii |

## Schedule

| ID | WBS | Task | Type | Duration | Start | Finish | Predecessors | Complete | Remaining | Baseline start | Baseline finish | Baseline duration | Baseline 1 start | Baseline 1 finish | Total slack | Free slack | Constraint | Text2 | Text3 | Text4 |
| --- | --- | --- | --- | --- | --- | --- | --- | --- | --- | --- | --- | --- | --- | --- | --- | --- | --- | --- | --- | --- |
| 1 | 1 | CR-F0009-0000-MB-F-00001 - Geral |  | 158d | 2026-05-18 A | 2026-12-23 |  | 30% | 110.54d |  |  |  |  |  | 0d |  |  |  |  |  |
| 2 | 2 | CR-F0009-0305-MB-F-00001 |  | 58d | 2026-04-27 A | 2026-07-17 |  | 8% | 53.13d |  |  |  |  |  | 113d |  |  |  |  |  |
| 3 | 3 | CR-F0009-0305-MB-F-00001 |  | 61d | 2026-04-27 A | 2026-07-22 |  | 11% | 54.48d |  |  |  |  |  | 110d |  |  |  |  |  |
| 4 | 4 | CR-F0008-0000-GE-F-00001 23042026 |  | 135.88d? | 2026-03-31 A | 2026-10-06 |  | 5% | 129.33d? |  |  |  |  |  | 56.12d |  |  |  |  |  |
| 6 | 5 | **F0009 - Programa Marabá** |  | 192d | 2026-03-31 A | 2026-12-23 |  | 24% | 145.22d |  |  |  |  |  | 0d |  |  |  |  |  |
| 7 | 5.1 | **Área 0000 -Periféricos** |  | 173d | 2026-04-27 A | 2026-12-23 |  | 29% | 123.66d |  |  |  |  |  | 0d |  |  |  |  |  |
| 8 | 5.1.1 | **F0009 - Programa Marabá - 0000** |  | 158d | 2026-05-18 A | 2026-12-23 |  | 33% | 105.2d | 2026-04-27 | 2026-07-08 | 53d | 2026-04-27 | 2026-07-08 | 0d |  |  | Seg 27/04/26 | Qua 08/07/26 | GERAL |
| 9 | 5.1.1.1 | **Área 0000 -Documento geral** |  | 158d | 2026-05-18 A | 2026-12-23 |  | 33% | 105.2d | 2026-04-27 | 2026-07-08 | 53d | 2026-04-27 | 2026-07-08 | 0d |  |  | Seg 27/04/26 | Qua 08/07/26 | GERAL |
| 10 | 1.1.1 | KOM - Início de projeto | milestone | 0d | 2026-05-18 A | 2026-05-18 A |  | 100% |  |  |  |  |  |  |  |  | start no earlier than 2026-05-18 |  |  |  |
| 11 | 5.1.1.1.2 | KOM - Início de projeto | milestone | 0d | 2026-05-18 A | 2026-05-18 A | 10SS | 100% |  | 2026-04-27 | 2026-04-27 | 0d | 2026-04-27 | 2026-04-27 |  |  | start no earlier than 2026-05-18 | Seg 27/04/26 | Seg 27/04/26 | GERAL |
| 12 | 1.1.4 | Pendências | milestone | 0d | 2026-05-18 A | 2026-05-18 A |  | 100% |  |  |  |  |  |  |  |  |  |  |  |  |
| 13 | 5.1.1.1.4 | Pendências | milestone | 0d | 2026-05-18 | 2026-05-18 | 12SS |  |  | 2026-04-29 | 2026-04-29 | 0d | 2026-04-29 | 2026-04-29 | 158d |  |  | Qua 29/04/26 | Qua 29/04/26 | PENDÊNCIAS |
| 14 | 1.1.6 | Planejamento |  | 148d | 2026-06-01 A | 2026-12-23 |  | 77% | 34.15d |  |  |  |  |  | 0d |  |  |  |  |  |
| 15 | 5.1.1.1.6 | Planejamento |  | 148d | 2026-06-01 A | 2026-12-23 | 14SS | 71% | 42.92d | 2026-04-27 | 2026-05-19 | 17d | 2026-04-27 | 2026-05-19 | 0d |  |  | Seg 27/04/26 | Ter 19/05/26 | PLANEJAMENTO |
| 16 | 1.1.8 | Coordenação |  | 42d | 2026-06-01 A | 2026-07-28 |  | 36% | 27d |  |  |  |  |  | 106d | 0d |  |  |  |  |
| 17 | 5.1.1.1.8 | Coordenação |  | 42d | 2026-06-01 A | 2026-07-28 | 16SS | 60% | 16.8d | 2026-04-27 | 2026-07-08 | 53d | 2026-04-27 | 2026-07-08 | 106d |  |  | Seg 27/04/26 | Qua 08/07/26 | COORDENAÇÃO |
| 18 | 1.1.10 | Processo |  | 139d | 2026-05-28 A | 2026-12-08 |  | 21% | 110.04d |  |  |  |  |  | 11d | 0d |  |  |  |  |
| 19 | 5.1.1.1.10 | Processo |  | 139d | 2026-05-28 A | 2026-12-08 | 18SS | 41% | 82.01d | 2026-05-19 | 2026-06-25 | 28d | 2026-05-19 | 2026-06-25 | 11d |  |  | Ter 19/05/26 | Qui 25/06/26 | PROCESSO |
| 20 | 1.1.12 | Mecânica |  | 128d | 2026-05-18 A | 2026-11-11 |  | 23% | 98.67d |  |  |  |  |  | 30d | 0d |  |  |  |  |
| 21 | 5.1.1.1.12 | Mecânica |  | 128d | 2026-05-18 A | 2026-11-11 | 20SS | 23% | 98.56d | 2026-05-19 | 2026-07-08 | 37d | 2026-05-19 | 2026-07-08 | 30d |  |  | Ter 19/05/26 | Qua 08/07/26 | MECÂNICA |
| 22 | 1.1.14 | Tubulação/Utilidades |  | 135d | 2026-06-08 A | 2026-12-11 |  | 30% | 94.5d |  |  |  |  |  | 8d | 0d |  |  |  |  |
| 23 | 5.1.1.1.14 | Tubulação/Utilidades |  | 135d | 2026-06-08 A | 2026-12-11 | 22SS | 30% | 94.5d | 2026-05-20 | 2026-07-08 | 36d | 2026-05-20 | 2026-07-08 | 8d |  |  | Qua 20/05/26 | Qua 08/07/26 | TUBULAÇÃO/UTILIDADES |
| 24 | 1.1.16 | Estrutura metálica |  | 130d | 2026-06-10 | 2026-12-08 |  |  |  |  |  |  |  |  | 11d | 0d |  |  |  |  |
| 25 | 5.1.1.1.16 | Estrutura metálica |  | 130d | 2026-06-10 | 2026-12-08 | 24SS |  |  | 2026-06-15 | 2026-07-08 | 18d | 2026-06-15 | 2026-07-08 | 11d |  |  | Seg 15/06/26 | Qua 08/07/26 | ESTRUTURA METÁLICA |
| 26 | 1.1.18 | Elétrica |  | 140d | 2026-06-08 A | 2026-12-18 |  | 38% | 86.67d |  |  |  |  |  | 3d | 0d |  |  |  |  |
| 27 | 5.1.1.1.18 | Elétrica |  | 140d | 2026-06-08 A | 2026-12-18 | 26SS | 36% | 89.6d | 2026-05-21 | 2026-07-08 | 35d | 2026-05-21 | 2026-07-08 | 3d |  |  | Qui 21/05/26 | Qua 08/07/26 | ELÉTRICA |
| 28 | 1.1.20 | Automação e instrumentação |  | 127d | 2026-05-28 A | 2026-11-23 |  | 18% | 103.91d |  |  |  |  |  | 22d | 0d |  |  |  |  |
| 29 | 5.1.1.1.20 | Automação e instrumentação |  | 127d | 2026-05-28 A | 2026-11-23 | 28SS | 18% | 104.14d | 2026-05-20 | 2026-07-08 | 36d | 2026-05-20 | 2026-07-08 | 22d |  |  | Qua 20/05/26 | Qua 08/07/26 | AUTOMAÇÃO E INSTRUMENTAÇÃO |
| 30 | 1.1.22 | Civil | milestone | 0d | 2026-09-04 | 2026-09-04 |  |  |  |  |  |  |  |  | 78d | 0d |  |  |  |  |
| 31 | 5.1.1.1.22 | Civil | milestone | 0d | 2026-09-04 | 2026-09-04 | 30SS |  |  | 2026-06-22 | 2026-07-08 | 13d | 2026-06-22 | 2026-07-08 | 78d |  |  | Seg 22/06/26 | Qua 08/07/26 | CIVIL |

| ID | WBS | Task | Type | Duration | Start | Finish | Predecessors | Complete | Remaining | Total slack | Free slack |
| --- | --- | --- | --- | --- | --- | --- | --- | --- | --- | --- | --- |
| 33 | 5.1.2 | **Área 0305 - Hot Blast Stoves** |  | 60d | 2026-04-27 A | 2026-07-17 |  | 14% | 51.85d | 0d |  |
| 34 | 1.2.3 | Pendências | milestone | 0d | 2026-04-29 A | 2026-04-29 A |  | 100% |  |  |  |
| 35 | 5.1.2.2 | Pendências 305 | milestone, manual | 0d | 2026-04-29 A | 2026-04-29 A | 34SS | 100% |  |  |  |
| 36 | 1.2.5 | Planejamento |  | 25.4d | 2026-04-27 A | 2026-06-01 |  | 89% | 2.82d | 145.6d | 0d |
| 37 | 5.1.2.4 | Planejamento 305 | manual | 25.4d | 2026-04-27 A | 2026-06-02 | 36SS | 47% | 13.4d |  |  |
| 38 | 1.2.7 | Coordenação |  | 58d | 2026-04-27 A | 2026-07-17 |  | 22% | 45.24d | 113d | 0d |
| 39 | 5.1.2.6 | Coordenação 305 | manual | 54.42d | 2026-04-27 A | 2026-07-17 | 38SS | 14% | 47d |  |  |
| 40 | 1.2.9 | Processo |  | 10d | 2026-05-19 A | 2026-06-01 |  | 80% | 2d | 145d | 0d |
| 41 | 5.1.2.8 | Processo 305 | manual | 10d | 2026-05-11 A | 2026-05-22 | 40SS | 63% | 3.73d |  |  |
| 42 | 1.2.11 | Mecânica |  | 32d | 2026-05-15 A | 2026-07-01 |  | 7% | 29.87d | 125d | 0d |
| 43 | 5.1.2.10 | Mecânica 305 | manual | 32d | 2026-05-08 A | 2026-06-29 | 42SS | 3% | 31.14d |  |  |
| 44 | 1.2.13 | Tubulação/Utilidades |  | 17d | 2026-06-10 A | 2026-07-02 |  | 5% | 16.07d | 124d | 0d |
| 45 | 5.1.2.12 | Tubulação/Utilidades 305 | manual | 17d | 2026-05-08 A | 2026-07-01 | 44SS | 7% | 15.74d |  |  |
| 46 | 1.2.15 | Estrutura metálica |  | 15d | 2026-06-15 | 2026-07-03 |  |  |  | 123d | 0d |
| 47 | 5.1.2.14 | Estrutura metálica 305 | manual | 15d | 2026-05-12 A | 2026-07-03 | 46SS | 5% | 14.18d |  |  |
| 48 | 1.2.17 | Elétrica |  | 21d | 2026-05-28 A | 2026-06-29 |  | 13% | 18.38d | 127d | 0d |
| 49 | 5.1.2.16 | Elétrica 305 | manual | 21d | 2026-05-28 | 2026-06-25 | 48SS |  |  |  |  |
| 50 | 1.2.19 | Automação e instrumentação |  | 26d | 2026-06-01 A | 2026-07-08 |  | 4% | 24.91d | 120d | 0d |
| 51 | 5.1.2.18 | Automação e instrumentação 305 | manual | 26d | 2026-06-01 | 2026-07-06 | 50SS |  |  |  |  |
| 52 | 1.2.21 | Civil |  | 10d | 2026-06-25 | 2026-07-08 |  |  |  | 120d | 0d |
| 53 | 5.1.2.20 | Civil 305 | manual | 10d | 2026-06-25 | 2026-07-08 | 52SS |  |  |  |  |
| 54 | 5.1.3 | **Área 0306 - Sopradores** |  | 63d | 2026-04-27 A | 2026-07-22 |  | 21% | 49.82d | 0d |  |
| 55 | 1.1.4 | Pendências |  | 1d | 2026-04-29 A | 2026-04-29 A |  | 100% |  |  |  |
| 56 | 5.1.3.2 | Pendências 306 | manual | 1d | 2026-04-29 A | 2026-04-29 A | 55SS | 100% |  |  |  |
| 57 | 1.1.6 | Planejamento |  | 27d | 2026-04-27 A | 2026-06-02 |  | 77% | 6.28d | 144d | 0d |
| 58 | 5.1.3.4 | Planejamento 306 | manual | 27d | 2026-04-27 A | 2026-06-02 | 57SS | 77% | 6.21d |  |  |
| 59 | 1.1.8 | Coordenação |  | 50d | 2026-04-27 A | 2026-07-07 |  | 20% | 39.77d | 121d | 0d |
| 60 | 5.1.3.6 | Coordenação 306 | manual | 52d | 2026-04-27 A | 2026-07-07 | 59SS | 20% | 41.6d |  |  |
| 61 | 1.1.10 | Processo |  | 4d | 2026-06-05 A | 2026-06-11 |  | 80% | 0.8d | 139d | 0d |
| 62 | 5.1.3.8 | Processo 306 | manual | 5d | 2026-06-05 A | 2026-06-11 | 61SS | 80% | 1d |  |  |
| 63 | 1.1.12 | Mecânica |  | 30d | 2026-05-26 A | 2026-07-08 |  | 23% | 23.12d | 120d | 0d |
| 64 | 5.1.3.10 | Mecânica 306 | manual | 32d | 2026-05-26 A | 2026-07-08 | 63SS | 23% | 24.64d |  |  |
| 65 | 1.1.14 | Tubulação/Utilidades |  | 33d | 2026-06-08 A | 2026-07-22 |  | 1% | 32.51d | 110d | 0d |
| 66 | 5.1.3.12 | Tubulação/Utilidades 306 | manual | 33d | 2026-06-08 A | 2026-07-22 | 65SS | 1% | 32.67d |  |  |
| 67 | 1.1.16 | Estrutura metálica |  | 13d | 2026-06-22 | 2026-07-08 |  |  |  | 120d | 0d |
| 68 | 5.1.3.14 | Estrutura metálica 306 | manual | 13d | 2026-06-22 | 2026-07-08 | 67SS |  |  |  |  |
| 69 | 1.1.18 | Elétrica |  | 21d | 2026-05-28 A | 2026-06-29 |  | 6% | 19.84d | 127d | 0d |
| 70 | 5.1.3.16 | Elétrica 306 | manual | 23d | 2026-05-28 A | 2026-06-29 | 69SS | 6% | 21.62d |  |  |
| 71 | 1.1.20 | Automação e instrumentação |  | 26d | 2026-06-01 A | 2026-07-08 |  | 5% | 24.72d | 120d | 0d |
| 72 | 5.1.3.18 | Automação e instrumentação 306 | manual | 28d | 2026-06-01 A | 2026-07-08 | 71SS | 5% | 26.6d |  |  |
| 73 | 1.1.22 | Civil |  | 9d | 2026-06-23 | 2026-07-03 |  |  |  | 123d | 0d |
| 74 | 5.1.3.20 | Civil 306 | manual | 9d | 2026-06-23 | 2026-07-03 | 73SS |  |  |  |  |

| ID | WBS | Task | Type | Duration | Start | Finish | Predecessors | Complete | Remaining | Total slack | Free slack |
| --- | --- | --- | --- | --- | --- | --- | --- | --- | --- | --- | --- |
| 75 | 5.2 | **Área 0000 -FORNO** |  | 135.88d | 2026-03-31 A | 2026-10-06 |  | 16% | 114.72d | 0d |  |
| 76 | 5.2.1 | **F0009 - COM 0023 - CECAL** |  | 135.88d | 2026-03-31 A | 2026-10-06 |  | 16% | 114.72d | 0d |  |
| 77 | 1.3 | MARCOS 309 |  | 113d | 2026-03-31 A | 2026-09-03 |  | 50% | 56.5d | 79d | 0d |
| 78 | 5.2.1.2 | MARCOS 309 | manual | 113d | 2026-03-31 A | 2026-09-03 | 77SS | 50% | 56.5d |  |  |
| 79 | 1.6 | PENDÊNCIAS 309 |  | 65.88d | 2026-03-31 A | 2026-06-30 |  | 74% | 16.84d | 95.12d | 0d |
| 80 | 5.2.1.4 | PENDÊNCIAS 309 | manual | 65d | 2026-03-31 A | 2026-06-30 | 79SS | 74% | 16.9d |  |  |
| 81 | 1.12 | MECÂNICA / ARRANJOS 309 |  | 70d | 2026-06-30 | 2026-10-06 |  |  |  | 56.12d | 0d |
| 82 | 5.2.1.6 | GERAL/ COORDENAÇÃO 309 | manual | 67d | 2026-07-01 | 2026-10-01 | 81SS |  |  |  |  |
| 83 | 5.2.1.7 | MECÂNICA / ARRANJOS 309 | manual | 69.88d | 2026-06-30 | 2026-10-06 | 81SS |  |  |  |  |
| 84 | 1.15 | MECÂNICA / EQUIPAMENTOS 309 |  | 70d | 2026-06-30 | 2026-10-06 |  |  |  | 56.12d | 0d |
| 85 | 5.2.1.9 | MECÂNICA / EQUIPAMENTOS 309 | manual | 70d | 2026-06-30 | 2026-10-06 | 84SS |  |  |  |  |
| 86 | 1.18 | TUBULAÇÃO E SISTEMAS 309 |  | 30d | 2026-08-11 | 2026-09-22 |  |  |  | 66.12d | 0d |
| 87 | 5.2.1.11 | TUBULAÇÃO E SISTEMAS 309 | manual | 30d | 2026-08-11 | 2026-09-22 | 86SS |  |  |  |  |
| 88 | 1.21 | ARQUITETURA 309 |  | 35d | 2026-08-04 | 2026-09-22 |  |  |  | 66.12d | 0d |
| 89 | 5.2.1.13 | ARQUITETURA 309 | manual | 35d | 2026-08-04 | 2026-09-22 | 88SS |  |  |  |  |
| 90 | 1.24 | CIVIL / INFRAESTRUTURA 309 |  | 25d | 2026-08-04 | 2026-09-08 |  |  |  | 76.12d | 0d |
| 91 | 5.2.1.15 | CIVIL / INFRAESTRUTURA 309 | manual | 25d | 2026-08-04 | 2026-09-08 | 90SS |  |  |  |  |
| 92 | 1.27 | ELÉTRICA 309 |  | 61d | 2026-06-30 | 2026-09-23 |  |  |  | 65.12d | 0d |
| 93 | 5.2.1.17 | ELÉTRICA 309 | manual | 61d | 2026-06-30 | 2026-09-23 | 92SS |  |  |  |  |
| 94 | 1.30 | AUTOMAÇÃO 309 |  | 70d | 2026-06-30 | 2026-10-06 |  |  |  | 56.12d | 0d |
| 95 | 5.2.1.19 | AUTOMAÇÃO 309 | manual | 70d | 2026-06-30 | 2026-10-06 | 94SS |  |  |  |  |
| 96 | 1.33 | PROCESSO GUSA 309 |  | 65d | 2026-06-30 | 2026-09-29 |  |  |  | 56.12d | 0d |
| 97 | 5.2.1.21 | PROCESSO GUSA 309 | manual | 65d | 2026-06-30 | 2026-09-29 | 96SS |  |  |  |  |
| 98 | 1.36 | DOCUMENTOS QUE NÃO SERÃO REVISADOS |  | 1d | 2026-04-23 A | 2026-04-23 A |  | 100% |  |  |  |
| 99 | 5.2.1.23 | DOCUMENTOS QUE NÃO SERÃO REVISADOS | manual | 1d | 2026-04-23 | 2026-04-23 | 98SS |  |  |  |  |
