# CR-J0006-0000-GE-F-00001 24032026_R1

Schedule from MS Project, 2026-03-17 to 2026-08-12, status date 2026-06-12, A marks actual dates.

## Calendars

- Padrão: Mon-Fri 09:00-12:00, 13:00-18:00; Sat-Sun off. Exceptions (off unless hours are given): 2026-04-03 to 2026-04-06 (Sexta feira santa + santo local), 2026-04-20 to 2026-04-21 (Tiradentes), 2026-05-01 (dia do trabalho), 2026-06-04 to 2026-06-05 (Corpus Cristh), 2026-07-09 to 2026-07-10 (Revolução consitucionalista).

## Resources

| Resource |
| --- |
| Nun |
| nan |
| Planejador |
| Tecnored |
| Coordenador |
| Eng. Processos |
| Felipe |
| Eng. Mecânico |
| Erikson |
| Projetista Mecânico |
| Eng. Tubulação |
| Projetista Tubulação |
| Eng. Calculista |
| Projetista Metálica |
| Eng. Elétrica |
| Projetista Elétrica |
| Eng. Automação |
| Projetista Automação |

## Schedule

| ID | WBS | Task | Type | Duration | Start | Finish | Predecessors | Complete | Remaining | Baseline start | Baseline finish | Baseline duration | Total slack | Free slack | Constraint | Resources | Work | Actual work | Text2 | Início_LB_R0 | Duração_LB_R0 | Duração Média (Tenax) | Duração média da atividade (Tecnored) | Disciplina | Text20 |
| --- | --- | --- | --- | --- | --- | --- | --- | --- | --- | --- | --- | --- | --- | --- | --- | --- | --- | --- | --- | --- | --- | --- | --- | --- | --- |
| 1 | 1 | **SKID-BASED BRIQUETTING PROJECT J0006** |  | 67d | 2026-03-17 A | 2026-06-26 |  | 85% | 10.19d | 2026-03-17 | 2026-06-26 | 67d | 0d |  |  | Nun | 19351.5h | 15593.4h | Sex 26/06/26 | Ter 17/03/26 | 67 dias | 562 |  |  |  |
| 2 | 1.1 | **MARCOS** |  | 64d | 2026-03-17 A | 2026-06-23 |  | 83% | 10.67d | 2026-03-17 | 2026-05-27 | 47d | 3d |  |  | Nun | 512h |  | Qua 27/05/26 | Ter 17/03/26 | 47 dias |  |  |  |  |
| 3 | 1.1.1 | Reunião de abertura de projeto |  | 1d | 2026-03-17 A | 2026-03-17 A |  | 100% |  | 2026-03-17 | 2026-03-17 | 0d |  |  | start no earlier than 2026-03-17 |  |  |  | Ter 17/03/26 | Ter 17/03/26 | 0 dias |  |  |  |  |
| 4 | 1.1.2 | Conclusão dos balanços de massa |  | 1d | 2026-05-13 A | 2026-05-13 A | 142 | 100% |  | 2026-04-24 | 2026-04-24 | 0d |  |  | start no earlier than 2026-04-24 |  |  |  | Sex 24/04/26 | Sex 24/04/26 | 0 dias |  |  |  |  |
| 5 | 1.1.3 | Conclusão dos P&ID's | milestone | 0d | 2026-06-23 | 2026-06-23 | 1288, 1323, 1318, 1313, 1308, 1303, 1293, 1298 |  |  | 2026-05-25 | 2026-05-25 | 0d | 3d |  | start no earlier than 2026-05-25 |  |  |  | Seg 25/05/26 | Seg 25/05/26 | 0 dias |  |  |  |  |
| 6 | 1.1.4 | Reunião Design Review 1 |  | 1d | 2026-04-10 A | 2026-04-10 A |  | 100% |  | 2026-04-10 | 2026-04-10 | 1d |  |  | start no earlier than 2026-04-10 |  |  |  | Sex 10/04/26 | Sex 10/04/26 | 1 dia |  |  |  |  |
| 7 | 1.1.5 | Reunião Design Review 2 |  | 1d | 2026-04-28 A | 2026-04-29 A | 6FS+10d | 100% |  | 2026-04-28 | 2026-04-28 | 0d |  |  | start no earlier than 2026-04-28 |  |  |  | Ter 28/04/26 | Ter 28/04/26 | 0 dias |  |  |  |  |
| 8 | 1.1.6 | Reunião Design Review 3 ( Módulos 0200 e 0900 ) |  | 1d | 2026-05-19 A | 2026-05-19 A | 7FS+10d | 100% |  | 2026-05-13 | 2026-05-13 | 0d |  |  | start no earlier than 2026-05-19 |  |  |  | Qua 13/05/26 | Qua 13/05/26 | 0 dias |  |  |  |  |
| 9 | 1.1.7 | Recebimento de Documentação do Módulo 800 |  | 1d | 2026-06-22 | 2026-06-22 |  |  |  |  |  |  | 4d | 0d | start no earlier than 2026-06-22 |  |  |  |  |  |  |  |  |  |  |
| 10 | 1.1.8 | Reunião Design Review 4 | milestone | 0d | 2026-05-27 | 2026-05-27 | 8FS+2d |  |  | 2026-05-27 | 2026-05-27 | 0d | 13.5d | 1d | start no earlier than 2026-05-27 |  |  |  | Qua 27/05/26 | Qua 27/05/26 | 0 dias |  |  |  |  |
| 11 | 1.2 | **PENDENCIAS** |  | 4d | 2026-03-17 A | 2026-03-20 |  | 80% | 0.8d | 2026-03-17 | 2026-03-20 | 4d | 63d |  |  | Nun | 32h | 32h | Sex 20/03/26 | Ter 17/03/26 | 4 dias |  |  |  |  |
| 12 | 1.2.1 | Respostas dos questionamentos da KOM |  | 4d | 2026-03-17 A | 2026-03-20 | 3 | 60% | 1.6d | 2026-03-17 | 2026-03-20 | 4d | 63d | 0d |  |  |  |  | Sex 20/03/26 | Ter 17/03/26 | 4 dias |  |  |  |  |
| 13 | 1.2.2 | Definição de verificadores |  | 4d | 2026-03-17 A | 2026-03-20 A | 3 | 100% |  | 2026-03-17 | 2026-03-20 | 4d |  |  |  |  |  |  | Sex 20/03/26 | Ter 17/03/26 | 4 dias |  |  |  |  |
| 14 | 1.3 | **PLANNING** |  | 21d | 2026-03-17 A | 2026-04-16 A |  | 100% |  | 2026-03-17 | 2026-06-26 | 67d |  |  |  |  | 408h | 408h | Sex 26/06/26 | Ter 17/03/26 | 67 dias | 27 | 73 |  |  |
| 15 | 1.3.1 | **LD-J0006-0000-GE-F-00002** |  | 9d | 2026-03-17 A | 2026-03-27 A |  | 100% |  | 2026-03-17 | 2026-06-26 | 67d |  |  |  | nan | 152h | 152h | Sex 26/06/26 | Ter 17/03/26 | 67 dias | 15 |  | PLANNING |  |
| 16 | 1.3.1.1 | Emissão inicial |  | 4d | 2026-03-17 A | 2026-03-20 A | 3 | 100% |  | 2026-03-17 | 2026-03-20 | 4d |  |  |  | Planejador | 32h | 32h | Sex 20/03/26 | Ter 17/03/26 | 4 dias | 13,4 | 32 | PLANNING |  |
| 17 | 1.3.1.2 | Avaliação do Cliente |  | 3d | 2026-03-23 A | 2026-03-25 A | 16 | 100% |  | 2026-03-23 | 2026-03-25 | 3d |  |  |  | Tecnored | 24h | 24h | Qua 25/03/26 | Seg 23/03/26 | 3 dias | 13,4 |  | PLANNING |  |
| 18 | 1.3.1.3 | Atendimento de Comentário |  | 2d | 2026-03-26 A | 2026-03-27 A | 17, 54 | 100% |  | 2026-06-25 | 2026-06-25 | 0d |  |  | start no earlier than 2026-06-25 | Planejador | 16h | 16h | Qui 25/06/26 | Qui 25/06/26 | 0 dias | 13,4 |  | PLANNING |  |
| 19 | 1.3.1.4 | Aprovação |  | 1d | 2026-03-27 A | 2026-03-27 A | 18 | 100% |  | 2026-06-26 | 2026-06-26 | 1d |  |  | finish no earlier than 2026-06-26 | Tecnored | 8h | 8h | Sex 26/06/26 | Sex 26/06/26 | 1 dia | 13,4 | 0,5 | PLANNING |  |
| 20 | 1.3.2 | **LF-J0006-0000-GE-G-00001** |  | 5d | 2026-04-10 A | 2026-04-16 A |  | 100% |  | 2026-03-17 | 2026-06-26 | 67d |  |  |  | nan | 88h | 88h | Sex 26/06/26 | Ter 17/03/26 | 67 dias | 15 |  | PLANNING |  |
| 21 | 1.3.2.1 | Emissão inicial |  | 1d | 2026-04-10 A | 2026-04-10 A | 16FS+12d | 100% |  | 2026-03-17 | 2026-03-20 | 4d |  |  |  | Eng. Mecânico | 8h | 8h | Sex 20/03/26 | Ter 17/03/26 | 4 dias | 0,5 | 0,5 | PLANNING | 0,5 |
| 22 | 1.3.2.2 | Avaliação do Cliente |  | 3d | 2026-04-13 A | 2026-04-15 A | 21 | 100% |  | 2026-03-23 | 2026-03-25 | 3d |  |  |  | Tecnored | 24h | 24h | Qua 25/03/26 | Seg 23/03/26 | 3 dias | 13,4 |  | PLANNING | 13,4 |
| 23 | 1.3.2.3 | Atendimento de Comentário |  | 1d | 2026-04-15 A | 2026-04-16 A | 22 | 100% |  | 2026-06-25 | 2026-06-25 | 0d |  |  |  | Planejador | 8h | 8h | Qui 25/06/26 | Qui 25/06/26 | 0 dias | 13,4 |  | PLANNING | 13,4 |
| 24 | 1.3.2.4 | Aprovação |  | 1d | 2026-04-16 A | 2026-04-16 A | 23 | 100% |  | 2026-06-26 | 2026-06-26 | 1d |  |  | finish no earlier than 2026-04-16 | Tecnored | 8h | 8h | Sex 26/06/26 | Sex 26/06/26 | 1 dia | 13,4 | 0,5 | PLANNING | 13,4 |

| ID | WBS | Task | Duration | Start | Finish | Predecessors | Complete | Remaining | Baseline start | Baseline finish | Baseline duration | Total slack | Free slack | Constraint | Resources | Work | Actual work | Disciplina | Text2 | Início_LB_R0 | Duração_LB_R0 | Duração Média (Tenax) | Duração média da atividade (Tecnored) | Text20 |
| --- | --- | --- | --- | --- | --- | --- | --- | --- | --- | --- | --- | --- | --- | --- | --- | --- | --- | --- | --- | --- | --- | --- | --- | --- |
| 25 | 1.3.3 | **CR-J0006-0000-GE-F-00001** | 10d | 2026-03-17 A | 2026-03-30 A |  | 100% |  | 2026-03-17 | 2026-06-26 | 67d |  |  |  | nan | 168h | 168h | PLANNING | Sex 26/06/26 | Ter 17/03/26 | 67 dias | 27 |  |  |
| 26 | 1.3.3.1 | Emissão inicial | 4d | 2026-03-17 A | 2026-03-20 A | 3 | 100% |  | 2026-03-17 | 2026-03-20 | 4d |  |  |  | Planejador | 32h | 32h | PLANNING | Sex 20/03/26 | Ter 17/03/26 | 4 dias | 13,4 | 32 |  |
| 27 | 1.3.3.2 | Avaliação do Cliente | 3d | 2026-03-23 A | 2026-03-25 A | 26 | 100% |  | 2026-03-23 | 2026-03-25 | 3d |  |  |  | Tecnored | 24h | 24h | PLANNING | Qua 25/03/26 | Seg 23/03/26 | 3 dias | 13,4 |  | 3h+2h |
| 28 | 1.3.3.3 | Atendimento de Comentário | 2d | 2026-03-26 A | 2026-03-27 A | 54, 26 | 100% |  | 2026-06-25 | 2026-06-25 | 0d |  |  | start no earlier than 2026-06-25 | Planejador | 16h | 16h | PLANNING | Qui 25/06/26 | Qui 25/06/26 | 0 dias | 13,4 |  |  |
| 29 | 1.3.3.4 | Aprovação | 2d | 2026-03-27 A | 2026-03-30 A | 28 | 100% |  | 2026-06-26 | 2026-06-26 | 1d |  |  | finish no earlier than 2026-06-26 | Tecnored | 16h | 16h | PLANNING | Sex 26/06/26 | Sex 26/06/26 | 1 dia | 13,4 | 0,5 |  |
| 30 | 1.4 | **COORDINATION** | 67d | 2026-03-17 A | 2026-06-26 |  | 53% | 31.48d | 2026-03-17 | 2026-06-26 | 67d | 0d |  |  |  | 416h | 240h |  | Sex 26/06/26 | Ter 17/03/26 | 67 dias | 539,2 | 216,5 |  |
| 31 | 1.4.1 | **EA-J0006-0000-GE-G-00001** | 9d | 2026-03-17 A | 2026-03-27 A |  | 100% |  | 2026-03-17 | 2026-03-27 | 9d |  |  |  |  | 72h | 72h | COORDINATION | Sex 27/03/26 | Ter 17/03/26 | 9 dias |  |  |  |
| 32 | 1.4.1.1 | Emissão inicial | 4d | 2026-03-17 A | 2026-03-20 A | 3 | 100% |  | 2026-03-17 | 2026-03-20 | 4d |  |  |  | Coordenador | 32h | 32h | COORDINATION | Sex 20/03/26 | Ter 17/03/26 | 4 dias | 13,4 | 32 |  |
| 33 | 1.4.1.2 | Avaliação do Cliente | 3d | 2026-03-23 A | 2026-03-25 A | 32 | 100% |  | 2026-03-23 | 2026-03-25 | 3d |  |  |  | Tecnored | 24h | 24h | COORDINATION | Qua 25/03/26 | Seg 23/03/26 | 3 dias | 13,4 |  |  |
| 34 | 1.4.1.3 | Atendimento de Comentário | 1d | 2026-03-26 A | 2026-03-26 A | 33 | 100% |  | 2026-03-26 | 2026-03-26 | 1d |  |  |  | Coordenador | 8h | 8h | COORDINATION | Qui 26/03/26 | Qui 26/03/26 | 1 dia | 13,4 |  |  |
| 35 | 1.4.1.4 | Aprovação | 1d | 2026-03-27 A | 2026-03-27 A | 34 | 100% |  | 2026-03-27 | 2026-03-27 | 1d |  |  |  | Tecnored | 8h | 8h | COORDINATION | Sex 27/03/26 | Sex 27/03/26 | 1 dia | 13,4 | 0,5 |  |
| 36 | 1.4.2 | **RM-J0006-0000-GE-G-00001** | 30d | 2026-04-15 A | 2026-05-29 |  | 92% | 2.31d | 2026-04-15 | 2026-04-27 | 7d | 18d |  |  |  | 104h | 96h | COORDINATION | Seg 27/04/26 | Qua 15/04/26 | 7 dias | 21,1 |  |  |
| 37 | 1.4.2.1 | Emissão inicial | 2d | 2026-04-15 A | 2026-04-16 A | 12FS+15d | 100% |  | 2026-04-15 | 2026-04-16 | 2d |  |  |  | Coordenador | 16h | 16h | COORDINATION | Qui 16/04/26 | Qua 15/04/26 | 2 dias | 13,4 | 16 |  |
| 38 | 1.4.2.2 | Avaliação do Cliente | 1d | 2026-05-05 A | 2026-05-05 A | 37 | 100% |  | 2026-04-17 | 2026-04-23 | 3d |  |  |  | Tecnored | 8h | 8h | COORDINATION | Qui 23/04/26 | Sex 17/04/26 | 3 dias | 13,4 |  |  |
| 39 | 1.4.2.3 | Atendimento de Comentário | 9d | 2026-05-18 A | 2026-05-28 A | 38 | 100% |  | 2026-04-24 | 2026-04-24 | 1d |  |  |  | Coordenador | 72h | 72h | COORDINATION | Sex 24/04/26 | Sex 24/04/26 | 1 dia | 13,4 |  |  |
| 40 | 1.4.2.4 | Aprovação | 1d | 2026-05-29 | 2026-05-29 | 39 |  |  | 2026-04-27 | 2026-04-27 | 1d | 18d |  |  | Tecnored | 8h |  | COORDINATION | Seg 27/04/26 | Seg 27/04/26 | 1 dia | 13,4 | 0,5 |  |
| 41 | 1.4.3 | **RM-J0006-0000-GE-G-00002** | 6d | 2026-06-01 A | 2026-06-10 |  | 50% | 3d | 2026-05-18 | 2026-05-26 | 7d | 12d |  |  |  | 48h | 24h | COORDINATION | Ter 26/05/26 | Seg 18/05/26 | 7 dias | 21,6 |  |  |
| 42 | 1.4.3.1 | Emissão inicial | 3d | 2026-06-01 A | 2026-06-03 A | 37FS+18d | 100% |  | 2026-05-18 | 2026-05-19 | 2d |  |  | start no earlier than 2026-06-01 | Coordenador | 24h | 24h | COORDINATION | Ter 19/05/26 | Seg 18/05/26 | 2 dias | 13,4 | 16 |  |
| 43 | 1.4.3.2 | Avaliação do Cliente | 1d | 2026-06-08 | 2026-06-08 | 42 |  |  | 2026-05-20 | 2026-05-22 | 3d | 12d | 0d |  | Tecnored | 8h |  | COORDINATION | Sex 22/05/26 | Qua 20/05/26 | 3 dias | 13,4 |  |  |
| 44 | 1.4.3.3 | Atendimento de Comentário | 1d | 2026-06-09 | 2026-06-09 | 43 |  |  | 2026-05-25 | 2026-05-25 | 1d | 12d | 0d |  | Coordenador | 8h |  | COORDINATION | Seg 25/05/26 | Seg 25/05/26 | 1 dia | 13,4 |  |  |
| 45 | 1.4.3.4 | Aprovação | 1d | 2026-06-10 | 2026-06-10 | 44 |  |  | 2026-05-26 | 2026-05-26 | 1d | 12d |  |  | Tecnored | 8h |  | COORDINATION | Ter 26/05/26 | Ter 26/05/26 | 1 dia | 13,4 | 0,5 |  |
| 46 | 1.4.4 | **RM-J0006-0000-GE-G-00003** | 5d | 2026-06-15 | 2026-06-19 |  |  |  | 2026-06-17 | 2026-06-25 | 7d | 1d |  |  |  | 40h |  | COORDINATION | Qui 25/06/26 | Qua 17/06/26 | 7 dias | 21,6 |  |  |
| 47 | 1.4.4.1 | Emissão inicial | 2d | 2026-06-15 | 2026-06-16 | 42FS+5d |  |  | 2026-06-17 | 2026-06-18 | 2d | 1d | 0d |  | Coordenador | 16h |  | COORDINATION | Qui 18/06/26 | Qua 17/06/26 | 2 dias | 13,4 | 16 |  |
| 48 | 1.4.4.2 | Avaliação do Cliente | 1d | 2026-06-17 | 2026-06-17 | 47 |  |  | 2026-06-19 | 2026-06-23 | 3d | 1d | 0d |  | Tecnored | 8h |  | COORDINATION | Ter 23/06/26 | Sex 19/06/26 | 3 dias | 13,4 |  |  |
| 49 | 1.4.4.3 | Atendimento de Comentário | 1d | 2026-06-18 | 2026-06-18 | 48 |  |  | 2026-06-24 | 2026-06-24 | 1d | 1d | 0d |  | Coordenador | 8h |  | COORDINATION | Qua 24/06/26 | Qua 24/06/26 | 1 dia | 13,4 |  |  |
| 50 | 1.4.4.4 | Aprovação | 1d | 2026-06-19 | 2026-06-19 | 49 |  |  | 2026-06-25 | 2026-06-25 | 1d | 5d |  |  | Tecnored | 8h |  | COORDINATION | Qui 25/06/26 | Qui 25/06/26 | 1 dia | 13,4 | 0,5 |  |

| ID | WBS | Task | Type | Duration | Start | Finish | Predecessors | Complete | Remaining | Baseline start | Baseline finish | Baseline duration | Total slack | Free slack | Constraint | Resources | Work | Actual work | Disciplina | Text2 | Início_LB_R0 | Duração_LB_R0 | Duração Média (Tenax) | Duração média da atividade (Tecnored) | Text20 |
| --- | --- | --- | --- | --- | --- | --- | --- | --- | --- | --- | --- | --- | --- | --- | --- | --- | --- | --- | --- | --- | --- | --- | --- | --- | --- |
| 51 | 1.4.5 | **RL-J0006-0000-GE-G-00001** |  | 3d | 2026-06-19 | 2026-06-23 |  |  |  | 2026-06-19 | 2026-06-26 | 6d | 0d |  |  |  | 24h |  | COORDINATION | Sex 26/06/26 | Sex 19/06/26 | 6 dias | 16,8 |  |  |
| 52 | 1.4.5.1 | Emissão inicial | milestone, manual | 0d | 2026-06-19 | 2026-06-19 | 49 |  |  | 2026-06-19 | 2026-06-19 | 1d |  |  |  | Coordenador |  |  | COORDINATION | Sex 19/06/26 | Sex 19/06/26 | 1 dia | 13,4 | 16 | 22/04/2026 16:30 |
| 53 | 1.4.5.2 | Avaliação do Cliente |  | 1d | 2026-06-19 | 2026-06-19 | 52 |  |  | 2026-06-22 | 2026-06-24 | 3d | 3d | 0d |  | Tecnored | 8h |  | COORDINATION | Qua 24/06/26 | Seg 22/06/26 | 3 dias | 13,4 |  |  |
| 54 | 1.4.5.3 | Atendimento de Comentário |  | 1d | 2026-06-22 | 2026-06-22 | 53 |  |  | 2026-06-25 | 2026-06-25 | 1d | 3d | 0d |  | Coordenador | 8h |  | COORDINATION | Qui 25/06/26 | Qui 25/06/26 | 1 dia | 13,4 |  |  |
| 55 | 1.4.5.4 | Aprovação |  | 1d | 2026-06-23 | 2026-06-23 | 54 |  |  | 2026-06-26 | 2026-06-26 | 1d | 3d |  |  | Tecnored | 8h |  | COORDINATION | Sex 26/06/26 | Sex 26/06/26 | 1 dia | 13,4 | 0,5 |  |
| 56 | 1.4.6 | **LZ-J0006-0000-GE-P-00001** |  | 5d | 2026-06-19 | 2026-06-25 |  |  |  | 2026-06-16 | 2026-06-24 | 7d | 1d |  |  |  | 40h |  | COORDINATION | Qua 24/06/26 | Ter 16/06/26 | 7 dias | 36 |  |  |
| 57 | 1.4.6.1 | Emissão inicial |  | 2d | 2026-06-19 | 2026-06-22 | 49 |  |  | 2026-06-16 | 2026-06-17 | 2d | 1d | 0d |  | Coordenador | 16h |  | COORDINATION | Qua 17/06/26 | Ter 16/06/26 | 2 dias | 13,4 | 16 |  |
| 58 | 1.4.6.2 | Avaliação do Cliente |  | 1d | 2026-06-23 | 2026-06-23 | 57 |  |  | 2026-06-18 | 2026-06-22 | 3d | 1d | 0d |  | Tecnored | 8h |  | COORDINATION | Seg 22/06/26 | Qui 18/06/26 | 3 dias | 13,4 |  |  |
| 59 | 1.4.6.3 | Atendimento de Comentário |  | 1d | 2026-06-24 | 2026-06-24 | 58 |  |  | 2026-06-23 | 2026-06-23 | 1d | 1d | 0d |  | Coordenador | 8h |  | COORDINATION | Ter 23/06/26 | Ter 23/06/26 | 1 dia | 13,4 |  |  |
| 60 | 1.4.6.4 | Aprovação |  | 1d | 2026-06-25 | 2026-06-25 | 59 |  |  | 2026-06-24 | 2026-06-24 | 1d | 1d |  |  | Tecnored | 8h |  | COORDINATION | Qua 24/06/26 | Qua 24/06/26 | 1 dia | 13,4 | 0,5 |  |
| 61 | 1.4.7 | **LX-J0006-0000-GE-P-00001** |  | 5d | 2026-06-19 | 2026-06-25 |  |  |  | 2026-06-16 | 2026-06-24 | 7d | 1d |  |  |  | 40h |  | COORDINATION | Qua 24/06/26 | Ter 16/06/26 | 7 dias | 31,2 |  |  |
| 62 | 1.4.7.1 | Emissão inicial |  | 2d | 2026-06-19 | 2026-06-22 | 49 |  |  | 2026-06-16 | 2026-06-17 | 2d | 1d | 0d |  | Coordenador | 16h |  | COORDINATION | Qua 17/06/26 | Ter 16/06/26 | 2 dias | 13,4 | 16 |  |
| 63 | 1.4.7.2 | Avaliação do Cliente |  | 1d | 2026-06-23 | 2026-06-23 | 62 |  |  | 2026-06-18 | 2026-06-22 | 3d | 1d | 0d |  | Tecnored | 8h |  | COORDINATION | Seg 22/06/26 | Qui 18/06/26 | 3 dias | 13,4 |  |  |
| 64 | 1.4.7.3 | Atendimento de Comentário |  | 1d | 2026-06-24 | 2026-06-24 | 63 |  |  | 2026-06-23 | 2026-06-23 | 1d | 1d | 0d |  | Coordenador | 8h |  | COORDINATION | Ter 23/06/26 | Ter 23/06/26 | 1 dia | 13,4 |  |  |
| 65 | 1.4.7.4 | Aprovação |  | 1d | 2026-06-25 | 2026-06-25 | 64 |  |  | 2026-06-24 | 2026-06-24 | 1d | 1d |  |  | Tecnored | 8h |  | COORDINATION | Qua 24/06/26 | Qua 24/06/26 | 1 dia | 13,4 | 0,5 |  |
| 66 | 1.4.8 | **LP-J0006-0000-GE-G-00001** |  | 22d | 2026-03-17 A | 2026-04-17 A |  | 100% |  | 2026-03-17 | 2026-06-26 | 67d |  |  |  |  | 48h | 48h | COORDINATION | Sex 26/06/26 | Ter 17/03/26 | 67 dias | 21,6 |  |  |
| 67 | 1.4.8.1 | Emissão inicial |  | 4d | 2026-03-17 A | 2026-03-20 A | 3 | 100% |  | 2026-03-17 | 2026-03-20 | 4d |  |  |  | Coordenador | 32h | 32h | COORDINATION | Sex 20/03/26 | Ter 17/03/26 | 4 dias | 13,4 | 32 |  |
| 68 | 1.4.8.2 | Avaliação do Cliente |  | 1d | 2026-03-23 A | 2026-03-23 A | 67 | 100% |  | 2026-03-23 | 2026-03-23 | 1d |  |  |  | Tecnored | 8h | 8h | COORDINATION | Seg 23/03/26 | Seg 23/03/26 | 1 dia | 13,4 |  |  |
| 69 | 1.4.8.3 | Atendimento de Comentário | milestone, manual | 0d | 2026-04-16 A | 2026-04-16 A | 68, 54 | 100% |  | 2026-06-25 | 2026-06-25 | 0d |  |  | start no earlier than 2026-06-25 | Coordenador |  |  | COORDINATION | Qui 25/06/26 | Qui 25/06/26 | 0 dias | 13,4 |  |  |
| 70 | 1.4.8.4 | Aprovação | manual | 1d | 2026-04-17 A | 2026-04-17 A | 69 | 100% |  | 2026-06-26 | 2026-06-26 | 1d |  |  | finish no earlier than 2026-06-26 | Tecnored | 8h | 8h | COORDINATION | Sex 26/06/26 | Sex 26/06/26 | 1 dia | 13,4 | 0,5 |  |
| 71 | 1.4.9 | **ML-J0006-0000-GE-G-00001** |  | 8d | 2026-06-17 A | 2026-06-26 |  | 13% | 7d | 2026-04-13 | 2026-06-26 | 50d | 0d |  |  |  |  |  | COORDINATION | Sex 26/06/26 | Seg 13/04/26 | 50 dias |  |  |  |
| 72 | 1.4.9.1 | Emissão inicial |  | 1d | 2026-06-17 A | 2026-06-17 | 6FS+42d | 75% | 0.25d | 2026-04-13 | 2026-04-13 | 1d | 0d |  |  |  |  |  | COORDINATION | Seg 13/04/26 | Seg 13/04/26 | 1 dia | 13,4 | 16 |  |
| 73 | 1.4.9.2 | Avaliação do Cliente |  | 2d | 2026-06-22 | 2026-06-23 | 72FS+2d |  |  | 2026-04-14 | 2026-04-24 | 7d | 0d |  |  |  |  |  | COORDINATION | Sex 24/04/26 | Ter 14/04/26 | 7 dias | 13,4 |  |  |
| 74 | 1.4.9.3 | Atendimento de Comentário |  | 2d | 2026-06-24 | 2026-06-25 | 73 |  |  | 2026-06-18 | 2026-06-24 | 5d | 0d |  |  |  |  |  | COORDINATION | Qua 24/06/26 | Qui 18/06/26 | 5 dias | 13,4 |  |  |
| 75 | 1.4.9.4 | Aprovação |  | 1d | 2026-06-26 | 2026-06-26 | 74 |  |  | 2026-06-25 | 2026-06-26 | 2d | 0d |  |  |  |  |  | COORDINATION | Sex 26/06/26 | Qui 25/06/26 | 2 dias | 13,4 | 0,5 |  |

| ID | WBS | Task | Duration | Start | Finish | Predecessors | Complete | Remaining | Baseline start | Baseline finish | Baseline duration | Total slack | Resources | Work | Actual work | Text2 | Início_LB_R0 | Duração_LB_R0 | Duração média da atividade (Tecnored) | Duração Média (Tenax) | Disciplina | Text20 |
| --- | --- | --- | --- | --- | --- | --- | --- | --- | --- | --- | --- | --- | --- | --- | --- | --- | --- | --- | --- | --- | --- | --- |
| 76 | 1.5 | **PROCESS** | 62d | 2026-03-23 A | 2026-06-25 |  | 89% | 6.57d | 2026-03-23 | 2026-05-14 | 34d | 1d |  | 1215.2h | 1087.2h | Qui 14/05/26 | Seg 23/03/26 | 34 dias | 363,5 | 105,4 |  |  |
| 77 | 1.5.1 | **CP-J0006-0000-GE-P-00001** | 8d | 2026-03-23 A | 2026-04-01 A |  | 100% |  | 2026-03-23 | 2026-04-01 | 8d |  |  | 72h | 72h | Qua 01/04/26 | Seg 23/03/26 | 8 dias |  | 26,4 | PROCESS |  |
| 78 | 1.5.1.1 | Emissão inicial | 3d | 2026-03-23 A | 2026-03-25 A | 12 | 100% |  | 2026-03-23 | 2026-03-25 | 3d |  | Tecnored | 24h | 24h | Qua 25/03/26 | Seg 23/03/26 | 3 dias | 24 | 13,4 | PROCESS |  |
| 79 | 1.5.1.2 | Avaliação do Cliente | 3d | 2026-03-26 A | 2026-03-30 A | 78 | 100% |  | 2026-03-26 | 2026-03-30 | 3d |  | Tecnored | 24h | 24h | Seg 30/03/26 | Qui 26/03/26 | 3 dias |  | 13,4 | PROCESS |  |
| 80 | 1.5.1.3 | Atendimento de Comentário | 1d | 2026-03-31 A | 2026-03-31 A | 79 | 100% |  | 2026-03-31 | 2026-03-31 | 1d |  | Eng. Processos; Tecnored | 16h | 16h | Ter 31/03/26 | Ter 31/03/26 | 1 dia |  | 13,4 | PROCESS |  |
| 81 | 1.5.1.4 | Aprovação | 1d | 2026-04-01 A | 2026-04-01 A | 80 | 100% |  | 2026-04-01 | 2026-04-01 | 1d |  | Tecnored | 8h | 8h | Qua 01/04/26 | Qua 01/04/26 | 1 dia | 0,5 | 13,4 | PROCESS |  |
| 82 | 1.5.2 | **CP-J0006-0000-GE-P-00002** | 8d | 2026-03-23 A | 2026-04-01 A |  | 100% |  | 2026-03-23 | 2026-04-01 | 8d |  |  | 64h | 64h | Qua 01/04/26 | Seg 23/03/26 | 8 dias |  | 26,4 | PROCESS |  |
| 83 | 1.5.2.1 | Emissão inicial | 3d | 2026-03-23 A | 2026-03-25 A | 12 | 100% |  | 2026-03-23 | 2026-03-25 | 3d |  | Tecnored | 24h | 24h | Qua 25/03/26 | Seg 23/03/26 | 3 dias | 24 | 13,4 | PROCESS |  |
| 84 | 1.5.2.2 | Avaliação do Cliente | 3d | 2026-03-26 A | 2026-03-30 A | 83 | 100% |  | 2026-03-26 | 2026-03-30 | 3d |  | Tecnored | 24h | 24h | Seg 30/03/26 | Qui 26/03/26 | 3 dias |  | 13,4 | PROCESS |  |
| 85 | 1.5.2.3 | Atendimento de Comentário | 1d | 2026-03-31 A | 2026-03-31 A | 84 | 100% |  | 2026-03-31 | 2026-03-31 | 1d |  | Eng. Processos | 8h | 8h | Ter 31/03/26 | Ter 31/03/26 | 1 dia |  | 13,4 | PROCESS |  |
| 86 | 1.5.2.4 | Aprovação | 1d | 2026-04-01 A | 2026-04-01 A | 85 | 100% |  | 2026-04-01 | 2026-04-01 | 1d |  | Tecnored | 8h | 8h | Qua 01/04/26 | Qua 01/04/26 | 1 dia | 0,5 | 13,4 | PROCESS |  |
| 87 | 1.5.3 | **DB-J0006-0000-GE-P-00001** | 6d | 2026-03-23 A | 2026-03-30 A |  | 100% |  | 2026-03-23 | 2026-03-30 | 6d |  |  | 48h | 48h | Seg 30/03/26 | Seg 23/03/26 | 6 dias |  | 15,6 | PROCESS |  |
| 88 | 1.5.3.1 | Emissão inicial | 1d | 2026-03-23 A | 2026-03-23 A | 12 | 100% |  | 2026-03-23 | 2026-03-23 | 1d |  | Tecnored | 8h | 8h | Seg 23/03/26 | Seg 23/03/26 | 1 dia | 16 | 13,4 | PROCESS |  |
| 89 | 1.5.3.2 | Avaliação do Cliente | 3d | 2026-03-24 A | 2026-03-26 A | 88 | 100% |  | 2026-03-24 | 2026-03-26 | 3d |  | Tecnored | 24h | 24h | Qui 26/03/26 | Ter 24/03/26 | 3 dias |  | 13,4 | PROCESS |  |
| 90 | 1.5.3.3 | Atendimento de Comentário | 1d | 2026-03-27 A | 2026-03-27 A | 89 | 100% |  | 2026-03-27 | 2026-03-27 | 1d |  | Eng. Processos | 8h | 8h | Sex 27/03/26 | Sex 27/03/26 | 1 dia |  | 13,4 | PROCESS |  |
| 91 | 1.5.3.4 | Aprovação | 1d | 2026-03-30 A | 2026-03-30 A | 90 | 100% |  | 2026-03-30 | 2026-03-30 | 1d |  | Tecnored | 8h | 8h | Seg 30/03/26 | Seg 30/03/26 | 1 dia | 0,5 | 13,4 | PROCESS |  |
| 92 | 1.5.4 | **DB-J0006-0000-GE-P-00002** | 6d | 2026-03-23 A | 2026-03-30 A |  | 100% |  | 2026-03-23 | 2026-03-30 | 6d |  |  | 48h | 48h | Seg 30/03/26 | Seg 23/03/26 | 6 dias |  | 15,6 | PROCESS |  |
| 93 | 1.5.4.1 | Emissão inicial | 1d | 2026-03-23 A | 2026-03-23 A | 12 | 100% |  | 2026-03-23 | 2026-03-23 | 1d |  | Tecnored | 8h | 8h | Seg 23/03/26 | Seg 23/03/26 | 1 dia | 16 | 13,4 | PROCESS |  |
| 94 | 1.5.4.2 | Avaliação do Cliente | 3d | 2026-03-24 A | 2026-03-26 A | 93 | 100% |  | 2026-03-24 | 2026-03-26 | 3d |  | Tecnored | 24h | 24h | Qui 26/03/26 | Ter 24/03/26 | 3 dias |  | 13,4 | PROCESS |  |
| 95 | 1.5.4.3 | Atendimento de Comentário | 1d | 2026-03-27 A | 2026-03-27 A | 94 | 100% |  | 2026-03-27 | 2026-03-27 | 1d |  | Eng. Processos | 8h | 8h | Sex 27/03/26 | Sex 27/03/26 | 1 dia |  | 13,4 | PROCESS |  |
| 96 | 1.5.4.4 | Aprovação | 1d | 2026-03-30 A | 2026-03-30 A | 95 | 100% |  | 2026-03-30 | 2026-03-30 | 1d |  | Tecnored | 8h | 8h | Seg 30/03/26 | Seg 30/03/26 | 1 dia | 0,5 | 13,4 | PROCESS |  |
| 97 | 1.5.5 | **FG-J0006-0000-GE-P-00001** | 10d | 2026-04-01 A | 2026-04-16 A |  | 100% |  | 2026-04-01 | 2026-04-16 | 10d |  |  | 80h | 80h | Qui 16/04/26 | Qua 01/04/26 | 10 dias |  | 19,2 | PROCESS |  |
| 98 | 1.5.5.1 | Emissão inicial | 5d | 2026-04-01 A | 2026-04-09 A | 91, 80, 85, 96 | 100% |  | 2026-04-01 | 2026-04-09 | 5d |  | Tecnored | 40h | 40h | Qui 09/04/26 | Qua 01/04/26 | 5 dias | 32 | 13,4 | PROCESS | 07/04/2026 32HH |
| 99 | 1.5.5.2 | Avaliação do Cliente | 3d | 2026-04-10 A | 2026-04-14 A | 98 | 100% |  | 2026-04-10 | 2026-04-14 | 3d |  | Tecnored | 24h | 24h | Ter 14/04/26 | Sex 10/04/26 | 3 dias |  | 13,4 | PROCESS |  |
| 100 | 1.5.5.3 | Atendimento de Comentário | 1d | 2026-04-15 A | 2026-04-15 A | 99 | 100% |  | 2026-04-15 | 2026-04-15 | 1d |  | Eng. Processos | 8h | 8h | Qua 15/04/26 | Qua 15/04/26 | 1 dia |  | 13,4 | PROCESS |  |
| 101 | 1.5.5.4 | Aprovação | 1d | 2026-04-16 A | 2026-04-16 A | 100 | 100% |  | 2026-04-16 | 2026-04-16 | 1d |  | Tecnored | 8h | 8h | Qui 16/04/26 | Qui 16/04/26 | 1 dia | 0,5 | 13,4 | PROCESS |  |

| ID | WBS | Task | Duration | Start | Finish | Predecessors | Complete | Baseline start | Baseline finish | Baseline duration | Resources | Work | Actual work | Disciplina | Text2 | Início_LB_R0 | Duração_LB_R0 | Duração Média (Tenax) | Duração média da atividade (Tecnored) | Text20 |
| --- | --- | --- | --- | --- | --- | --- | --- | --- | --- | --- | --- | --- | --- | --- | --- | --- | --- | --- | --- | --- |
| 102 | 1.5.6 | **FG-J0006-0100-GE-P-00001** | 16d | 2026-04-10 A | 2026-05-06 A |  | 100% | 2026-04-10 | 2026-04-17 | 6d |  | 48h | 48h | PROCESS | Sex 17/04/26 | Sex 10/04/26 | 6 dias | 15,6 |  |  |
| 103 | 1.5.6.1 | Emissão inicial | 1d | 2026-04-10 A | 2026-04-10 A | 98 | 100% | 2026-04-10 | 2026-04-10 | 1d | Tecnored | 8h | 8h | PROCESS | Sex 10/04/26 | Sex 10/04/26 | 1 dia | 13,4 | 16 | 10/04/2026 |
| 104 | 1.5.6.2 | Avaliação do Cliente | 3d | 2026-04-13 A | 2026-04-15 A | 103 | 100% | 2026-04-13 | 2026-04-15 | 3d | Tecnored | 24h | 24h | PROCESS | Qua 15/04/26 | Seg 13/04/26 | 3 dias | 13,4 |  |  |
| 105 | 1.5.6.3 | Atendimento de Comentário | 1d | 2026-05-05 A | 2026-05-05 A | 104 | 100% | 2026-04-16 | 2026-04-16 | 1d | Felipe | 8h | 8h | PROCESS | Qui 16/04/26 | Qui 16/04/26 | 1 dia | 13,4 |  |  |
| 106 | 1.5.6.4 | Aprovação | 1d | 2026-05-06 A | 2026-05-06 A | 105 | 100% | 2026-04-17 | 2026-04-17 | 1d | Tecnored | 8h | 8h | PROCESS | Sex 17/04/26 | Sex 17/04/26 | 1 dia | 13,4 | 0,5 |  |
| 107 | 1.5.7 | **FG-J0006-0200-GE-P-00001** | 16d | 2026-04-10 A | 2026-05-06 A |  | 100% | 2026-04-10 | 2026-04-17 | 6d |  | 48h | 48h | PROCESS | Sex 17/04/26 | Sex 10/04/26 | 6 dias | 33,6 |  |  |
| 108 | 1.5.7.1 | Emissão inicial | 1d | 2026-04-10 A | 2026-04-10 A | 98 | 100% | 2026-04-10 | 2026-04-10 | 1d | Tecnored | 8h | 8h | PROCESS | Sex 10/04/26 | Sex 10/04/26 | 1 dia | 13,4 | 16 | 10/04/2026 |
| 109 | 1.5.7.2 | Avaliação do Cliente | 3d | 2026-04-13 A | 2026-04-15 A | 108 | 100% | 2026-04-13 | 2026-04-15 | 3d | Tecnored | 24h | 24h | PROCESS | Qua 15/04/26 | Seg 13/04/26 | 3 dias | 13,4 |  |  |
| 110 | 1.5.7.3 | Atendimento de Comentário | 1d | 2026-05-05 A | 2026-05-05 A | 109 | 100% | 2026-04-16 | 2026-04-16 | 1d | Felipe | 8h | 8h | PROCESS | Qui 16/04/26 | Qui 16/04/26 | 1 dia | 13,4 |  |  |
| 111 | 1.5.7.4 | Aprovação | 1d | 2026-05-06 A | 2026-05-06 A | 110 | 100% | 2026-04-17 | 2026-04-17 | 1d | Tecnored | 8h | 8h | PROCESS | Sex 17/04/26 | Sex 17/04/26 | 1 dia | 13,4 | 0,5 |  |
| 112 | 1.5.8 | **FG-J0006-0300-GE-P-00001** | 16d | 2026-04-10 A | 2026-05-06 A |  | 100% | 2026-04-10 | 2026-04-17 | 6d |  | 48h | 48h | PROCESS | Sex 17/04/26 | Sex 10/04/26 | 6 dias | 15,6 |  |  |
| 113 | 1.5.8.1 | Emissão inicial | 1d | 2026-04-10 A | 2026-04-10 A | 98 | 100% | 2026-04-10 | 2026-04-10 | 1d | Tecnored | 8h | 8h | PROCESS | Sex 10/04/26 | Sex 10/04/26 | 1 dia | 13,4 | 16 | 10/04/2026 |
| 114 | 1.5.8.2 | Avaliação do Cliente | 3d | 2026-04-13 A | 2026-04-15 A | 113 | 100% | 2026-04-13 | 2026-04-15 | 3d | Tecnored | 24h | 24h | PROCESS | Qua 15/04/26 | Seg 13/04/26 | 3 dias | 13,4 |  |  |
| 115 | 1.5.8.3 | Atendimento de Comentário | 1d | 2026-05-05 A | 2026-05-05 A | 114 | 100% | 2026-04-16 | 2026-04-16 | 1d | Felipe | 8h | 8h | PROCESS | Qui 16/04/26 | Qui 16/04/26 | 1 dia | 13,4 |  |  |
| 116 | 1.5.8.4 | Aprovação | 1d | 2026-05-06 A | 2026-05-06 A | 115 | 100% | 2026-04-17 | 2026-04-17 | 1d | Tecnored | 8h | 8h | PROCESS | Sex 17/04/26 | Sex 17/04/26 | 1 dia | 13,4 | 0,5 |  |
| 117 | 1.5.9 | **FG-J0006-0400-GE-P-00001** | 15d | 2026-04-13 A | 2026-05-06 A |  | 100% | 2026-04-13 | 2026-04-22 | 6d |  | 48h | 48h | PROCESS | Qua 22/04/26 | Seg 13/04/26 | 6 dias | 15,6 |  |  |
| 118 | 1.5.9.1 | Emissão inicial | 1d | 2026-04-13 A | 2026-04-13 A | 103 | 100% | 2026-04-13 | 2026-04-13 | 1d | Tecnored | 8h | 8h | PROCESS | Seg 13/04/26 | Seg 13/04/26 | 1 dia | 13,4 | 16 | 10/04/2026 |
| 119 | 1.5.9.2 | Avaliação do Cliente | 3d | 2026-04-14 A | 2026-04-16 A | 118 | 100% | 2026-04-14 | 2026-04-16 | 3d | Tecnored | 24h | 24h | PROCESS | Qui 16/04/26 | Ter 14/04/26 | 3 dias | 13,4 |  |  |
| 120 | 1.5.9.3 | Atendimento de Comentário | 1d | 2026-05-05 A | 2026-05-05 A | 119 | 100% | 2026-04-17 | 2026-04-17 | 1d | Felipe | 8h | 8h | PROCESS | Sex 17/04/26 | Sex 17/04/26 | 1 dia | 13,4 |  |  |
| 121 | 1.5.9.4 | Aprovação | 1d | 2026-05-06 A | 2026-05-06 A | 120 | 100% | 2026-04-22 | 2026-04-22 | 1d | Tecnored | 8h | 8h | PROCESS | Qua 22/04/26 | Qua 22/04/26 | 1 dia | 13,4 | 0,5 |  |
| 122 | 1.5.10 | **FG-J0006-0500-GE-P-00001** | 31d | 2026-04-13 A | 2026-05-28 A |  | 100% | 2026-04-13 | 2026-04-22 | 6d |  | 255.2h | 255.2h | PROCESS | Qua 22/04/26 | Seg 13/04/26 | 6 dias | 15,6 |  |  |
| 123 | 1.5.10.1 | Emissão inicial | 1d | 2026-04-13 A | 2026-04-13 A | 103 | 100% | 2026-04-13 | 2026-04-13 | 1d | Tecnored | 8h | 8h | PROCESS | Seg 13/04/26 | Seg 13/04/26 | 1 dia | 13,4 | 16 | 22/04/26 |
| 124 | 1.5.10.2 | Avaliação do Cliente | 3d | 2026-04-14 A | 2026-04-16 A | 123 | 100% | 2026-04-14 | 2026-04-16 | 3d | Tecnored | 24h | 24h | PROCESS | Qui 16/04/26 | Ter 14/04/26 | 3 dias | 13,4 |  |  |
| 125 | 1.5.10.3 | Atendimento de Comentário | 26d | 2026-04-17 A | 2026-05-27 A | 124 | 100% | 2026-04-17 | 2026-04-17 | 1d | Felipe | 208h | 208h | PROCESS | Sex 17/04/26 | Sex 17/04/26 | 1 dia | 13,4 |  |  |
| 126 | 1.5.10.4 | Aprovação | 1.9d | 2026-04-22 A | 2026-05-28 A | 125 | 100% | 2026-04-22 | 2026-04-22 | 1d | Tecnored | 15.2h | 15.2h | PROCESS | Qua 22/04/26 | Qua 22/04/26 | 1 dia | 13,4 | 0,5 |  |

| ID | WBS | Task | Duration | Start | Finish | Predecessors | Complete | Baseline start | Baseline finish | Baseline duration | Total slack | Free slack | Resources | Work | Actual work | Disciplina | Text2 | Início_LB_R0 | Duração_LB_R0 | Duração Média (Tenax) | Duração média da atividade (Tecnored) | Text20 |
| --- | --- | --- | --- | --- | --- | --- | --- | --- | --- | --- | --- | --- | --- | --- | --- | --- | --- | --- | --- | --- | --- | --- |
| 127 | 1.5.11 | **FG-J0006-0600-GE-P-00001** | 15d | 2026-04-13 A | 2026-05-06 A |  | 100% | 2026-04-13 | 2026-04-22 | 6d |  |  |  | 48h | 48h | PROCESS | Qua 22/04/26 | Seg 13/04/26 | 6 dias | 15,6 |  |  |
| 128 | 1.5.11.1 | Emissão inicial | 1d | 2026-04-13 A | 2026-04-13 A | 103 | 100% | 2026-04-13 | 2026-04-13 | 1d |  |  | Tecnored | 8h | 8h | PROCESS | Seg 13/04/26 | Seg 13/04/26 | 1 dia | 13,4 | 16 | 10/04/2026 |
| 129 | 1.5.11.2 | Avaliação do Cliente | 3d | 2026-04-14 A | 2026-04-16 A | 128 | 100% | 2026-04-14 | 2026-04-16 | 3d |  |  | Tecnored | 24h | 24h | PROCESS | Qui 16/04/26 | Ter 14/04/26 | 3 dias | 13,4 |  |  |
| 130 | 1.5.11.3 | Atendimento de Comentário | 1d | 2026-05-05 A | 2026-05-05 A | 129 | 100% | 2026-04-17 | 2026-04-17 | 1d |  |  | Felipe | 8h | 8h | PROCESS | Sex 17/04/26 | Sex 17/04/26 | 1 dia | 13,4 |  |  |
| 131 | 1.5.11.4 | Aprovação | 1d | 2026-05-06 A | 2026-05-06 A | 130 | 100% | 2026-04-22 | 2026-04-22 | 1d |  |  | Tecnored | 8h | 8h | PROCESS | Qua 22/04/26 | Qua 22/04/26 | 1 dia | 13,4 | 0,5 |  |
| 132 | 1.5.12 | **FG-J0006-0700-GE-P-00001** | 14d | 2026-04-14 A | 2026-05-06 A |  | 100% | 2026-04-14 | 2026-04-23 | 6d |  |  |  | 48h | 48h | PROCESS | Qui 23/04/26 | Ter 14/04/26 | 6 dias | 15,6 |  |  |
| 133 | 1.5.12.1 | Emissão inicial | 1d | 2026-04-14 A | 2026-04-14 A | 128 | 100% | 2026-04-14 | 2026-04-14 | 1d |  |  | Tecnored | 8h | 8h | PROCESS | Ter 14/04/26 | Ter 14/04/26 | 1 dia | 13,4 | 16 | 10/04/2026 |
| 134 | 1.5.12.2 | Avaliação do Cliente | 3d | 2026-04-15 A | 2026-04-17 A | 133 | 100% | 2026-04-15 | 2026-04-17 | 3d |  |  | Tecnored | 24h | 24h | PROCESS | Sex 17/04/26 | Qua 15/04/26 | 3 dias | 13,4 |  |  |
| 135 | 1.5.12.3 | Atendimento de Comentário | 1d | 2026-05-05 A | 2026-05-05 A | 134 | 100% | 2026-04-22 | 2026-04-22 | 1d |  |  | Felipe | 8h | 8h | PROCESS | Qua 22/04/26 | Qua 22/04/26 | 1 dia | 13,4 |  |  |
| 136 | 1.5.12.4 | Aprovação | 1d | 2026-05-06 A | 2026-05-06 A | 135 | 100% | 2026-04-23 | 2026-04-23 | 1d |  |  | Tecnored | 8h | 8h | PROCESS | Qui 23/04/26 | Qui 23/04/26 | 1 dia | 13,4 | 0,5 |  |
| 137 | 1.5.13 | **FG-J0006-0800-GE-P-00001** | 14d | 2026-04-14 A | 2026-05-06 A |  | 100% | 2026-04-14 | 2026-04-24 | 7d |  |  |  | 56h | 56h | PROCESS | Sex 24/04/26 | Ter 14/04/26 | 7 dias | 33,6 |  |  |
| 138 | 1.5.13.1 | Emissão inicial | 2d | 2026-04-14 A | 2026-04-15 A | 128 | 100% | 2026-04-14 | 2026-04-15 | 2d |  |  | Tecnored | 16h | 16h | PROCESS | Qua 15/04/26 | Ter 14/04/26 | 2 dias | 13,4 | 16 | 10/04/2026 |
| 139 | 1.5.13.2 | Avaliação do Cliente | 3d | 2026-04-16 A | 2026-04-22 A | 138 | 100% | 2026-04-16 | 2026-04-22 | 3d |  |  | Tecnored | 24h | 24h | PROCESS | Qua 22/04/26 | Qui 16/04/26 | 3 dias | 13,4 |  |  |
| 140 | 1.5.13.3 | Atendimento de Comentário | 1d | 2026-05-05 A | 2026-05-05 A | 139 | 100% | 2026-04-23 | 2026-04-23 | 1d |  |  | Felipe | 8h | 8h | PROCESS | Qui 23/04/26 | Qui 23/04/26 | 1 dia | 13,4 |  |  |
| 141 | 1.5.13.4 | Aprovação | 1d | 2026-05-06 A | 2026-05-06 A | 140 | 100% | 2026-04-24 | 2026-04-24 | 1d |  |  | Tecnored | 8h | 8h | PROCESS | Sex 24/04/26 | Sex 24/04/26 | 1 dia | 13,4 | 0,5 |  |
| 142 | 1.5.14 | **FG-J0006-0900-GE-P-00001** | 14d | 2026-04-14 A | 2026-05-06 A |  | 100% | 2026-04-14 | 2026-04-24 | 7d |  |  |  | 56h | 56h | PROCESS | Sex 24/04/26 | Ter 14/04/26 | 7 dias | 15,6 |  |  |
| 143 | 1.5.14.1 | Emissão inicial | 2d | 2026-04-14 A | 2026-04-15 A | 128 | 100% | 2026-04-14 | 2026-04-15 | 2d |  |  | Tecnored | 16h | 16h | PROCESS | Qua 15/04/26 | Ter 14/04/26 | 2 dias | 13,4 | 16 | 10/04/2026 |
| 144 | 1.5.14.2 | Avaliação do Cliente | 3d | 2026-04-16 A | 2026-04-22 A | 143 | 100% | 2026-04-16 | 2026-04-22 | 3d |  |  | Tecnored | 24h | 24h | PROCESS | Qua 22/04/26 | Qui 16/04/26 | 3 dias | 13,4 |  |  |
| 145 | 1.5.14.3 | Atendimento de Comentário | 1d | 2026-05-05 A | 2026-05-05 A | 144 | 100% | 2026-04-23 | 2026-04-23 | 1d |  |  | Felipe | 8h | 8h | PROCESS | Qui 23/04/26 | Qui 23/04/26 | 1 dia | 13,4 |  |  |
| 146 | 1.5.14.4 | Aprovação | 1d | 2026-05-06 A | 2026-05-06 A | 145 | 100% | 2026-04-24 | 2026-04-24 | 1d |  |  | Tecnored | 8h | 8h | PROCESS | Sex 24/04/26 | Sex 24/04/26 | 1 dia | 13,4 | 0,5 |  |
| 147 | 1.5.15 | **MD-J0006-0000-GE-P-00001** | 8d | 2026-06-16 | 2026-06-25 |  |  | 2026-05-05 | 2026-05-14 | 8d | 1d |  |  | 64h |  | PROCESS | Qui 14/05/26 | Ter 05/05/26 | 8 dias | 40,8 |  |  |
| 148 | 1.5.15.1 | Emissão inicial | 3d | 2026-06-16 | 2026-06-18 | 158 |  | 2026-05-05 | 2026-05-07 | 3d | 1d | 0d | Tecnored | 24h |  | PROCESS | Qui 07/05/26 | Ter 05/05/26 | 3 dias | 13,4 | 24 |  |
| 149 | 1.5.15.2 | Avaliação do Cliente | 3d | 2026-06-19 | 2026-06-23 | 148 |  | 2026-05-08 | 2026-05-12 | 3d | 1d | 0d | Tecnored | 24h |  | PROCESS | Ter 12/05/26 | Sex 08/05/26 | 3 dias | 13,4 |  |  |
| 150 | 1.5.15.3 | Atendimento de Comentário | 1d | 2026-06-24 | 2026-06-24 | 149 |  | 2026-05-13 | 2026-05-13 | 1d | 1d | 0d | Eng. Processos | 8h |  | PROCESS | Qua 13/05/26 | Qua 13/05/26 | 1 dia | 13,4 |  |  |
| 151 | 1.5.15.4 | Aprovação | 1d | 2026-06-25 | 2026-06-25 | 150 |  | 2026-05-14 | 2026-05-14 | 1d | 1d |  | Tecnored | 8h |  | PROCESS | Qui 14/05/26 | Qui 14/05/26 | 1 dia | 13,4 | 0,5 |  |

| ID | WBS | Task | Duration | Start | Finish | Predecessors | Complete | Remaining | Baseline start | Baseline finish | Baseline duration | Total slack | Free slack | Constraint | Resources | Work | Actual work | Disciplina | Text2 | Início_LB_R0 | Duração_LB_R0 | Duração Média (Tenax) | Duração média da atividade (Tecnored) | Text20 |
| --- | --- | --- | --- | --- | --- | --- | --- | --- | --- | --- | --- | --- | --- | --- | --- | --- | --- | --- | --- | --- | --- | --- | --- | --- |
| 152 | 1.5.16 | **MC-J0006-0000-GE-P-00001** | 15d | 2026-05-04 A | 2026-05-22 A |  | 100% |  | 2026-04-22 | 2026-05-06 | 10d |  |  |  |  | 120h | 120h | PROCESS | Qua 06/05/26 | Qua 22/04/26 | 10 dias | 33,6 |  |  |
| 153 | 1.5.16.1 | Emissão inicial | 4d | 2026-05-04 A | 2026-05-07 A | 116FS+10d, 143 | 100% |  | 2026-04-22 | 2026-04-28 | 5d |  |  |  | Tecnored | 32h | 32h | PROCESS | Ter 28/04/26 | Qua 22/04/26 | 5 dias | 13,4 | 32 |  |
| 154 | 1.5.16.2 | Avaliação do Cliente | 1d | 2026-05-07 A | 2026-05-08 A | 153 | 100% |  | 2026-04-29 | 2026-05-04 | 3d |  |  |  | Tecnored | 8h | 8h | PROCESS | Seg 04/05/26 | Qua 29/04/26 | 3 dias | 13,4 |  |  |
| 155 | 1.5.16.3 | Atendimento de Comentário | 3d | 2026-05-11 A | 2026-05-13 A | 154 | 100% |  | 2026-05-05 | 2026-05-05 | 1d |  |  |  | Eng. Processos | 24h | 24h | PROCESS | Ter 05/05/26 | Ter 05/05/26 | 1 dia | 13,4 |  |  |
| 156 | 1.5.16.4 | Aprovação | 7d | 2026-05-13 A | 2026-05-22 A | 155 | 100% |  | 2026-05-06 | 2026-05-06 | 1d |  |  |  | Tecnored | 56h | 56h | PROCESS | Qua 06/05/26 | Qua 06/05/26 | 1 dia | 13,4 | 0,5 |  |
| 157 | 1.5.17 | **ET-J0006-0000-GE-P-00001** | 8d | 2026-06-11 | 2026-06-22 |  |  |  | 2026-04-29 | 2026-05-11 | 8d | 1d |  |  |  | 64h |  | PROCESS | Seg 11/05/26 | Qua 29/04/26 | 8 dias | 26,4 |  |  |
| 158 | 1.5.17.1 | Emissão inicial | 3d | 2026-06-11 | 2026-06-15 | 153FS+22d |  |  | 2026-04-29 | 2026-05-04 | 3d | 1d | 0d |  | Eng. Processos | 24h |  | PROCESS | Seg 04/05/26 | Qua 29/04/26 | 3 dias | 13,4 | 24 |  |
| 159 | 1.5.17.2 | Avaliação do Cliente | 3d | 2026-06-16 | 2026-06-18 | 158 |  |  | 2026-05-05 | 2026-05-07 | 3d | 4d | 0d |  | Tecnored | 24h |  | PROCESS | Qui 07/05/26 | Ter 05/05/26 | 3 dias | 13,4 |  |  |
| 160 | 1.5.17.3 | Atendimento de Comentário | 1d | 2026-06-19 | 2026-06-19 | 159 |  |  | 2026-05-08 | 2026-05-08 | 1d | 4d | 0d |  | Eng. Processos | 8h |  | PROCESS | Sex 08/05/26 | Sex 08/05/26 | 1 dia | 13,4 |  |  |
| 161 | 1.5.17.4 | Aprovação | 1d | 2026-06-22 | 2026-06-22 | 160 |  |  | 2026-05-11 | 2026-05-11 | 1d | 4d |  |  | Tecnored | 8h |  | PROCESS | Seg 11/05/26 | Seg 11/05/26 | 1 dia | 13,4 | 0,5 |  |
| 162 | 1.6 | **MECHANICAL** | 62d | 2026-03-20 A | 2026-06-24 |  | 95% | 2.95d | 2026-03-23 | 2026-06-26 | 63d | 2d |  |  |  | 5722h | 5450h |  | Sex 26/06/26 | Seg 23/03/26 | 63 dias | 459,68 | 894 |  |
| 163 | 1.6.1 | **CP-J0006-0000-GE-M-00001** | 46d | 2026-03-23 A | 2026-06-01 A |  | 100% |  | 2026-03-23 | 2026-03-31 | 7d |  |  |  |  | 366h | 366h | MECHANICAL |  | Seg 23/03/26 | 7 dias | 21,48 |  |  |
| 164 | 1.6.1.1 | Emissão inicial | 2d | 2026-03-23 A | 2026-03-24 A | 12 | 100% |  | 2026-03-23 | 2026-03-24 | 2d |  |  |  | Eng. Mecânico | 16h | 16h | MECHANICAL |  | Seg 23/03/26 | 2 dias | 13,4 | 16 |  |
| 165 | 1.6.1.2 | Avaliação do Cliente | 3d | 2026-03-25 A | 2026-03-27 A | 164 | 100% |  | 2026-03-25 | 2026-03-27 | 3d |  |  |  | Tecnored | 24h | 24h | MECHANICAL |  | Qua 25/03/26 | 3 dias | 13,4 |  | 31/03/2026 |
| 166 | 1.6.1.3 | Atendimento de Comentário | 32d | 2026-03-31 A | 2026-05-20 A | 165 | 100% |  | 2026-03-30 | 2026-03-30 | 1d |  |  |  | Eng. Mecânico | 256h | 256h | MECHANICAL |  | Seg 30/03/26 | 1 dia | 13,4 |  |  |
| 167 | 1.6.1.4 | Aprovação | 8.75d | 2026-03-31 A | 2026-06-01 A | 166 | 100% |  | 2026-03-31 | 2026-03-31 | 1d |  |  |  | Tecnored | 70h | 70h | MECHANICAL |  | Ter 31/03/26 | 1 dia | 13,4 | 0,5 |  |
| 168 | 1.6.2 | **LE-J0006-0000-GE-M-00001** | 39d | 2026-04-14 A | 2026-06-12 A |  | 100% |  | 2026-05-14 | 2026-05-21 | 6d |  |  |  |  | 279.6h | 279.6h | MECHANICAL |  | Qui 14/05/26 | 6 dias | 26,4 |  |  |
| 169 | 1.6.2.1 | Emissão inicial | 14d | 2026-04-14 A | 2026-05-22 A | 205, 226, 257, 288, 319, 345, 371, 433 | 100% |  | 2026-05-14 | 2026-05-14 | 1d |  |  |  | Eng. Mecânico | 112h | 112h | MECHANICAL |  | Qui 14/05/26 | 1 dia | 13,4 | 32 |  |
| 170 | 1.6.2.2 | Avaliação do Cliente | 11d | 2026-05-15 A | 2026-06-08 A | 169 | 100% |  | 2026-05-15 | 2026-05-19 | 3d |  |  | finish no earlier than 2026-06-01 | Tecnored | 88h | 88h | MECHANICAL |  | Sex 15/05/26 | 3 dias | 13,4 |  |  |
| 171 | 1.6.2.3 | Atendimento de Comentário | 9.55d | 2026-05-28 A | 2026-06-12 A | 170FS-3d | 100% |  | 2026-05-20 | 2026-05-20 | 1d |  |  | finish no earlier than 2026-06-01 | Eng. Mecânico | 76.4h | 76.4h | MECHANICAL |  | Qua 20/05/26 | 1 dia | 13,4 |  | 15/04/26 |
| 172 | 1.6.2.4 | Aprovação | 0.4d | 2026-06-01 A | 2026-06-12 A | 171 | 100% |  | 2026-05-21 | 2026-05-21 | 1d |  |  | finish no earlier than 2026-06-12 | Tecnored | 3.2h | 3.2h | MECHANICAL |  | Qui 21/05/26 | 1 dia | 13,4 | 0,5 |  |
| 173 | 1.6.3 | **MD-J0006-0000-GE-M-00001** | 8d | 2026-06-08 | 2026-06-17 |  |  |  | 2026-05-26 | 2026-06-08 | 8d | 7d |  |  |  | 64h |  | MECHANICAL |  | Ter 26/05/26 | 8 dias | 33,96 |  |  |
| 174 | 1.6.3.1 | Emissão inicial | 3d | 2026-06-08 | 2026-06-10 | 172FF-18d, 178 |  |  | 2026-05-26 | 2026-05-28 | 3d | 7d | 0d |  | Eng. Mecânico | 24h |  | MECHANICAL |  | Ter 26/05/26 | 3 dias | 13,4 | 24 |  |
| 175 | 1.6.3.2 | Avaliação do Cliente | 3d | 2026-06-11 | 2026-06-15 | 174 |  |  | 2026-05-29 | 2026-06-02 | 3d | 7d | 0d |  | Tecnored | 24h |  | MECHANICAL |  | Sex 29/05/26 | 3 dias | 13,4 |  |  |
| 176 | 1.6.3.3 | Atendimento de Comentário | 1d | 2026-06-16 | 2026-06-16 | 175 |  |  | 2026-06-03 | 2026-06-03 | 1d | 7d | 0d |  | Eng. Mecânico | 8h |  | MECHANICAL |  | Qua 03/06/26 | 1 dia | 13,4 |  |  |
| 177 | 1.6.3.4 | Aprovação | 1d | 2026-06-17 | 2026-06-17 | 176 |  |  | 2026-06-08 | 2026-06-08 | 1d | 7d |  |  | Tecnored | 8h |  | MECHANICAL |  | Seg 08/06/26 | 1 dia | 13,4 | 0,5 |  |

| ID | WBS | Task | Type | Duration | Start | Finish | Predecessors | Complete | Baseline start | Baseline finish | Baseline duration | Total slack | Free slack | Resources | Work | Actual work | Disciplina | Início_LB_R0 | Duração_LB_R0 | Duração Média (Tenax) | Duração média da atividade (Tecnored) |
| --- | --- | --- | --- | --- | --- | --- | --- | --- | --- | --- | --- | --- | --- | --- | --- | --- | --- | --- | --- | --- | --- |
| 178 | 1.6.4 | **MC-J0006-0000-GE-M-00001** |  | 18d | 2026-05-11 A | 2026-06-03 A |  | 100% | 2026-05-14 | 2026-05-25 | 8d |  |  |  | 72h | 72h | MECHANICAL | Qui 14/05/26 | 8 dias | 56,2 |  |
| 179 | 1.6.4.1 | Emissão inicial |  | 4d | 2026-05-11 A | 2026-05-14 A | 205, 226, 257, 288, 319, 345, 371, 433 | 100% | 2026-05-14 | 2026-05-18 | 3d |  |  | Eng. Mecânico | 32h | 32h | MECHANICAL | Qui 14/05/26 | 3 dias | 13,4 | 24 |
| 180 | 1.6.4.2 | Avaliação do Cliente |  | 3d | 2026-05-28 A | 2026-06-01 A | 179FS+9d | 100% | 2026-05-19 | 2026-05-21 | 3d |  |  | Tecnored | 24h | 24h | MECHANICAL | Ter 19/05/26 | 3 dias | 13,4 |  |
| 181 | 1.6.4.3 | Atendimento de Comentário |  | 1d | 2026-06-02 A | 2026-06-02 A | 180 | 100% | 2026-05-22 | 2026-05-22 | 1d |  |  | Eng. Mecânico | 8h | 8h | MECHANICAL | Sex 22/05/26 | 1 dia | 13,4 |  |
| 182 | 1.6.4.4 | Aprovação |  | 1d | 2026-06-03 A | 2026-06-03 A | 181 | 100% | 2026-05-25 | 2026-05-25 | 1d |  |  | Tecnored | 8h | 8h | MECHANICAL | Seg 25/05/26 | 1 dia | 13,4 | 0,5 |
| 183 | 1.6.5 | **PQ-J0006-0000-GE-M-00001** |  | 4d | 2026-06-11 | 2026-06-16 |  |  | 2026-05-29 | 2026-06-03 | 4d | 8d |  |  | 32h |  | MECHANICAL | Sex 29/05/26 | 4 dias | 27,72 |  |
| 184 | 1.6.5.1 | Emissão inicial |  | 1d | 2026-06-11 | 2026-06-11 | 174 |  | 2026-05-29 | 2026-05-29 | 1d | 8d | 0d | Eng. Mecânico | 8h |  | MECHANICAL | Sex 29/05/26 | 1 dia | 13,4 | 16 |
| 185 | 1.6.5.2 | Avaliação do Cliente |  | 1d | 2026-06-12 | 2026-06-12 | 184 |  | 2026-06-01 | 2026-06-01 | 1d | 8d | 0d | Tecnored | 8h |  | MECHANICAL | Seg 01/06/26 | 1 dia | 13,4 |  |
| 186 | 1.6.5.3 | Atendimento de Comentário |  | 1d | 2026-06-15 | 2026-06-15 | 185 |  | 2026-06-02 | 2026-06-02 | 1d | 8d | 0d | Eng. Mecânico | 8h |  | MECHANICAL | Ter 02/06/26 | 1 dia | 13,4 |  |
| 187 | 1.6.5.4 | Aprovação |  | 1d | 2026-06-16 | 2026-06-16 | 186 |  | 2026-06-03 | 2026-06-03 | 1d | 8d |  | Tecnored | 8h |  | MECHANICAL | Qua 03/06/26 | 1 dia | 13,4 | 0,5 |
| 188 | 1.6.6 | **AG-J0006-0000-GE-L-00001** |  | 49d | 2026-03-23 A | 2026-06-08 A |  | 100% | 2026-05-14 | 2026-05-27 | 10d |  |  |  | 396.8h | 396.8h | MECHANICAL | Qui 14/05/26 | 10 dias | 27,72 |  |
| 189 | 1.6.6.1 | Emissão inicial |  | 42d | 2026-03-23 A | 2026-05-26 A | 205, 226, 257, 288, 319, 345, 371, 412, 433 | 100% | 2026-05-14 | 2026-05-20 | 5d |  |  | Felipe | 336h | 336h | MECHANICAL | Qui 14/05/26 | 5 dias | 13,4 | 40 |
| 190 | 1.6.6.2 | Avaliação do Cliente |  | 3d | 2026-05-27 A | 2026-05-29 A | 189 | 100% | 2026-05-21 | 2026-05-25 | 3d |  |  | Tecnored | 24h | 24h | MECHANICAL | Qui 21/05/26 | 3 dias | 13,4 |  |
| 191 | 1.6.6.3 | Atendimento de Comentário |  | 3d | 2026-06-01 A | 2026-06-03 A | 190 | 100% | 2026-05-26 | 2026-05-26 | 1d |  |  | Felipe | 24h | 24h | MECHANICAL | Ter 26/05/26 | 1 dia | 13,4 |  |
| 192 | 1.6.6.4 | Aprovação |  | 1.6d | 2026-03-27 A | 2026-06-08 A | 191 | 100% | 2026-05-27 | 2026-05-27 | 1d |  |  | Tecnored | 12.8h | 12.8h | MECHANICAL | Qua 27/05/26 | 1 dia | 13,4 | 0,5 |
| 193 | 1.6.7 | **AG-J0006-0000-GE-L-00002** |  | 49d | 2026-03-23 A | 2026-06-08 A |  | 100% | 2026-05-14 | 2026-05-27 | 10d |  |  |  | 46.8h | 46.8h | MECHANICAL | Qui 14/05/26 | 10 dias | 27,72 |  |
| 194 | 1.6.7.1 | Emissão inicial |  | 1.25d | 2026-03-23 A | 2026-05-26 A | 205, 226, 257, 288, 319, 345, 371, 412, 433 | 100% | 2026-05-14 | 2026-05-20 | 5d |  |  | Felipe | 10h | 10h | MECHANICAL | Qui 14/05/26 | 5 dias | 13,4 |  |
| 195 | 1.6.7.2 | Avaliação do Cliente | milestone | 0d | 2026-05-27 A | 2026-05-29 A | 194FS+7d | 100% | 2026-05-21 | 2026-05-25 | 3d |  |  | Tecnored |  |  | MECHANICAL | Qui 21/05/26 | 3 dias | 13,4 |  |
| 196 | 1.6.7.3 | Atendimento de Comentário |  | 3d | 2026-06-01 A | 2026-06-03 A | 195 | 100% | 2026-05-26 | 2026-05-26 | 1d |  |  | Felipe | 24h | 24h | MECHANICAL | Ter 26/05/26 | 1 dia | 13,4 |  |
| 197 | 1.6.7.4 | Aprovação |  | 1.6d | 2026-06-02 A | 2026-06-08 A | 196 | 100% | 2026-05-27 | 2026-05-27 | 1d |  |  | Tecnored | 12.8h | 12.8h | MECHANICAL | Qua 27/05/26 | 1 dia | 13,4 | 0,5 |
| 198 | 1.6.8 | **AG-J0006-0000-GE-L-00003** |  | 49d | 2026-03-23 A | 2026-06-08 A |  | 100% | 2026-05-14 | 2026-05-27 | 10d |  |  |  | 396.8h | 396.8h | MECHANICAL | Qui 14/05/26 | 10 dias | 27,72 |  |
| 199 | 1.6.8.1 | Emissão inicial |  | 42d | 2026-03-23 A | 2026-05-26 A | 205, 226, 257, 288, 319, 345, 371, 412, 433 | 100% | 2026-05-14 | 2026-05-20 | 5d |  |  | Felipe | 336h | 336h | MECHANICAL | Qui 14/05/26 | 5 dias | 13,4 |  |
| 200 | 1.6.8.2 | Avaliação do Cliente |  | 3d | 2026-05-27 A | 2026-05-29 A | 199FS+7d | 100% | 2026-05-21 | 2026-05-25 | 3d |  |  | Tecnored | 24h | 24h | MECHANICAL | Qui 21/05/26 | 3 dias | 13,4 |  |
| 201 | 1.6.8.3 | Atendimento de Comentário |  | 3d | 2026-06-01 A | 2026-06-03 A | 200 | 100% | 2026-05-26 | 2026-05-26 | 1d |  |  | Felipe | 24h | 24h | MECHANICAL | Ter 26/05/26 | 1 dia | 13,4 |  |
| 202 | 1.6.8.4 | Aprovação |  | 1.6d | 2026-06-02 A | 2026-06-08 A | 201 | 100% | 2026-05-27 | 2026-05-27 | 1d |  |  | Tecnored | 12.8h | 12.8h | MECHANICAL | Qua 27/05/26 | 1 dia | 13,4 | 0,5 |

| ID | WBS | Task | Duration | Start | Finish | Predecessors | Complete | Remaining | Baseline start | Baseline finish | Baseline duration | Total slack | Resources | Work | Actual work | Disciplina | Início_LB_R0 | Duração_LB_R0 | Duração média da atividade (Tecnored) | Duração Média (Tenax) | Duração Medida (h) | Text20 |
| --- | --- | --- | --- | --- | --- | --- | --- | --- | --- | --- | --- | --- | --- | --- | --- | --- | --- | --- | --- | --- | --- | --- |
| 203 | 1.6.9 | **MODULO 0100** | 22d | 2026-04-13 A | 2026-05-15 A |  | 100% |  | 2026-04-22 | 2026-06-08 | 31d |  |  | 622h | 622h | MECHANICAL | Qua 22/04/26 | 31 dias |  |  |  |  |
| 204 | 1.6.9.1 | **ML-J0006-0100-GE-L-00001** | 8d | 2026-04-14 A | 2026-04-27 A |  | 100% |  | 2026-04-22 | 2026-05-04 | 8d |  |  | 64h | 64h | MECHANICAL | Qua 22/04/26 | 8 dias |  |  |  |  |
| 205 | 1.6.9.1.1 | Emissão inicial | 3d | 2026-04-14 A | 2026-04-16 A | 102 | 100% |  | 2026-04-22 | 2026-04-24 | 3d |  | Erikson | 24h | 24h | MECHANICAL | Qua 22/04/26 | 3 dias | 24 | 13,4 | 47,20 | 14/04/2026 |
| 206 | 1.6.9.1.2 | Avaliação do Cliente | 3d | 2026-04-17 A | 2026-04-23 A | 205 | 100% |  | 2026-04-27 | 2026-04-29 | 3d |  | Tecnored | 24h | 24h | MECHANICAL | Seg 27/04/26 | 3 dias |  | 13,4 |  |  |
| 207 | 1.6.9.1.3 | Atendimento de Comentário | 1d | 2026-04-24 A | 2026-04-24 A | 206 | 100% |  | 2026-04-30 | 2026-04-30 | 1d |  | Erikson | 8h | 8h | MECHANICAL | Qui 30/04/26 | 1 dia |  | 13,4 |  |  |
| 208 | 1.6.9.1.4 | Aprovação | 1d | 2026-04-27 A | 2026-04-27 A | 207 | 100% |  | 2026-05-04 | 2026-05-04 | 1d |  | Tecnored | 8h | 8h | MECHANICAL | Seg 04/05/26 | 1 dia | 0,5 | 13,4 |  |  |
| 209 | 1.6.9.2 | **AG-J0006-0100-GE-L-00001** | 22d | 2026-04-13 A | 2026-05-15 A |  | 100% |  | 2026-05-27 | 2026-06-08 | 7d |  |  | 188h | 188h | MECHANICAL | Qua 27/05/26 | 7 dias |  |  |  |  |
| 210 | 1.6.9.2.1 | Emissão inicial | 2d | 2026-04-13 A | 2026-04-14 A | 208, 269, 357, 274 | 100% |  | 2026-05-27 | 2026-05-28 | 2d |  | Erikson | 16h | 16h | MECHANICAL | Qua 27/05/26 | 2 dias |  | 13,4 |  |  |
| 211 | 1.6.9.2.2 | Avaliação do Cliente | 3d | 2026-04-15 A | 2026-04-17 A | 210 | 100% |  | 2026-05-29 | 2026-06-02 | 3d |  | Tecnored | 24h | 24h | MECHANICAL | Sex 29/05/26 | 3 dias |  | 13,4 |  |  |
| 212 | 1.6.9.2.3 | Atendimento de Comentário | 16.75d | 2026-04-17 A | 2026-05-14 A | 211 | 100% |  | 2026-06-03 | 2026-06-03 | 1d |  | Erikson | 134h | 134h | MECHANICAL | Qua 03/06/26 | 1 dia |  | 13,4 |  |  |
| 213 | 1.6.9.2.4 | Aprovação | 1.75d | 2026-04-17 A | 2026-05-15 A | 212 | 100% |  | 2026-06-08 | 2026-06-08 | 1d |  | Tecnored | 14h | 14h | MECHANICAL | Seg 08/06/26 | 1 dia | 0,5 | 13,4 |  |  |
| 214 | 1.6.9.3 | **AG-J0006-0100-GE-L-00002** | 22d | 2026-04-13 A | 2026-05-15 A |  | 100% |  | 2026-05-27 | 2026-06-08 | 7d |  |  | 314h | 314h | MECHANICAL | Qua 27/05/26 | 7 dias |  |  |  |  |
| 215 | 1.6.9.3.1 | Emissão inicial | 2d | 2026-04-13 A | 2026-04-14 A | 210FF | 100% |  | 2026-05-27 | 2026-05-28 | 2d |  | Erikson | 16h | 16h | MECHANICAL | Qua 27/05/26 | 2 dias |  | 13,4 |  |  |
| 216 | 1.6.9.3.2 | Avaliação do Cliente | 3d | 2026-04-15 A | 2026-04-17 A | 215 | 100% |  | 2026-05-29 | 2026-06-02 | 3d |  | Tecnored | 24h | 24h | MECHANICAL | Sex 29/05/26 | 3 dias |  | 13,4 |  |  |
| 217 | 1.6.9.3.3 | Atendimento de Comentário | 16.75d | 2026-04-17 A | 2026-05-14 A | 216 | 100% |  | 2026-06-03 | 2026-06-03 | 1d |  | Erikson | 134h | 134h | MECHANICAL | Qua 03/06/26 | 1 dia |  | 13,4 |  |  |
| 218 | 1.6.9.3.4 | Aprovação | 17.5d | 2026-04-17 A | 2026-05-15 A | 217 | 100% |  | 2026-06-08 | 2026-06-08 | 1d |  | Tecnored | 140h | 140h | MECHANICAL | Seg 08/06/26 | 1 dia | 0,5 | 13,4 |  |  |
| 219 | 1.6.9.4 | **PL-J0006-0100-GE-M-00001** | 7d | 2026-04-13 A | 2026-04-23 A |  | 100% |  | 2026-05-27 | 2026-06-08 | 7d |  |  | 56h | 56h | MECHANICAL | Qua 27/05/26 | 7 dias |  |  |  |  |
| 220 | 1.6.9.4.1 | Emissão inicial | 2d | 2026-04-13 A | 2026-04-14 A | 210FF | 100% |  | 2026-05-27 | 2026-05-28 | 2d |  | Erikson | 16h | 16h | MECHANICAL | Qua 27/05/26 | 2 dias |  | 13,4 |  | 14/04/2026 |
| 221 | 1.6.9.4.2 | Avaliação do Cliente | 3d | 2026-04-15 A | 2026-04-17 A | 220 | 100% |  | 2026-05-29 | 2026-06-02 | 3d |  | Tecnored | 24h | 24h | MECHANICAL | Sex 29/05/26 | 3 dias |  | 13,4 |  |  |
| 222 | 1.6.9.4.3 | Atendimento de Comentário | 1d | 2026-04-22 A | 2026-04-22 A | 221 | 100% |  | 2026-06-03 | 2026-06-03 | 1d |  | Erikson | 8h | 8h | MECHANICAL | Qua 03/06/26 | 1 dia |  | 13,4 |  |  |
| 223 | 1.6.9.4.4 | Aprovação | 1d | 2026-04-23 A | 2026-04-23 A | 222 | 100% |  | 2026-06-08 | 2026-06-08 | 1d |  | Tecnored | 8h | 8h | MECHANICAL | Seg 08/06/26 | 1 dia | 0,5 | 13,4 |  |  |
| 224 | 1.6.10 | **MODULO 0200** | 24d | 2026-05-11 A | 2026-06-15 |  | 89% | 2.57d | 2026-04-22 | 2026-06-24 | 43d | 9d |  | 448h | 400h | MECHANICAL | Qua 22/04/26 | 43 dias |  |  |  |  |
| 225 | 1.6.10.1 | **ML-J0006-0200-GE-L-00001** | 11d | 2026-05-11 A | 2026-05-25 A |  | 100% |  | 2026-04-22 | 2026-05-06 | 10d |  |  | 88h | 88h | MECHANICAL | Qua 22/04/26 | 10 dias |  |  |  |  |
| 226 | 1.6.10.1.1 | Emissão inicial | 4d | 2026-05-11 A | 2026-05-14 A | 107 | 100% |  | 2026-04-22 | 2026-04-28 | 5d |  | Felipe | 32h | 32h | MECHANICAL | Qua 22/04/26 | 5 dias | 40 | 13,4 |  |  |
| 227 | 1.6.10.1.2 | Avaliação do Cliente | 3d | 2026-05-15 A | 2026-05-19 A | 226 | 100% |  | 2026-04-29 | 2026-05-04 | 3d |  | Tecnored | 24h | 24h | MECHANICAL | Qua 29/04/26 | 3 dias |  | 13,4 |  |  |
| 228 | 1.6.10.1.3 | Atendimento de Comentário | 1d | 2026-05-20 A | 2026-05-20 A | 227 | 100% |  | 2026-05-05 | 2026-05-05 | 1d |  | Felipe | 8h | 8h | MECHANICAL | Ter 05/05/26 | 1 dia |  | 13,4 |  |  |
| 229 | 1.6.10.1.4 | Aprovação | 3d | 2026-05-21 A | 2026-05-25 A | 228 | 100% |  | 2026-05-06 | 2026-05-06 | 1d |  | Tecnored | 24h | 24h | MECHANICAL | Qua 06/05/26 | 1 dia | 0,5 | 13,4 |  |  |

| ID | WBS | Task | Duration | Start | Finish | Predecessors | Complete | Remaining | Baseline start | Baseline finish | Baseline duration | Total slack | Free slack | Resources | Work | Actual work | Disciplina | Início_LB_R0 | Duração_LB_R0 | Duração Média (Tenax) | Duração média da atividade (Tecnored) |
| --- | --- | --- | --- | --- | --- | --- | --- | --- | --- | --- | --- | --- | --- | --- | --- | --- | --- | --- | --- | --- | --- |
| 230 | 1.6.10.2 | **AG-J0006-0200-GE-L-00001** | 10d | 2026-05-26 A | 2026-06-10 A |  | 100% |  | 2026-06-12 | 2026-06-22 | 7d |  |  |  | 96h | 96h | MECHANICAL | Sex 12/06/26 | 7 dias |  |  |
| 231 | 1.6.10.2.1 | Emissão inicial | 4d | 2026-05-26 A | 2026-05-29 A | 229 | 100% |  | 2026-06-12 | 2026-06-15 | 2d |  |  | Felipe | 32h | 32h | MECHANICAL | Sex 12/06/26 | 2 dias | 13,4 |  |
| 232 | 1.6.10.2.2 | Avaliação do Cliente | 3d | 2026-06-01 A | 2026-06-03 A | 231 | 100% |  | 2026-06-16 | 2026-06-18 | 3d |  |  | Tecnored | 24h | 24h | MECHANICAL | Ter 16/06/26 | 3 dias | 13,4 |  |
| 233 | 1.6.10.2.3 | Atendimento de Comentário | 3d | 2026-06-03 A | 2026-06-10 A | 232 | 100% |  | 2026-06-19 | 2026-06-19 | 1d |  |  | Felipe | 24h | 24h | MECHANICAL | Sex 19/06/26 | 1 dia | 13,4 |  |
| 234 | 1.6.10.2.4 | Aprovação | 2d | 2026-06-09 A | 2026-06-10 A | 233 | 100% |  | 2026-06-22 | 2026-06-22 | 1d |  |  | Tecnored | 16h | 16h | MECHANICAL | Seg 22/06/26 | 1 dia | 13,4 | 0,5 |
| 235 | 1.6.10.3 | **AG-J0006-0200-GE-L-00002** | 10d | 2026-05-26 A | 2026-06-10 A |  | 100% |  | 2026-06-16 | 2026-06-24 | 7d |  |  |  | 96h | 96h | MECHANICAL | Ter 16/06/26 | 7 dias |  |  |
| 236 | 1.6.10.3.1 | Emissão inicial | 4d | 2026-05-26 A | 2026-05-29 A | 229 | 100% |  | 2026-06-16 | 2026-06-17 | 2d |  |  | Felipe | 32h | 32h | MECHANICAL | Ter 16/06/26 | 2 dias | 13,4 |  |
| 237 | 1.6.10.3.2 | Avaliação do Cliente | 3d | 2026-06-01 A | 2026-06-03 A | 236 | 100% |  | 2026-06-18 | 2026-06-22 | 3d |  |  | Tecnored | 24h | 24h | MECHANICAL | Qui 18/06/26 | 3 dias | 13,4 |  |
| 238 | 1.6.10.3.3 | Atendimento de Comentário | 3d | 2026-06-03 A | 2026-06-10 A | 237 | 100% |  | 2026-06-23 | 2026-06-23 | 1d |  |  | Felipe | 24h | 24h | MECHANICAL | Ter 23/06/26 | 1 dia | 13,4 |  |
| 239 | 1.6.10.3.4 | Aprovação | 2d | 2026-06-09 A | 2026-06-10 A | 238 | 100% |  | 2026-06-24 | 2026-06-24 | 1d |  |  | Tecnored | 16h | 16h | MECHANICAL | Qua 24/06/26 | 1 dia | 13,4 | 0,5 |
| 240 | 1.6.10.4 | **PL-J0006-0200-GE-M-00001** | 7d | 2026-06-03 A | 2026-06-15 |  | 71% | 2d | 2026-06-16 | 2026-06-24 | 7d | 9d |  |  | 56h | 40h | MECHANICAL | Ter 16/06/26 | 7 dias |  |  |
| 241 | 1.6.10.4.1 | Emissão inicial | 3d | 2026-06-03 A | 2026-06-09 A | 237 | 100% |  | 2026-06-16 | 2026-06-17 | 2d |  |  | Felipe | 24h | 24h | MECHANICAL | Ter 16/06/26 | 2 dias | 13,4 |  |
| 242 | 1.6.10.4.2 | Avaliação do Cliente | 2d | 2026-06-10 A | 2026-06-11 | 241 | 50% | 1d | 2026-06-18 | 2026-06-22 | 3d | 0.5d | 0d | Tecnored | 16h | 8h | MECHANICAL | Qui 18/06/26 | 3 dias | 13,4 |  |
| 243 | 1.6.10.4.3 | Atendimento de Comentário | 1d | 2026-06-12 A | 2026-06-12 | 242 | 50% | 0.5d | 2026-06-23 | 2026-06-23 | 1d | 0.5d | 0d | Felipe | 8h | 4h | MECHANICAL | Ter 23/06/26 | 1 dia | 13,4 |  |
| 244 | 1.6.10.4.4 | Aprovação | 1d | 2026-06-15 A | 2026-06-15 | 243 | 50% | 0.5d | 2026-06-24 | 2026-06-24 | 1d | 9d |  | Tecnored | 8h | 4h | MECHANICAL | Qua 24/06/26 | 1 dia | 13,4 | 0,5 |
| 245 | 1.6.10.5 | **PL-J0006-0200-GE-M-00002** | 7d | 2026-06-03 A | 2026-06-15 |  | 71% | 2d | 2026-06-16 | 2026-06-24 | 7d | 9d |  |  | 56h | 40h | MECHANICAL | Ter 16/06/26 | 7 dias |  |  |
| 246 | 1.6.10.5.1 | Emissão inicial | 3d | 2026-06-03 A | 2026-06-09 A | 237 | 100% |  | 2026-06-16 | 2026-06-17 | 2d |  |  | Felipe | 24h | 24h | MECHANICAL | Ter 16/06/26 | 2 dias | 13,4 |  |
| 247 | 1.6.10.5.2 | Avaliação do Cliente | 2d | 2026-06-10 A | 2026-06-11 | 246 | 50% | 1d | 2026-06-18 | 2026-06-22 | 3d | 0.5d | 0d | Tecnored | 16h | 8h | MECHANICAL | Qui 18/06/26 | 3 dias | 13,4 |  |
| 248 | 1.6.10.5.3 | Atendimento de Comentário | 1d | 2026-06-12 A | 2026-06-12 | 247 | 50% | 0.5d | 2026-06-23 | 2026-06-23 | 1d | 0.5d | 0d | Felipe | 8h | 4h | MECHANICAL | Ter 23/06/26 | 1 dia | 13,4 |  |
| 249 | 1.6.10.5.4 | Aprovação | 1d | 2026-06-15 A | 2026-06-15 | 248 | 50% | 0.5d | 2026-06-24 | 2026-06-24 | 1d | 9d |  | Tecnored | 8h | 4h | MECHANICAL | Qua 24/06/26 | 1 dia | 13,4 | 0,5 |
| 250 | 1.6.10.6 | **PL-J0006-0200-GE-M-00003** | 7d | 2026-06-03 A | 2026-06-15 |  | 71% | 2d | 2026-06-16 | 2026-06-24 | 7d | 9d |  |  | 56h | 40h | MECHANICAL | Ter 16/06/26 | 7 dias |  |  |
| 251 | 1.6.10.6.1 | Emissão inicial | 3d | 2026-06-03 A | 2026-06-09 A | 237 | 100% |  | 2026-06-16 | 2026-06-17 | 2d |  |  | Felipe | 24h | 24h | MECHANICAL | Ter 16/06/26 | 2 dias | 13,4 |  |
| 252 | 1.6.10.6.2 | Avaliação do Cliente | 2d | 2026-06-10 A | 2026-06-11 | 251 | 50% | 1d | 2026-06-18 | 2026-06-22 | 3d | 0.5d | 0d | Tecnored | 16h | 8h | MECHANICAL | Qui 18/06/26 | 3 dias | 13,4 |  |
| 253 | 1.6.10.6.3 | Atendimento de Comentário | 1d | 2026-06-12 A | 2026-06-12 | 252 | 50% | 0.5d | 2026-06-23 | 2026-06-23 | 1d | 0.5d | 0d | Felipe | 8h | 4h | MECHANICAL | Ter 23/06/26 | 1 dia | 13,4 |  |
| 254 | 1.6.10.6.4 | Aprovação | 1d | 2026-06-15 A | 2026-06-15 | 253 | 50% | 0.5d | 2026-06-24 | 2026-06-24 | 1d | 9d |  | Tecnored | 8h | 4h | MECHANICAL | Qua 24/06/26 | 1 dia | 13,4 | 0,5 |

| ID | WBS | Task | Duration | Start | Finish | Predecessors | Complete | Baseline start | Baseline finish | Baseline duration | Resources | Work | Actual work | Disciplina | Início_LB_R0 | Duração_LB_R0 | Duração média da atividade (Tecnored) | Duração Média (Tenax) | Duração Medida (h) | Text20 |
| --- | --- | --- | --- | --- | --- | --- | --- | --- | --- | --- | --- | --- | --- | --- | --- | --- | --- | --- | --- | --- |
| 255 | 1.6.11 | **MODULO 0300** | 38d | 2026-04-01 A | 2026-05-29 A |  | 100% | 2026-04-22 | 2026-05-25 | 23d |  | 674h | 674h | MECHANICAL | Qua 22/04/26 | 23 dias |  |  |  |  |
| 256 | 1.6.11.1 | **ML-J0006-0300-GE-L-00001** | 8d | 2026-04-01 A | 2026-04-14 A |  | 100% | 2026-04-22 | 2026-05-05 | 9d |  | 80h | 80h | MECHANICAL | Qua 22/04/26 | 9 dias |  |  |  |  |
| 257 | 1.6.11.1.1 | Emissão inicial | 4d | 2026-04-01 A | 2026-04-08 A | 102 | 100% | 2026-04-22 | 2026-04-27 | 4d | Felipe | 32h | 32h | MECHANICAL | Qua 22/04/26 | 4 dias | 32 | 13,4 | 54,20 | 14/04/2026 |
| 258 | 1.6.11.1.2 | Avaliação do Cliente | 1d | 2026-04-09 A | 2026-04-09 A | 257 | 100% | 2026-04-28 | 2026-04-30 | 3d | Tecnored | 8h | 8h | MECHANICAL | Ter 28/04/26 | 3 dias |  | 13,4 |  |  |
| 259 | 1.6.11.1.3 | Atendimento de Comentário | 3d | 2026-04-09 A | 2026-04-13 A | 258 | 100% | 2026-05-04 | 2026-05-04 | 1d | Felipe | 24h | 24h | MECHANICAL | Seg 04/05/26 | 1 dia |  | 13,4 |  |  |
| 260 | 1.6.11.1.4 | Aprovação | 2d | 2026-04-13 A | 2026-04-14 A | 259 | 100% | 2026-05-05 | 2026-05-05 | 1d | Tecnored | 16h | 16h | MECHANICAL | Ter 05/05/26 | 1 dia | 0,5 | 13,4 |  |  |
| 261 | 1.6.11.2 | **AG-J0006-0300-GE-L-00001** | 31d | 2026-04-14 A | 2026-05-29 A |  | 100% | 2026-05-15 | 2026-05-25 | 7d |  | 118.8h | 118.8h | MECHANICAL | Sex 15/05/26 | 7 dias |  |  |  |  |
| 262 | 1.6.11.2.1 | Emissão inicial | 4d | 2026-04-14 A | 2026-04-17 A | 260, 347, 435 | 100% | 2026-05-15 | 2026-05-18 | 2d | Felipe | 32h | 32h | MECHANICAL | Sex 15/05/26 | 2 dias |  | 13,4 |  |  |
| 263 | 1.6.11.2.2 | Avaliação do Cliente | 6d | 2026-04-17 A | 2026-04-28 A | 262 | 100% | 2026-05-19 | 2026-05-21 | 3d | Tecnored | 48h | 48h | MECHANICAL | Ter 19/05/26 | 3 dias |  | 13,4 |  |  |
| 264 | 1.6.11.2.3 | Atendimento de Comentário | 4d | 2026-04-29 A | 2026-05-05 A | 263 | 100% | 2026-05-22 | 2026-05-22 | 1d | Felipe | 32h | 32h | MECHANICAL | Sex 22/05/26 | 1 dia |  | 13,4 |  |  |
| 265 | 1.6.11.2.4 | Aprovação | 0.85d | 2026-05-05 A | 2026-05-29 A | 264FS+18d | 100% | 2026-05-25 | 2026-05-25 | 1d | Tecnored | 6.8h | 6.8h | MECHANICAL | Seg 25/05/26 | 1 dia | 0,5 | 13,4 |  |  |
| 266 | 1.6.11.3 | **AG-J0006-0300-GE-L-00002** | 31d | 2026-04-14 A | 2026-05-29 A |  | 100% | 2026-05-06 | 2026-05-14 | 7d |  | 118.8h | 118.8h | MECHANICAL | Qua 06/05/26 | 7 dias |  |  |  |  |
| 267 | 1.6.11.3.1 | Emissão inicial | 4d | 2026-04-14 A | 2026-04-17 A | 260 | 100% | 2026-05-06 | 2026-05-07 | 2d | Felipe | 32h | 32h | MECHANICAL | Qua 06/05/26 | 2 dias |  | 13,4 |  |  |
| 268 | 1.6.11.3.2 | Avaliação do Cliente | 6d | 2026-04-17 A | 2026-04-28 A | 267 | 100% | 2026-05-08 | 2026-05-12 | 3d | Tecnored | 48h | 48h | MECHANICAL | Sex 08/05/26 | 3 dias |  | 13,4 |  |  |
| 269 | 1.6.11.3.3 | Atendimento de Comentário | 4d | 2026-04-29 A | 2026-05-05 A | 268 | 100% | 2026-05-13 | 2026-05-13 | 1d | Felipe | 32h | 32h | MECHANICAL | Qua 13/05/26 | 1 dia |  | 13,4 |  |  |
| 270 | 1.6.11.3.4 | Aprovação | 0.85d | 2026-05-05 A | 2026-05-29 A | 269FS+18d | 100% | 2026-05-14 | 2026-05-14 | 1d | Tecnored | 6.8h | 6.8h | MECHANICAL | Qui 14/05/26 | 1 dia | 0,5 | 13,4 |  |  |
| 271 | 1.6.11.4 | **AG-J0006-0300-GE-L-00003** | 31d | 2026-04-14 A | 2026-05-29 A |  | 100% | 2026-05-06 | 2026-05-14 | 7d |  | 118.8h | 118.8h | MECHANICAL | Qua 06/05/26 | 7 dias |  |  |  |  |
| 272 | 1.6.11.4.1 | Emissão inicial | 4d | 2026-04-14 A | 2026-04-17 A | 260 | 100% | 2026-05-06 | 2026-05-07 | 2d | Felipe | 32h | 32h | MECHANICAL | Qua 06/05/26 | 2 dias |  | 13,4 |  |  |
| 273 | 1.6.11.4.2 | Avaliação do Cliente | 6d | 2026-04-17 A | 2026-04-28 A | 272 | 100% | 2026-05-08 | 2026-05-12 | 3d | Tecnored | 48h | 48h | MECHANICAL | Sex 08/05/26 | 3 dias |  | 13,4 |  |  |
| 274 | 1.6.11.4.3 | Atendimento de Comentário | 4d | 2026-04-29 A | 2026-05-05 A | 273 | 100% | 2026-05-13 | 2026-05-13 | 1d | Felipe | 32h | 32h | MECHANICAL | Qua 13/05/26 | 1 dia |  | 13,4 |  |  |
| 275 | 1.6.11.4.4 | Aprovação | 0.85d | 2026-05-05 A | 2026-05-29 A | 274FS+18d | 100% | 2026-05-14 | 2026-05-14 | 1d | Tecnored | 6.8h | 6.8h | MECHANICAL | Qui 14/05/26 | 1 dia | 0,5 | 13,4 |  |  |
| 276 | 1.6.11.5 | **PL-J0006-0300-GE-M-00001** | 31d | 2026-04-14 A | 2026-05-29 A |  | 100% | 2026-05-06 | 2026-05-14 | 7d |  | 118.8h | 118.8h | MECHANICAL | Qua 06/05/26 | 7 dias |  |  |  |  |
| 277 | 1.6.11.5.1 | Emissão inicial | 4d | 2026-04-14 A | 2026-04-17 A | 262 | 100% | 2026-05-06 | 2026-05-07 | 2d | Felipe | 32h | 32h | MECHANICAL | Qua 06/05/26 | 2 dias |  | 13,4 |  |  |
| 278 | 1.6.11.5.2 | Avaliação do Cliente | 6d | 2026-04-17 A | 2026-04-28 A | 277 | 100% | 2026-05-08 | 2026-05-12 | 3d | Tecnored | 48h | 48h | MECHANICAL | Sex 08/05/26 | 3 dias |  | 13,4 |  |  |
| 279 | 1.6.11.5.3 | Atendimento de Comentário | 4d | 2026-04-29 A | 2026-05-05 A | 278 | 100% | 2026-05-13 | 2026-05-13 | 1d | Felipe | 32h | 32h | MECHANICAL | Qua 13/05/26 | 1 dia |  | 13,4 |  |  |
| 280 | 1.6.11.5.4 | Aprovação | 0.85d | 2026-05-05 A | 2026-05-29 A | 279FS+18d | 100% | 2026-05-14 | 2026-05-14 | 1d | Tecnored | 6.8h | 6.8h | MECHANICAL | Qui 14/05/26 | 1 dia | 0,5 | 13,4 |  |  |

| ID | WBS | Task | Duration | Start | Finish | Predecessors | Complete | Baseline start | Baseline finish | Baseline duration | Resources | Work | Actual work | Disciplina | Início_LB_R0 | Duração_LB_R0 | Duração Média (Tenax) | Duração média da atividade (Tecnored) |
| --- | --- | --- | --- | --- | --- | --- | --- | --- | --- | --- | --- | --- | --- | --- | --- | --- | --- | --- |
| 281 | 1.6.11.6 | **PL-J0006-0300-GE-M-00002** | 31d | 2026-04-14 A | 2026-05-29 A |  | 100% | 2026-05-06 | 2026-05-14 | 7d |  | 118.8h | 118.8h | MECHANICAL | Qua 06/05/26 | 7 dias |  |  |
| 282 | 1.6.11.6.1 | Emissão inicial | 4d | 2026-04-14 A | 2026-04-17 A | 262 | 100% | 2026-05-06 | 2026-05-07 | 2d | Felipe | 32h | 32h | MECHANICAL | Qua 06/05/26 | 2 dias | 13,4 |  |
| 283 | 1.6.11.6.2 | Avaliação do Cliente | 6d | 2026-04-17 A | 2026-04-28 A | 282 | 100% | 2026-05-08 | 2026-05-12 | 3d | Tecnored | 48h | 48h | MECHANICAL | Sex 08/05/26 | 3 dias | 13,4 |  |
| 284 | 1.6.11.6.3 | Atendimento de Comentário | 4d | 2026-04-29 A | 2026-05-05 A | 283 | 100% | 2026-05-13 | 2026-05-13 | 1d | Felipe | 32h | 32h | MECHANICAL | Qua 13/05/26 | 1 dia | 13,4 |  |
| 285 | 1.6.11.6.4 | Aprovação | 0.85d | 2026-05-05 A | 2026-05-29 A | 284FS+18d | 100% | 2026-05-14 | 2026-05-14 | 1d | Tecnored | 6.8h | 6.8h | MECHANICAL | Qui 14/05/26 | 1 dia | 13,4 | 0,5 |
| 286 | 1.6.12 | **MODULO 0400** | 32d | 2026-03-31 A | 2026-05-20 A |  | 100% | 2026-04-27 | 2026-06-10 | 30d |  | 336h | 336h | MECHANICAL | Seg 27/04/26 | 30 dias |  |  |
| 287 | 1.6.12.1 | **ML-J0006-0400-GE-L-00001** | 9d | 2026-03-31 A | 2026-04-14 A |  | 100% | 2026-04-27 | 2026-05-08 | 9d |  | 72h | 72h | MECHANICAL | Seg 27/04/26 | 9 dias |  |  |
| 288 | 1.6.12.1.1 | Emissão inicial | 4d | 2026-03-31 A | 2026-04-07 A | 205 | 100% | 2026-04-27 | 2026-04-30 | 4d | Erikson | 32h | 32h | MECHANICAL | Seg 27/04/26 | 4 dias | 13,4 | 32 |
| 289 | 1.6.12.1.2 | Avaliação do Cliente | 3d | 2026-04-08 A | 2026-04-10 A | 288 | 100% | 2026-05-04 | 2026-05-06 | 3d | Tecnored | 24h | 24h | MECHANICAL | Seg 04/05/26 | 3 dias | 13,4 |  |
| 290 | 1.6.12.1.3 | Atendimento de Comentário | 1d | 2026-04-13 A | 2026-04-13 A | 289 | 100% | 2026-05-07 | 2026-05-07 | 1d | Erikson | 8h | 8h | MECHANICAL | Qui 07/05/26 | 1 dia | 13,4 |  |
| 291 | 1.6.12.1.4 | Aprovação | 1d | 2026-04-14 A | 2026-04-14 A | 290 | 100% | 2026-05-08 | 2026-05-08 | 1d | Tecnored | 8h | 8h | MECHANICAL | Sex 08/05/26 | 1 dia | 13,4 | 0,5 |
| 292 | 1.6.12.2 | **AG-J0006-0400-GE-L-00001** | 12d | 2026-04-22 A | 2026-05-08 A |  | 100% | 2026-05-29 | 2026-06-10 | 7d |  | 60h | 60h | MECHANICAL | Sex 29/05/26 | 7 dias |  |  |
| 293 | 1.6.12.2.1 | Emissão inicial | 4d | 2026-04-22 A | 2026-04-27 A | 291, 210 | 100% | 2026-05-29 | 2026-06-01 | 2d | Erikson | 32h | 32h | MECHANICAL | Sex 29/05/26 | 2 dias | 13,4 |  |
| 294 | 1.6.12.2.2 | Avaliação do Cliente | 2d | 2026-05-07 A | 2026-05-08 A | 293 | 100% | 2026-06-02 | 2026-06-08 | 3d | Tecnored | 16h | 16h | MECHANICAL | Ter 02/06/26 | 3 dias | 13,4 |  |
| 295 | 1.6.12.2.3 | Atendimento de Comentário | 0.75d | 2026-05-08 A | 2026-05-08 A | 294 | 100% | 2026-06-09 | 2026-06-09 | 1d | Erikson | 6h | 6h | MECHANICAL | Ter 09/06/26 | 1 dia | 13,4 |  |
| 296 | 1.6.12.2.4 | Aprovação | 0.75d | 2026-05-08 A | 2026-05-08 A | 295 | 100% | 2026-06-10 | 2026-06-10 | 1d | Tecnored | 6h | 6h | MECHANICAL | Qua 10/06/26 | 1 dia | 13,4 | 0,5 |
| 297 | 1.6.12.3 | **AG-J0006-0400-GE-L-00002** | 12d | 2026-04-22 A | 2026-05-08 A |  | 100% | 2026-05-29 | 2026-06-10 | 7d |  | 62h | 62h | MECHANICAL | Sex 29/05/26 | 7 dias |  |  |
| 298 | 1.6.12.3.1 | Emissão inicial | 4d | 2026-04-22 A | 2026-04-27 A | 293FF | 100% | 2026-05-29 | 2026-06-01 | 2d | Erikson | 32h | 32h | MECHANICAL | Sex 29/05/26 | 2 dias | 13,4 |  |
| 299 | 1.6.12.3.2 | Avaliação do Cliente | 2d | 2026-05-07 A | 2026-05-08 A | 298 | 100% | 2026-06-02 | 2026-06-08 | 3d | Tecnored | 16h | 16h | MECHANICAL | Ter 02/06/26 | 3 dias | 13,4 |  |
| 300 | 1.6.12.3.3 | Atendimento de Comentário | 0.75d | 2026-05-08 A | 2026-05-08 A | 299 | 100% | 2026-06-09 | 2026-06-09 | 1d | Erikson | 6h | 6h | MECHANICAL | Ter 09/06/26 | 1 dia | 13,4 |  |
| 301 | 1.6.12.3.4 | Aprovação | 1d | 2026-05-08 A | 2026-05-08 A | 300 | 100% | 2026-06-10 | 2026-06-10 | 1d | Tecnored | 8h | 8h | MECHANICAL | Qua 10/06/26 | 1 dia | 13,4 | 0,5 |
| 302 | 1.6.12.4 | **AG-J0006-0400-GE-L-00003** | 12d | 2026-04-22 A | 2026-05-08 A |  | 100% | 2026-05-29 | 2026-06-10 | 7d |  | 62h | 62h | MECHANICAL | Sex 29/05/26 | 7 dias |  |  |
| 303 | 1.6.12.4.1 | Emissão inicial | 4d | 2026-04-22 A | 2026-04-27 A | 293FF | 100% | 2026-05-29 | 2026-06-01 | 2d | Erikson | 32h | 32h | MECHANICAL | Sex 29/05/26 | 2 dias | 13,4 |  |
| 304 | 1.6.12.4.2 | Avaliação do Cliente | 2d | 2026-05-07 A | 2026-05-08 A | 303 | 100% | 2026-06-02 | 2026-06-08 | 3d | Tecnored | 16h | 16h | MECHANICAL | Ter 02/06/26 | 3 dias | 13,4 |  |
| 305 | 1.6.12.4.3 | Atendimento de Comentário | 0.75d | 2026-05-08 A | 2026-05-08 A | 304 | 100% | 2026-06-09 | 2026-06-09 | 1d | Erikson | 6h | 6h | MECHANICAL | Ter 09/06/26 | 1 dia | 13,4 |  |
| 306 | 1.6.12.4.4 | Aprovação | 1d | 2026-05-08 A | 2026-05-08 A | 305 | 100% | 2026-06-10 | 2026-06-10 | 1d | Tecnored | 8h | 8h | MECHANICAL | Qua 10/06/26 | 1 dia | 13,4 | 0,5 |

| ID | WBS | Task | Type | Duration | Start | Finish | Predecessors | Complete | Actual finish | Baseline start | Baseline finish | Baseline duration | Total slack | Free slack | Resources | Work | Actual work | Disciplina | Início_LB_R0 | Duração_LB_R0 | Duração Média (Tenax) | Duração média da atividade (Tecnored) |
| --- | --- | --- | --- | --- | --- | --- | --- | --- | --- | --- | --- | --- | --- | --- | --- | --- | --- | --- | --- | --- | --- | --- |
| 307 | 1.6.12.5 | **PL-J0006-0400-GE-M-00001** |  | 8d | 2026-05-11 A | 2026-05-20 A |  | 100% |  | 2026-05-29 | 2026-06-10 | 7d |  |  |  | 32h | 32h | MECHANICAL | Sex 29/05/26 | 7 dias |  |  |
| 308 | 1.6.12.5.1 | Emissão inicial |  | 3d | 2026-05-11 A | 2026-05-13 A | 293FF | 100% |  | 2026-05-29 | 2026-06-01 | 2d |  |  | Erikson | 24h | 24h | MECHANICAL | Sex 29/05/26 | 2 dias | 13,4 |  |
| 309 | 1.6.12.5.2 | Avaliação do Cliente |  | 1d | 2026-05-18 A | 2026-05-18 A | 308 | 100% |  | 2026-06-02 | 2026-06-08 | 3d |  |  | Tecnored | 8h | 8h | MECHANICAL | Ter 02/06/26 | 3 dias | 13,4 |  |
| 310 | 1.6.12.5.3 | Atendimento de Comentário | milestone | 0d | 2026-05-19 A | 2026-05-19 A | 309 | 100% |  | 2026-06-09 | 2026-06-09 | 1d |  |  | Erikson |  |  | MECHANICAL | Ter 09/06/26 | 1 dia | 13,4 |  |
| 311 | 1.6.12.5.4 | Aprovação | milestone | 0d | 2026-05-20 A | 2026-05-20 A | 310 | 100% |  | 2026-06-10 | 2026-06-10 | 1d |  |  | Tecnored |  |  | MECHANICAL | Qua 10/06/26 | 1 dia | 13,4 | 0,5 |
| 312 | 1.6.12.6 | **PL-J0006-0400-GE-M-00002** |  | 8d | 2026-05-11 A | 2026-05-20 A |  | 100% |  | 2026-05-29 | 2026-06-10 | 7d |  |  |  | 48h | 48h | MECHANICAL | Sex 29/05/26 | 7 dias |  |  |
| 313 | 1.6.12.6.1 | Emissão inicial |  | 3d | 2026-05-11 A | 2026-05-13 A | 293FF | 100% |  | 2026-05-29 | 2026-06-01 | 2d |  |  | Erikson | 24h | 24h | MECHANICAL | Sex 29/05/26 | 2 dias | 13,4 |  |
| 314 | 1.6.12.6.2 | Avaliação do Cliente |  | 1d | 2026-05-18 A | 2026-05-18 A | 313 | 100% |  | 2026-06-02 | 2026-06-08 | 3d |  |  | Tecnored | 8h | 8h | MECHANICAL | Ter 02/06/26 | 3 dias | 13,4 |  |
| 315 | 1.6.12.6.3 | Atendimento de Comentário |  | 1d | 2026-05-19 A | 2026-05-19 A | 314 | 100% |  | 2026-06-09 | 2026-06-09 | 1d |  |  | Erikson | 8h | 8h | MECHANICAL | Ter 09/06/26 | 1 dia | 13,4 |  |
| 316 | 1.6.12.6.4 | Aprovação |  | 1d | 2026-05-20 A | 2026-05-20 A | 315 | 100% |  | 2026-06-10 | 2026-06-10 | 1d |  |  | Tecnored | 8h | 8h | MECHANICAL | Qua 10/06/26 | 1 dia | 13,4 | 0,5 |
| 317 | 1.6.13 | **MODULO 0500** |  | 25d | 2026-05-19 A | 2026-06-24 |  | 100% | 2026-06-12 | 2026-04-29 | 2026-06-24 | 38d |  |  |  | 144h | 144h | MECHANICAL | Qua 29/04/26 | 38 dias |  |  |
| 318 | 1.6.13.1 | **ML-J0006-0500-GE-L-00001** |  | 9d | 2026-05-19 A | 2026-05-29 A |  | 100% |  | 2026-04-29 | 2026-05-12 | 9d |  |  |  | 72h | 72h | MECHANICAL | Qua 29/04/26 | 9 dias |  |  |
| 319 | 1.6.13.1.1 | Emissão inicial |  | 4d | 2026-05-19 A | 2026-05-22 A | 226 | 100% |  | 2026-04-29 | 2026-05-05 | 4d |  |  | Felipe | 32h | 32h | MECHANICAL | Qua 29/04/26 | 4 dias | 13,4 | 32 |
| 320 | 1.6.13.1.2 | Avaliação do Cliente | milestone | 0d | 2026-05-22 A | 2026-05-22 A | 319 | 100% |  | 2026-05-06 | 2026-05-08 | 3d |  |  | Tecnored |  |  | MECHANICAL | Qua 06/05/26 | 3 dias | 13,4 |  |
| 321 | 1.6.13.1.3 | Atendimento de Comentário |  | 3d | 2026-05-25 A | 2026-05-27 A | 320 | 100% |  | 2026-05-11 | 2026-05-11 | 1d |  |  | Felipe | 24h | 24h | MECHANICAL | Seg 11/05/26 | 1 dia | 13,4 |  |
| 322 | 1.6.13.1.4 | Aprovação |  | 2d | 2026-05-28 A | 2026-05-29 A | 321 | 100% |  | 2026-05-12 | 2026-05-12 | 1d |  |  | Tecnored | 16h | 16h | MECHANICAL | Ter 12/05/26 | 1 dia | 13,4 | 0,5 |
| 323 | 1.6.13.2 | **AG-J0006-0500-GE-L-00001** |  | 6d | 2026-05-27 A | 2026-06-03 A |  | 100% |  | 2026-06-16 | 2026-06-24 | 7d |  |  |  | 40h | 40h | MECHANICAL | Ter 16/06/26 | 7 dias |  |  |
| 324 | 1.6.13.2.1 | Emissão inicial |  | 1d | 2026-05-27 A | 2026-06-01 A | 322, 231 | 100% |  | 2026-06-16 | 2026-06-17 | 2d |  |  | Felipe | 8h | 8h | MECHANICAL | Ter 16/06/26 | 2 dias | 13,4 |  |
| 325 | 1.6.13.2.2 | Avaliação do Cliente |  | 1d | 2026-05-29 A | 2026-06-01 A | 324 | 100% |  | 2026-06-18 | 2026-06-22 | 3d |  |  | Tecnored | 8h | 8h | MECHANICAL | Qui 18/06/26 | 3 dias | 13,4 |  |
| 326 | 1.6.13.2.3 | Atendimento de Comentário |  | 1d | 2026-05-29 A | 2026-06-01 A | 325 | 100% |  | 2026-06-23 | 2026-06-23 | 1d |  |  | Felipe | 8h | 8h | MECHANICAL | Ter 23/06/26 | 1 dia | 13,4 |  |
| 327 | 1.6.13.2.4 | Aprovação |  | 2d | 2026-06-01 A | 2026-06-03 A | 326 | 100% |  | 2026-06-24 | 2026-06-24 | 1d |  |  | Tecnored | 16h | 16h | MECHANICAL | Qua 24/06/26 | 1 dia | 13,4 | 0,5 |
| 328 | 1.6.13.3 | **AG-J0006-0500-GE-L-00002** | inactive | 7d | 2026-05-29 | 2026-06-10 |  |  |  | 2026-06-16 | 2026-06-24 | 7d | 12d |  |  | 56h |  | MECHANICAL | Ter 16/06/26 | 7 dias |  |  |
| 329 | 1.6.13.3.1 | Emissão inicial | inactive | 2d | 2026-05-29 | 2026-06-01 | 324FF |  |  | 2026-06-16 | 2026-06-17 | 2d | 12d | 0d | Felipe | 16h |  | MECHANICAL | Ter 16/06/26 | 2 dias | 13,4 |  |
| 330 | 1.6.13.3.2 | Avaliação do Cliente | inactive | 3d | 2026-06-02 | 2026-06-08 | 329 |  |  | 2026-06-18 | 2026-06-22 | 3d | 12d | 0d | Tecnored | 24h |  | MECHANICAL | Qui 18/06/26 | 3 dias | 13,4 |  |
| 331 | 1.6.13.3.3 | Atendimento de Comentário | inactive | 1d | 2026-06-09 | 2026-06-09 | 330 |  |  | 2026-06-23 | 2026-06-23 | 1d | 12d | 0d | Felipe | 8h |  | MECHANICAL | Ter 23/06/26 | 1 dia | 13,4 |  |
| 332 | 1.6.13.3.4 | Aprovação | inactive | 1d | 2026-06-10 | 2026-06-10 | 331 |  |  | 2026-06-24 | 2026-06-24 | 1d | 12d |  | Tecnored | 8h |  | MECHANICAL | Qua 24/06/26 | 1 dia | 13,4 | 0,5 |

| ID | WBS | Task | Type | Duration | Start | Finish | Predecessors | Complete | Actual start | Actual finish | Baseline start | Baseline finish | Baseline duration | Resources | Work | Actual work | Disciplina | Início_LB_R0 | Duração_LB_R0 | Duração Média (Tenax) | Duração média da atividade (Tecnored) |
| --- | --- | --- | --- | --- | --- | --- | --- | --- | --- | --- | --- | --- | --- | --- | --- | --- | --- | --- | --- | --- | --- |
| 333 | 1.6.13.4 | **PL-J0006-0500-GE-M-00001** |  | 7d | 2026-06-16 | 2026-06-24 |  | 100% | 2026-06-02 | 2026-06-12 | 2026-06-16 | 2026-06-24 | 7d |  | 8h | 8h | MECHANICAL | Ter 16/06/26 | 7 dias |  |  |
| 334 | 1.6.13.4.1 | Emissão inicial |  | 1d | 2026-06-02 A | 2026-06-08 A |  | 100% |  |  | 2026-06-16 | 2026-06-17 | 2d | Felipe | 8h | 8h | MECHANICAL | Ter 16/06/26 | 2 dias | 13,4 |  |
| 335 | 1.6.13.4.2 | Avaliação do Cliente | milestone | 0d | 2026-06-12 A | 2026-06-12 A | 334 | 100% |  |  | 2026-06-18 | 2026-06-22 | 3d | Tecnored |  |  | MECHANICAL | Qui 18/06/26 | 3 dias | 13,4 |  |
| 336 | 1.6.13.4.3 | Atendimento de Comentário | milestone | 0d | 2026-06-12 A | 2026-06-12 A | 335 | 100% |  |  | 2026-06-23 | 2026-06-23 | 1d | Felipe |  |  | MECHANICAL | Ter 23/06/26 | 1 dia | 13,4 |  |
| 337 | 1.6.13.4.4 | Aprovação | milestone | 0d | 2026-06-12 A | 2026-06-12 A | 336 | 100% |  |  | 2026-06-24 | 2026-06-24 | 1d | Tecnored |  |  | MECHANICAL | Qua 24/06/26 | 1 dia | 13,4 | 0,5 |
| 338 | 1.6.13.5 | **PL-J0006-0500-GE-M-00002** |  | 7d | 2026-06-16 | 2026-06-24 |  | 100% | 2026-06-02 | 2026-06-12 | 2026-06-16 | 2026-06-24 | 7d |  | 24h | 24h | MECHANICAL | Ter 16/06/26 | 7 dias |  |  |
| 339 | 1.6.13.5.1 | Emissão inicial |  | 3d | 2026-06-02 A | 2026-06-08 A |  | 100% |  |  | 2026-06-16 | 2026-06-17 | 2d | Felipe | 24h | 24h | MECHANICAL | Ter 16/06/26 | 2 dias | 13,4 |  |
| 340 | 1.6.13.5.2 | Avaliação do Cliente | milestone | 0d | 2026-06-12 A | 2026-06-12 A | 339 | 100% |  |  | 2026-06-18 | 2026-06-22 | 3d | Tecnored |  |  | MECHANICAL | Qui 18/06/26 | 3 dias | 13,4 |  |
| 341 | 1.6.13.5.3 | Atendimento de Comentário | milestone | 0d | 2026-06-12 A | 2026-06-12 A | 340 | 100% |  |  | 2026-06-23 | 2026-06-23 | 1d | Felipe |  |  | MECHANICAL | Ter 23/06/26 | 1 dia | 13,4 |  |
| 342 | 1.6.13.5.4 | Aprovação | milestone | 0d | 2026-06-12 A | 2026-06-12 A | 341 | 100% |  |  | 2026-06-24 | 2026-06-24 | 1d | Tecnored |  |  | MECHANICAL | Qua 24/06/26 | 1 dia | 13,4 | 0,5 |
| 343 | 1.6.14 | **MODULO 0600** |  | 27d | 2026-04-28 A | 2026-06-08 A |  | 100% |  |  | 2026-04-28 | 2026-05-27 | 21d |  | 308h | 308h | MECHANICAL | Ter 28/04/26 | 21 dias |  |  |
| 344 | 1.6.14.1 | **ML-J0006-0600-GE-L-00001** |  | 9d | 2026-04-28 A | 2026-05-11 A |  | 100% |  |  | 2026-04-28 | 2026-05-11 | 9d |  | 72h | 72h | MECHANICAL | Ter 28/04/26 | 9 dias |  |  |
| 345 | 1.6.14.1.1 | Emissão inicial |  | 4d | 2026-04-28 A | 2026-05-04 A | 257 | 100% |  |  | 2026-04-28 | 2026-05-04 | 4d | Erikson | 32h | 32h | MECHANICAL | Ter 28/04/26 | 4 dias | 13,4 | 32 |
| 346 | 1.6.14.1.2 | Avaliação do Cliente |  | 3d | 2026-05-05 A | 2026-05-07 A | 345 | 100% |  |  | 2026-05-05 | 2026-05-07 | 3d | Tecnored | 24h | 24h | MECHANICAL | Ter 05/05/26 | 3 dias | 13,4 |  |
| 347 | 1.6.14.1.3 | Atendimento de Comentário |  | 1d | 2026-05-08 A | 2026-05-08 A | 346 | 100% |  |  | 2026-05-08 | 2026-05-08 | 1d | Erikson | 8h | 8h | MECHANICAL | Sex 08/05/26 | 1 dia | 13,4 |  |
| 348 | 1.6.14.1.4 | Aprovação |  | 1d | 2026-05-11 A | 2026-05-11 A | 347 | 100% |  |  | 2026-05-11 | 2026-05-11 | 1d | Tecnored | 8h | 8h | MECHANICAL | Seg 11/05/26 | 1 dia | 13,4 | 0,5 |
| 349 | 1.6.14.2 | **AG-J0006-0600-GE-L-00001** |  | 18d | 2026-05-06 A | 2026-05-29 A |  | 100% |  |  | 2026-05-19 | 2026-05-27 | 7d |  | 26h | 26h | MECHANICAL | Ter 19/05/26 | 7 dias |  |  |
| 350 | 1.6.14.2.1 | Emissão inicial | milestone | 0d | 2026-05-06 A | 2026-05-08 A | 348, 262 | 100% |  |  | 2026-05-19 | 2026-05-20 | 2d | Erikson |  |  | MECHANICAL | Ter 19/05/26 | 2 dias | 13,4 |  |
| 351 | 1.6.14.2.2 | Avaliação do Cliente |  | 2d | 2026-05-11 A | 2026-05-12 A | 350 | 100% |  |  | 2026-05-21 | 2026-05-25 | 3d | Tecnored | 16h | 16h | MECHANICAL | Qui 21/05/26 | 3 dias | 13,4 |  |
| 352 | 1.6.14.2.3 | Atendimento de Comentário |  | 0.75d | 2026-05-12 A | 2026-05-29 A | 351FS+14d | 100% |  |  | 2026-05-26 | 2026-05-26 | 1d | Erikson | 6h | 6h | MECHANICAL | Ter 26/05/26 | 1 dia | 13,4 |  |
| 353 | 1.6.14.2.4 | Aprovação |  | 0.5d | 2026-05-14 A | 2026-05-29 A | 352 | 100% |  |  | 2026-05-27 | 2026-05-27 | 1d | Tecnored | 4h | 4h | MECHANICAL | Qua 27/05/26 | 1 dia | 13,4 | 0,5 |
| 354 | 1.6.14.3 | **AG-J0006-0600-GE-L-00002** |  | 18d | 2026-05-06 A | 2026-05-29 A |  | 100% |  |  | 2026-05-19 | 2026-05-27 | 7d |  | 50h | 50h | MECHANICAL | Ter 19/05/26 | 7 dias |  |  |
| 355 | 1.6.14.3.1 | Emissão inicial |  | 3d | 2026-05-06 A | 2026-05-08 A | 350FF | 100% |  |  | 2026-05-19 | 2026-05-20 | 2d | Erikson | 24h | 24h | MECHANICAL | Ter 19/05/26 | 2 dias | 13,4 |  |
| 356 | 1.6.14.3.2 | Avaliação do Cliente |  | 2d | 2026-05-11 A | 2026-05-12 A | 355 | 100% |  |  | 2026-05-21 | 2026-05-25 | 3d | Tecnored | 16h | 16h | MECHANICAL | Qui 21/05/26 | 3 dias | 13,4 |  |
| 357 | 1.6.14.3.3 | Atendimento de Comentário |  | 0.75d | 2026-05-12 A | 2026-05-29 A | 356FS+14d | 100% |  |  | 2026-05-26 | 2026-05-26 | 1d | Erikson | 6h | 6h | MECHANICAL | Ter 26/05/26 | 1 dia | 13,4 |  |
| 358 | 1.6.14.3.4 | Aprovação |  | 0.5d | 2026-05-14 A | 2026-05-29 A | 357 | 100% |  |  | 2026-05-27 | 2026-05-27 | 1d | Tecnored | 4h | 4h | MECHANICAL | Qua 27/05/26 | 1 dia | 13,4 | 0,5 |

| ID | WBS | Task | Type | Duration | Start | Finish | Predecessors | Complete | Actual finish | Baseline start | Baseline finish | Baseline duration | Resources | Work | Actual work | Disciplina | Início_LB_R0 | Duração_LB_R0 | Duração Média (Tenax) | Duração média da atividade (Tecnored) |
| --- | --- | --- | --- | --- | --- | --- | --- | --- | --- | --- | --- | --- | --- | --- | --- | --- | --- | --- | --- | --- |
| 359 | 1.6.14.4 | **PL-J0006-0600-GE-M-00001** |  | 19d | 2026-05-11 A | 2026-06-08 A |  | 100% |  | 2026-05-19 | 2026-05-27 | 7d |  | 68h | 68h | MECHANICAL | Ter 19/05/26 | 7 dias |  |  |
| 360 | 1.6.14.4.1 | Emissão inicial |  | 1.5d | 2026-05-11 A | 2026-05-14 A |  | 100% |  | 2026-05-19 | 2026-05-20 | 2d | Erikson | 12h | 12h | MECHANICAL | Ter 19/05/26 | 2 dias | 13,4 |  |
| 361 | 1.6.14.4.2 | Avaliação do Cliente | milestone | 0d | 2026-05-18 A | 2026-05-20 A | 360FS+14d | 100% |  | 2026-05-21 | 2026-05-25 | 3d | Tecnored |  |  | MECHANICAL | Qui 21/05/26 | 3 dias | 13,4 |  |
| 362 | 1.6.14.4.3 | Atendimento de Comentário |  | 5d | 2026-05-27 A | 2026-06-02 A | 361 | 100% |  | 2026-05-26 | 2026-05-26 | 1d | Erikson | 40h | 40h | MECHANICAL | Ter 26/05/26 | 1 dia | 13,4 |  |
| 363 | 1.6.14.4.4 | Aprovação |  | 2d | 2026-06-03 A | 2026-06-08 A | 362 | 100% |  | 2026-05-27 | 2026-05-27 | 1d | Tecnored | 16h | 16h | MECHANICAL | Qua 27/05/26 | 1 dia | 13,4 | 0,5 |
| 364 | 1.6.14.5 | **PL-J0006-0600-GE-M-00002** |  | 19d | 2026-05-11 A | 2026-06-08 A |  | 100% |  | 2026-05-19 | 2026-05-27 | 7d |  | 92h | 92h | MECHANICAL | Ter 19/05/26 | 7 dias |  |  |
| 365 | 1.6.14.5.1 | Emissão inicial |  | 1.5d | 2026-05-11 A | 2026-05-12 A |  | 100% |  | 2026-05-19 | 2026-05-20 | 2d | Erikson | 12h | 12h | MECHANICAL | Ter 19/05/26 | 2 dias | 13,4 |  |
| 366 | 1.6.14.5.2 | Avaliação do Cliente |  | 3d | 2026-05-18 A | 2026-05-20 A | 360FS+14d | 100% |  | 2026-05-21 | 2026-05-25 | 3d | Tecnored | 24h | 24h | MECHANICAL | Qui 21/05/26 | 3 dias | 13,4 |  |
| 367 | 1.6.14.5.3 | Atendimento de Comentário |  | 5d | 2026-05-27 A | 2026-06-02 A | 366 | 100% |  | 2026-05-26 | 2026-05-26 | 1d | Erikson | 40h | 40h | MECHANICAL | Ter 26/05/26 | 1 dia | 13,4 |  |
| 368 | 1.6.14.5.4 | Aprovação |  | 2d | 2026-06-03 A | 2026-06-08 A | 367 | 100% |  | 2026-05-27 | 2026-05-27 | 1d | Tecnored | 16h | 16h | MECHANICAL | Qua 27/05/26 | 1 dia | 13,4 | 0,5 |
| 369 | 1.6.15 | **MODULO 0700** |  | 28d | 2026-05-04 A | 2026-06-12 |  | 100% | 2026-06-03 | 2026-05-04 | 2026-06-12 | 28d |  | 540h | 540h | MECHANICAL | Seg 04/05/26 | 28 dias |  |  |
| 370 | 1.6.15.1 | **ML-J0006-0700-GE-L-00001** |  | 5d | 2026-05-04 A | 2026-05-08 A |  | 100% |  | 2026-05-04 | 2026-05-15 | 10d |  | 56h | 56h | MECHANICAL | Seg 04/05/26 | 10 dias |  |  |
| 371 | 1.6.15.1.1 | Emissão inicial |  | 4d | 2026-05-04 A | 2026-05-07 A | 288 | 100% |  | 2026-05-04 | 2026-05-08 | 5d | Felipe | 32h | 32h | MECHANICAL | Seg 04/05/26 | 5 dias | 13,4 | 32 |
| 372 | 1.6.15.1.2 | Avaliação do Cliente |  | 1d | 2026-05-08 A | 2026-05-08 A | 371 | 100% |  | 2026-05-11 | 2026-05-13 | 3d | Tecnored | 8h | 8h | MECHANICAL | Seg 11/05/26 | 3 dias | 13,4 |  |
| 373 | 1.6.15.1.3 | Atendimento de Comentário |  | 1d | 2026-05-08 A | 2026-05-08 A | 372 | 100% |  | 2026-05-14 | 2026-05-14 | 1d | Felipe | 8h | 8h | MECHANICAL | Qui 14/05/26 | 1 dia | 13,4 |  |
| 374 | 1.6.15.1.4 | Aprovação |  | 1d | 2026-05-08 A | 2026-05-08 A | 373 | 100% |  | 2026-05-15 | 2026-05-15 | 1d | Tecnored | 8h | 8h | MECHANICAL | Sex 15/05/26 | 1 dia | 13,4 | 0,5 |
| 375 | 1.6.15.2 | **AG-J0006-0700-GE-L-00001** |  | 21d | 2026-05-06 A | 2026-06-03 A |  | 100% |  | 2026-06-02 | 2026-06-12 | 7d |  | 76h | 76h | MECHANICAL | Ter 02/06/26 | 7 dias |  |  |
| 376 | 1.6.15.2.1 | Emissão inicial | milestone | 0d | 2026-05-06 A | 2026-05-08 A | 370, 293 | 100% |  | 2026-06-02 | 2026-06-03 | 2d | Felipe |  |  | MECHANICAL | Ter 02/06/26 | 2 dias | 13,4 |  |
| 377 | 1.6.15.2.2 | Avaliação do Cliente |  | 2d | 2026-05-11 A | 2026-05-12 A | 376 | 100% |  | 2026-06-08 | 2026-06-10 | 3d | Tecnored | 16h | 16h | MECHANICAL | Seg 08/06/26 | 3 dias | 13,4 |  |
| 378 | 1.6.15.2.3 | Atendimento de Comentário |  | 4d | 2026-05-12 A | 2026-05-18 A | 377 | 100% |  | 2026-06-11 | 2026-06-11 | 1d | Felipe | 32h | 32h | MECHANICAL | Qui 11/06/26 | 1 dia | 13,4 |  |
| 379 | 1.6.15.2.4 | Aprovação |  | 3.5d | 2026-05-18 A | 2026-06-03 A | 378FS+9d | 100% |  | 2026-06-12 | 2026-06-12 | 1d | Tecnored | 28h | 28h | MECHANICAL | Sex 12/06/26 | 1 dia | 13,4 | 0,5 |
| 380 | 1.6.15.3 | **AG-J0006-0700-GE-L-00002** |  | 21d | 2026-05-06 A | 2026-06-03 A |  | 100% |  | 2026-06-02 | 2026-06-12 | 7d |  | 100h | 100h | MECHANICAL | Ter 02/06/26 | 7 dias |  |  |
| 381 | 1.6.15.3.1 | Emissão inicial |  | 3d | 2026-05-06 A | 2026-05-08 A | 376FF | 100% |  | 2026-06-02 | 2026-06-03 | 2d | Felipe | 24h | 24h | MECHANICAL | Ter 02/06/26 | 2 dias | 13,4 |  |
| 382 | 1.6.15.3.2 | Avaliação do Cliente |  | 2d | 2026-05-11 A | 2026-05-12 A | 381 | 100% |  | 2026-06-08 | 2026-06-10 | 3d | Tecnored | 16h | 16h | MECHANICAL | Seg 08/06/26 | 3 dias | 13,4 |  |
| 383 | 1.6.15.3.3 | Atendimento de Comentário |  | 4d | 2026-05-12 A | 2026-05-18 A | 382 | 100% |  | 2026-06-11 | 2026-06-11 | 1d | Felipe | 32h | 32h | MECHANICAL | Qui 11/06/26 | 1 dia | 13,4 |  |
| 384 | 1.6.15.3.4 | Aprovação |  | 3.5d | 2026-05-18 A | 2026-06-03 A | 383FS+9d | 100% |  | 2026-06-12 | 2026-06-12 | 1d | Tecnored | 28h | 28h | MECHANICAL | Sex 12/06/26 | 1 dia | 13,4 | 0,5 |

| ID | WBS | Task | Type | Duration | Start | Finish | Predecessors | Complete | Actual start | Actual finish | Baseline start | Baseline finish | Baseline duration | Resources | Work | Actual work | Disciplina | Início_LB_R0 | Duração_LB_R0 | Duração Média (Tenax) | Duração média da atividade (Tecnored) |
| --- | --- | --- | --- | --- | --- | --- | --- | --- | --- | --- | --- | --- | --- | --- | --- | --- | --- | --- | --- | --- | --- |
| 385 | 1.6.15.4 | **AG-J0006-0700-GE-L-00003** |  | 16d | 2026-05-06 A | 2026-05-27 A |  | 100% |  |  | 2026-06-02 | 2026-06-12 | 7d |  | 132h | 132h | MECHANICAL | Ter 02/06/26 | 7 dias |  |  |
| 386 | 1.6.15.4.1 | Emissão inicial |  | 3d | 2026-05-06 A | 2026-05-08 A | 376FF | 100% |  |  | 2026-06-02 | 2026-06-03 | 2d | Felipe | 24h | 24h | MECHANICAL | Ter 02/06/26 | 2 dias | 13,4 |  |
| 387 | 1.6.15.4.2 | Avaliação do Cliente |  | 2d | 2026-05-11 A | 2026-05-12 A | 386 | 100% |  |  | 2026-06-08 | 2026-06-10 | 3d | Tecnored | 16h | 16h | MECHANICAL | Seg 08/06/26 | 3 dias | 13,4 |  |
| 388 | 1.6.15.4.3 | Atendimento de Comentário |  | 4d | 2026-05-12 A | 2026-05-18 A | 387 | 100% |  |  | 2026-06-11 | 2026-06-11 | 1d | Felipe | 32h | 32h | MECHANICAL | Qui 11/06/26 | 1 dia | 13,4 |  |
| 389 | 1.6.15.4.4 | Aprovação |  | 7.5d | 2026-05-18 A | 2026-05-27 A | 388FS+9d | 100% |  |  | 2026-06-12 | 2026-06-12 | 1d | Tecnored | 60h | 60h | MECHANICAL | Sex 12/06/26 | 1 dia | 13,4 | 0,5 |
| 390 | 1.6.15.5 | **PL-J0006-0700-GE-M-00001-4** |  | 7d | 2026-06-02 | 2026-06-12 |  | 100% | 2026-05-14 | 2026-06-03 | 2026-06-02 | 2026-06-12 | 7d |  | 56h | 56h | MECHANICAL | Ter 02/06/26 | 7 dias |  |  |
| 391 | 1.6.15.5.1 | Emissão inicial |  | 1d | 2026-05-14 A | 2026-05-22 A |  | 100% |  |  | 2026-06-02 | 2026-06-03 | 2d | Felipe | 8h | 8h | MECHANICAL | Ter 02/06/26 | 2 dias | 13,4 |  |
| 392 | 1.6.15.5.2 | Avaliação do Cliente |  | 2d | 2026-05-25 A | 2026-05-26 A | 391 | 100% |  |  | 2026-06-08 | 2026-06-10 | 3d | Tecnored | 16h | 16h | MECHANICAL | Seg 08/06/26 | 3 dias | 13,4 |  |
| 393 | 1.6.15.5.3 | Atendimento de Comentário |  | 2d | 2026-05-27 A | 2026-05-28 A | 392 | 100% |  |  | 2026-06-11 | 2026-06-11 | 1d | Felipe | 16h | 16h | MECHANICAL | Qui 11/06/26 | 1 dia | 13,4 |  |
| 394 | 1.6.15.5.4 | Aprovação |  | 2d | 2026-06-02 A | 2026-06-03 A | 393 | 100% |  |  | 2026-06-12 | 2026-06-12 | 1d | Tecnored | 16h | 16h | MECHANICAL | Sex 12/06/26 | 1 dia | 13,4 | 0,5 |
| 395 | 1.6.15.6 | **PL-J0006-0700-GE-M-00002-4** |  | 7d | 2026-06-02 | 2026-06-12 |  | 100% | 2026-05-14 | 2026-06-03 | 2026-06-02 | 2026-06-12 | 7d |  | 40h | 40h | MECHANICAL | Ter 02/06/26 | 7 dias |  |  |
| 396 | 1.6.15.6.1 | Emissão inicial | milestone | 0d | 2026-05-14 A | 2026-05-21 A |  | 100% |  |  | 2026-06-02 | 2026-06-03 | 2d | Felipe |  |  | MECHANICAL | Ter 02/06/26 | 2 dias | 13,4 |  |
| 397 | 1.6.15.6.2 | Avaliação do Cliente |  | 3d | 2026-05-21 A | 2026-05-25 A | 396 | 100% |  |  | 2026-06-08 | 2026-06-10 | 3d | Tecnored | 24h | 24h | MECHANICAL | Seg 08/06/26 | 3 dias | 13,4 |  |
| 398 | 1.6.15.6.3 | Atendimento de Comentário | milestone | 0d | 2026-05-27 A | 2026-05-29 A | 397 | 100% |  |  | 2026-06-11 | 2026-06-11 | 1d | Felipe |  |  | MECHANICAL | Qui 11/06/26 | 1 dia | 13,4 |  |
| 399 | 1.6.15.6.4 | Aprovação |  | 2d | 2026-06-02 A | 2026-06-03 A | 398 | 100% |  |  | 2026-06-12 | 2026-06-12 | 1d | Tecnored | 16h | 16h | MECHANICAL | Sex 12/06/26 | 1 dia | 13,4 | 0,5 |
| 400 | 1.6.15.7 | **PL-J0006-0700-GE-M-00003-4** |  | 7d | 2026-06-02 | 2026-06-12 |  | 100% | 2026-05-14 | 2026-06-03 | 2026-06-02 | 2026-06-12 | 7d |  | 40h | 40h | MECHANICAL | Ter 02/06/26 | 7 dias |  |  |
| 401 | 1.6.15.7.1 | Emissão inicial | milestone | 0d | 2026-05-14 A | 2026-05-21 A |  | 100% |  |  | 2026-06-02 | 2026-06-03 | 2d | Felipe |  |  | MECHANICAL | Ter 02/06/26 | 2 dias | 13,4 |  |
| 402 | 1.6.15.7.2 | Avaliação do Cliente |  | 3d | 2026-05-21 A | 2026-05-25 A | 401 | 100% |  |  | 2026-06-08 | 2026-06-10 | 3d | Tecnored | 24h | 24h | MECHANICAL | Seg 08/06/26 | 3 dias | 13,4 |  |
| 403 | 1.6.15.7.3 | Atendimento de Comentário | milestone | 0d | 2026-05-27 A | 2026-05-29 A | 402 | 100% |  |  | 2026-06-11 | 2026-06-11 | 1d | Felipe |  |  | MECHANICAL | Qui 11/06/26 | 1 dia | 13,4 |  |
| 404 | 1.6.15.7.4 | Aprovação |  | 2d | 2026-06-02 A | 2026-06-03 A | 403 | 100% |  |  | 2026-06-12 | 2026-06-12 | 1d | Tecnored | 16h | 16h | MECHANICAL | Sex 12/06/26 | 1 dia | 13,4 | 0,5 |
| 405 | 1.6.15.8 | **PL-J0006-0700-GE-M-00004-4** |  | 7d | 2026-06-02 | 2026-06-12 |  | 100% | 2026-05-14 | 2026-06-03 | 2026-06-02 | 2026-06-12 | 7d |  | 40h | 40h | MECHANICAL | Ter 02/06/26 | 7 dias |  |  |
| 406 | 1.6.15.8.1 | Emissão inicial | milestone | 0d | 2026-05-14 A | 2026-05-21 A |  | 100% |  |  | 2026-06-02 | 2026-06-03 | 2d | Felipe |  |  | MECHANICAL | Ter 02/06/26 | 2 dias | 13,4 |  |
| 407 | 1.6.15.8.2 | Avaliação do Cliente |  | 3d | 2026-05-21 A | 2026-05-25 A | 406 | 100% |  |  | 2026-06-08 | 2026-06-10 | 3d | Tecnored | 24h | 24h | MECHANICAL | Seg 08/06/26 | 3 dias | 13,4 |  |
| 408 | 1.6.15.8.3 | Atendimento de Comentário | milestone | 0d | 2026-05-27 A | 2026-05-29 A | 407 | 100% |  |  | 2026-06-11 | 2026-06-11 | 1d | Felipe |  |  | MECHANICAL | Qui 11/06/26 | 1 dia | 13,4 |  |
| 409 | 1.6.15.8.4 | Aprovação |  | 2d | 2026-06-02 A | 2026-06-03 A | 408 | 100% |  |  | 2026-06-12 | 2026-06-12 | 1d | Tecnored | 16h | 16h | MECHANICAL | Sex 12/06/26 | 1 dia | 13,4 | 0,5 |

| ID | WBS | Task | Type | Duration | Start | Finish | Predecessors | Complete | Remaining | Baseline start | Baseline finish | Baseline duration | Total slack | Free slack | Resources | Work | Actual work | Disciplina | Início_LB_R0 | Duração_LB_R0 | Duração média da atividade (Tecnored) | Duração Média (Tenax) |
| --- | --- | --- | --- | --- | --- | --- | --- | --- | --- | --- | --- | --- | --- | --- | --- | --- | --- | --- | --- | --- | --- | --- |
| 410 | 1.6.16 | **MODULO 0800** |  | 0d | 2026-03-20 | 2026-03-20 |  |  |  | 2026-05-06 | 2026-06-26 | 36d | 64d |  |  |  |  | MECHANICAL | Qua 06/05/26 | 36 dias |  |  |
| 411 | 1.6.16.1 | **ML-J0006-0800-GE-L-00001** | inactive | 11d | 2026-06-23 | 2026-07-07 |  |  |  | 2026-05-06 | 2026-05-20 | 11d | -31d | 0d |  | 88h |  | MECHANICAL | Qua 06/05/26 | 11 dias |  |  |
| 412 | 1.6.16.1.1 | Emissão inicial | inactive | 6d | 2026-06-23 | 2026-06-30 | 9 |  |  | 2026-05-06 | 2026-05-13 | 6d | -31d | 0d | Erikson | 48h |  | MECHANICAL | Qua 06/05/26 | 6 dias | 40 | 13,4 |
| 413 | 1.6.16.1.2 | Avaliação do Cliente | inactive | 3d | 2026-07-01 | 2026-07-03 | 412 |  |  | 2026-05-14 | 2026-05-18 | 3d | -31d | 0d | Tecnored | 24h |  | MECHANICAL | Qui 14/05/26 | 3 dias |  | 13,4 |
| 414 | 1.6.16.1.3 | Atendimento de Comentário | inactive | 1d | 2026-07-06 | 2026-07-06 | 413 |  |  | 2026-05-19 | 2026-05-19 | 1d | -31d | 0d | Erikson | 8h |  | MECHANICAL | Ter 19/05/26 | 1 dia |  | 13,4 |
| 415 | 1.6.16.1.4 | Aprovação | inactive | 1d | 2026-07-07 | 2026-07-07 | 414 |  |  | 2026-05-20 | 2026-05-20 | 1d | -31d | 0d | Tecnored | 8h |  | MECHANICAL | Qua 20/05/26 | 1 dia | 0,5 | 13,4 |
| 416 | 1.6.16.2 | **AG-J0006-0800-GE-L-00001** | inactive | 11d | 2026-07-08 | 2026-07-24 |  |  |  | 2026-06-12 | 2026-06-26 | 11d | -18d | 0d |  | 88h |  | MECHANICAL | Sex 12/06/26 | 11 dias |  |  |
| 417 | 1.6.16.2.1 | Emissão inicial | inactive | 6d | 2026-07-08 | 2026-07-17 | 415 |  |  | 2026-06-12 | 2026-06-19 | 6d | -18d | 0d | Erikson | 48h |  | MECHANICAL | Sex 12/06/26 | 6 dias | 16 | 13,4 |
| 418 | 1.6.16.2.2 | Avaliação do Cliente | inactive | 3d | 2026-07-20 | 2026-07-22 | 417 |  |  | 2026-06-22 | 2026-06-24 | 3d | -18d | 0d | Tecnored | 24h |  | MECHANICAL | Seg 22/06/26 | 3 dias |  | 13,4 |
| 419 | 1.6.16.2.3 | Atendimento de Comentário | inactive | 1d | 2026-07-23 | 2026-07-23 | 418 |  |  | 2026-06-25 | 2026-06-25 | 1d | -18d | 0d | Erikson | 8h |  | MECHANICAL | Qui 25/06/26 | 1 dia |  | 13,4 |
| 420 | 1.6.16.2.4 | Aprovação | inactive | 1d | 2026-07-24 | 2026-07-24 | 419 |  |  | 2026-06-26 | 2026-06-26 | 1d | -18d | 0d | Tecnored | 8h |  | MECHANICAL | Sex 26/06/26 | 1 dia | 0,5 | 13,4 |
| 421 | 1.6.16.3 | **AG-J0006-0800-GE-L-00002** | inactive | 11d | 2026-07-08 | 2026-07-24 |  |  |  | 2026-06-12 | 2026-06-26 | 11d | -18d | 0d |  | 88h |  | MECHANICAL | Sex 12/06/26 | 11 dias |  |  |
| 422 | 1.6.16.3.1 | Emissão inicial | inactive | 6d | 2026-07-08 | 2026-07-17 | 417FF |  |  | 2026-06-12 | 2026-06-19 | 6d | -18d | 0d | Erikson | 48h |  | MECHANICAL | Sex 12/06/26 | 6 dias | 16 | 13,4 |
| 423 | 1.6.16.3.2 | Avaliação do Cliente | inactive | 3d | 2026-07-20 | 2026-07-22 | 422 |  |  | 2026-06-22 | 2026-06-24 | 3d | -18d | 0d | Tecnored | 24h |  | MECHANICAL | Seg 22/06/26 | 3 dias |  | 13,4 |
| 424 | 1.6.16.3.3 | Atendimento de Comentário | inactive | 1d | 2026-07-23 | 2026-07-23 | 423 |  |  | 2026-06-25 | 2026-06-25 | 1d | -18d | 0d | Erikson | 8h |  | MECHANICAL | Qui 25/06/26 | 1 dia |  | 13,4 |
| 425 | 1.6.16.3.4 | Aprovação | inactive | 1d | 2026-07-24 | 2026-07-24 | 424 |  |  | 2026-06-26 | 2026-06-26 | 1d | -18d | 0d | Tecnored | 8h |  | MECHANICAL | Sex 26/06/26 | 1 dia | 0,5 | 13,4 |
| 426 | 1.6.16.4 | **PL-J0006-0800-GE-M-00001** | inactive | 11d | 2026-07-08 | 2026-07-24 |  |  |  | 2026-06-12 | 2026-06-26 | 11d | -18d | 0d |  | 88h |  | MECHANICAL | Sex 12/06/26 | 11 dias |  |  |
| 427 | 1.6.16.4.1 | Emissão inicial | inactive | 6d | 2026-07-08 | 2026-07-17 | 417FF |  |  | 2026-06-12 | 2026-06-19 | 6d | -18d | 0d | Erikson | 48h |  | MECHANICAL | Sex 12/06/26 | 6 dias | 16 | 13,4 |
| 428 | 1.6.16.4.2 | Avaliação do Cliente | inactive | 3d | 2026-07-20 | 2026-07-22 | 427 |  |  | 2026-06-22 | 2026-06-24 | 3d | -18d | 0d | Tecnored | 24h |  | MECHANICAL | Seg 22/06/26 | 3 dias |  | 13,4 |
| 429 | 1.6.16.4.3 | Atendimento de Comentário | inactive | 1d | 2026-07-23 | 2026-07-23 | 428 |  |  | 2026-06-25 | 2026-06-25 | 1d | -18d | 0d | Erikson | 8h |  | MECHANICAL | Qui 25/06/26 | 1 dia |  | 13,4 |
| 430 | 1.6.16.4.4 | Aprovação | inactive | 1d | 2026-07-24 | 2026-07-24 | 429 |  |  | 2026-06-26 | 2026-06-26 | 1d | -18d | 0d | Tecnored | 8h |  | MECHANICAL | Sex 26/06/26 | 1 dia | 0,5 | 13,4 |
| 431 | 1.6.17 | **MODULO 0900** |  | 21.5d | 2026-05-11 A | 2026-06-11 |  | 98% | 0.35d | 2026-05-05 | 2026-05-29 | 19d | 11.5d |  |  | 492h | 484h | MECHANICAL | Ter 05/05/26 | 19 dias |  |  |
| 432 | 1.6.17.1 | **ML-J0006-0900-GE-L-00001** |  | 11d | 2026-05-11 A | 2026-05-25 A |  | 100% |  | 2026-05-05 | 2026-05-15 | 9d |  |  |  | 88h | 88h | MECHANICAL | Ter 05/05/26 | 9 dias |  |  |
| 433 | 1.6.17.1.1 | Emissão inicial |  | 7d | 2026-05-11 A | 2026-05-19 A | 345FS+4d | 100% |  | 2026-05-05 | 2026-05-08 | 4d |  |  | Felipe | 56h | 56h | MECHANICAL | Ter 05/05/26 | 4 dias | 32 | 13,4 |
| 434 | 1.6.17.1.2 | Avaliação do Cliente | milestone | 0d | 2026-05-19 A | 2026-05-19 A | 433 | 100% |  | 2026-05-11 | 2026-05-13 | 3d |  |  | Tecnored |  |  | MECHANICAL | Seg 11/05/26 | 3 dias |  | 13,4 |
| 435 | 1.6.17.1.3 | Atendimento de Comentário |  | 1d | 2026-05-19 A | 2026-05-20 A | 434 | 100% |  | 2026-05-14 | 2026-05-14 | 1d |  |  | Felipe | 8h | 8h | MECHANICAL | Qui 14/05/26 | 1 dia |  | 13,4 |
| 436 | 1.6.17.1.4 | Aprovação |  | 3d | 2026-05-21 A | 2026-05-25 A | 435 | 100% |  | 2026-05-15 | 2026-05-15 | 1d |  |  | Tecnored | 24h | 24h | MECHANICAL | Sex 15/05/26 | 1 dia | 0,5 | 13,4 |

| ID | WBS | Task | Type | Duration | Start | Finish | Predecessors | Complete | Remaining | Baseline start | Baseline finish | Baseline duration | Total slack | Free slack | Resources | Work | Actual work | Disciplina | Início_LB_R0 | Duração_LB_R0 | Duração Média (Tenax) | Duração média da atividade (Tecnored) |
| --- | --- | --- | --- | --- | --- | --- | --- | --- | --- | --- | --- | --- | --- | --- | --- | --- | --- | --- | --- | --- | --- | --- |
| 437 | 1.6.17.2 | **AG-J0006-0900-GE-L-00001** |  | 14.5d | 2026-05-20 A | 2026-06-11 A |  | 100% |  | 2026-05-21 | 2026-05-29 | 7d |  |  |  | 180h | 180h | MECHANICAL | Qui 21/05/26 | 7 dias |  |  |
| 438 | 1.6.17.2.1 | Emissão inicial |  | 3d | 2026-05-20 A | 2026-05-22 A | 436, 350 | 100% |  | 2026-05-21 | 2026-05-22 | 2d |  |  | Felipe | 24h | 24h | MECHANICAL | Qui 21/05/26 | 2 dias | 13,4 |  |
| 439 | 1.6.17.2.2 | Avaliação do Cliente |  | 2d | 2026-05-25 A | 2026-05-26 A | 438 | 100% |  | 2026-05-25 | 2026-05-27 | 3d |  |  | Tecnored | 16h | 16h | MECHANICAL | Seg 25/05/26 | 3 dias | 13,4 |  |
| 440 | 1.6.17.2.3 | Atendimento de Comentário |  | 9d | 2026-05-26 A | 2026-06-10 A | 439 | 100% |  | 2026-05-28 | 2026-05-28 | 1d |  |  | Felipe | 72h | 72h | MECHANICAL | Qui 28/05/26 | 1 dia | 13,4 |  |
| 441 | 1.6.17.2.4 | Aprovação |  | 8.5d | 2026-05-28 A | 2026-06-11 A | 440 | 100% |  | 2026-05-29 | 2026-05-29 | 1d |  |  | Tecnored | 68h | 68h | MECHANICAL | Sex 29/05/26 | 1 dia | 13,4 | 0,5 |
| 442 | 1.6.17.3 | **AG-J0006-0900-GE-L-00002** |  | 8d | 2026-05-20 A | 2026-05-29 A |  | 100% |  | 2026-05-21 | 2026-05-29 | 7d |  |  |  | 64h | 64h | MECHANICAL | Qui 21/05/26 | 7 dias |  |  |
| 443 | 1.6.17.3.1 | Emissão inicial |  | 3d | 2026-05-20 A | 2026-05-22 A | 438FF | 100% |  | 2026-05-21 | 2026-05-22 | 2d |  |  | Felipe | 24h | 24h | MECHANICAL | Qui 21/05/26 | 2 dias | 13,4 |  |
| 444 | 1.6.17.3.2 | Avaliação do Cliente |  | 2d | 2026-05-25 A | 2026-05-26 A | 443 | 100% |  | 2026-05-25 | 2026-05-27 | 3d |  |  | Tecnored | 16h | 16h | MECHANICAL | Seg 25/05/26 | 3 dias | 13,4 |  |
| 445 | 1.6.17.3.3 | Atendimento de Comentário |  | 1d | 2026-05-26 A | 2026-05-27 A | 444 | 100% |  | 2026-05-28 | 2026-05-28 | 1d |  |  | Felipe | 8h | 8h | MECHANICAL | Qui 28/05/26 | 1 dia | 13,4 |  |
| 446 | 1.6.17.3.4 | Aprovação |  | 2d | 2026-05-27 A | 2026-05-29 A | 445 | 100% |  | 2026-05-29 | 2026-05-29 | 1d |  |  | Tecnored | 16h | 16h | MECHANICAL | Sex 29/05/26 | 1 dia | 13,4 | 0,5 |
| 447 | 1.6.17.4 | **PL-J0006-0900-GE-M-00001** |  | 9d | 2026-05-21 A | 2026-06-02 |  | 95% | 0.45d | 2026-05-21 | 2026-05-29 | 7d | 16d |  |  | 80h | 76h | MECHANICAL | Qui 21/05/26 | 7 dias |  |  |
| 448 | 1.6.17.4.1 | Emissão inicial |  | 9d | 2026-05-21 A | 2026-06-02 A | 438FF | 100% |  | 2026-05-21 | 2026-05-22 | 2d |  |  | Felipe | 72h | 72h | MECHANICAL | Qui 21/05/26 | 2 dias | 13,4 |  |
| 449 | 1.6.17.4.2 | Avaliação do Cliente | milestone | 0d | 2026-06-02 A | 2026-06-02 A | 448 | 100% |  | 2026-05-25 | 2026-05-27 | 3d |  |  | Tecnored |  |  | MECHANICAL | Seg 25/05/26 | 3 dias | 13,4 |  |
| 450 | 1.6.17.4.3 | Atendimento de Comentário | milestone | 0d | 2026-06-02 A | 2026-06-02 A | 449 | 100% |  | 2026-05-28 | 2026-05-28 | 1d |  |  | Felipe |  |  | MECHANICAL | Qui 28/05/26 | 1 dia | 13,4 |  |
| 451 | 1.6.17.4.4 | Aprovação |  | 1d | 2026-06-02 A | 2026-06-02 | 450 | 50% | 0.5d | 2026-05-29 | 2026-05-29 | 1d | 16d |  | Tecnored | 8h | 4h | MECHANICAL | Sex 29/05/26 | 1 dia | 13,4 | 0,5 |
| 452 | 1.6.17.5 | **PL-J0006-0900-GE-M-00002** |  | 10d | 2026-05-21 A | 2026-06-03 |  | 95% | 0.5d | 2026-05-21 | 2026-05-29 | 7d | 15d |  |  | 80h | 76h | MECHANICAL | Qui 21/05/26 | 7 dias |  |  |
| 453 | 1.6.17.5.1 | Emissão inicial |  | 9d | 2026-05-21 A | 2026-06-02 A | 438FF | 100% |  | 2026-05-21 | 2026-05-22 | 2d |  |  | Felipe | 72h | 72h | MECHANICAL | Qui 21/05/26 | 2 dias | 13,4 |  |
| 454 | 1.6.17.5.2 | Avaliação do Cliente | milestone | 0d | 2026-06-02 A | 2026-06-02 A | 453 | 100% |  | 2026-05-25 | 2026-05-27 | 3d |  |  | Tecnored |  |  | MECHANICAL | Seg 25/05/26 | 3 dias | 13,4 |  |
| 455 | 1.6.17.5.3 | Atendimento de Comentário | milestone | 0d | 2026-06-02 A | 2026-06-02 A | 454 | 100% |  | 2026-05-28 | 2026-05-28 | 1d |  |  | Felipe |  |  | MECHANICAL | Qui 28/05/26 | 1 dia | 13,4 |  |
| 456 | 1.6.17.5.4 | Aprovação |  | 1d | 2026-06-03 A | 2026-06-03 | 455 | 50% | 0.5d | 2026-05-29 | 2026-05-29 | 1d | 15d |  | Tecnored | 8h | 4h | MECHANICAL | Sex 29/05/26 | 1 dia | 13,4 | 0,5 |
| 457 | 1.6.18 | **AG-J0006-1100-GE-L-00001** |  | 7d | 2026-05-12 | 2026-05-20 |  |  |  | 2026-05-19 | 2026-05-27 | 7d | 18d | 0d |  | 56h |  | MECHANICAL | Ter 19/05/26 | 7 dias | 21,48 |  |
| 458 | 1.6.18.1 | Emissão inicial |  | 2d | 2026-05-12 | 2026-05-13 | 189FF-9d |  |  | 2026-05-19 | 2026-05-20 | 2d | 18d | 0d | Projetista Mecânico | 16h |  | MECHANICAL | Ter 19/05/26 | 2 dias | 13,4 |  |
| 459 | 1.6.18.2 | Avaliação do Cliente |  | 3d | 2026-05-14 | 2026-05-18 | 458 |  |  | 2026-05-21 | 2026-05-25 | 3d | 18d | 0d | Tecnored | 24h |  | MECHANICAL | Qui 21/05/26 | 3 dias | 13,4 |  |
| 460 | 1.6.18.3 | Atendimento de Comentário |  | 1d | 2026-05-19 | 2026-05-19 | 459 |  |  | 2026-05-26 | 2026-05-26 | 1d | 18d | 0d | Projetista Mecânico | 8h |  | MECHANICAL | Ter 26/05/26 | 1 dia | 13,4 |  |
| 461 | 1.6.18.4 | Aprovação |  | 1d | 2026-05-20 | 2026-05-20 | 460 |  |  | 2026-05-27 | 2026-05-27 | 1d | 18d |  | Tecnored | 8h |  | MECHANICAL | Qua 27/05/26 | 1 dia | 13,4 | 0,5 |

| ID | WBS | Task | Duration | Start | Finish | Predecessors | Complete | Actual finish | Baseline start | Baseline finish | Baseline duration | Total slack | Free slack | Constraint | Resources | Work | Actual work | Disciplina | Início_LB_R0 | Duração_LB_R0 | Duração Média (Tenax) | Duração média da atividade (Tecnored) | Text20 |
| --- | --- | --- | --- | --- | --- | --- | --- | --- | --- | --- | --- | --- | --- | --- | --- | --- | --- | --- | --- | --- | --- | --- | --- |
| 462 | 1.6.19 | **PL-J0006-1100-GE-L-00001** | 7d | 2026-05-19 A | 2026-05-27 |  | 100% | 2026-06-11 | 2026-05-19 | 2026-05-27 | 7d |  |  |  |  | 296h | 296h | MECHANICAL | Ter 19/05/26 | 7 dias | 21,48 |  |  |
| 463 | 1.6.19.1 | Emissão inicial | 2d | 2026-05-19 A | 2026-05-20 A | 458SS+3d | 100% |  | 2026-05-19 | 2026-05-20 | 2d |  |  |  | Projetista Mecânico | 16h | 16h | MECHANICAL | Ter 19/05/26 | 2 dias | 13,4 |  |  |
| 464 | 1.6.19.2 | Avaliação do Cliente | 14d | 2026-05-21 A | 2026-06-11 A | 463 | 100% |  | 2026-05-21 | 2026-05-25 | 3d |  |  |  | Tecnored | 112h | 112h | MECHANICAL | Qui 21/05/26 | 3 dias | 13,4 |  |  |
| 465 | 1.6.19.3 | Atendimento de Comentário | 11d | 2026-05-26 A | 2026-06-11 A | 464 | 100% |  | 2026-05-26 | 2026-05-26 | 1d |  |  |  | Projetista Mecânico | 88h | 88h | MECHANICAL | Ter 26/05/26 | 1 dia | 13,4 |  |  |
| 466 | 1.6.19.4 | Aprovação | 10d | 2026-05-27 A | 2026-06-11 A | 465 | 100% |  | 2026-05-27 | 2026-05-27 | 1d |  |  |  | Tecnored | 80h | 80h | MECHANICAL | Qua 27/05/26 | 1 dia | 13,4 | 0,5 |  |
| 467 | 1.6.20 | **RL-J0006-0000-GE-M-00001** | 4d | 2026-04-13 A | 2026-04-16 A |  | 100% |  | 2026-04-13 | 2026-04-16 | 4d |  |  |  |  | 32h | 32h | MECHANICAL | Seg 13/04/26 | 4 dias | 15,24 |  |  |
| 468 | 1.6.20.1 | Emissão inicial | 1d | 2026-04-13 A | 2026-04-13 A | 6 | 100% |  | 2026-04-13 | 2026-04-13 | 1d |  |  |  | Eng. Mecânico | 8h | 8h | MECHANICAL | Seg 13/04/26 | 1 dia | 13,4 | 16 | 22/04/26 17:20 |
| 469 | 1.6.20.2 | Avaliação do Cliente | 1d | 2026-04-14 A | 2026-04-14 A | 468 | 100% |  | 2026-04-14 | 2026-04-14 | 1d |  |  |  | Tecnored | 8h | 8h | MECHANICAL | Ter 14/04/26 | 1 dia | 13,4 |  |  |
| 470 | 1.6.20.3 | Atendimento de Comentário | 1d | 2026-04-15 A | 2026-04-15 A | 469 | 100% |  | 2026-04-15 | 2026-04-15 | 1d |  |  |  | Eng. Mecânico | 8h | 8h | MECHANICAL | Qua 15/04/26 | 1 dia | 13,4 |  |  |
| 471 | 1.6.20.4 | Aprovação | 1d | 2026-04-16 A | 2026-04-16 A | 470 | 100% |  | 2026-04-16 | 2026-04-16 | 1d |  |  |  | Tecnored | 8h | 8h | MECHANICAL | Qui 16/04/26 | 1 dia | 13,4 | 0,5 |  |
| 472 | 1.6.21 | **RL-J0006-0000-GE-M-00002** | 8d | 2026-05-13 A | 2026-05-22 A |  | 100% |  | 2026-04-29 | 2026-05-05 | 4d |  |  |  |  | 56h | 56h | MECHANICAL | Qua 29/04/26 | 4 dias | 15,24 |  |  |
| 473 | 1.6.21.1 | Emissão inicial | 3d | 2026-05-13 A | 2026-05-15 A | 7 | 100% |  | 2026-04-29 | 2026-04-29 | 1d |  |  | finish no earlier than 2026-04-29 | Eng. Mecânico | 24h | 24h | MECHANICAL | Qua 29/04/26 | 1 dia | 13,4 | 16 |  |
| 474 | 1.6.21.2 | Avaliação do Cliente | 2d | 2026-05-18 A | 2026-05-19 A | 473 | 100% |  | 2026-04-30 | 2026-04-30 | 1d |  |  | finish no earlier than 2026-04-30 | Tecnored | 16h | 16h | MECHANICAL | Qui 30/04/26 | 1 dia | 13,4 |  |  |
| 475 | 1.6.21.3 | Atendimento de Comentário | 1d | 2026-05-20 A | 2026-05-20 A | 474 | 100% |  | 2026-05-04 | 2026-05-04 | 1d |  |  | finish no earlier than 2026-05-04 | Eng. Mecânico | 8h | 8h | MECHANICAL | Seg 04/05/26 | 1 dia | 13,4 |  |  |
| 476 | 1.6.21.4 | Aprovação | 1d | 2026-05-22 A | 2026-05-22 A | 475 | 100% |  | 2026-05-05 | 2026-05-05 | 1d |  |  | finish no earlier than 2026-05-05 | Tecnored | 8h | 8h | MECHANICAL | Ter 05/05/26 | 1 dia | 13,4 | 0,5 |  |
| 477 | 1.6.22 | **RL-J0006-0000-GE-M-00003** | 4d | 2026-05-20 | 2026-05-25 |  |  |  | 2026-05-14 | 2026-05-19 | 4d | 22d |  |  |  | 32h |  | MECHANICAL | Qui 14/05/26 | 4 dias | 15,24 |  |  |
| 478 | 1.6.22.1 | Emissão inicial | 1d | 2026-05-20 | 2026-05-20 | 8 |  |  | 2026-05-14 | 2026-05-14 | 1d | 22d | 0d | finish no earlier than 2026-05-14 | Eng. Mecânico | 8h |  | MECHANICAL | Qui 14/05/26 | 1 dia | 13,4 | 16 |  |
| 479 | 1.6.22.2 | Avaliação do Cliente | 1d | 2026-05-21 | 2026-05-21 | 478 |  |  | 2026-05-15 | 2026-05-15 | 1d | 22d | 0d | finish no earlier than 2026-05-15 | Tecnored | 8h |  | MECHANICAL | Sex 15/05/26 | 1 dia | 13,4 |  |  |
| 480 | 1.6.22.3 | Atendimento de Comentário | 1d | 2026-05-22 | 2026-05-22 | 479 |  |  | 2026-05-18 | 2026-05-18 | 1d | 22d | 0d | finish no earlier than 2026-05-18 | Eng. Mecânico | 8h |  | MECHANICAL | Seg 18/05/26 | 1 dia | 13,4 |  |  |
| 481 | 1.6.22.4 | Aprovação | 1d | 2026-05-25 | 2026-05-25 | 480 |  |  | 2026-05-19 | 2026-05-19 | 1d | 22d |  | finish no earlier than 2026-05-19 | Tecnored | 8h |  | MECHANICAL | Ter 19/05/26 | 1 dia | 13,4 | 0,5 |  |
| 482 | 1.6.23 | **RL-J0006-0000-GE-M-00005** | 4d | 2026-05-28 | 2026-06-02 |  |  |  | 2026-05-28 | 2026-06-02 | 4d | 12.5d |  |  |  | 32h |  | MECHANICAL | Qui 28/05/26 | 4 dias | 15,24 |  |  |
| 483 | 1.6.23.1 | Emissão inicial | 1d | 2026-05-28 | 2026-05-28 | 10 |  |  | 2026-05-28 | 2026-05-28 | 1d | 12.5d | 0d | finish no earlier than 2026-05-28 | Eng. Mecânico | 8h |  | MECHANICAL | Qui 28/05/26 | 1 dia | 13,4 | 16 |  |
| 484 | 1.6.23.2 | Avaliação do Cliente | 1d | 2026-05-29 | 2026-05-29 | 483 |  |  | 2026-05-29 | 2026-05-29 | 1d | 12.5d | 0d | finish no earlier than 2026-05-29 | Tecnored | 8h |  | MECHANICAL | Sex 29/05/26 | 1 dia | 13,4 |  |  |
| 485 | 1.6.23.3 | Atendimento de Comentário | 1d | 2026-06-01 | 2026-06-01 | 484 |  |  | 2026-06-01 | 2026-06-01 | 1d | 16d | 0d | finish no earlier than 2026-06-01 | Eng. Mecânico | 8h |  | MECHANICAL | Seg 01/06/26 | 1 dia | 13,4 |  |  |
| 486 | 1.6.23.4 | Aprovação | 1d | 2026-06-02 | 2026-06-02 | 485 |  |  | 2026-06-02 | 2026-06-02 | 1d | 16d |  | finish no earlier than 2026-06-02 | Tecnored | 8h |  | MECHANICAL | Ter 02/06/26 | 1 dia | 13,4 | 0,5 |  |

| ID | WBS | Task | Type | Duration | Start | Finish | Predecessors | Complete | Remaining | Baseline start | Baseline finish | Baseline duration | Total slack | Free slack | Constraint | Resources | Work | Actual work | Text2 | Início_LB_R0 | Duração_LB_R0 | Duração média da atividade (Tecnored) | Duração Média (Tenax) | Disciplina | Text20 |
| --- | --- | --- | --- | --- | --- | --- | --- | --- | --- | --- | --- | --- | --- | --- | --- | --- | --- | --- | --- | --- | --- | --- | --- | --- | --- |
| 487 | 1.7 | **UTILITIES SYSTEMS** |  | 58d | 2026-03-23 A | 2026-06-19 |  | 81% | 10.91d | 2026-03-23 | 2026-06-22 | 59d | 5d |  |  |  | 602h | 488.8h | Seg 22/06/26 | Seg 23/03/26 | 59 dias | 281,5 | 562 |  |  |
| 488 | 1.7.1 | **ML-J0006-0000-GE-U-00001** |  | 10d | 2026-05-25 A | 2026-06-09 |  | 89% | 1.15d | 2026-05-14 | 2026-06-01 | 13d | 5d | 0d |  |  | 80h | 70.8h | Seg 01/06/26 | Qui 14/05/26 | 13 dias |  | 43,2 | UTILITIES SYSTEMS |  |
| 489 | 1.7.1.1 | Emissão inicial |  | 7d | 2026-05-25 A | 2026-06-02 | 205, 257, 288, 319, 345, 371, 433 | 90% | 0.7d | 2026-05-14 | 2026-05-27 | 10d | 0.9d | 0d |  | Eng. Tubulação | 56h | 50.4h | Qua 27/05/26 | Qui 14/05/26 | 10 dias | 80 | 13,4 | UTILITIES SYSTEMS |  |
| 490 | 1.7.1.2 | Avaliação do Cliente |  | 1d | 2026-06-03 A | 2026-06-03 | 489 | 90% | 0.1d | 2026-05-28 | 2026-05-28 | 1d | 0.9d | 0d |  | Tecnored | 8h | 7.2h | Qui 28/05/26 | Qui 28/05/26 | 1 dia |  | 13,4 | UTILITIES SYSTEMS |  |
| 491 | 1.7.1.3 | Atendimento de Comentário |  | 1d | 2026-06-08 A | 2026-06-08 | 490 | 90% | 0.1d | 2026-05-29 | 2026-05-29 | 1d | 0.75d | 0d |  | Eng. Tubulação | 8h | 7.2h | Sex 29/05/26 | Sex 29/05/26 | 1 dia |  | 13,4 | UTILITIES SYSTEMS |  |
| 492 | 1.7.1.4 | Aprovação |  | 1d | 2026-06-09 A | 2026-06-09 | 491 | 75% | 0.25d | 2026-06-01 | 2026-06-01 | 1d | 5d | 0d |  | Tecnored | 8h | 6h | Seg 01/06/26 | Seg 01/06/26 | 1 dia | 0,5 | 13,4 | UTILITIES SYSTEMS |  |
| 493 | 1.7.2 | **CP-J0006-0000-GE-U-00001** |  | 5d | 2026-03-23 A | 2026-03-27 A |  | 100% |  | 2026-03-23 | 2026-04-01 | 8d |  |  |  |  | 40h | 40h | Qua 01/04/26 | Seg 23/03/26 | 8 dias |  | 24,48 | UTILITIES SYSTEMS |  |
| 494 | 1.7.2.1 | Emissão inicial |  | 2d | 2026-03-23 A | 2026-03-24 A | 12 | 100% |  | 2026-03-23 | 2026-03-27 | 5d |  |  | finish no earlier than 2026-03-24 | Eng. Tubulação | 16h | 16h | Sex 27/03/26 | Seg 23/03/26 | 5 dias | 32 | 13,4 | UTILITIES SYSTEMS |  |
| 495 | 1.7.2.2 | Avaliação do Cliente |  | 1d | 2026-03-25 A | 2026-03-25 A | 494 | 100% |  | 2026-03-30 | 2026-03-30 | 1d |  |  | finish no earlier than 2026-03-25 | Tecnored | 8h | 8h | Seg 30/03/26 | Seg 30/03/26 | 1 dia |  | 13,4 | UTILITIES SYSTEMS | 10/04/2026 08:30 |
| 496 | 1.7.2.3 | Atendimento de Comentário |  | 1d | 2026-03-26 A | 2026-03-26 A | 495 | 100% |  | 2026-03-31 | 2026-03-31 | 1d |  |  | finish no earlier than 2026-03-26 | Eng. Tubulação | 8h | 8h | Ter 31/03/26 | Ter 31/03/26 | 1 dia |  | 13,4 | UTILITIES SYSTEMS | 17/04/2026 17:55 |
| 497 | 1.7.2.4 | Aprovação |  | 1d | 2026-03-27 A | 2026-03-27 A | 496 | 100% |  | 2026-04-01 | 2026-04-01 | 1d |  |  | finish no earlier than 2026-03-27 | Tecnored | 8h | 8h | Qua 01/04/26 | Qua 01/04/26 | 1 dia | 0,5 | 13,4 | UTILITIES SYSTEMS | 17/04/2026 17:55 |
| 498 | 1.7.3 | **DB-J0006-0000-GE-U-00001** | inactive | 11d | 2026-06-10 | 2026-06-24 |  |  |  | 2026-06-02 | 2026-06-18 | 11d | 2d |  |  |  | 88h |  | Qui 18/06/26 | Ter 02/06/26 | 11 dias |  | 18,24 | UTILITIES SYSTEMS |  |
| 499 | 1.7.3.1 | Emissão inicial | inactive | 8d | 2026-06-10 | 2026-06-19 | 492 |  |  | 2026-06-02 | 2026-06-15 | 8d | 2d | 0d |  | Eng. Tubulação | 64h |  | Seg 15/06/26 | Ter 02/06/26 | 8 dias |  | 13,4 | UTILITIES SYSTEMS |  |
| 500 | 1.7.3.2 | Avaliação do Cliente | inactive | 1d | 2026-06-22 | 2026-06-22 | 499 |  |  | 2026-06-16 | 2026-06-16 | 1d | 2d | 0d |  | Tecnored | 8h |  | Ter 16/06/26 | Ter 16/06/26 | 1 dia |  | 13,4 | UTILITIES SYSTEMS |  |
| 501 | 1.7.3.3 | Atendimento de Comentário | inactive | 1d | 2026-06-23 | 2026-06-23 | 500 |  |  | 2026-06-17 | 2026-06-17 | 1d | 2d | 0d |  | Eng. Tubulação | 8h |  | Qua 17/06/26 | Qua 17/06/26 | 1 dia |  | 13,4 | UTILITIES SYSTEMS |  |
| 502 | 1.7.3.4 | Aprovação | inactive | 1d | 2026-06-24 | 2026-06-24 | 501 |  |  | 2026-06-18 | 2026-06-18 | 1d | 2d |  |  | Tecnored | 8h |  | Qui 18/06/26 | Qui 18/06/26 | 1 dia | 0,5 | 13,4 | UTILITIES SYSTEMS |  |
| 503 | 1.7.4 | **DB-J0006-0000-GE-U-00002** | inactive | 10d | 2026-06-11 | 2026-06-24 |  |  |  | 2026-06-02 | 2026-06-22 | 13d | 2d |  |  |  | 80h |  | Seg 22/06/26 | Ter 02/06/26 | 13 dias |  | 18,24 | UTILITIES SYSTEMS |  |
| 504 | 1.7.4.1 | Emissão inicial | inactive | 7d | 2026-06-11 | 2026-06-19 | 499FF |  |  | 2026-06-02 | 2026-06-15 | 8d | 2d | 0d |  | Eng. Tubulação | 56h |  | Seg 15/06/26 | Ter 02/06/26 | 8 dias |  | 13,4 | UTILITIES SYSTEMS |  |
| 505 | 1.7.4.2 | Avaliação do Cliente | inactive | 1d | 2026-06-22 | 2026-06-22 | 504 |  |  | 2026-06-16 | 2026-06-18 | 3d | 2d | 0d |  | Tecnored | 8h |  | Qui 18/06/26 | Ter 16/06/26 | 3 dias |  | 13,4 | UTILITIES SYSTEMS |  |
| 506 | 1.7.4.3 | Atendimento de Comentário | inactive | 1d | 2026-06-23 | 2026-06-23 | 505 |  |  | 2026-06-19 | 2026-06-19 | 1d | 2d | 0d |  | Eng. Tubulação | 8h |  | Sex 19/06/26 | Sex 19/06/26 | 1 dia |  | 13,4 | UTILITIES SYSTEMS |  |
| 507 | 1.7.4.4 | Aprovação | inactive | 1d | 2026-06-24 | 2026-06-24 | 506 |  |  | 2026-06-22 | 2026-06-22 | 1d | 2d |  |  | Tecnored | 8h |  | Seg 22/06/26 | Seg 22/06/26 | 1 dia | 0,5 | 13,4 | UTILITIES SYSTEMS |  |
| 508 | 1.7.5 | **DB-J0006-0000-GE-U-00003** | inactive | 10d | 2026-06-11 | 2026-06-24 |  |  |  | 2026-06-02 | 2026-06-22 | 13d | 2d |  |  |  | 80h |  | Seg 22/06/26 | Ter 02/06/26 | 13 dias |  | 18,24 | UTILITIES SYSTEMS |  |
| 509 | 1.7.5.1 | Emissão inicial | inactive | 7d | 2026-06-11 | 2026-06-19 | 499FF |  |  | 2026-06-02 | 2026-06-15 | 8d | 2d | 0d |  | Eng. Tubulação | 56h |  | Seg 15/06/26 | Ter 02/06/26 | 8 dias |  | 13,4 | UTILITIES SYSTEMS |  |
| 510 | 1.7.5.2 | Avaliação do Cliente | inactive | 1d | 2026-06-22 | 2026-06-22 | 509 |  |  | 2026-06-16 | 2026-06-18 | 3d | 2d | 0d |  | Tecnored | 8h |  | Qui 18/06/26 | Ter 16/06/26 | 3 dias |  | 13,4 | UTILITIES SYSTEMS |  |
| 511 | 1.7.5.3 | Atendimento de Comentário | inactive | 1d | 2026-06-23 | 2026-06-23 | 510 |  |  | 2026-06-19 | 2026-06-19 | 1d | 2d | 0d |  | Eng. Tubulação | 8h |  | Sex 19/06/26 | Sex 19/06/26 | 1 dia |  | 13,4 | UTILITIES SYSTEMS |  |
| 512 | 1.7.5.4 | Aprovação | inactive | 1d | 2026-06-24 | 2026-06-24 | 511 |  |  | 2026-06-22 | 2026-06-22 | 1d | 2d |  |  | Tecnored | 8h |  | Seg 22/06/26 | Seg 22/06/26 | 1 dia | 0,5 | 13,4 | UTILITIES SYSTEMS |  |

| ID | WBS | Task | Type | Duration | Start | Finish | Predecessors | Complete | Baseline start | Baseline finish | Baseline duration | Total slack | Free slack | Constraint | Resources | Work | Actual work | Disciplina | Text2 | Início_LB_R0 | Duração_LB_R0 | Duração Média (Tenax) | Duração média da atividade (Tecnored) | Text20 |
| --- | --- | --- | --- | --- | --- | --- | --- | --- | --- | --- | --- | --- | --- | --- | --- | --- | --- | --- | --- | --- | --- | --- | --- | --- |
| 513 | 1.7.6 | **DB-J0006-0000-GE-U-00004** | inactive | 10d | 2026-06-11 | 2026-06-24 |  |  | 2026-06-02 | 2026-06-22 | 13d | 2d |  |  |  | 80h |  | UTILITIES SYSTEMS | Seg 22/06/26 | Ter 02/06/26 | 13 dias | 18,24 |  |  |
| 514 | 1.7.6.1 | Emissão inicial | inactive | 7d | 2026-06-11 | 2026-06-19 | 499FF |  | 2026-06-02 | 2026-06-15 | 8d | 2d | 0d |  | Eng. Tubulação | 56h |  | UTILITIES SYSTEMS | Seg 15/06/26 | Ter 02/06/26 | 8 dias | 13,4 |  |  |
| 515 | 1.7.6.2 | Avaliação do Cliente | inactive | 1d | 2026-06-22 | 2026-06-22 | 514 |  | 2026-06-16 | 2026-06-18 | 3d | 2d | 0d |  | Tecnored | 8h |  | UTILITIES SYSTEMS | Qui 18/06/26 | Ter 16/06/26 | 3 dias | 13,4 |  |  |
| 516 | 1.7.6.3 | Atendimento de Comentário | inactive | 1d | 2026-06-23 | 2026-06-23 | 515 |  | 2026-06-19 | 2026-06-19 | 1d | 2d | 0d |  | Eng. Tubulação | 8h |  | UTILITIES SYSTEMS | Sex 19/06/26 | Sex 19/06/26 | 1 dia | 13,4 |  |  |
| 517 | 1.7.6.4 | Aprovação | inactive | 1d | 2026-06-24 | 2026-06-24 | 516 |  | 2026-06-22 | 2026-06-22 | 1d | 2d |  |  | Tecnored | 8h |  | UTILITIES SYSTEMS | Seg 22/06/26 | Seg 22/06/26 | 1 dia | 13,4 | 0,5 |  |
| 518 | 1.7.7 | **FG-J0006-0000-GE-U-00001** |  | 10d | 2026-04-01 A | 2026-04-16 A |  | 100% | 2026-04-27 | 2026-05-11 | 10d |  |  |  |  | 64h | 64h | UTILITIES SYSTEMS | Seg 11/05/26 | Seg 27/04/26 | 10 dias | 18,24 |  |  |
| 519 | 1.7.7.1 | Emissão inicial |  | 5d | 2026-04-01 A | 2026-04-09 A |  | 100% | 2026-04-27 | 2026-05-04 | 5d |  |  |  | Projetista Tubulação | 40h | 40h | UTILITIES SYSTEMS | Seg 04/05/26 | Seg 27/04/26 | 5 dias | 13,4 |  | 17/04/26 17:00 |
| 520 | 1.7.7.2 | Avaliação do Cliente |  | 1d | 2026-04-10 A | 2026-04-15 A | 519 | 100% | 2026-05-05 | 2026-05-07 | 3d |  |  | finish no earlier than 2026-04-14 | Tecnored | 8h | 8h | UTILITIES SYSTEMS | Qui 07/05/26 | Ter 05/05/26 | 3 dias | 13,4 |  | 17/04/26 17:15 |
| 521 | 1.7.7.3 | Atendimento de Comentário |  | 1d | 2026-04-15 A | 2026-04-15 A | 520 | 100% | 2026-05-08 | 2026-05-08 | 1d |  |  |  | Projetista Tubulação | 8h | 8h | UTILITIES SYSTEMS | Sex 08/05/26 | Sex 08/05/26 | 1 dia | 13,4 |  | 17/04/26 17:30 |
| 522 | 1.7.7.4 | Aprovação |  | 1d | 2026-04-16 A | 2026-04-16 A | 521 | 100% | 2026-05-11 | 2026-05-11 | 1d |  |  | finish no earlier than 2026-04-17 | Tecnored | 8h | 8h | UTILITIES SYSTEMS | Seg 11/05/26 | Seg 11/05/26 | 1 dia | 13,4 | 0,5 | 17/04/26 17:47 |
| 523 | 1.7.8 | **FG-J0006-0000-GE-U-00002** |  | 27d | 2026-04-27 A | 2026-06-03 A |  | 100% | 2026-04-27 | 2026-05-11 | 10d |  |  |  |  | 140h | 140h | UTILITIES SYSTEMS | Seg 11/05/26 | Seg 27/04/26 | 10 dias | 18,24 |  |  |
| 524 | 1.7.8.1 | Emissão inicial |  | 5.5d | 2026-04-27 A | 2026-05-18 A | 4 | 100% | 2026-04-27 | 2026-05-04 | 5d |  |  | finish no earlier than 2026-05-04 | Projetista Tubulação | 44h | 44h | UTILITIES SYSTEMS | Seg 04/05/26 | Seg 27/04/26 | 5 dias | 13,4 |  |  |
| 525 | 1.7.8.2 | Avaliação do Cliente |  | 5d | 2026-05-19 A | 2026-05-25 A | 524 | 100% | 2026-05-05 | 2026-05-07 | 3d |  |  | finish no earlier than 2026-05-07 | Tecnored | 40h | 40h | UTILITIES SYSTEMS | Qui 07/05/26 | Ter 05/05/26 | 3 dias | 13,4 |  |  |
| 526 | 1.7.8.3 | Atendimento de Comentário |  | 7d | 2026-05-26 A | 2026-06-03 A | 525 | 100% | 2026-05-08 | 2026-05-08 | 1d |  |  | finish no earlier than 2026-05-08 | Projetista Tubulação | 56h | 56h | UTILITIES SYSTEMS | Sex 08/05/26 | Sex 08/05/26 | 1 dia | 13,4 |  |  |
| 527 | 1.7.8.4 | Aprovação | milestone | 0d | 2026-06-03 A | 2026-06-03 A | 526 | 100% | 2026-05-11 | 2026-05-11 | 1d |  |  | finish no earlier than 2026-05-11 | Tecnored |  |  | UTILITIES SYSTEMS | Seg 11/05/26 | Seg 11/05/26 | 1 dia | 13,4 | 0,5 |  |
| 528 | 1.7.9 | **FG-J0006-0000-GE-U-00003** |  | 6d | 2026-05-05 A | 2026-05-12 A |  | 100% | 2026-04-27 | 2026-05-11 | 10d |  |  |  |  | 46h | 46h | UTILITIES SYSTEMS | Seg 11/05/26 | Seg 27/04/26 | 10 dias | 18,24 |  |  |
| 529 | 1.7.9.1 | Emissão inicial | milestone | 0d | 2026-05-05 A | 2026-05-05 A | 4 | 100% | 2026-04-27 | 2026-05-04 | 5d |  |  | finish no earlier than 2026-05-04 | Projetista Tubulação |  |  | UTILITIES SYSTEMS | Seg 04/05/26 | Seg 27/04/26 | 5 dias | 13,4 |  |  |
| 530 | 1.7.9.2 | Avaliação do Cliente |  | 3d | 2026-05-06 A | 2026-05-08 A | 529 | 100% | 2026-05-05 | 2026-05-07 | 3d |  |  | finish no earlier than 2026-05-07 | Tecnored | 24h | 24h | UTILITIES SYSTEMS | Qui 07/05/26 | Ter 05/05/26 | 3 dias | 13,4 |  |  |
| 531 | 1.7.9.3 | Atendimento de Comentário |  | 1.75d | 2026-05-08 A | 2026-05-11 A | 530 | 100% | 2026-05-08 | 2026-05-08 | 1d |  |  | finish no earlier than 2026-05-08 | Projetista Tubulação | 14h | 14h | UTILITIES SYSTEMS | Sex 08/05/26 | Sex 08/05/26 | 1 dia | 13,4 |  |  |
| 532 | 1.7.9.4 | Aprovação |  | 1d | 2026-05-11 A | 2026-05-12 A | 531 | 100% | 2026-05-11 | 2026-05-11 | 1d |  |  | finish no earlier than 2026-05-11 | Tecnored | 8h | 8h | UTILITIES SYSTEMS | Seg 11/05/26 | Seg 11/05/26 | 1 dia | 13,4 | 0,5 |  |
| 533 | 1.7.10 | **FG-J0006-0000-GE-U-00004** |  | 5d | 2026-05-06 A | 2026-05-12 A |  | 100% | 2026-04-27 | 2026-05-11 | 10d |  |  |  |  | 48h | 48h | UTILITIES SYSTEMS | Seg 11/05/26 | Seg 27/04/26 | 10 dias | 18,24 |  |  |
| 534 | 1.7.10.1 | Emissão inicial |  | 3d | 2026-05-06 A | 2026-05-08 A | 4 | 100% | 2026-04-27 | 2026-05-04 | 5d |  |  | finish no earlier than 2026-05-04 | Projetista Tubulação | 24h | 24h | UTILITIES SYSTEMS | Seg 04/05/26 | Seg 27/04/26 | 5 dias | 13,4 |  |  |
| 535 | 1.7.10.2 | Avaliação do Cliente |  | 2d | 2026-05-08 A | 2026-05-11 A | 534 | 100% | 2026-05-05 | 2026-05-07 | 3d |  |  | finish no earlier than 2026-05-07 | Tecnored | 16h | 16h | UTILITIES SYSTEMS | Qui 07/05/26 | Ter 05/05/26 | 3 dias | 13,4 |  |  |
| 536 | 1.7.10.3 | Atendimento de Comentário | milestone | 0d | 2026-05-11 A | 2026-05-11 A | 535 | 100% | 2026-05-08 | 2026-05-08 | 1d |  |  | finish no earlier than 2026-05-08 | Projetista Tubulação |  |  | UTILITIES SYSTEMS | Sex 08/05/26 | Sex 08/05/26 | 1 dia | 13,4 |  |  |
| 537 | 1.7.10.4 | Aprovação |  | 1d | 2026-05-11 A | 2026-05-12 A | 536 | 100% | 2026-05-11 | 2026-05-11 | 1d |  |  | finish no earlier than 2026-05-11 | Tecnored | 8h | 8h | UTILITIES SYSTEMS | Seg 11/05/26 | Seg 11/05/26 | 1 dia | 13,4 | 0,5 |  |

| ID | WBS | Task | Type | Duration | Start | Finish | Predecessors | Complete | Remaining | Baseline start | Baseline finish | Baseline duration | Total slack | Free slack | Constraint | Resources | Work | Actual work | Disciplina | Text2 | Início_LB_R0 | Duração_LB_R0 | Duração Média (Tenax) | Duração média da atividade (Tecnored) | Text20 |
| --- | --- | --- | --- | --- | --- | --- | --- | --- | --- | --- | --- | --- | --- | --- | --- | --- | --- | --- | --- | --- | --- | --- | --- | --- | --- |
| 538 | 1.7.11 | **FG-J0006-0000-GE-U-00005 - INCENDIO** |  | 6d | 2026-05-22 A | 2026-05-29 A |  | 100% |  | 2026-04-27 | 2026-05-11 | 10d |  |  |  |  | 48h | 48h | UTILITIES SYSTEMS | Seg 11/05/26 | Seg 27/04/26 | 10 dias | 18,24 |  |  |
| 539 | 1.7.11.1 | Emissão inicial |  | 3d | 2026-05-22 A | 2026-05-26 A | 4 | 100% |  | 2026-04-27 | 2026-05-04 | 5d |  |  | finish no earlier than 2026-05-04 | Projetista Tubulação | 24h | 24h | UTILITIES SYSTEMS | Seg 04/05/26 | Seg 27/04/26 | 5 dias | 13,4 |  |  |
| 540 | 1.7.11.2 | Avaliação do Cliente | milestone | 0d | 2026-05-26 A | 2026-05-26 A | 539 | 100% |  | 2026-05-05 | 2026-05-07 | 3d |  |  | finish no earlier than 2026-05-07 | Tecnored |  |  | UTILITIES SYSTEMS | Qui 07/05/26 | Ter 05/05/26 | 3 dias | 13,4 |  |  |
| 541 | 1.7.11.3 | Atendimento de Comentário |  | 1d | 2026-05-26 A | 2026-05-27 A | 540 | 100% |  | 2026-05-08 | 2026-05-08 | 1d |  |  | finish no earlier than 2026-05-08 | Projetista Tubulação | 8h | 8h | UTILITIES SYSTEMS | Sex 08/05/26 | Sex 08/05/26 | 1 dia | 13,4 |  |  |
| 542 | 1.7.11.4 | Aprovação |  | 2d | 2026-05-27 A | 2026-05-29 A | 541 | 100% |  | 2026-05-11 | 2026-05-11 | 1d |  |  | finish no earlier than 2026-05-11 | Tecnored | 16h | 16h | UTILITIES SYSTEMS | Seg 11/05/26 | Seg 11/05/26 | 1 dia | 13,4 | 0,5 |  |
| 543 | 1.7.12 | **MC-J0006-1000-GE-U-00001** |  | 9d | 2026-06-03 A | 2026-06-17 |  | 44% | 5d | 2026-05-28 | 2026-06-11 | 9d | 7d |  |  |  | 72h | 32h | UTILITIES SYSTEMS | Qui 11/06/26 | Qui 28/05/26 | 9 dias | 30,72 |  |  |
| 544 | 1.7.12.1 | Emissão inicial |  | 4d | 2026-06-03 A | 2026-06-10 A | 489 | 100% |  | 2026-05-28 | 2026-06-02 | 4d |  |  |  | Eng. Tubulação | 32h | 32h | UTILITIES SYSTEMS | Ter 02/06/26 | Qui 28/05/26 | 4 dias | 13,4 | 32 |  |
| 545 | 1.7.12.2 | Avaliação do Cliente |  | 3d | 2026-06-11 | 2026-06-15 | 544 |  |  | 2026-06-03 | 2026-06-09 | 3d | 7d | 0d |  | Tecnored | 24h |  | UTILITIES SYSTEMS | Ter 09/06/26 | Qua 03/06/26 | 3 dias | 13,4 |  |  |
| 546 | 1.7.12.3 | Atendimento de Comentário |  | 1d | 2026-06-16 | 2026-06-16 | 545 |  |  | 2026-06-10 | 2026-06-10 | 1d | 7d | 0d |  | Eng. Tubulação | 8h |  | UTILITIES SYSTEMS | Qua 10/06/26 | Qua 10/06/26 | 1 dia | 13,4 |  |  |
| 547 | 1.7.12.4 | Aprovação |  | 1d | 2026-06-17 | 2026-06-17 | 546 |  |  | 2026-06-11 | 2026-06-11 | 1d | 7d |  |  | Tecnored | 8h |  | UTILITIES SYSTEMS | Qui 11/06/26 | Qui 11/06/26 | 1 dia | 13,4 | 0,5 |  |
| 548 | 1.7.13 | **MD-J0006-1000-GE-U-00001** |  | 8d | 2026-06-10 | 2026-06-19 |  |  |  | 2026-06-02 | 2026-06-17 | 10d | 5d |  |  |  | 64h |  | UTILITIES SYSTEMS | Qua 17/06/26 | Ter 02/06/26 | 10 dias | 36,96 |  |  |
| 549 | 1.7.13.1 | Emissão inicial |  | 4d | 2026-06-10 | 2026-06-15 | 488 |  |  | 2026-06-02 | 2026-06-10 | 5d | 5d | 0d |  | Eng. Tubulação | 32h |  | UTILITIES SYSTEMS | Qua 10/06/26 | Ter 02/06/26 | 5 dias | 13,4 | 32 |  |
| 550 | 1.7.13.2 | Avaliação do Cliente |  | 2d | 2026-06-16 | 2026-06-17 | 549 |  |  | 2026-06-11 | 2026-06-15 | 3d | 5d | 0d |  | Tecnored | 16h |  | UTILITIES SYSTEMS | Seg 15/06/26 | Qui 11/06/26 | 3 dias | 13,4 |  |  |
| 551 | 1.7.13.3 | Atendimento de Comentário |  | 1d | 2026-06-18 | 2026-06-18 | 550 |  |  | 2026-06-16 | 2026-06-16 | 1d | 5d | 0d |  | Eng. Tubulação | 8h |  | UTILITIES SYSTEMS | Ter 16/06/26 | Ter 16/06/26 | 1 dia | 13,4 |  |  |
| 552 | 1.7.13.4 | Aprovação |  | 1d | 2026-06-19 | 2026-06-19 | 551 |  |  | 2026-06-17 | 2026-06-17 | 1d | 5d |  |  | Tecnored | 8h |  | UTILITIES SYSTEMS | Qua 17/06/26 | Qua 17/06/26 | 1 dia | 13,4 | 0,5 |  |
| 553 | 1.8 | **PIPING** |  | 63d | 2026-03-23 A | 2026-06-26 |  | 81% | 11.81d | 2026-03-23 | 2026-06-26 | 63d | 0d |  |  |  | 2864.4h | 2327.5h |  | Sex 26/06/26 | Seg 23/03/26 | 63 dias | 538,04 | 493 |  |
| 554 | 1.8.1 | **CP-J0006-0000-GE-T-00001** |  | 4d | 2026-03-23 A | 2026-03-26 A |  | 100% |  | 2026-03-23 | 2026-03-26 | 4d |  |  |  |  | 32h | 32h | PIPING | Qui 26/03/26 | Seg 23/03/26 | 4 dias | 24,48 |  |  |
| 555 | 1.8.1.1 | Emissão inicial |  | 1d | 2026-03-23 A | 2026-03-23 A | 12 | 100% |  | 2026-03-23 | 2026-03-23 | 1d |  |  |  | Eng. Tubulação | 8h | 8h | PIPING | Seg 23/03/26 | Seg 23/03/26 | 1 dia | 13,4 | 16 |  |
| 556 | 1.8.1.2 | Avaliação do Cliente |  | 1d | 2026-03-24 A | 2026-03-24 A | 555 | 100% |  | 2026-03-24 | 2026-03-24 | 1d |  |  |  | Tecnored | 8h | 8h | PIPING | Ter 24/03/26 | Ter 24/03/26 | 1 dia | 13,4 |  | 10/04/2026 08:30 |
| 557 | 1.8.1.3 | Atendimento de Comentário |  | 1d | 2026-03-25 A | 2026-03-25 A | 556 | 100% |  | 2026-03-25 | 2026-03-25 | 1d |  |  |  | Eng. Tubulação | 8h | 8h | PIPING | Qua 25/03/26 | Qua 25/03/26 | 1 dia | 13,4 |  | 17/04/26 17:55 |
| 558 | 1.8.1.4 | Aprovação |  | 1d | 2026-03-26 A | 2026-03-26 A | 557 | 100% |  | 2026-03-26 | 2026-03-26 | 1d |  |  |  | Tecnored | 8h | 8h | PIPING | Qui 26/03/26 | Qui 26/03/26 | 1 dia | 13,4 | 0,5 | 17/04/26 17:55 |
| 559 | 1.8.2 | **ML-J0006-0000-GE-T-00001** |  | 39d | 2026-04-22 A | 2026-06-18 |  | 93% | 2.71d | 2026-05-14 | 2026-06-03 | 15d | 0d |  |  |  | 70.4h | 65.5h | PIPING | Qua 03/06/26 | Qui 14/05/26 | 15 dias | 43,2 |  |  |
| 560 | 1.8.2.1 | Emissão inicial |  | 3.5d | 2026-04-22 A | 2026-06-10 A | 205, 257, 288, 345, 371, 433 | 100% |  | 2026-05-14 | 2026-05-27 | 10d |  |  | finish no earlier than 2026-06-10 | Projetista Tubulação | 28h | 28h | PIPING | Qua 27/05/26 | Qui 14/05/26 | 10 dias | 13,4 | 80 |  |
| 561 | 1.8.2.2 | Avaliação do Cliente |  | 2d | 2026-06-11 A | 2026-06-12 | 560 | 90% | 0.2d | 2026-05-28 | 2026-06-01 | 3d | 1.83d | 0d | finish no earlier than 2026-06-12 | Tecnored | 16h | 14.4h | PIPING | Seg 01/06/26 | Qui 28/05/26 | 3 dias | 13,4 |  |  |
| 562 | 1.8.2.3 | Atendimento de Comentário |  | 1.65d | 2026-06-15 A | 2026-06-16 | 561 | 90% | 0.17d | 2026-06-02 | 2026-06-02 | 1d | 1.75d | 0d | finish no earlier than 2026-06-16 | Projetista Tubulação | 13.2h | 11.88h | PIPING | Ter 02/06/26 | Ter 02/06/26 | 1 dia | 13,4 |  |  |
| 563 | 1.8.2.4 | Aprovação |  | 1.65d | 2026-06-17 A | 2026-06-18 | 562 | 85% | 0.25d | 2026-06-03 | 2026-06-03 | 1d | 0d |  | start no earlier than 2026-06-17 | Tecnored | 13.2h | 11.22h | PIPING | Qua 03/06/26 | Qua 03/06/26 | 1 dia | 13,4 | 0,5 |  |

| ID | WBS | Task | Type | Duration | Start | Finish | Predecessors | Complete | Baseline start | Baseline finish | Baseline duration | Total slack | Free slack | Constraint | Resources | Work | Actual work | Disciplina | Text2 | Início_LB_R0 | Duração_LB_R0 | Duração Média (Tenax) | Duração média da atividade (Tecnored) |
| --- | --- | --- | --- | --- | --- | --- | --- | --- | --- | --- | --- | --- | --- | --- | --- | --- | --- | --- | --- | --- | --- | --- | --- |
| 564 | 1.8.3 | **ET-J0006-0504-GE-T-00001** |  | 4d | 2026-06-22 | 2026-06-25 |  |  | 2026-06-10 | 2026-06-15 | 4d | 1d |  |  |  | 32h |  | PIPING | Seg 15/06/26 | Qua 10/06/26 | 4 dias | 24,48 |  |
| 565 | 1.8.3.1 | Emissão inicial |  | 1d | 2026-06-22 | 2026-06-22 | 575 |  | 2026-06-10 | 2026-06-10 | 1d | 1d | 0d |  | Eng. Tubulação | 8h |  | PIPING | Qua 10/06/26 | Qua 10/06/26 | 1 dia | 13,4 | 16 |
| 566 | 1.8.3.2 | Avaliação do Cliente |  | 1d | 2026-06-23 | 2026-06-23 | 565 |  | 2026-06-11 | 2026-06-11 | 1d | 1d | 0d |  | Tecnored | 8h |  | PIPING | Qui 11/06/26 | Qui 11/06/26 | 1 dia | 13,4 |  |
| 567 | 1.8.3.3 | Atendimento de Comentário |  | 1d | 2026-06-24 | 2026-06-24 | 566 |  | 2026-06-12 | 2026-06-12 | 1d | 1d | 0d |  | Eng. Tubulação | 8h |  | PIPING | Sex 12/06/26 | Sex 12/06/26 | 1 dia | 13,4 |  |
| 568 | 1.8.3.4 | Aprovação |  | 1d | 2026-06-25 | 2026-06-25 | 567 |  | 2026-06-15 | 2026-06-15 | 1d | 1d |  |  | Tecnored | 8h |  | PIPING | Seg 15/06/26 | Seg 15/06/26 | 1 dia | 13,4 | 0,5 |
| 569 | 1.8.4 | **FD-J0006-0505-GE-T-00001** |  | 5d | 2026-06-22 | 2026-06-26 |  |  | 2026-06-10 | 2026-06-18 | 7d | 0d |  |  |  | 40h |  | PIPING | Qui 18/06/26 | Qua 10/06/26 | 7 dias | 24,48 |  |
| 570 | 1.8.4.1 | Emissão inicial |  | 2d | 2026-06-22 | 2026-06-23 | 575 |  | 2026-06-10 | 2026-06-11 | 2d | 0d |  |  | Eng. Tubulação | 16h |  | PIPING | Qui 11/06/26 | Qua 10/06/26 | 2 dias | 13,4 |  |
| 571 | 1.8.4.2 | Avaliação do Cliente |  | 1d | 2026-06-24 | 2026-06-24 | 570 |  | 2026-06-12 | 2026-06-16 | 3d | 0d |  |  | Tecnored | 8h |  | PIPING | Ter 16/06/26 | Sex 12/06/26 | 3 dias | 13,4 |  |
| 572 | 1.8.4.3 | Atendimento de Comentário |  | 1d | 2026-06-25 | 2026-06-25 | 571 |  | 2026-06-17 | 2026-06-17 | 1d | 0d |  |  | Eng. Tubulação | 8h |  | PIPING | Qua 17/06/26 | Qua 17/06/26 | 1 dia | 13,4 |  |
| 573 | 1.8.4.4 | Aprovação |  | 1d | 2026-06-26 | 2026-06-26 | 572 |  | 2026-06-18 | 2026-06-18 | 1d | 0d |  |  | Tecnored | 8h |  | PIPING | Qui 18/06/26 | Qui 18/06/26 | 1 dia | 13,4 | 0,5 |
| 574 | 1.8.5 | **PQ-J0006-0000-GE-T-00001** |  | 4d | 2026-06-19 | 2026-06-24 |  |  | 2026-06-08 | 2026-06-15 | 6d | 0d |  |  |  | 32h |  | PIPING | Seg 15/06/26 | Seg 08/06/26 | 6 dias | 30,72 |  |
| 575 | 1.8.5.1 | Emissão inicial |  | 1d | 2026-06-19 | 2026-06-19 | 559 |  | 2026-06-08 | 2026-06-08 | 1d | 0d |  |  | Eng. Tubulação | 8h |  | PIPING | Seg 08/06/26 | Seg 08/06/26 | 1 dia | 13,4 | 16 |
| 576 | 1.8.5.2 | Avaliação do Cliente |  | 1d | 2026-06-22 | 2026-06-22 | 575 |  | 2026-06-09 | 2026-06-11 | 3d | 2d | 0d |  | Tecnored | 8h |  | PIPING | Qui 11/06/26 | Ter 09/06/26 | 3 dias | 13,4 |  |
| 577 | 1.8.5.3 | Atendimento de Comentário |  | 1d | 2026-06-23 | 2026-06-23 | 576 |  | 2026-06-12 | 2026-06-12 | 1d | 2d | 0d |  | Eng. Tubulação | 8h |  | PIPING | Sex 12/06/26 | Sex 12/06/26 | 1 dia | 13,4 |  |
| 578 | 1.8.5.4 | Aprovação |  | 1d | 2026-06-24 | 2026-06-24 | 577 |  | 2026-06-15 | 2026-06-15 | 1d | 2d |  |  | Tecnored | 8h |  | PIPING | Seg 15/06/26 | Seg 15/06/26 | 1 dia | 13,4 | 0,5 |
| 579 | 1.8.6 | **MC-J0006-0000-GE-T-00001** |  | 5d | 2026-06-19 | 2026-06-25 |  |  | 2026-04-27 | 2026-06-09 | 29d | 1d |  |  |  | 40h |  | PIPING | Ter 09/06/26 | Seg 27/04/26 | 29 dias | 30,72 |  |
| 580 | 1.8.6.1 | Emissão inicial |  | 2d | 2026-06-19 | 2026-06-22 | 563 |  | 2026-04-27 | 2026-05-11 | 10d | 1d | 0d | finish no earlier than 2026-05-11 | Eng. Tubulação | 16h |  | PIPING | Seg 11/05/26 | Seg 27/04/26 | 10 dias | 13,4 | 40 |
| 581 | 1.8.6.2 | Avaliação do Cliente |  | 1d | 2026-06-23 | 2026-06-23 | 580 |  | 2026-05-12 | 2026-05-14 | 3d | 1d | 0d | finish no earlier than 2026-05-14 | Tecnored | 8h |  | PIPING | Qui 14/05/26 | Ter 12/05/26 | 3 dias | 13,4 |  |
| 582 | 1.8.6.3 | Atendimento de Comentário |  | 1d | 2026-06-24 | 2026-06-24 | 581 |  | 2026-06-08 | 2026-06-08 | 1d | 1d | 0d |  | Eng. Tubulação | 8h |  | PIPING | Seg 08/06/26 | Seg 08/06/26 | 1 dia | 13,4 |  |
| 583 | 1.8.6.4 | Aprovação |  | 1d | 2026-06-25 | 2026-06-25 | 582 |  | 2026-06-09 | 2026-06-09 | 1d | 1d |  |  | Tecnored | 8h |  | PIPING | Ter 09/06/26 | Ter 09/06/26 | 1 dia | 13,4 | 0,5 |
| 584 | 1.8.7 | **FG-J0006-0100-GE-T-00001** |  | 22d | 2026-04-22 A | 2026-05-25 A |  | 100% | 2026-05-05 | 2026-05-18 | 10d |  |  |  |  | 98h | 98h | PIPING | Seg 18/05/26 | Ter 05/05/26 | 10 dias | 15,12 |  |
| 585 | 1.8.7.1 | Emissão inicial | milestone | 0d | 2026-04-22 A | 2026-04-22 A | 4, 580FF | 100% | 2026-05-05 | 2026-05-11 | 5d |  |  | finish no earlier than 2026-05-11 | Projetista Tubulação |  |  | PIPING | Seg 11/05/26 | Ter 05/05/26 | 5 dias | 13,4 |  |
| 586 | 1.8.7.2 | Avaliação do Cliente |  | 3d | 2026-04-23 A | 2026-04-27 A | 585 | 100% | 2026-05-12 | 2026-05-14 | 3d |  |  | finish no earlier than 2026-04-27 | Tecnored | 24h | 24h | PIPING | Qui 14/05/26 | Ter 12/05/26 | 3 dias | 13,4 |  |
| 587 | 1.8.7.3 | Atendimento de Comentário |  | 9d | 2026-05-13 A | 2026-05-25 A | 586 | 100% | 2026-05-15 | 2026-05-15 | 1d |  |  | finish no earlier than 2026-04-28 | Projetista Tubulação | 72h | 72h | PIPING | Sex 15/05/26 | Sex 15/05/26 | 1 dia | 13,4 |  |
| 588 | 1.8.7.4 | Aprovação |  | 0.25d | 2026-05-25 A | 2026-05-25 A | 587 | 100% | 2026-05-18 | 2026-05-18 | 1d |  |  | finish no earlier than 2026-04-29 | Tecnored | 2h | 2h | PIPING | Seg 18/05/26 | Seg 18/05/26 | 1 dia | 13,4 | 0,5 |

| ID | WBS | Task | Type | Duration | Start | Finish | Predecessors | Complete | Baseline start | Baseline finish | Baseline duration | Total slack | Free slack | Constraint | Resources | Work | Actual work | Disciplina | Text2 | Início_LB_R0 | Duração_LB_R0 | Duração Média (Tenax) | Duração média da atividade (Tecnored) | Text20 |
| --- | --- | --- | --- | --- | --- | --- | --- | --- | --- | --- | --- | --- | --- | --- | --- | --- | --- | --- | --- | --- | --- | --- | --- | --- |
| 589 | 1.8.8 | **FG-J0006-0200-GE-T-00001** | inactive | 10d | 2026-06-16 | 2026-06-29 |  |  | 2026-05-05 | 2026-05-18 | 10d | -1d | 0d |  |  | 80h |  | PIPING | Seg 18/05/26 | Ter 05/05/26 | 10 dias | 24,48 |  |  |
| 590 | 1.8.8.1 | Emissão inicial | inactive | 5d | 2026-06-16 | 2026-06-22 | 4, 580FF |  | 2026-05-05 | 2026-05-11 | 5d | -1d | 0d | finish no earlier than 2026-05-11 | Projetista Tubulação | 40h |  | PIPING | Seg 11/05/26 | Ter 05/05/26 | 5 dias | 13,4 |  |  |
| 591 | 1.8.8.2 | Avaliação do Cliente | inactive | 3d | 2026-06-23 | 2026-06-25 | 590 |  | 2026-05-12 | 2026-05-14 | 3d | -1d | 0d | finish no earlier than 2026-05-14 | Tecnored | 24h |  | PIPING | Qui 14/05/26 | Ter 12/05/26 | 3 dias | 13,4 |  |  |
| 592 | 1.8.8.3 | Atendimento de Comentário | inactive | 1d | 2026-06-26 | 2026-06-26 | 591 |  | 2026-05-15 | 2026-05-15 | 1d | -1d | 0d | finish no earlier than 2026-05-15 | Projetista Tubulação | 8h |  | PIPING | Sex 15/05/26 | Sex 15/05/26 | 1 dia | 13,4 |  |  |
| 593 | 1.8.8.4 | Aprovação | inactive | 1d | 2026-06-29 | 2026-06-29 | 592 |  | 2026-05-18 | 2026-05-18 | 1d | -1d | 0d | finish no earlier than 2026-05-18 | Tecnored | 8h |  | PIPING | Seg 18/05/26 | Seg 18/05/26 | 1 dia | 13,4 | 0,5 |  |
| 594 | 1.8.9 | **FG-J0006-0300-GE-T-00001** |  | 12d | 2026-04-23 A | 2026-05-13 A |  | 100% | 2026-05-05 | 2026-05-18 | 10d |  |  |  |  | 108h | 108h | PIPING | Seg 18/05/26 | Ter 05/05/26 | 10 dias | 15,12 |  |  |
| 595 | 1.8.9.1 | Emissão inicial |  | 3d | 2026-04-23 A | 2026-04-28 A | 4, 580FF | 100% | 2026-05-05 | 2026-05-11 | 5d |  |  | finish no earlier than 2026-05-11 | Projetista Tubulação | 24h | 24h | PIPING | Seg 11/05/26 | Ter 05/05/26 | 5 dias | 13,4 |  | 23/04/26 11:05 |
| 596 | 1.8.9.2 | Avaliação do Cliente |  | 3d | 2026-04-28 A | 2026-04-30 A | 595 | 100% | 2026-05-12 | 2026-05-14 | 3d |  |  | finish no earlier than 2026-04-27 | Tecnored | 24h | 24h | PIPING | Qui 14/05/26 | Ter 12/05/26 | 3 dias | 13,4 |  |  |
| 597 | 1.8.9.3 | Atendimento de Comentário |  | 7.5d | 2026-04-29 A | 2026-05-12 A | 596 | 100% | 2026-05-15 | 2026-05-15 | 1d |  |  | finish no earlier than 2026-04-29 | Projetista Tubulação | 60h | 60h | PIPING | Sex 15/05/26 | Sex 15/05/26 | 1 dia | 13,4 |  |  |
| 598 | 1.8.9.4 | Aprovação | milestone | 0d | 2026-05-13 A | 2026-05-13 A | 597 | 100% | 2026-05-18 | 2026-05-18 | 1d |  |  | finish no earlier than 2026-04-30 | Tecnored |  |  | PIPING | Seg 18/05/26 | Seg 18/05/26 | 1 dia | 13,4 | 0,5 |  |
| 599 | 1.8.10 | **FG-J0006-0400-GE-T-00001** |  | 12d | 2026-04-23 A | 2026-05-12 A |  | 100% | 2026-05-05 | 2026-05-18 | 10d |  |  |  |  | 72h | 72h | PIPING | Seg 18/05/26 | Ter 05/05/26 | 10 dias | 15,12 |  |  |
| 600 | 1.8.10.1 | Emissão inicial | milestone | 0d | 2026-04-23 A | 2026-04-23 A | 4, 580FF | 100% | 2026-05-05 | 2026-05-11 | 5d |  |  | finish no earlier than 2026-05-11 | Projetista Tubulação |  |  | PIPING | Seg 11/05/26 | Ter 05/05/26 | 5 dias | 13,4 |  |  |
| 601 | 1.8.10.2 | Avaliação do Cliente |  | 1d | 2026-04-29 A | 2026-04-29 A | 600 | 100% | 2026-05-12 | 2026-05-14 | 3d |  |  | finish no earlier than 2026-04-28 | Tecnored | 8h | 8h | PIPING | Qui 14/05/26 | Ter 12/05/26 | 3 dias | 13,4 |  |  |
| 602 | 1.8.10.3 | Atendimento de Comentário |  | 7d | 2026-04-30 A | 2026-05-11 A | 601 | 100% | 2026-05-15 | 2026-05-15 | 1d |  |  | finish no earlier than 2026-04-29 | Projetista Tubulação | 56h | 56h | PIPING | Sex 15/05/26 | Sex 15/05/26 | 1 dia | 13,4 |  |  |
| 603 | 1.8.10.4 | Aprovação |  | 1d | 2026-05-11 A | 2026-05-12 A | 602 | 100% | 2026-05-18 | 2026-05-18 | 1d |  |  | finish no earlier than 2026-04-30 | Tecnored | 8h | 8h | PIPING | Seg 18/05/26 | Seg 18/05/26 | 1 dia | 13,4 | 0,5 |  |
| 604 | 1.8.11 | **FG-J0006-0504-GE-T-00001** |  | 16d | 2026-05-14 A | 2026-06-08 A |  | 100% | 2026-05-05 | 2026-05-18 | 10d |  |  |  |  | 84h | 84h | PIPING | Seg 18/05/26 | Ter 05/05/26 | 10 dias | 15,12 |  |  |
| 605 | 1.8.11.1 | Emissão inicial |  | 1.5d | 2026-05-14 A | 2026-05-22 A | 4, 580FF | 100% | 2026-05-05 | 2026-05-11 | 5d |  |  | finish no earlier than 2026-05-11 | Projetista Tubulação | 12h | 12h | PIPING | Seg 11/05/26 | Ter 05/05/26 | 5 dias | 13,4 |  |  |
| 606 | 1.8.11.2 | Avaliação do Cliente |  | 5d | 2026-05-22 A | 2026-05-29 A | 605 | 100% | 2026-05-12 | 2026-05-14 | 3d |  |  | finish no earlier than 2026-05-14 | Tecnored | 40h | 40h | PIPING | Qui 14/05/26 | Ter 12/05/26 | 3 dias | 13,4 |  |  |
| 607 | 1.8.11.3 | Atendimento de Comentário |  | 3d | 2026-06-01 A | 2026-06-03 A | 606 | 100% | 2026-05-15 | 2026-05-15 | 1d |  |  | finish no earlier than 2026-05-15 | Projetista Tubulação | 24h | 24h | PIPING | Sex 15/05/26 | Sex 15/05/26 | 1 dia | 13,4 |  |  |
| 608 | 1.8.11.4 | Aprovação |  | 1d | 2026-06-04 A | 2026-06-08 A | 607 | 100% | 2026-05-18 | 2026-05-18 | 1d |  |  | finish no earlier than 2026-05-18 | Tecnored | 8h | 8h | PIPING | Seg 18/05/26 | Seg 18/05/26 | 1 dia | 13,4 | 0,5 |  |
| 609 | 1.8.12 | **FG-J0006-0504-GE-T-00002** |  | 9d | 2026-05-14 A | 2026-05-26 A |  | 100% | 2026-05-05 | 2026-05-18 | 10d |  |  |  |  | 56h | 56h | PIPING | Seg 18/05/26 | Ter 05/05/26 | 10 dias | 15,12 |  |  |
| 610 | 1.8.12.1 | Emissão inicial |  | 5d | 2026-05-14 A | 2026-05-22 A | 4, 580FF | 100% | 2026-05-05 | 2026-05-11 | 5d |  |  | finish no earlier than 2026-05-11 | Projetista Tubulação | 40h | 40h | PIPING | Seg 11/05/26 | Ter 05/05/26 | 5 dias | 13,4 |  |  |
| 611 | 1.8.12.2 | Avaliação do Cliente |  | 1d | 2026-05-22 A | 2026-05-25 A | 610 | 100% | 2026-05-12 | 2026-05-14 | 3d |  |  | finish no earlier than 2026-05-14 | Tecnored | 8h | 8h | PIPING | Qui 14/05/26 | Ter 12/05/26 | 3 dias | 13,4 |  |  |
| 612 | 1.8.12.3 | Atendimento de Comentário | milestone | 0d | 2026-05-25 A | 2026-05-25 A | 611 | 100% | 2026-05-15 | 2026-05-15 | 1d |  |  | finish no earlier than 2026-05-15 | Projetista Tubulação |  |  | PIPING | Sex 15/05/26 | Sex 15/05/26 | 1 dia | 13,4 |  |  |
| 613 | 1.8.12.4 | Aprovação |  | 1d | 2026-05-26 A | 2026-05-26 A | 612 | 100% | 2026-05-18 | 2026-05-18 | 1d |  |  | finish no earlier than 2026-05-18 | Tecnored | 8h | 8h | PIPING | Seg 18/05/26 | Seg 18/05/26 | 1 dia | 13,4 | 0,5 |  |

| ID | WBS | Task | Duration | Start | Finish | Predecessors | Complete | Baseline start | Baseline finish | Baseline duration | Constraint | Resources | Work | Actual work | Disciplina | Text2 | Início_LB_R0 | Duração_LB_R0 | Duração Média (Tenax) | Duração média da atividade (Tecnored) |
| --- | --- | --- | --- | --- | --- | --- | --- | --- | --- | --- | --- | --- | --- | --- | --- | --- | --- | --- | --- | --- |
| 614 | 1.8.13 | **FG-J0006-0504-GE-T-00003 - 1 - 3** | 15d | 2026-05-14 A | 2026-06-03 A |  | 100% | 2026-05-05 | 2026-05-18 | 10d |  |  | 104h | 104h | PIPING | Seg 18/05/26 | Ter 05/05/26 | 10 dias | 15,12 |  |
| 615 | 1.8.13.1 | Emissão inicial | 5d | 2026-05-14 A | 2026-05-22 A | 4, 580FF | 100% | 2026-05-05 | 2026-05-11 | 5d | finish no earlier than 2026-05-11 | Projetista Tubulação | 40h | 40h | PIPING | Seg 11/05/26 | Ter 05/05/26 | 5 dias | 13,4 |  |
| 616 | 1.8.13.2 | Avaliação do Cliente | 1d | 2026-05-22 A | 2026-05-25 A | 615 | 100% | 2026-05-12 | 2026-05-14 | 3d | finish no earlier than 2026-05-14 | Tecnored | 8h | 8h | PIPING | Qui 14/05/26 | Ter 12/05/26 | 3 dias | 13,4 |  |
| 617 | 1.8.13.3 | Atendimento de Comentário | 2d | 2026-05-25 A | 2026-05-27 A | 616 | 100% | 2026-05-15 | 2026-05-15 | 1d | finish no earlier than 2026-05-15 | Projetista Tubulação | 16h | 16h | PIPING | Sex 15/05/26 | Sex 15/05/26 | 1 dia | 13,4 |  |
| 618 | 1.8.13.4 | Aprovação | 5d | 2026-05-27 A | 2026-06-03 A | 617 | 100% | 2026-05-18 | 2026-05-18 | 1d | finish no earlier than 2026-05-26 | Tecnored | 40h | 40h | PIPING | Seg 18/05/26 | Seg 18/05/26 | 1 dia | 13,4 | 0,5 |
| 619 | 1.8.14 | **FG-J0006-0504-GE-T-00003 - 2 - 3** | 15d | 2026-05-14 A | 2026-06-03 A |  | 100% | 2026-05-05 | 2026-05-18 | 10d |  |  | 96h | 96h | PIPING | Seg 18/05/26 | Ter 05/05/26 | 10 dias | 15,12 |  |
| 620 | 1.8.14.1 | Emissão inicial | 5d | 2026-05-14 A | 2026-05-22 A | 4, 580FF | 100% | 2026-05-05 | 2026-05-11 | 5d | finish no earlier than 2026-05-11 | Projetista Tubulação | 40h | 40h | PIPING | Seg 11/05/26 | Ter 05/05/26 | 5 dias | 13,4 |  |
| 621 | 1.8.14.2 | Avaliação do Cliente | 1d | 2026-05-22 A | 2026-05-25 A | 620 | 100% | 2026-05-12 | 2026-05-14 | 3d | finish no earlier than 2026-05-14 | Tecnored | 8h | 8h | PIPING | Qui 14/05/26 | Ter 12/05/26 | 3 dias | 13,4 |  |
| 622 | 1.8.14.3 | Atendimento de Comentário | 2d | 2026-05-25 A | 2026-05-27 A | 621 | 100% | 2026-05-15 | 2026-05-15 | 1d | finish no earlier than 2026-05-15 | Projetista Tubulação | 16h | 16h | PIPING | Sex 15/05/26 | Sex 15/05/26 | 1 dia | 13,4 |  |
| 623 | 1.8.14.4 | Aprovação | 4d | 2026-05-27 A | 2026-06-03 A | 622 | 100% | 2026-05-18 | 2026-05-18 | 1d | finish no earlier than 2026-05-26 | Tecnored | 32h | 32h | PIPING | Seg 18/05/26 | Seg 18/05/26 | 1 dia | 13,4 | 0,5 |
| 624 | 1.8.15 | **FG-J0006-0504-GE-T-00003 - 3 - 3** | 15d | 2026-05-14 A | 2026-06-03 A |  | 100% | 2026-05-05 | 2026-05-18 | 10d |  |  | 96h | 96h | PIPING | Seg 18/05/26 | Ter 05/05/26 | 10 dias | 15,12 |  |
| 625 | 1.8.15.1 | Emissão inicial | 5d | 2026-05-14 A | 2026-05-22 A | 4, 580FF | 100% | 2026-05-05 | 2026-05-11 | 5d | finish no earlier than 2026-05-11 | Projetista Tubulação | 40h | 40h | PIPING | Seg 11/05/26 | Ter 05/05/26 | 5 dias | 13,4 |  |
| 626 | 1.8.15.2 | Avaliação do Cliente | 1d | 2026-05-22 A | 2026-05-25 A | 625 | 100% | 2026-05-12 | 2026-05-14 | 3d | finish no earlier than 2026-05-14 | Tecnored | 8h | 8h | PIPING | Qui 14/05/26 | Ter 12/05/26 | 3 dias | 13,4 |  |
| 627 | 1.8.15.3 | Atendimento de Comentário | 2d | 2026-05-25 A | 2026-05-27 A | 626 | 100% | 2026-05-15 | 2026-05-15 | 1d | finish no earlier than 2026-05-15 | Projetista Tubulação | 16h | 16h | PIPING | Sex 15/05/26 | Sex 15/05/26 | 1 dia | 13,4 |  |
| 628 | 1.8.15.4 | Aprovação | 4d | 2026-05-27 A | 2026-06-03 A | 627 | 100% | 2026-05-18 | 2026-05-18 | 1d | finish no earlier than 2026-05-26 | Tecnored | 32h | 32h | PIPING | Seg 18/05/26 | Seg 18/05/26 | 1 dia | 13,4 | 0,5 |
| 629 | 1.8.16 | **FG-J0006-0505-GE-T-00001** | 15d | 2026-05-14 A | 2026-06-03 A |  | 100% | 2026-05-05 | 2026-05-18 | 10d |  |  | 100h | 100h | PIPING | Seg 18/05/26 | Ter 05/05/26 | 10 dias | 15,12 |  |
| 630 | 1.8.16.1 | Emissão inicial | 4d | 2026-05-14 A | 2026-05-22 A | 4, 580FF | 100% | 2026-05-05 | 2026-05-11 | 5d | finish no earlier than 2026-05-11 | Projetista Tubulação | 32h | 32h | PIPING | Seg 11/05/26 | Ter 05/05/26 | 5 dias | 13,4 |  |
| 631 | 1.8.16.2 | Avaliação do Cliente | 1d | 2026-05-22 A | 2026-05-25 A | 630 | 100% | 2026-05-12 | 2026-05-14 | 3d | finish no earlier than 2026-05-14 | Tecnored | 8h | 8h | PIPING | Qui 14/05/26 | Ter 12/05/26 | 3 dias | 13,4 |  |
| 632 | 1.8.16.3 | Atendimento de Comentário | 3d | 2026-05-25 A | 2026-05-28 A | 631 | 100% | 2026-05-15 | 2026-05-15 | 1d | finish no earlier than 2026-05-15 | Projetista Tubulação | 24h | 24h | PIPING | Sex 15/05/26 | Sex 15/05/26 | 1 dia | 13,4 |  |
| 633 | 1.8.16.4 | Aprovação | 4.5d | 2026-05-28 A | 2026-06-03 A | 632 | 100% | 2026-05-18 | 2026-05-18 | 1d | finish no earlier than 2026-05-18 | Tecnored | 36h | 36h | PIPING | Seg 18/05/26 | Seg 18/05/26 | 1 dia | 13,4 | 0,5 |
| 634 | 1.8.17 | **FG-J0006-0600-GE-T-00001** | 16d | 2026-05-07 A | 2026-05-28 A |  | 100% | 2026-05-05 | 2026-05-18 | 10d |  |  | 124h | 124h | PIPING | Seg 18/05/26 | Ter 05/05/26 | 10 dias | 15,12 |  |
| 635 | 1.8.17.1 | Emissão inicial | 4d | 2026-05-07 A | 2026-05-13 A | 4, 580FF | 100% | 2026-05-05 | 2026-05-11 | 5d | finish no earlier than 2026-05-11 | Projetista Tubulação | 32h | 32h | PIPING | Seg 11/05/26 | Ter 05/05/26 | 5 dias | 13,4 |  |
| 636 | 1.8.17.2 | Avaliação do Cliente | 2d | 2026-05-14 A | 2026-05-15 A | 635 | 100% | 2026-05-12 | 2026-05-14 | 3d | finish no earlier than 2026-05-14 | Tecnored | 16h | 16h | PIPING | Qui 14/05/26 | Ter 12/05/26 | 3 dias | 13,4 |  |
| 637 | 1.8.17.3 | Atendimento de Comentário | 5d | 2026-05-15 A | 2026-05-22 A | 636 | 100% | 2026-05-15 | 2026-05-15 | 1d | finish no earlier than 2026-05-15 | Projetista Tubulação | 40h | 40h | PIPING | Sex 15/05/26 | Sex 15/05/26 | 1 dia | 13,4 |  |
| 638 | 1.8.17.4 | Aprovação | 4.5d | 2026-05-19 A | 2026-05-28 A | 637 | 100% | 2026-05-18 | 2026-05-18 | 1d | finish no earlier than 2026-05-18 | Tecnored | 36h | 36h | PIPING | Seg 18/05/26 | Seg 18/05/26 | 1 dia | 13,4 | 0,5 |

| ID | WBS | Task | Type | Duration | Start | Finish | Predecessors | Complete | Remaining | Baseline start | Baseline finish | Baseline duration | Total slack | Free slack | Constraint | Resources | Work | Actual work | Disciplina | Text2 | Início_LB_R0 | Duração_LB_R0 | Duração Média (Tenax) | Duração média da atividade (Tecnored) |
| --- | --- | --- | --- | --- | --- | --- | --- | --- | --- | --- | --- | --- | --- | --- | --- | --- | --- | --- | --- | --- | --- | --- | --- | --- |
| 639 | 1.8.18 | **FG-J0006-0700-GE-T-00001** |  | 6.75d | 2026-05-19 A | 2026-05-27 |  | 59% | 2.75d | 2026-05-05 | 2026-05-18 | 10d | 20.25d |  |  |  | 54h | 32h | PIPING | Seg 18/05/26 | Ter 05/05/26 | 10 dias | 15,12 |  |
| 640 | 1.8.18.1 | Emissão inicial |  | 1.75d | 2026-05-19 A | 2026-05-20 A | 4, 580FF | 100% |  | 2026-05-05 | 2026-05-11 | 5d |  |  | finish no earlier than 2026-05-11 | Projetista Tubulação | 14h | 14h | PIPING | Seg 11/05/26 | Ter 05/05/26 | 5 dias | 13,4 |  |
| 641 | 1.8.18.2 | Avaliação do Cliente |  | 3d | 2026-05-20 A | 2026-05-25 | 640 | 75% | 0.75d | 2026-05-12 | 2026-05-14 | 3d | 20.25d | 0d | finish no earlier than 2026-05-14 | Tecnored | 24h | 18h | PIPING | Qui 14/05/26 | Ter 12/05/26 | 3 dias | 13,4 |  |
| 642 | 1.8.18.3 | Atendimento de Comentário |  | 1d | 2026-05-25 | 2026-05-26 | 641 |  |  | 2026-05-15 | 2026-05-15 | 1d | 20.25d | 0d | finish no earlier than 2026-05-15 | Projetista Tubulação | 8h |  | PIPING | Sex 15/05/26 | Sex 15/05/26 | 1 dia | 13,4 |  |
| 643 | 1.8.18.4 | Aprovação |  | 1d | 2026-05-26 | 2026-05-27 | 642 |  |  | 2026-05-18 | 2026-05-18 | 1d | 20.25d |  | finish no earlier than 2026-05-18 | Tecnored | 8h |  | PIPING | Seg 18/05/26 | Seg 18/05/26 | 1 dia | 13,4 | 0,5 |
| 644 | 1.8.19 | **FG-J0006-0700-GE-T-00002** |  | 6.75d | 2026-05-19 A | 2026-05-27 |  | 59% | 2.75d | 2026-05-05 | 2026-05-18 | 10d | 20.25d |  |  |  | 54h | 32h | PIPING | Seg 18/05/26 | Ter 05/05/26 | 10 dias | 15,12 |  |
| 645 | 1.8.19.1 | Emissão inicial |  | 1.75d | 2026-05-19 A | 2026-05-20 A | 4, 580FF | 100% |  | 2026-05-05 | 2026-05-11 | 5d |  |  | finish no earlier than 2026-05-11 | Projetista Tubulação | 14h | 14h | PIPING | Seg 11/05/26 | Ter 05/05/26 | 5 dias | 13,4 |  |
| 646 | 1.8.19.2 | Avaliação do Cliente |  | 3d | 2026-05-20 A | 2026-05-25 | 645 | 75% | 0.75d | 2026-05-12 | 2026-05-14 | 3d | 20.25d | 0d | finish no earlier than 2026-05-14 | Tecnored | 24h | 18h | PIPING | Qui 14/05/26 | Ter 12/05/26 | 3 dias | 13,4 |  |
| 647 | 1.8.19.3 | Atendimento de Comentário |  | 1d | 2026-05-25 | 2026-05-26 | 646 |  |  | 2026-05-15 | 2026-05-15 | 1d | 20.25d | 0d | finish no earlier than 2026-05-15 | Projetista Tubulação | 8h |  | PIPING | Sex 15/05/26 | Sex 15/05/26 | 1 dia | 13,4 |  |
| 648 | 1.8.19.4 | Aprovação |  | 1d | 2026-05-26 | 2026-05-27 | 647 |  |  | 2026-05-18 | 2026-05-18 | 1d | 20.25d |  | finish no earlier than 2026-05-18 | Tecnored | 8h |  | PIPING | Seg 18/05/26 | Seg 18/05/26 | 1 dia | 13,4 | 0,5 |
| 649 | 1.8.20 | **FG-J0006-0800-GE-T-00001** | inactive | 10d | 2026-06-16 | 2026-06-29 |  |  |  | 2026-05-05 | 2026-05-18 | 10d | -1d | 0d |  |  | 80h |  | PIPING | Seg 18/05/26 | Ter 05/05/26 | 10 dias | 24,48 |  |
| 650 | 1.8.20.1 | Emissão inicial | inactive | 5d | 2026-06-16 | 2026-06-22 | 4, 580FF |  |  | 2026-05-05 | 2026-05-11 | 5d | -1d | 0d | finish no earlier than 2026-05-11 | Projetista Tubulação | 40h |  | PIPING | Seg 11/05/26 | Ter 05/05/26 | 5 dias | 13,4 |  |
| 651 | 1.8.20.2 | Avaliação do Cliente | inactive | 3d | 2026-06-23 | 2026-06-25 | 650 |  |  | 2026-05-12 | 2026-05-14 | 3d | -1d | 0d | finish no earlier than 2026-05-14 | Tecnored | 24h |  | PIPING | Qui 14/05/26 | Ter 12/05/26 | 3 dias | 13,4 |  |
| 652 | 1.8.20.3 | Atendimento de Comentário | inactive | 1d | 2026-06-26 | 2026-06-26 | 651 |  |  | 2026-05-15 | 2026-05-15 | 1d | -1d | 0d | finish no earlier than 2026-05-15 | Projetista Tubulação | 8h |  | PIPING | Sex 15/05/26 | Sex 15/05/26 | 1 dia | 13,4 |  |
| 653 | 1.8.20.4 | Aprovação | inactive | 1d | 2026-06-29 | 2026-06-29 | 652 |  |  | 2026-05-18 | 2026-05-18 | 1d | -1d | 0d | finish no earlier than 2026-05-18 | Tecnored | 8h |  | PIPING | Seg 18/05/26 | Seg 18/05/26 | 1 dia | 13,4 | 0,5 |
| 654 | 1.8.21 | **FG-J0006-0900-GE-T-00001** |  | 16d | 2026-05-14 A | 2026-06-08 A |  | 100% |  | 2026-05-05 | 2026-05-18 | 10d |  |  |  |  | 132h | 132h | PIPING | Seg 18/05/26 | Ter 05/05/26 | 10 dias | 15,12 |  |
| 655 | 1.8.21.1 | Emissão inicial |  | 7d | 2026-05-14 A | 2026-05-22 A | 4, 580FF | 100% |  | 2026-05-05 | 2026-05-11 | 5d |  |  | finish no earlier than 2026-05-11 | Projetista Tubulação | 56h | 56h | PIPING | Seg 11/05/26 | Ter 05/05/26 | 5 dias | 13,4 |  |
| 656 | 1.8.21.2 | Avaliação do Cliente | milestone | 0d | 2026-05-21 A | 2026-05-22 A | 655 | 100% |  | 2026-05-12 | 2026-05-14 | 3d |  |  | finish no earlier than 2026-05-14 | Tecnored |  |  | PIPING | Qui 14/05/26 | Ter 12/05/26 | 3 dias | 13,4 |  |
| 657 | 1.8.21.3 | Atendimento de Comentário |  | 6d | 2026-05-25 A | 2026-06-01 A | 656 | 100% |  | 2026-05-15 | 2026-05-15 | 1d |  |  | finish no earlier than 2026-05-15 | Projetista Tubulação | 48h | 48h | PIPING | Sex 15/05/26 | Sex 15/05/26 | 1 dia | 13,4 |  |
| 658 | 1.8.21.4 | Aprovação |  | 3.5d | 2026-06-01 A | 2026-06-08 A | 657 | 100% |  | 2026-05-18 | 2026-05-18 | 1d |  |  | finish no earlier than 2026-05-18 | Tecnored | 28h | 28h | PIPING | Seg 18/05/26 | Seg 18/05/26 | 1 dia | 13,4 | 0,5 |
| 659 | 1.8.22 | **AG-J0006-0100-GE-T-00001** |  | 12d | 2026-05-13 A | 2026-05-28 A |  | 100% |  | 2026-06-08 | 2026-06-26 | 15d |  |  |  |  | 112h | 112h | PIPING | Sex 26/06/26 | Seg 08/06/26 | 15 dias | 30,72 |  |
| 660 | 1.8.22.1 | Emissão inicial |  | 2d | 2026-05-13 A | 2026-05-14 A | 563 | 100% |  | 2026-06-08 | 2026-06-19 | 10d |  |  |  | Projetista Tubulação | 16h | 16h | PIPING | Sex 19/06/26 | Seg 08/06/26 | 10 dias | 13,4 |  |
| 661 | 1.8.22.2 | Avaliação do Cliente |  | 3d | 2026-05-14 A | 2026-05-18 A | 660 | 100% |  | 2026-06-22 | 2026-06-24 | 3d |  |  |  | Tecnored | 24h | 24h | PIPING | Qua 24/06/26 | Seg 22/06/26 | 3 dias | 13,4 |  |
| 662 | 1.8.22.3 | Atendimento de Comentário |  | 1d | 2026-05-18 A | 2026-05-18 A | 661 | 100% |  | 2026-06-25 | 2026-06-25 | 1d |  |  |  | Projetista Tubulação | 8h | 8h | PIPING | Qui 25/06/26 | Qui 25/06/26 | 1 dia | 13,4 |  |
| 663 | 1.8.22.4 | Aprovação |  | 8d | 2026-05-18 A | 2026-05-28 A | 662 | 100% |  | 2026-06-26 | 2026-06-26 | 1d |  |  |  | Tecnored | 64h | 64h | PIPING | Sex 26/06/26 | Sex 26/06/26 | 1 dia | 13,4 | 0,5 |

| ID | WBS | Task | Type | Duration | Start | Finish | Predecessors | Complete | Baseline start | Baseline finish | Baseline duration | Total slack | Free slack | Resources | Work | Actual work | Disciplina | Text2 | Início_LB_R0 | Duração_LB_R0 | Duração Média (Tenax) | Duração média da atividade (Tecnored) |
| --- | --- | --- | --- | --- | --- | --- | --- | --- | --- | --- | --- | --- | --- | --- | --- | --- | --- | --- | --- | --- | --- | --- |
| 664 | 1.8.23 | **AG-J0006-0100-GE-T-00002** |  | 12d | 2026-05-13 A | 2026-05-28 A |  | 100% | 2026-06-08 | 2026-06-26 | 15d |  |  |  | 104h | 104h | PIPING | Sex 26/06/26 | Seg 08/06/26 | 15 dias | 30,72 |  |
| 665 | 1.8.23.1 | Emissão inicial |  | 2d | 2026-05-13 A | 2026-05-14 A | 563 | 100% | 2026-06-08 | 2026-06-19 | 10d |  |  | Projetista Tubulação | 16h | 16h | PIPING | Sex 19/06/26 | Seg 08/06/26 | 10 dias | 13,4 |  |
| 666 | 1.8.23.2 | Avaliação do Cliente |  | 2d | 2026-05-14 A | 2026-05-18 A | 665 | 100% | 2026-06-22 | 2026-06-24 | 3d |  |  | Tecnored | 16h | 16h | PIPING | Qua 24/06/26 | Seg 22/06/26 | 3 dias | 13,4 |  |
| 667 | 1.8.23.3 | Atendimento de Comentário | milestone | 0d | 2026-05-18 A | 2026-05-18 A | 666 | 100% | 2026-06-25 | 2026-06-25 | 1d |  |  | Projetista Tubulação |  |  | PIPING | Qui 25/06/26 | Qui 25/06/26 | 1 dia | 13,4 |  |
| 668 | 1.8.23.4 | Aprovação |  | 9d | 2026-05-18 A | 2026-05-28 A | 667 | 100% | 2026-06-26 | 2026-06-26 | 1d |  |  | Tecnored | 72h | 72h | PIPING | Sex 26/06/26 | Sex 26/06/26 | 1 dia | 13,4 | 0,5 |
| 669 | 1.8.24 | **AG-J0006-0200-GE-T-00001** | inactive | 15d | 2026-06-19 | 2026-07-13 |  |  | 2026-06-08 | 2026-06-26 | 15d | -9d | 0d |  | 120h |  | PIPING | Sex 26/06/26 | Seg 08/06/26 | 15 dias | 30,72 |  |
| 670 | 1.8.24.1 | Emissão inicial | inactive | 10d | 2026-06-19 | 2026-07-02 | 563 |  | 2026-06-08 | 2026-06-19 | 10d | -9d | 0d | Projetista Tubulação | 80h |  | PIPING | Sex 19/06/26 | Seg 08/06/26 | 10 dias | 13,4 |  |
| 671 | 1.8.24.2 | Avaliação do Cliente | inactive | 3d | 2026-07-03 | 2026-07-07 | 670 |  | 2026-06-22 | 2026-06-24 | 3d | -9d | 0d | Tecnored | 24h |  | PIPING | Qua 24/06/26 | Seg 22/06/26 | 3 dias | 13,4 |  |
| 672 | 1.8.24.3 | Atendimento de Comentário | inactive | 1d | 2026-07-08 | 2026-07-08 | 671 |  | 2026-06-25 | 2026-06-25 | 1d | -9d | 0d | Projetista Tubulação | 8h |  | PIPING | Qui 25/06/26 | Qui 25/06/26 | 1 dia | 13,4 |  |
| 673 | 1.8.24.4 | Aprovação | inactive | 1d | 2026-07-13 | 2026-07-13 | 672 |  | 2026-06-26 | 2026-06-26 | 1d | -9d | 0d | Tecnored | 8h |  | PIPING | Sex 26/06/26 | Sex 26/06/26 | 1 dia | 13,4 | 0,5 |
| 674 | 1.8.25 | **AG-J0006-0300-GE-T-00001** |  | 9d | 2026-05-13 A | 2026-05-25 A |  | 100% | 2026-06-08 | 2026-06-26 | 15d |  |  |  | 80h | 80h | PIPING | Sex 26/06/26 | Seg 08/06/26 | 15 dias | 30,72 |  |
| 675 | 1.8.25.1 | Emissão inicial |  | 2d | 2026-05-13 A | 2026-05-14 A | 563 | 100% | 2026-06-08 | 2026-06-19 | 10d |  |  | Projetista Tubulação | 16h | 16h | PIPING | Sex 19/06/26 | Seg 08/06/26 | 10 dias | 13,4 |  |
| 676 | 1.8.25.2 | Avaliação do Cliente |  | 3d | 2026-05-14 A | 2026-05-18 A | 675 | 100% | 2026-06-22 | 2026-06-24 | 3d |  |  | Tecnored | 24h | 24h | PIPING | Qua 24/06/26 | Seg 22/06/26 | 3 dias | 13,4 |  |
| 677 | 1.8.25.3 | Atendimento de Comentário |  | 3d | 2026-05-19 A | 2026-05-21 A | 676 | 100% | 2026-06-25 | 2026-06-25 | 1d |  |  | Projetista Tubulação | 24h | 24h | PIPING | Qui 25/06/26 | Qui 25/06/26 | 1 dia | 13,4 |  |
| 678 | 1.8.25.4 | Aprovação |  | 2d | 2026-05-22 A | 2026-05-25 A | 677 | 100% | 2026-06-26 | 2026-06-26 | 1d |  |  | Tecnored | 16h | 16h | PIPING | Sex 26/06/26 | Sex 26/06/26 | 1 dia | 13,4 | 0,5 |
| 679 | 1.8.26 | **AG-J0006-0400-GE-T-00001** |  | 14d | 2026-05-13 A | 2026-06-01 A |  | 100% | 2026-06-08 | 2026-06-26 | 15d |  |  |  | 40h | 40h | PIPING | Sex 26/06/26 | Seg 08/06/26 | 15 dias | 30,72 |  |
| 680 | 1.8.26.1 | Emissão inicial |  | 3d | 2026-05-13 A | 2026-05-15 A | 563 | 100% | 2026-06-08 | 2026-06-19 | 10d |  |  | Projetista Tubulação | 24h | 24h | PIPING | Sex 19/06/26 | Seg 08/06/26 | 10 dias | 13,4 |  |
| 681 | 1.8.26.2 | Avaliação do Cliente |  | 1d | 2026-05-18 A | 2026-05-18 A | 680 | 100% | 2026-06-22 | 2026-06-24 | 3d |  |  | Tecnored | 8h | 8h | PIPING | Qua 24/06/26 | Seg 22/06/26 | 3 dias | 13,4 |  |
| 682 | 1.8.26.3 | Atendimento de Comentário |  | 1d | 2026-05-22 A | 2026-05-22 A | 681 | 100% | 2026-06-25 | 2026-06-25 | 1d |  |  | Projetista Tubulação | 8h | 8h | PIPING | Qui 25/06/26 | Qui 25/06/26 | 1 dia | 13,4 |  |
| 683 | 1.8.26.4 | Aprovação | milestone | 0d | 2026-06-01 A | 2026-06-01 A | 682 | 100% | 2026-06-26 | 2026-06-26 | 1d |  |  | Tecnored |  |  | PIPING | Sex 26/06/26 | Sex 26/06/26 | 1 dia | 13,4 | 0,5 |
| 684 | 1.8.27 | **AG-J0006-0504-GE-T-00001** |  | 5d | 2026-06-19 | 2026-06-25 |  |  | 2026-06-08 | 2026-06-26 | 15d | 1d |  |  | 40h |  | PIPING | Sex 26/06/26 | Seg 08/06/26 | 15 dias | 30,72 |  |
| 685 | 1.8.27.1 | Emissão inicial |  | 2d | 2026-06-19 | 2026-06-22 | 563 |  | 2026-06-08 | 2026-06-19 | 10d | 1d | 0d | Projetista Tubulação | 16h |  | PIPING | Sex 19/06/26 | Seg 08/06/26 | 10 dias | 13,4 |  |
| 686 | 1.8.27.2 | Avaliação do Cliente |  | 1d | 2026-06-23 | 2026-06-23 | 685 |  | 2026-06-22 | 2026-06-24 | 3d | 1d | 0d | Tecnored | 8h |  | PIPING | Qua 24/06/26 | Seg 22/06/26 | 3 dias | 13,4 |  |
| 687 | 1.8.27.3 | Atendimento de Comentário |  | 1d | 2026-06-24 | 2026-06-24 | 686 |  | 2026-06-25 | 2026-06-25 | 1d | 1d | 0d | Projetista Tubulação | 8h |  | PIPING | Qui 25/06/26 | Qui 25/06/26 | 1 dia | 13,4 |  |
| 688 | 1.8.27.4 | Aprovação |  | 1d | 2026-06-25 | 2026-06-25 | 687 |  | 2026-06-26 | 2026-06-26 | 1d | 1d |  | Tecnored | 8h |  | PIPING | Sex 26/06/26 | Sex 26/06/26 | 1 dia | 13,4 | 0,5 |

| ID | WBS | Task | Type | Duration | Start | Finish | Predecessors | Complete | Baseline start | Baseline finish | Baseline duration | Total slack | Free slack | Resources | Work | Actual work | Disciplina | Text2 | Início_LB_R0 | Duração_LB_R0 | Duração Média (Tenax) | Duração média da atividade (Tecnored) |
| --- | --- | --- | --- | --- | --- | --- | --- | --- | --- | --- | --- | --- | --- | --- | --- | --- | --- | --- | --- | --- | --- | --- |
| 689 | 1.8.28 | **AG-J0006-0505-GE-T-00001** |  | 5d | 2026-06-19 | 2026-06-25 |  |  | 2026-06-08 | 2026-06-26 | 15d | 1d |  |  | 40h |  | PIPING | Sex 26/06/26 | Seg 08/06/26 | 15 dias | 30,72 |  |
| 690 | 1.8.28.1 | Emissão inicial |  | 2d | 2026-06-19 | 2026-06-22 | 563 |  | 2026-06-08 | 2026-06-19 | 10d | 1d | 0d | Projetista Tubulação | 16h |  | PIPING | Sex 19/06/26 | Seg 08/06/26 | 10 dias | 13,4 |  |
| 691 | 1.8.28.2 | Avaliação do Cliente |  | 1d | 2026-06-23 | 2026-06-23 | 690 |  | 2026-06-22 | 2026-06-24 | 3d | 1d | 0d | Tecnored | 8h |  | PIPING | Qua 24/06/26 | Seg 22/06/26 | 3 dias | 13,4 |  |
| 692 | 1.8.28.3 | Atendimento de Comentário |  | 1d | 2026-06-24 | 2026-06-24 | 691 |  | 2026-06-25 | 2026-06-25 | 1d | 1d | 0d | Projetista Tubulação | 8h |  | PIPING | Qui 25/06/26 | Qui 25/06/26 | 1 dia | 13,4 |  |
| 693 | 1.8.28.4 | Aprovação |  | 1d | 2026-06-25 | 2026-06-25 | 692 |  | 2026-06-26 | 2026-06-26 | 1d | 1d |  | Tecnored | 8h |  | PIPING | Sex 26/06/26 | Sex 26/06/26 | 1 dia | 13,4 | 0,5 |
| 694 | 1.8.29 | **AG-J0006-0600-GE-T-00001** |  | 12d | 2026-05-18 A | 2026-06-02 A |  | 100% | 2026-06-08 | 2026-06-26 | 15d |  |  |  | 64h | 64h | PIPING | Sex 26/06/26 | Seg 08/06/26 | 15 dias | 30,72 |  |
| 695 | 1.8.29.1 | Emissão inicial | milestone | 0d | 2026-05-18 A | 2026-05-21 A | 563 | 100% | 2026-06-08 | 2026-06-19 | 10d |  |  | Projetista Tubulação |  |  | PIPING | Sex 19/06/26 | Seg 08/06/26 | 10 dias | 13,4 |  |
| 696 | 1.8.29.2 | Avaliação do Cliente |  | 2d | 2026-05-22 A | 2026-05-25 A | 695 | 100% | 2026-06-22 | 2026-06-24 | 3d |  |  | Tecnored | 16h | 16h | PIPING | Qua 24/06/26 | Seg 22/06/26 | 3 dias | 13,4 |  |
| 697 | 1.8.29.3 | Atendimento de Comentário |  | 3d | 2026-05-26 A | 2026-05-28 A | 696 | 100% | 2026-06-25 | 2026-06-25 | 1d |  |  | Projetista Tubulação | 24h | 24h | PIPING | Qui 25/06/26 | Qui 25/06/26 | 1 dia | 13,4 |  |
| 698 | 1.8.29.4 | Aprovação |  | 3d | 2026-05-28 A | 2026-06-02 A | 697 | 100% | 2026-06-26 | 2026-06-26 | 1d |  |  | Tecnored | 24h | 24h | PIPING | Sex 26/06/26 | Sex 26/06/26 | 1 dia | 13,4 | 0,5 |
| 699 | 1.8.30 | **AG-J0006-0700-GE-T-00001** |  | 6d | 2026-05-18 A | 2026-05-25 A |  | 100% | 2026-06-08 | 2026-06-26 | 15d |  |  |  | 8h | 8h | PIPING | Sex 26/06/26 | Seg 08/06/26 | 15 dias | 30,72 |  |
| 700 | 1.8.30.1 | Emissão inicial | milestone | 0d | 2026-05-18 A | 2026-05-22 A | 563 | 100% | 2026-06-08 | 2026-06-19 | 10d |  |  | Projetista Tubulação |  |  | PIPING | Sex 19/06/26 | Seg 08/06/26 | 10 dias | 13,4 |  |
| 701 | 1.8.30.2 | Avaliação do Cliente |  | 1d | 2026-05-22 A | 2026-05-25 A | 700 | 100% | 2026-06-22 | 2026-06-24 | 3d |  |  | Tecnored | 8h | 8h | PIPING | Qua 24/06/26 | Seg 22/06/26 | 3 dias | 13,4 |  |
| 702 | 1.8.30.3 | Atendimento de Comentário | milestone | 0d | 2026-05-25 A | 2026-05-25 A | 701 | 100% | 2026-06-25 | 2026-06-25 | 1d |  |  | Projetista Tubulação |  |  | PIPING | Qui 25/06/26 | Qui 25/06/26 | 1 dia | 13,4 |  |
| 703 | 1.8.30.4 | Aprovação | milestone | 0d | 2026-05-25 A | 2026-05-25 A | 702 | 100% | 2026-06-26 | 2026-06-26 | 1d |  |  | Tecnored |  |  | PIPING | Sex 26/06/26 | Sex 26/06/26 | 1 dia | 13,4 | 0,5 |
| 704 | 1.8.31 | **AG-J0006-0700-GE-T-00002** |  | 6d | 2026-05-18 A | 2026-05-25 A |  | 100% | 2026-06-08 | 2026-06-26 | 15d |  |  |  | 32h | 32h | PIPING | Sex 26/06/26 | Seg 08/06/26 | 15 dias | 30,72 |  |
| 705 | 1.8.31.1 | Emissão inicial | milestone | 0d | 2026-05-18 A | 2026-05-22 A | 563 | 100% | 2026-06-08 | 2026-06-19 | 10d |  |  | Projetista Tubulação |  |  | PIPING | Sex 19/06/26 | Seg 08/06/26 | 10 dias | 13,4 |  |
| 706 | 1.8.31.2 | Avaliação do Cliente |  | 2d | 2026-05-22 A | 2026-05-25 A | 705 | 100% | 2026-06-22 | 2026-06-24 | 3d |  |  | Tecnored | 16h | 16h | PIPING | Qua 24/06/26 | Seg 22/06/26 | 3 dias | 13,4 |  |
| 707 | 1.8.31.3 | Atendimento de Comentário |  | 1d | 2026-05-25 A | 2026-05-25 A | 706 | 100% | 2026-06-25 | 2026-06-25 | 1d |  |  | Projetista Tubulação | 8h | 8h | PIPING | Qui 25/06/26 | Qui 25/06/26 | 1 dia | 13,4 |  |
| 708 | 1.8.31.4 | Aprovação |  | 1d | 2026-05-25 A | 2026-05-25 A | 707 | 100% | 2026-06-26 | 2026-06-26 | 1d |  |  | Tecnored | 8h | 8h | PIPING | Sex 26/06/26 | Sex 26/06/26 | 1 dia | 13,4 | 0,5 |
| 709 | 1.8.32 | **AG-J0006-0800-GE-T-00001** | inactive | 15d | 2026-06-19 | 2026-07-13 |  |  | 2026-06-08 | 2026-06-26 | 15d | -9d | 0d |  | 120h |  | PIPING | Sex 26/06/26 | Seg 08/06/26 | 15 dias | 30,72 |  |
| 710 | 1.8.32.1 | Emissão inicial | inactive | 10d | 2026-06-19 | 2026-07-02 | 563 |  | 2026-06-08 | 2026-06-19 | 10d | -9d | 0d | Projetista Tubulação | 80h |  | PIPING | Sex 19/06/26 | Seg 08/06/26 | 10 dias | 13,4 |  |
| 711 | 1.8.32.2 | Avaliação do Cliente | inactive | 3d | 2026-07-03 | 2026-07-07 | 710 |  | 2026-06-22 | 2026-06-24 | 3d | -9d | 0d | Tecnored | 24h |  | PIPING | Qua 24/06/26 | Seg 22/06/26 | 3 dias | 13,4 |  |
| 712 | 1.8.32.3 | Atendimento de Comentário | inactive | 1d | 2026-07-08 | 2026-07-08 | 711 |  | 2026-06-25 | 2026-06-25 | 1d | -9d | 0d | Projetista Tubulação | 8h |  | PIPING | Qui 25/06/26 | Qui 25/06/26 | 1 dia | 13,4 |  |
| 713 | 1.8.32.4 | Aprovação | inactive | 1d | 2026-07-13 | 2026-07-13 | 712 |  | 2026-06-26 | 2026-06-26 | 1d | -9d | 0d | Tecnored | 8h |  | PIPING | Sex 26/06/26 | Sex 26/06/26 | 1 dia | 13,4 | 0,5 |

| ID | WBS | Task | Type | Duration | Start | Finish | Predecessors | Complete | Remaining | Baseline start | Baseline finish | Baseline duration | Total slack | Free slack | Resources | Work | Actual work | Disciplina | Text2 | Início_LB_R0 | Duração_LB_R0 | Duração Média (Tenax) | Duração média da atividade (Tecnored) |
| --- | --- | --- | --- | --- | --- | --- | --- | --- | --- | --- | --- | --- | --- | --- | --- | --- | --- | --- | --- | --- | --- | --- | --- |
| 714 | 1.8.33 | **AG-J0006-0900-GE-T-00001** |  | 12d | 2026-05-27 A | 2026-06-15 |  | 83% | 2d | 2026-06-08 | 2026-06-26 | 15d | 9d |  |  | 96h | 80h | PIPING | Sex 26/06/26 | Seg 08/06/26 | 15 dias | 30,72 |  |
| 715 | 1.8.33.1 | Emissão inicial |  | 5d | 2026-05-27 A | 2026-06-02 A | 698FS+2d | 100% |  | 2026-06-08 | 2026-06-19 | 10d |  |  | Projetista Tubulação | 40h | 40h | PIPING | Sex 19/06/26 | Seg 08/06/26 | 10 dias | 13,4 |  |
| 716 | 1.8.33.2 | Avaliação do Cliente |  | 5d | 2026-06-03 A | 2026-06-11 A | 715 | 100% |  | 2026-06-22 | 2026-06-24 | 3d |  |  | Tecnored | 40h | 40h | PIPING | Qua 24/06/26 | Seg 22/06/26 | 3 dias | 13,4 |  |
| 717 | 1.8.33.3 | Atendimento de Comentário |  | 1d | 2026-06-12 | 2026-06-12 | 716 |  |  | 2026-06-25 | 2026-06-25 | 1d | 9d | 0d | Projetista Tubulação | 8h |  | PIPING | Qui 25/06/26 | Qui 25/06/26 | 1 dia | 13,4 |  |
| 718 | 1.8.33.4 | Aprovação |  | 1d | 2026-06-15 | 2026-06-15 | 717 |  |  | 2026-06-26 | 2026-06-26 | 1d | 9d |  | Tecnored | 8h |  | PIPING | Sex 26/06/26 | Sex 26/06/26 | 1 dia | 13,4 | 0,5 |
| 719 | 1.8.34 | **LK-J0006-0000-GE-T-00001** | inactive | 4d | 2026-06-19 | 2026-06-24 |  |  |  | 2026-06-08 | 2026-06-11 | 4d | 2d |  |  | 32h |  | PIPING | Qui 11/06/26 | Seg 08/06/26 | 4 dias | 24,48 |  |
| 720 | 1.8.34.1 | Emissão inicial | inactive | 1d | 2026-06-19 | 2026-06-19 | 559 |  |  | 2026-06-08 | 2026-06-08 | 1d | 2d | 0d | Projetista Tubulação | 8h |  | PIPING | Seg 08/06/26 | Seg 08/06/26 | 1 dia | 13,4 | 16 |
| 721 | 1.8.34.2 | Avaliação do Cliente | inactive | 1d | 2026-06-22 | 2026-06-22 | 720 |  |  | 2026-06-09 | 2026-06-09 | 1d | 2d | 0d | Tecnored | 8h |  | PIPING | Ter 09/06/26 | Ter 09/06/26 | 1 dia | 13,4 |  |
| 722 | 1.8.34.3 | Atendimento de Comentário | inactive | 1d | 2026-06-23 | 2026-06-23 | 721 |  |  | 2026-06-10 | 2026-06-10 | 1d | 2d | 0d | Projetista Tubulação | 8h |  | PIPING | Qua 10/06/26 | Qua 10/06/26 | 1 dia | 13,4 |  |
| 723 | 1.8.34.4 | Aprovação | inactive | 1d | 2026-06-24 | 2026-06-24 | 722 |  |  | 2026-06-11 | 2026-06-11 | 1d | 2d |  | Tecnored | 8h |  | PIPING | Qui 11/06/26 | Qui 11/06/26 | 1 dia | 13,4 | 0,5 |
| 724 | 1.8.35 | **MC-J0006-1301-GE-T-00001** | inactive | 10d | 2026-06-11 | 2026-06-24 |  |  |  | 2026-05-28 | 2026-06-17 | 13d | 2d |  |  | 80h |  | PIPING | Qua 17/06/26 | Qui 28/05/26 | 13 dias | 30,72 |  |
| 725 | 1.8.35.1 | Emissão inicial | inactive | 7d | 2026-06-11 | 2026-06-19 | 560 |  |  | 2026-05-28 | 2026-06-12 | 10d | 2d | 0d | Eng. Tubulação | 56h |  | PIPING | Sex 12/06/26 | Qui 28/05/26 | 10 dias | 13,4 | 40 |
| 726 | 1.8.35.2 | Avaliação do Cliente | inactive | 1d | 2026-06-22 | 2026-06-22 | 725 |  |  | 2026-06-15 | 2026-06-15 | 1d | 2d | 0d | Tecnored | 8h |  | PIPING | Seg 15/06/26 | Seg 15/06/26 | 1 dia | 13,4 |  |
| 727 | 1.8.35.3 | Atendimento de Comentário | inactive | 1d | 2026-06-23 | 2026-06-23 | 726 |  |  | 2026-06-16 | 2026-06-16 | 1d | 2d | 0d | Eng. Tubulação | 8h |  | PIPING | Ter 16/06/26 | Ter 16/06/26 | 1 dia | 13,4 |  |
| 728 | 1.8.35.4 | Aprovação | inactive | 1d | 2026-06-24 | 2026-06-24 | 727 |  |  | 2026-06-17 | 2026-06-17 | 1d | 2d |  | Tecnored | 8h |  | PIPING | Qua 17/06/26 | Qua 17/06/26 | 1 dia | 13,4 | 0,5 |
| 729 | 1.8.36 | **MC-J0006-1104-GE-T-00001** |  | 14d | 2026-05-25 A | 2026-06-15 |  | 86% | 2d | 2026-05-25 | 2026-06-09 | 10d | 9d |  |  | 112h | 96h | PIPING | Ter 09/06/26 | Seg 25/05/26 | 10 dias | 33,12 |  |
| 730 | 1.8.36.1 | Emissão inicial |  | 4d | 2026-05-25 A | 2026-05-28 A | 755FF | 100% |  | 2026-05-25 | 2026-05-29 | 5d |  |  | Eng. Tubulação | 32h | 32h | PIPING | Sex 29/05/26 | Seg 25/05/26 | 5 dias | 13,4 | 32 |
| 731 | 1.8.36.2 | Avaliação do Cliente |  | 8d | 2026-05-29 A | 2026-06-11 A | 730 | 100% |  | 2026-06-01 | 2026-06-03 | 3d |  |  | Tecnored | 64h | 64h | PIPING | Qua 03/06/26 | Seg 01/06/26 | 3 dias | 13,4 |  |
| 732 | 1.8.36.3 | Atendimento de Comentário |  | 1d | 2026-06-12 | 2026-06-12 | 731 |  |  | 2026-06-08 | 2026-06-08 | 1d | 9d | 0d | Eng. Tubulação | 8h |  | PIPING | Seg 08/06/26 | Seg 08/06/26 | 1 dia | 13,4 |  |
| 733 | 1.8.36.4 | Aprovação |  | 1d | 2026-06-15 | 2026-06-15 | 732 |  |  | 2026-06-09 | 2026-06-09 | 1d | 9d |  | Tecnored | 8h |  | PIPING | Ter 09/06/26 | Ter 09/06/26 | 1 dia | 13,4 | 0,5 |
| 734 | 1.8.37 | **CP-J0006-1100-GE-T-00001** | inactive | 10d | 2026-05-11 | 2026-05-22 |  |  |  | 2026-05-11 | 2026-05-22 | 10d | 16d |  |  | 80h |  | PIPING | Sex 22/05/26 | Seg 11/05/26 | 10 dias | 22,56 |  |
| 735 | 1.8.37.1 | Emissão inicial | inactive | 5d | 2026-05-11 | 2026-05-15 | 12FS+30d |  |  | 2026-05-11 | 2026-05-15 | 5d | 16d | 0d | Eng. Calculista | 40h |  | PIPING | Sex 15/05/26 | Seg 11/05/26 | 5 dias | 13,4 | 32 |
| 736 | 1.8.37.2 | Avaliação do Cliente | inactive | 3d | 2026-05-18 | 2026-05-20 | 735 |  |  | 2026-05-18 | 2026-05-20 | 3d | 16d | 0d | Tecnored | 24h |  | PIPING | Qua 20/05/26 | Seg 18/05/26 | 3 dias | 13,4 |  |
| 737 | 1.8.37.3 | Atendimento de Comentário | inactive | 1d | 2026-05-21 | 2026-05-21 | 736 |  |  | 2026-05-21 | 2026-05-21 | 1d | 16d | 0d | Eng. Calculista | 8h |  | PIPING | Qui 21/05/26 | Qui 21/05/26 | 1 dia | 13,4 |  |
| 738 | 1.8.37.4 | Aprovação | inactive | 1d | 2026-05-22 | 2026-05-22 | 737 |  |  | 2026-05-22 | 2026-05-22 | 1d | 23d |  | Tecnored | 8h |  | PIPING | Sex 22/05/26 | Sex 22/05/26 | 1 dia | 13,4 | 0,5 |

| ID | WBS | Task | Type | Duration | Start | Finish | Predecessors | Complete | Remaining | Baseline start | Baseline finish | Baseline duration | Total slack | Free slack | Resources | Work | Actual work | Disciplina | Text2 | Início_LB_R0 | Duração_LB_R0 | Duração Média (Tenax) | Duração média da atividade (Tecnored) |
| --- | --- | --- | --- | --- | --- | --- | --- | --- | --- | --- | --- | --- | --- | --- | --- | --- | --- | --- | --- | --- | --- | --- | --- |
| 739 | 1.8.38 | **MD-J0006-1104-GE-T-00001** | inactive | 10d | 2026-05-29 | 2026-06-15 |  |  |  | 2026-06-10 | 2026-06-23 | 10d | 9d |  |  | 80h |  | PIPING | Ter 23/06/26 | Qua 10/06/26 | 10 dias | 33,12 |  |
| 740 | 1.8.38.1 | Emissão inicial | inactive | 5d | 2026-05-29 | 2026-06-08 | 758 |  |  | 2026-06-10 | 2026-06-16 | 5d | 9d | 0d | Eng. Tubulação | 40h |  | PIPING | Ter 16/06/26 | Qua 10/06/26 | 5 dias | 13,4 | 32 |
| 741 | 1.8.38.2 | Avaliação do Cliente | inactive | 3d | 2026-06-09 | 2026-06-11 | 740 |  |  | 2026-06-17 | 2026-06-19 | 3d | 9d | 0d | Tecnored | 24h |  | PIPING | Sex 19/06/26 | Qua 17/06/26 | 3 dias | 13,4 |  |
| 742 | 1.8.38.3 | Atendimento de Comentário | inactive | 1d | 2026-06-12 | 2026-06-12 | 741 |  |  | 2026-06-22 | 2026-06-22 | 1d | 9d | 0d | Eng. Tubulação | 8h |  | PIPING | Seg 22/06/26 | Seg 22/06/26 | 1 dia | 13,4 |  |
| 743 | 1.8.38.4 | Aprovação | inactive | 1d | 2026-06-15 | 2026-06-15 | 742 |  |  | 2026-06-23 | 2026-06-23 | 1d | 9d |  | Tecnored | 8h |  | PIPING | Ter 23/06/26 | Ter 23/06/26 | 1 dia | 13,4 | 0,5 |
| 744 | 1.8.39 | **PQ-J0006-1104-GE-T-00001** |  | 8d | 2026-05-29 | 2026-06-11 |  |  |  | 2026-06-10 | 2026-06-19 | 8d | 11d |  |  | 64h |  | PIPING | Sex 19/06/26 | Qua 10/06/26 | 8 dias | 27,84 |  |
| 745 | 1.8.39.1 | Emissão inicial |  | 3d | 2026-05-29 | 2026-06-02 | 758 |  |  | 2026-06-10 | 2026-06-12 | 3d | 11d | 0d | Eng. Tubulação | 24h |  | PIPING | Sex 12/06/26 | Qua 10/06/26 | 3 dias | 13,4 | 24 |
| 746 | 1.8.39.2 | Avaliação do Cliente |  | 3d | 2026-06-03 | 2026-06-09 | 745 |  |  | 2026-06-15 | 2026-06-17 | 3d | 11d | 0d | Tecnored | 24h |  | PIPING | Qua 17/06/26 | Seg 15/06/26 | 3 dias | 13,4 |  |
| 747 | 1.8.39.3 | Atendimento de Comentário |  | 1d | 2026-06-10 | 2026-06-10 | 746 |  |  | 2026-06-18 | 2026-06-18 | 1d | 11d | 0d | Eng. Tubulação | 8h |  | PIPING | Qui 18/06/26 | Qui 18/06/26 | 1 dia | 13,4 |  |
| 748 | 1.8.39.4 | Aprovação |  | 1d | 2026-06-11 | 2026-06-11 | 747 |  |  | 2026-06-19 | 2026-06-19 | 1d | 11d |  | Tecnored | 8h |  | PIPING | Sex 19/06/26 | Sex 19/06/26 | 1 dia | 13,4 | 0,5 |
| 749 | 1.8.40 | **FG-J0006-1100-GE-T-00001** | inactive | 8d | 2026-05-22 | 2026-06-02 |  |  |  | 2026-05-22 | 2026-06-02 | 8d | 16d |  |  | 64h |  | PIPING | Ter 02/06/26 | Sex 22/05/26 | 8 dias | 19,84 |  |
| 750 | 1.8.40.1 | Emissão inicial | inactive | 3d | 2026-05-22 | 2026-05-26 | 737 |  |  | 2026-05-22 | 2026-05-26 | 3d | 16d | 0d | Eng. Tubulação | 24h |  | PIPING | Ter 26/05/26 | Sex 22/05/26 | 3 dias | 13,4 | 24 |
| 751 | 1.8.40.2 | Avaliação do Cliente | inactive | 3d | 2026-05-27 | 2026-05-29 | 750 |  |  | 2026-05-27 | 2026-05-29 | 3d | 16d | 0d | Tecnored | 24h |  | PIPING | Sex 29/05/26 | Qua 27/05/26 | 3 dias | 13,4 |  |
| 752 | 1.8.40.3 | Atendimento de Comentário | inactive | 1d | 2026-06-01 | 2026-06-01 | 751 |  |  | 2026-06-01 | 2026-06-01 | 1d | 16d | 0d | Eng. Tubulação | 8h |  | PIPING | Seg 01/06/26 | Seg 01/06/26 | 1 dia | 13,4 |  |
| 753 | 1.8.40.4 | Aprovação | inactive | 1d | 2026-06-02 | 2026-06-02 | 752 |  |  | 2026-06-02 | 2026-06-02 | 1d | 16d |  | Tecnored | 8h |  | PIPING | Ter 02/06/26 | Ter 02/06/26 | 1 dia | 13,4 | 0,5 |
| 754 | 1.8.41 | **ML-J0006-1100-GE-T-00001** |  | 4d | 2026-05-25 A | 2026-05-28 A |  | 100% |  | 2026-05-25 | 2026-06-09 | 10d |  |  |  | 32h | 32h | PIPING | Ter 09/06/26 | Seg 25/05/26 | 10 dias | 25,12 |  |
| 755 | 1.8.41.1 | Emissão inicial |  | 1d | 2026-05-25 A | 2026-05-25 A | 738 | 100% |  | 2026-05-25 | 2026-05-29 | 5d |  |  | Projetista Tubulação | 8h | 8h | PIPING | Sex 29/05/26 | Seg 25/05/26 | 5 dias | 13,4 | 32 |
| 756 | 1.8.41.2 | Avaliação do Cliente |  | 1d | 2026-05-26 A | 2026-05-26 A | 755 | 100% |  | 2026-06-01 | 2026-06-03 | 3d |  |  | Tecnored | 8h | 8h | PIPING | Qua 03/06/26 | Seg 01/06/26 | 3 dias | 13,4 |  |
| 757 | 1.8.41.3 | Atendimento de Comentário |  | 1d | 2026-05-27 A | 2026-05-27 A | 756 | 100% |  | 2026-06-08 | 2026-06-08 | 1d |  |  | Projetista Tubulação | 8h | 8h | PIPING | Seg 08/06/26 | Seg 08/06/26 | 1 dia | 13,4 |  |
| 758 | 1.8.41.4 | Aprovação |  | 1d | 2026-05-28 A | 2026-05-28 A | 757 | 100% |  | 2026-06-09 | 2026-06-09 | 1d |  |  | Tecnored | 8h | 8h | PIPING | Ter 09/06/26 | Ter 09/06/26 | 1 dia | 13,4 | 0,5 |
| 759 | 1.8.42 | **AG-J0006-1104-GE-T-00001 - INCENDIO** |  | 10d | 2026-05-29 A | 2026-06-15 |  | 80% | 2d | 2026-06-10 | 2026-06-19 | 8d | 9d |  |  | 80h | 64h | PIPING | Sex 19/06/26 | Qua 10/06/26 | 8 dias | 33,12 |  |
| 760 | 1.8.42.1 | Emissão inicial |  | 3d | 2026-05-29 A | 2026-06-02 A | 758 | 100% |  | 2026-06-10 | 2026-06-12 | 3d |  |  | Projetista Tubulação | 24h | 24h | PIPING | Sex 12/06/26 | Qua 10/06/26 | 3 dias | 13,4 | 24 |
| 761 | 1.8.42.2 | Avaliação do Cliente |  | 5d | 2026-06-03 A | 2026-06-11 A | 760 | 100% |  | 2026-06-15 | 2026-06-17 | 3d |  |  | Tecnored | 40h | 40h | PIPING | Qua 17/06/26 | Seg 15/06/26 | 3 dias | 13,4 |  |
| 762 | 1.8.42.3 | Atendimento de Comentário |  | 1d | 2026-06-12 | 2026-06-12 | 761 |  |  | 2026-06-18 | 2026-06-18 | 1d | 9d | 0d | Projetista Tubulação | 8h |  | PIPING | Qui 18/06/26 | Qui 18/06/26 | 1 dia | 13,4 |  |
| 763 | 1.8.42.4 | Aprovação |  | 1d | 2026-06-15 | 2026-06-15 | 762 |  |  | 2026-06-19 | 2026-06-19 | 1d | 9d |  | Tecnored | 8h |  | PIPING | Sex 19/06/26 | Sex 19/06/26 | 1 dia | 13,4 | 0,5 |

| ID | WBS | Task | Duration | Start | Finish | Predecessors | Complete | Remaining | Baseline start | Baseline finish | Baseline duration | Total slack | Free slack | Resources | Work | Actual work | Disciplina | Text2 | Início_LB_R0 | Duração_LB_R0 | Duração Média (Tenax) | Duração média da atividade (Tecnored) |
| --- | --- | --- | --- | --- | --- | --- | --- | --- | --- | --- | --- | --- | --- | --- | --- | --- | --- | --- | --- | --- | --- | --- |
| 764 | 1.8.43 | **AG-J0006-1104-GE-T-00002 - INCENDIO** | 10d | 2026-05-29 A | 2026-06-15 |  | 80% | 2d | 2026-06-10 | 2026-06-19 | 8d | 9d |  |  | 80h | 64h | PIPING | Sex 19/06/26 | Qua 10/06/26 | 8 dias | 33,12 |  |
| 765 | 1.8.43.1 | Emissão inicial | 3d | 2026-05-29 A | 2026-06-02 A | 760FF | 100% |  | 2026-06-10 | 2026-06-12 | 3d |  |  | Projetista Tubulação | 24h | 24h | PIPING | Sex 12/06/26 | Qua 10/06/26 | 3 dias | 13,4 | 24 |
| 766 | 1.8.43.2 | Avaliação do Cliente | 5d | 2026-06-03 A | 2026-06-11 A | 765 | 100% |  | 2026-06-15 | 2026-06-17 | 3d |  |  | Tecnored | 40h | 40h | PIPING | Qua 17/06/26 | Seg 15/06/26 | 3 dias | 13,4 |  |
| 767 | 1.8.43.3 | Atendimento de Comentário | 1d | 2026-06-12 | 2026-06-12 | 766 |  |  | 2026-06-18 | 2026-06-18 | 1d | 9d | 0d | Projetista Tubulação | 8h |  | PIPING | Qui 18/06/26 | Qui 18/06/26 | 1 dia | 13,4 |  |
| 768 | 1.8.43.4 | Aprovação | 1d | 2026-06-15 | 2026-06-15 | 767 |  |  | 2026-06-19 | 2026-06-19 | 1d | 9d |  | Tecnored | 8h |  | PIPING | Sex 19/06/26 | Sex 19/06/26 | 1 dia | 13,4 | 0,5 |
| 769 | 1.8.44 | **AG-J0006-1104-GE-T-00003 - INCENDIO** | 10d | 2026-05-29 A | 2026-06-15 |  | 80% | 2d | 2026-06-10 | 2026-06-19 | 8d | 9d |  |  | 80h | 64h | PIPING | Sex 19/06/26 | Qua 10/06/26 | 8 dias | 33,12 |  |
| 770 | 1.8.44.1 | Emissão inicial | 3d | 2026-05-29 A | 2026-06-02 A | 760FF | 100% |  | 2026-06-10 | 2026-06-12 | 3d |  |  | Projetista Tubulação | 24h | 24h | PIPING | Sex 12/06/26 | Qua 10/06/26 | 3 dias | 13,4 | 24 |
| 771 | 1.8.44.2 | Avaliação do Cliente | 5d | 2026-06-03 A | 2026-06-11 A | 770 | 100% |  | 2026-06-15 | 2026-06-17 | 3d |  |  | Tecnored | 40h | 40h | PIPING | Qua 17/06/26 | Seg 15/06/26 | 3 dias | 13,4 |  |
| 772 | 1.8.44.3 | Atendimento de Comentário | 1d | 2026-06-12 | 2026-06-12 | 771 |  |  | 2026-06-18 | 2026-06-18 | 1d | 9d | 0d | Projetista Tubulação | 8h |  | PIPING | Qui 18/06/26 | Qui 18/06/26 | 1 dia | 13,4 |  |
| 773 | 1.8.44.4 | Aprovação | 1d | 2026-06-15 | 2026-06-15 | 772 |  |  | 2026-06-19 | 2026-06-19 | 1d | 9d |  | Tecnored | 8h |  | PIPING | Sex 19/06/26 | Sex 19/06/26 | 1 dia | 13,4 | 0,5 |
| 774 | 1.8.45 | **AG-J0006-1104-GE-T-00004 - INCENDIO** | 10d | 2026-05-29 A | 2026-06-15 |  | 80% | 2d | 2026-06-10 | 2026-06-19 | 8d | 9d |  |  | 80h | 64h | PIPING | Sex 19/06/26 | Qua 10/06/26 | 8 dias | 33,12 |  |
| 775 | 1.8.45.1 | Emissão inicial | 3d | 2026-05-29 A | 2026-06-02 A | 760FF | 100% |  | 2026-06-10 | 2026-06-12 | 3d |  |  | Projetista Tubulação | 24h | 24h | PIPING | Sex 12/06/26 | Qua 10/06/26 | 3 dias | 13,4 | 24 |
| 776 | 1.8.45.2 | Avaliação do Cliente | 5d | 2026-06-03 A | 2026-06-11 A | 775 | 100% |  | 2026-06-15 | 2026-06-17 | 3d |  |  | Tecnored | 40h | 40h | PIPING | Qua 17/06/26 | Seg 15/06/26 | 3 dias | 13,4 |  |
| 777 | 1.8.45.3 | Atendimento de Comentário | 1d | 2026-06-12 | 2026-06-12 | 776 |  |  | 2026-06-18 | 2026-06-18 | 1d | 9d | 0d | Projetista Tubulação | 8h |  | PIPING | Qui 18/06/26 | Qui 18/06/26 | 1 dia | 13,4 |  |
| 778 | 1.8.45.4 | Aprovação | 1d | 2026-06-15 | 2026-06-15 | 777 |  |  | 2026-06-19 | 2026-06-19 | 1d | 9d |  | Tecnored | 8h |  | PIPING | Sex 19/06/26 | Sex 19/06/26 | 1 dia | 13,4 | 0,5 |
| 779 | 1.8.46 | **AG-J0006-1104-GE-T-00005 - INCENDIO** | 10d | 2026-05-29 A | 2026-06-15 |  | 80% | 2d | 2026-06-10 | 2026-06-19 | 8d | 9d |  |  | 80h | 64h | PIPING | Sex 19/06/26 | Qua 10/06/26 | 8 dias | 33,12 |  |
| 780 | 1.8.46.1 | Emissão inicial | 3d | 2026-05-29 A | 2026-06-02 A | 760FF | 100% |  | 2026-06-10 | 2026-06-12 | 3d |  |  | Projetista Tubulação | 24h | 24h | PIPING | Sex 12/06/26 | Qua 10/06/26 | 3 dias | 13,4 | 24 |
| 781 | 1.8.46.2 | Avaliação do Cliente | 5d | 2026-06-03 A | 2026-06-11 A | 780 | 100% |  | 2026-06-15 | 2026-06-17 | 3d |  |  | Tecnored | 40h | 40h | PIPING | Qua 17/06/26 | Seg 15/06/26 | 3 dias | 13,4 |  |
| 782 | 1.8.46.3 | Atendimento de Comentário | 1d | 2026-06-12 | 2026-06-12 | 781 |  |  | 2026-06-18 | 2026-06-18 | 1d | 9d | 0d | Projetista Tubulação | 8h |  | PIPING | Qui 18/06/26 | Qui 18/06/26 | 1 dia | 13,4 |  |
| 783 | 1.8.46.4 | Aprovação | 1d | 2026-06-15 | 2026-06-15 | 782 |  |  | 2026-06-19 | 2026-06-19 | 1d | 9d |  | Tecnored | 8h |  | PIPING | Sex 19/06/26 | Sex 19/06/26 | 1 dia | 13,4 | 0,5 |
| 784 | 1.8.47 | **AG-J0006-1104-GE-T-00006 - INCENDIO** | 17d | 2026-05-29 A | 2026-06-24 |  | 47% | 9d | 2026-06-10 | 2026-06-19 | 8d | 2d |  |  | 136h | 64h | PIPING | Sex 19/06/26 | Qua 10/06/26 | 8 dias | 33,12 |  |
| 785 | 1.8.47.1 | Emissão inicial | 3d | 2026-05-29 A | 2026-06-02 A | 760FF | 100% |  | 2026-06-10 | 2026-06-12 | 3d |  |  | Projetista Tubulação | 24h | 24h | PIPING | Sex 12/06/26 | Qua 10/06/26 | 3 dias | 13,4 | 24 |
| 786 | 1.8.47.2 | Avaliação do Cliente | 5d | 2026-06-03 A | 2026-06-11 A | 785 | 100% |  | 2026-06-15 | 2026-06-17 | 3d |  |  | Tecnored | 40h | 40h | PIPING | Qua 17/06/26 | Seg 15/06/26 | 3 dias | 13,4 |  |
| 787 | 1.8.47.3 | Atendimento de Comentário | 1d | 2026-06-12 | 2026-06-12 | 786 |  |  | 2026-06-18 | 2026-06-18 | 1d | 2d | 0d | Projetista Tubulação | 8h |  | PIPING | Qui 18/06/26 | Qui 18/06/26 | 1 dia | 13,4 |  |
| 788 | 1.8.47.4 | Aprovação | 8d | 2026-06-15 | 2026-06-24 | 787 |  |  | 2026-06-19 | 2026-06-19 | 1d | 2d |  | Tecnored | 64h |  | PIPING | Sex 19/06/26 | Sex 19/06/26 | 1 dia | 13,4 | 0,5 |

| ID | WBS | Task | Type | Duration | Start | Finish | Predecessors | Complete | Remaining | Baseline start | Baseline finish | Baseline duration | Total slack | Free slack | Constraint | Resources | Work | Actual work | Disciplina | Text2 | Início_LB_R0 | Duração_LB_R0 | Duração Média (Tenax) | Duração média da atividade (Tecnored) | Text20 |
| --- | --- | --- | --- | --- | --- | --- | --- | --- | --- | --- | --- | --- | --- | --- | --- | --- | --- | --- | --- | --- | --- | --- | --- | --- | --- |
| 789 | 1.8.48 | **AG-J0006-1104-GE-T-00007 - INCENDIO** |  | 10d | 2026-05-29 A | 2026-06-15 |  | 80% | 2d | 2026-06-10 | 2026-06-19 | 8d | 9d |  |  |  | 80h | 64h | PIPING | Sex 19/06/26 | Qua 10/06/26 | 8 dias | 33,12 |  |  |
| 790 | 1.8.48.1 | Emissão inicial |  | 3d | 2026-05-29 A | 2026-06-02 A | 760FF | 100% |  | 2026-06-10 | 2026-06-12 | 3d |  |  |  | Projetista Tubulação | 24h | 24h | PIPING | Sex 12/06/26 | Qua 10/06/26 | 3 dias | 13,4 | 24 |  |
| 791 | 1.8.48.2 | Avaliação do Cliente |  | 5d | 2026-06-03 A | 2026-06-11 A | 790 | 100% |  | 2026-06-15 | 2026-06-17 | 3d |  |  |  | Tecnored | 40h | 40h | PIPING | Qua 17/06/26 | Seg 15/06/26 | 3 dias | 13,4 |  |  |
| 792 | 1.8.48.3 | Atendimento de Comentário |  | 1d | 2026-06-12 | 2026-06-12 | 791 |  |  | 2026-06-18 | 2026-06-18 | 1d | 9d | 0d |  | Projetista Tubulação | 8h |  | PIPING | Qui 18/06/26 | Qui 18/06/26 | 1 dia | 13,4 |  |  |
| 793 | 1.8.48.4 | Aprovação |  | 1d | 2026-06-15 | 2026-06-15 | 792 |  |  | 2026-06-19 | 2026-06-19 | 1d | 9d |  |  | Tecnored | 8h |  | PIPING | Sex 19/06/26 | Sex 19/06/26 | 1 dia | 13,4 | 0,5 |  |
| 794 | 1.9 | **STEEL STRUCTURE** |  | 64d | 2026-03-20 A | 2026-06-26 |  | 74% | 16.82d | 2026-03-23 | 2026-06-26 | 63d | 0d |  |  |  | 3676h | 2710h |  | Sex 26/06/26 | Seg 23/03/26 | 63 dias | 432,36 | 1077 |  |
| 795 | 1.9.1 | **CP-J0006-0000-GE-S-00001** |  | 4d | 2026-03-23 A | 2026-03-26 A |  | 100% |  | 2026-03-23 | 2026-03-26 | 4d |  |  |  |  | 32h | 32h | STEEL STRUCTURE | Qui 26/03/26 | Seg 23/03/26 | 4 dias | 14,24 |  |  |
| 796 | 1.9.1.1 | Emissão inicial |  | 1d | 2026-03-23 A | 2026-03-23 A | 12 | 100% |  | 2026-03-23 | 2026-03-23 | 1d |  |  |  | Eng. Calculista | 8h | 8h | STEEL STRUCTURE | Seg 23/03/26 | Seg 23/03/26 | 1 dia | 13,4 | 16 |  |
| 797 | 1.9.1.2 | Avaliação do Cliente |  | 1d | 2026-03-24 A | 2026-03-24 A | 796 | 100% |  | 2026-03-24 | 2026-03-24 | 1d |  |  |  | Tecnored | 8h | 8h | STEEL STRUCTURE | Ter 24/03/26 | Ter 24/03/26 | 1 dia | 13,4 |  |  |
| 798 | 1.9.1.3 | Atendimento de Comentário |  | 1d | 2026-03-25 A | 2026-03-25 A | 797 | 100% |  | 2026-03-25 | 2026-03-25 | 1d |  |  |  | Eng. Calculista | 8h | 8h | STEEL STRUCTURE | Qua 25/03/26 | Qua 25/03/26 | 1 dia | 13,4 |  |  |
| 799 | 1.9.1.4 | Aprovação |  | 1d | 2026-03-26 A | 2026-03-26 A | 798 | 100% |  | 2026-03-26 | 2026-03-26 | 1d |  |  |  | Tecnored | 8h | 8h | STEEL STRUCTURE | Qui 26/03/26 | Qui 26/03/26 | 1 dia | 13,4 | 0,5 |  |
| 800 | 1.9.2 | **MODULO 0100** |  | 28d | 2026-04-08 A | 2026-05-20 A |  | 100% |  | 2026-05-05 | 2026-06-10 | 25d |  |  |  |  | 372h | 372h | STEEL STRUCTURE | Qua 10/06/26 | Ter 05/05/26 | 25 dias |  |  |  |
| 801 | 1.9.2.1 | **ML-J0006-0102-GE-S-00001** |  | 16d | 2026-04-08 A | 2026-05-04 A |  | 100% |  | 2026-05-05 | 2026-05-25 | 15d |  |  |  |  | 128h | 128h | STEEL STRUCTURE | Seg 25/05/26 | Ter 05/05/26 | 15 dias |  |  |  |
| 802 | 1.9.2.1.1 | Emissão inicial |  | 10d | 2026-04-08 A | 2026-04-23 A | 204 | 100% |  | 2026-05-05 | 2026-05-18 | 10d |  |  | finish no earlier than 2026-04-27 | Projetista Metálica | 80h | 80h | STEEL STRUCTURE | Seg 18/05/26 | Ter 05/05/26 | 10 dias | 13,4 | 40 |  |
| 803 | 1.9.2.1.2 | Avaliação do Cliente |  | 3d | 2026-04-24 A | 2026-04-28 A | 802 | 100% |  | 2026-05-19 | 2026-05-21 | 3d |  |  |  | Tecnored | 24h | 24h | STEEL STRUCTURE | Qui 21/05/26 | Ter 19/05/26 | 3 dias | 13,4 |  |  |
| 804 | 1.9.2.1.3 | Atendimento de Comentário |  | 1d | 2026-04-29 A | 2026-04-29 A | 803 | 100% |  | 2026-05-22 | 2026-05-22 | 1d |  |  |  | Projetista Metálica | 8h | 8h | STEEL STRUCTURE | Sex 22/05/26 | Sex 22/05/26 | 1 dia | 13,4 |  |  |
| 805 | 1.9.2.1.4 | Aprovação |  | 2d | 2026-04-30 A | 2026-05-04 A | 804 | 100% |  | 2026-05-25 | 2026-05-25 | 1d |  |  |  | Tecnored | 16h | 16h | STEEL STRUCTURE | Seg 25/05/26 | Seg 25/05/26 | 1 dia | 13,4 | 0,5 |  |
| 806 | 1.9.2.2 | **MC-J0006-0102-GE-S-00001** |  | 13d | 2026-04-30 A | 2026-05-20 A |  | 100% |  | 2026-05-19 | 2026-06-10 | 15d |  |  |  |  | 104h | 104h | STEEL STRUCTURE | Qua 10/06/26 | Ter 19/05/26 | 15 dias |  |  |  |
| 807 | 1.9.2.2.1 | Emissão inicial | milestone | 0d | 2026-04-30 A | 2026-04-30 A | 802 | 100% |  | 2026-05-19 | 2026-06-01 | 10d |  |  |  | Eng. Calculista |  |  | STEEL STRUCTURE | Seg 01/06/26 | Ter 19/05/26 | 10 dias | 13,4 | 20 |  |
| 808 | 1.9.2.2.2 | Avaliação do Cliente | milestone | 0d | 2026-04-30 A | 2026-04-30 A | 807 | 100% |  | 2026-06-02 | 2026-06-08 | 3d |  |  |  | Tecnored |  |  | STEEL STRUCTURE | Seg 08/06/26 | Ter 02/06/26 | 3 dias | 13,4 |  |  |
| 809 | 1.9.2.2.3 | Atendimento de Comentário |  | 11d | 2026-05-04 A | 2026-05-18 A | 808 | 100% |  | 2026-06-09 | 2026-06-09 | 1d |  |  |  | Eng. Calculista | 88h | 88h | STEEL STRUCTURE | Ter 09/06/26 | Ter 09/06/26 | 1 dia | 13,4 |  |  |
| 810 | 1.9.2.2.4 | Aprovação |  | 2d | 2026-05-19 A | 2026-05-20 A | 809 | 100% |  | 2026-06-10 | 2026-06-10 | 1d |  |  |  | Tecnored | 16h | 16h | STEEL STRUCTURE | Qua 10/06/26 | Qua 10/06/26 | 1 dia | 13,4 | 0,5 |  |
| 811 | 1.9.2.3 | **AG-J0006-0102-GE-S-00001** |  | 5d | 2026-04-28 A | 2026-05-05 A |  | 100% |  | 2026-05-26 | 2026-06-03 | 7d |  |  |  |  | 28h | 28h | STEEL STRUCTURE | Qua 03/06/26 | Ter 26/05/26 | 7 dias |  |  |  |
| 812 | 1.9.2.3.1 | Emissão inicial |  | 2.5d | 2026-04-28 A | 2026-05-04 A | 805 | 100% |  | 2026-05-26 | 2026-05-27 | 2d |  |  |  | Projetista Metálica | 20h | 20h | STEEL STRUCTURE | Qua 27/05/26 | Ter 26/05/26 | 2 dias | 13,4 |  | 15/04/2026 8HH |
| 813 | 1.9.2.3.2 | Avaliação do Cliente |  | 1d | 2026-05-05 A | 2026-05-05 A | 812 | 100% |  | 2026-05-28 | 2026-06-01 | 3d |  |  |  | Tecnored | 8h | 8h | STEEL STRUCTURE | Seg 01/06/26 | Qui 28/05/26 | 3 dias | 13,4 |  |  |
| 814 | 1.9.2.3.3 | Atendimento de Comentário | milestone | 0d | 2026-05-05 A | 2026-05-05 A | 813 | 100% |  | 2026-06-02 | 2026-06-02 | 1d |  |  |  | Projetista Metálica |  |  | STEEL STRUCTURE | Ter 02/06/26 | Ter 02/06/26 | 1 dia | 13,4 |  |  |
| 815 | 1.9.2.3.4 | Aprovação | milestone | 0d | 2026-05-05 A | 2026-05-05 A | 814 | 100% |  | 2026-06-03 | 2026-06-03 | 1d |  |  |  | Tecnored |  |  | STEEL STRUCTURE | Qua 03/06/26 | Qua 03/06/26 | 1 dia | 13,4 | 0,5 |  |

| ID | WBS | Task | Duration | Start | Finish | Predecessors | Complete | Remaining | Baseline start | Baseline finish | Baseline duration | Total slack | Free slack | Constraint | Resources | Work | Actual work | Disciplina | Text2 | Início_LB_R0 | Duração_LB_R0 | Duração Média (Tenax) | Text20 | Duração média da atividade (Tecnored) |
| --- | --- | --- | --- | --- | --- | --- | --- | --- | --- | --- | --- | --- | --- | --- | --- | --- | --- | --- | --- | --- | --- | --- | --- | --- |
| 816 | 1.9.2.4 | **AG-J0006-0102-GE-S-00002** | 5d | 2026-04-28 A | 2026-05-05 A |  | 100% |  | 2026-05-26 | 2026-06-03 | 7d |  |  |  |  | 56h | 56h | STEEL STRUCTURE | Qua 03/06/26 | Ter 26/05/26 | 7 dias |  |  |  |
| 817 | 1.9.2.4.1 | Emissão inicial | 4d | 2026-04-28 A | 2026-05-04 A | 812FF | 100% |  | 2026-05-26 | 2026-05-27 | 2d |  |  |  | Projetista Metálica | 32h | 32h | STEEL STRUCTURE | Qua 27/05/26 | Ter 26/05/26 | 2 dias | 13,4 | 15/04/2026 8HH |  |
| 818 | 1.9.2.4.2 | Avaliação do Cliente | 1d | 2026-05-05 A | 2026-05-05 A | 817 | 100% |  | 2026-05-28 | 2026-06-01 | 3d |  |  |  | Tecnored | 8h | 8h | STEEL STRUCTURE | Seg 01/06/26 | Qui 28/05/26 | 3 dias | 13,4 |  |  |
| 819 | 1.9.2.4.3 | Atendimento de Comentário | 1d | 2026-05-05 A | 2026-05-05 A | 818 | 100% |  | 2026-06-02 | 2026-06-02 | 1d |  |  |  | Projetista Metálica | 8h | 8h | STEEL STRUCTURE | Ter 02/06/26 | Ter 02/06/26 | 1 dia | 13,4 |  |  |
| 820 | 1.9.2.4.4 | Aprovação | 1d | 2026-05-05 A | 2026-05-05 A | 819 | 100% |  | 2026-06-03 | 2026-06-03 | 1d |  |  |  | Tecnored | 8h | 8h | STEEL STRUCTURE | Qua 03/06/26 | Qua 03/06/26 | 1 dia | 13,4 |  | 0,5 |
| 821 | 1.9.2.5 | **PL-J0006-0102-GE-S-00001** | 5d | 2026-04-28 A | 2026-05-05 A |  | 100% |  | 2026-05-26 | 2026-06-03 | 7d |  |  |  |  | 56h | 56h | STEEL STRUCTURE | Qua 03/06/26 | Ter 26/05/26 | 7 dias |  |  |  |
| 822 | 1.9.2.5.1 | Emissão inicial | 4d | 2026-04-28 A | 2026-05-04 A | 812FF | 100% |  | 2026-05-26 | 2026-05-27 | 2d |  |  |  | Projetista Metálica | 32h | 32h | STEEL STRUCTURE | Qua 27/05/26 | Ter 26/05/26 | 2 dias | 13,4 | 15/04/2026 8HH |  |
| 823 | 1.9.2.5.2 | Avaliação do Cliente | 1d | 2026-05-05 A | 2026-05-05 A | 822 | 100% |  | 2026-05-28 | 2026-06-01 | 3d |  |  |  | Tecnored | 8h | 8h | STEEL STRUCTURE | Seg 01/06/26 | Qui 28/05/26 | 3 dias | 13,4 |  |  |
| 824 | 1.9.2.5.3 | Atendimento de Comentário | 1d | 2026-05-05 A | 2026-05-05 A | 823 | 100% |  | 2026-06-02 | 2026-06-02 | 1d |  |  |  | Projetista Metálica | 8h | 8h | STEEL STRUCTURE | Ter 02/06/26 | Ter 02/06/26 | 1 dia | 13,4 |  |  |
| 825 | 1.9.2.5.4 | Aprovação | 1d | 2026-05-05 A | 2026-05-05 A | 824 | 100% |  | 2026-06-03 | 2026-06-03 | 1d |  |  |  | Tecnored | 8h | 8h | STEEL STRUCTURE | Qua 03/06/26 | Qua 03/06/26 | 1 dia | 13,4 |  | 0,5 |
| 826 | 1.9.3 | **MODULO 0200** | 11d | 2026-06-12 A | 2026-06-26 |  | 9% | 10.06d | 2026-05-19 | 2026-06-22 | 23d | 0d |  |  |  | 304h | 26h | STEEL STRUCTURE | Seg 22/06/26 | Ter 19/05/26 | 23 dias |  |  |  |
| 827 | 1.9.3.1 | **ML-J0006-0200-GE-S-00001** | 5d | 2026-06-18 A | 2026-06-24 |  | 30% | 3.5d | 2026-05-19 | 2026-06-08 | 13d | 2d |  |  |  | 40h | 12h | STEEL STRUCTURE | Seg 08/06/26 | Ter 19/05/26 | 13 dias |  |  |  |
| 828 | 1.9.3.1.1 | Emissão inicial | 2d | 2026-06-18 A | 2026-06-19 | 484 | 75% | 0.5d | 2026-05-19 | 2026-06-01 | 10d | 2d | 0d | finish no earlier than 2026-06-19 | Projetista Metálica | 16h | 12h | STEEL STRUCTURE | Seg 01/06/26 | Ter 19/05/26 | 10 dias | 13,4 |  | 40 |
| 829 | 1.9.3.1.2 | Avaliação do Cliente | 1d | 2026-06-22 | 2026-06-22 | 828 |  |  | 2026-06-02 | 2026-06-02 | 1d | 2d | 0d |  | Tecnored | 8h |  | STEEL STRUCTURE | Ter 02/06/26 | Ter 02/06/26 | 1 dia | 13,4 |  |  |
| 830 | 1.9.3.1.3 | Atendimento de Comentário | 1d | 2026-06-23 | 2026-06-23 | 829 |  |  | 2026-06-03 | 2026-06-03 | 1d | 2d | 0d |  | Projetista Metálica | 8h |  | STEEL STRUCTURE | Qua 03/06/26 | Qua 03/06/26 | 1 dia | 13,4 |  |  |
| 831 | 1.9.3.1.4 | Aprovação | 1d | 2026-06-24 | 2026-06-24 | 830 |  |  | 2026-06-08 | 2026-06-08 | 1d | 2d |  |  | Tecnored | 8h |  | STEEL STRUCTURE | Seg 08/06/26 | Seg 08/06/26 | 1 dia | 13,4 |  | 0,5 |
| 832 | 1.9.3.2 | **MC-J0006-0200-GE-S-00001** | 8d | 2026-06-12 A | 2026-06-23 |  | 22% | 6.25d | 2026-06-02 | 2026-06-22 | 13d | 3d |  |  |  | 64h | 14h | STEEL STRUCTURE | Seg 22/06/26 | Ter 02/06/26 | 13 dias |  |  |  |
| 833 | 1.9.3.2.1 | Emissão inicial | 5d | 2026-06-12 A | 2026-06-18 |  | 35% | 3.25d | 2026-06-02 | 2026-06-17 | 10d | 3d | 0d | finish no earlier than 2026-06-18 | Eng. Calculista | 40h | 14h | STEEL STRUCTURE | Qua 17/06/26 | Ter 02/06/26 | 10 dias | 13,4 |  | 20 |
| 834 | 1.9.3.2.2 | Avaliação do Cliente | 1d | 2026-06-19 | 2026-06-19 | 833 |  |  | 2026-06-18 | 2026-06-18 | 1d | 3d | 0d |  | Tecnored | 8h |  | STEEL STRUCTURE | Qui 18/06/26 | Qui 18/06/26 | 1 dia | 13,4 |  |  |
| 835 | 1.9.3.2.3 | Atendimento de Comentário | 1d | 2026-06-22 | 2026-06-22 | 834 |  |  | 2026-06-19 | 2026-06-19 | 1d | 3d | 0d |  | Eng. Calculista | 8h |  | STEEL STRUCTURE | Sex 19/06/26 | Sex 19/06/26 | 1 dia | 13,4 |  |  |
| 836 | 1.9.3.2.4 | Aprovação | 1d | 2026-06-23 | 2026-06-23 | 835 |  |  | 2026-06-22 | 2026-06-22 | 1d | 3d |  |  | Tecnored | 8h |  | STEEL STRUCTURE | Seg 22/06/26 | Seg 22/06/26 | 1 dia | 13,4 |  | 0,5 |
| 837 | 1.9.3.3 | **AG-J0006-0200-GE-S-00001** | 5d | 2026-06-22 | 2026-06-26 |  |  |  | 2026-06-09 | 2026-06-22 | 10d | 0d |  |  |  | 40h |  | STEEL STRUCTURE | Seg 22/06/26 | Ter 09/06/26 | 10 dias |  |  |  |
| 838 | 1.9.3.3.1 | Emissão inicial | 2d | 2026-06-22 | 2026-06-23 |  |  |  | 2026-06-09 | 2026-06-15 | 5d | 0d |  | finish no earlier than 2026-06-23 | Projetista Metálica | 16h |  | STEEL STRUCTURE | Seg 15/06/26 | Ter 09/06/26 | 5 dias | 13,4 |  |  |
| 839 | 1.9.3.3.2 | Avaliação do Cliente | 1d | 2026-06-24 | 2026-06-24 | 838 |  |  | 2026-06-16 | 2026-06-18 | 3d | 0d |  |  | Tecnored | 8h |  | STEEL STRUCTURE | Qui 18/06/26 | Ter 16/06/26 | 3 dias | 13,4 |  |  |
| 840 | 1.9.3.3.3 | Atendimento de Comentário | 1d | 2026-06-25 | 2026-06-25 | 839 |  |  | 2026-06-19 | 2026-06-19 | 1d | 0d |  |  | Projetista Metálica | 8h |  | STEEL STRUCTURE | Sex 19/06/26 | Sex 19/06/26 | 1 dia | 13,4 |  |  |
| 841 | 1.9.3.3.4 | Aprovação | 1d | 2026-06-26 | 2026-06-26 | 840 |  |  | 2026-06-22 | 2026-06-22 | 1d | 0d |  |  | Tecnored | 8h |  | STEEL STRUCTURE | Seg 22/06/26 | Seg 22/06/26 | 1 dia | 13,4 |  | 0,5 |

| ID | WBS | Task | Type | Duration | Start | Finish | Predecessors | Complete | Baseline start | Baseline finish | Baseline duration | Total slack | Constraint | Resources | Work | Actual work | Disciplina | Text2 | Início_LB_R0 | Duração_LB_R0 | Duração Média (Tenax) | Duração média da atividade (Tecnored) |
| --- | --- | --- | --- | --- | --- | --- | --- | --- | --- | --- | --- | --- | --- | --- | --- | --- | --- | --- | --- | --- | --- | --- |
| 842 | 1.9.3.4 | **AG-J0006-0200-GE-S-00002** |  | 5d | 2026-06-22 | 2026-06-26 |  |  | 2026-06-09 | 2026-06-22 | 10d | 0d |  |  | 40h |  | STEEL STRUCTURE | Seg 22/06/26 | Ter 09/06/26 | 10 dias |  |  |
| 843 | 1.9.3.4.1 | Emissão inicial |  | 2d | 2026-06-22 | 2026-06-23 | 838FF |  | 2026-06-09 | 2026-06-15 | 5d | 0d | finish no earlier than 2026-06-23 | Projetista Metálica | 16h |  | STEEL STRUCTURE | Seg 15/06/26 | Ter 09/06/26 | 5 dias | 13,4 |  |
| 844 | 1.9.3.4.2 | Avaliação do Cliente |  | 1d | 2026-06-24 | 2026-06-24 | 843 |  | 2026-06-16 | 2026-06-18 | 3d | 0d |  | Tecnored | 8h |  | STEEL STRUCTURE | Qui 18/06/26 | Ter 16/06/26 | 3 dias | 13,4 |  |
| 845 | 1.9.3.4.3 | Atendimento de Comentário |  | 1d | 2026-06-25 | 2026-06-25 | 844 |  | 2026-06-19 | 2026-06-19 | 1d | 0d |  | Projetista Metálica | 8h |  | STEEL STRUCTURE | Sex 19/06/26 | Sex 19/06/26 | 1 dia | 13,4 |  |
| 846 | 1.9.3.4.4 | Aprovação |  | 1d | 2026-06-26 | 2026-06-26 | 845 |  | 2026-06-22 | 2026-06-22 | 1d | 0d |  | Tecnored | 8h |  | STEEL STRUCTURE | Seg 22/06/26 | Seg 22/06/26 | 1 dia | 13,4 | 0,5 |
| 847 | 1.9.3.5 | **AG-J0006-0200-GE-S-00003** |  | 5d | 2026-06-22 | 2026-06-26 |  |  | 2026-06-09 | 2026-06-22 | 10d | 0d |  |  | 40h |  | STEEL STRUCTURE | Seg 22/06/26 | Ter 09/06/26 | 10 dias |  |  |
| 848 | 1.9.3.5.1 | Emissão inicial |  | 2d | 2026-06-22 | 2026-06-23 | 838FF |  | 2026-06-09 | 2026-06-15 | 5d | 0d | finish no earlier than 2026-06-23 | Eng. Calculista | 16h |  | STEEL STRUCTURE | Seg 15/06/26 | Ter 09/06/26 | 5 dias | 13,4 |  |
| 849 | 1.9.3.5.2 | Avaliação do Cliente |  | 1d | 2026-06-24 | 2026-06-24 | 848 |  | 2026-06-16 | 2026-06-18 | 3d | 0d |  | Tecnored | 8h |  | STEEL STRUCTURE | Qui 18/06/26 | Ter 16/06/26 | 3 dias | 13,4 |  |
| 850 | 1.9.3.5.3 | Atendimento de Comentário |  | 1d | 2026-06-25 | 2026-06-25 | 849 |  | 2026-06-19 | 2026-06-19 | 1d | 0d |  | Eng. Calculista | 8h |  | STEEL STRUCTURE | Sex 19/06/26 | Sex 19/06/26 | 1 dia | 13,4 |  |
| 851 | 1.9.3.5.4 | Aprovação |  | 1d | 2026-06-26 | 2026-06-26 | 850 |  | 2026-06-22 | 2026-06-22 | 1d | 0d |  | Tecnored | 8h |  | STEEL STRUCTURE | Seg 22/06/26 | Seg 22/06/26 | 1 dia | 13,4 | 0,5 |
| 852 | 1.9.3.6 | **AG-J0006-0200-GE-S-00004** |  | 5d | 2026-06-22 | 2026-06-26 |  |  | 2026-06-09 | 2026-06-22 | 10d | 0d |  |  | 40h |  | STEEL STRUCTURE | Seg 22/06/26 | Ter 09/06/26 | 10 dias |  |  |
| 853 | 1.9.3.6.1 | Emissão inicial |  | 2d | 2026-06-22 | 2026-06-23 | 838FF |  | 2026-06-09 | 2026-06-15 | 5d | 0d | finish no earlier than 2026-06-23 | Projetista Metálica | 16h |  | STEEL STRUCTURE | Seg 15/06/26 | Ter 09/06/26 | 5 dias | 13,4 |  |
| 854 | 1.9.3.6.2 | Avaliação do Cliente |  | 1d | 2026-06-24 | 2026-06-24 | 853 |  | 2026-06-16 | 2026-06-18 | 3d | 0d |  | Tecnored | 8h |  | STEEL STRUCTURE | Qui 18/06/26 | Ter 16/06/26 | 3 dias | 13,4 |  |
| 855 | 1.9.3.6.3 | Atendimento de Comentário |  | 1d | 2026-06-25 | 2026-06-25 | 854 |  | 2026-06-19 | 2026-06-19 | 1d | 0d |  | Projetista Metálica | 8h |  | STEEL STRUCTURE | Sex 19/06/26 | Sex 19/06/26 | 1 dia | 13,4 |  |
| 856 | 1.9.3.6.4 | Aprovação |  | 1d | 2026-06-26 | 2026-06-26 | 855 |  | 2026-06-22 | 2026-06-22 | 1d | 0d |  | Tecnored | 8h |  | STEEL STRUCTURE | Seg 22/06/26 | Seg 22/06/26 | 1 dia | 13,4 | 0,5 |
| 857 | 1.9.3.7 | **AG-J0006-0200-GE-S-00005** |  | 5d | 2026-06-22 | 2026-06-26 |  |  | 2026-06-09 | 2026-06-22 | 10d | 0d |  |  | 40h |  | STEEL STRUCTURE | Seg 22/06/26 | Ter 09/06/26 | 10 dias |  |  |
| 858 | 1.9.3.7.1 | Emissão inicial |  | 2d | 2026-06-22 | 2026-06-23 | 838FF |  | 2026-06-09 | 2026-06-15 | 5d | 0d | finish no earlier than 2026-06-23 | Projetista Metálica | 16h |  | STEEL STRUCTURE | Seg 15/06/26 | Ter 09/06/26 | 5 dias | 13,4 |  |
| 859 | 1.9.3.7.2 | Avaliação do Cliente |  | 1d | 2026-06-24 | 2026-06-24 | 858 |  | 2026-06-16 | 2026-06-18 | 3d | 0d |  | Tecnored | 8h |  | STEEL STRUCTURE | Qui 18/06/26 | Ter 16/06/26 | 3 dias | 13,4 |  |
| 860 | 1.9.3.7.3 | Atendimento de Comentário |  | 1d | 2026-06-25 | 2026-06-25 | 859 |  | 2026-06-19 | 2026-06-19 | 1d | 0d |  | Projetista Metálica | 8h |  | STEEL STRUCTURE | Sex 19/06/26 | Sex 19/06/26 | 1 dia | 13,4 |  |
| 861 | 1.9.3.7.4 | Aprovação |  | 1d | 2026-06-26 | 2026-06-26 | 860 |  | 2026-06-22 | 2026-06-22 | 1d | 0d |  | Tecnored | 8h |  | STEEL STRUCTURE | Seg 22/06/26 | Seg 22/06/26 | 1 dia | 13,4 | 0,5 |
| 862 | 1.9.4 | **MODULO 0300** |  | 15d | 2026-05-06 A | 2026-05-26 A |  | 100% | 2026-05-06 | 2026-06-11 | 25d |  |  |  | 424h | 424h | STEEL STRUCTURE | Qui 11/06/26 | Qua 06/05/26 | 25 dias |  |  |
| 863 | 1.9.4.1 | **ML-J0006-0300-GE-S-00001** |  | 11d | 2026-05-06 A | 2026-05-20 A |  | 100% | 2026-05-06 | 2026-05-22 | 13d |  |  |  | 88h | 88h | STEEL STRUCTURE | Sex 22/05/26 | Qua 06/05/26 | 13 dias |  |  |
| 864 | 1.9.4.1.1 | Emissão inicial |  | 10d | 2026-05-06 A | 2026-05-19 A | 256 | 100% | 2026-05-06 | 2026-05-19 | 10d |  |  | Projetista Metálica | 80h | 80h | STEEL STRUCTURE | Ter 19/05/26 | Qua 06/05/26 | 10 dias | 13,4 | 40 |
| 865 | 1.9.4.1.2 | Avaliação do Cliente |  | 1d | 2026-05-19 A | 2026-05-20 A | 864 | 100% | 2026-05-20 | 2026-05-20 | 1d |  |  | Tecnored | 8h | 8h | STEEL STRUCTURE | Qua 20/05/26 | Qua 20/05/26 | 1 dia | 13,4 |  |
| 866 | 1.9.4.1.3 | Atendimento de Comentário | milestone | 0d | 2026-05-20 A | 2026-05-20 A | 865 | 100% | 2026-05-21 | 2026-05-21 | 1d |  |  | Projetista Metálica |  |  | STEEL STRUCTURE | Qui 21/05/26 | Qui 21/05/26 | 1 dia | 13,4 |  |
| 867 | 1.9.4.1.4 | Aprovação | milestone | 0d | 2026-05-20 A | 2026-05-20 A | 866 | 100% | 2026-05-22 | 2026-05-22 | 1d |  |  | Tecnored |  |  | STEEL STRUCTURE | Sex 22/05/26 | Sex 22/05/26 | 1 dia | 13,4 | 0,5 |

| ID | WBS | Task | Type | Duration | Start | Finish | Predecessors | Complete | Baseline start | Baseline finish | Baseline duration | Resources | Work | Actual work | Disciplina | Text2 | Início_LB_R0 | Duração_LB_R0 | Duração média da atividade (Tecnored) | Duração Média (Tenax) |
| --- | --- | --- | --- | --- | --- | --- | --- | --- | --- | --- | --- | --- | --- | --- | --- | --- | --- | --- | --- | --- |
| 868 | 1.9.4.2 | **MC-J0006-0300-GE-S-00001** |  | 6d | 2026-05-07 A | 2026-05-14 A |  | 100% | 2026-05-20 | 2026-06-11 | 15d |  | 48h | 48h | STEEL STRUCTURE | Qui 11/06/26 | Qua 20/05/26 | 15 dias |  |  |
| 869 | 1.9.4.2.1 | Emissão inicial |  | 6d | 2026-05-07 A | 2026-05-14 A | 256, 864 | 100% | 2026-05-20 | 2026-06-02 | 10d | Eng. Calculista | 48h | 48h | STEEL STRUCTURE | Ter 02/06/26 | Qua 20/05/26 | 10 dias | 20 | 13,4 |
| 870 | 1.9.4.2.2 | Avaliação do Cliente | milestone | 0d | 2026-05-14 A | 2026-05-14 A | 869 | 100% | 2026-06-03 | 2026-06-09 | 3d | Tecnored |  |  | STEEL STRUCTURE | Ter 09/06/26 | Qua 03/06/26 | 3 dias |  | 13,4 |
| 871 | 1.9.4.2.3 | Atendimento de Comentário | milestone | 0d | 2026-05-14 A | 2026-05-14 A | 870 | 100% | 2026-06-10 | 2026-06-10 | 1d | Eng. Calculista |  |  | STEEL STRUCTURE | Qua 10/06/26 | Qua 10/06/26 | 1 dia |  | 13,4 |
| 872 | 1.9.4.2.4 | Aprovação | milestone | 0d | 2026-05-14 A | 2026-05-14 A | 871 | 100% | 2026-06-11 | 2026-06-11 | 1d | Tecnored |  |  | STEEL STRUCTURE | Qui 11/06/26 | Qui 11/06/26 | 1 dia | 0,5 | 13,4 |
| 873 | 1.9.4.3 | **AG-J0006-0300-GE-S-00001** |  | 4d | 2026-05-21 A | 2026-05-26 A |  | 100% | 2026-05-25 | 2026-06-02 | 7d |  | 56h | 56h | STEEL STRUCTURE | Ter 02/06/26 | Seg 25/05/26 | 7 dias |  |  |
| 874 | 1.9.4.3.1 | Emissão inicial |  | 4d | 2026-05-21 A | 2026-05-26 A | 867 | 100% | 2026-05-25 | 2026-05-26 | 2d | Projetista Metálica | 32h | 32h | STEEL STRUCTURE | Ter 26/05/26 | Seg 25/05/26 | 2 dias |  | 13,4 |
| 875 | 1.9.4.3.2 | Avaliação do Cliente |  | 1d | 2026-05-26 A | 2026-05-26 A | 874 | 100% | 2026-05-27 | 2026-05-29 | 3d | Tecnored | 8h | 8h | STEEL STRUCTURE | Sex 29/05/26 | Qua 27/05/26 | 3 dias |  | 13,4 |
| 876 | 1.9.4.3.3 | Atendimento de Comentário |  | 1d | 2026-05-26 A | 2026-05-26 A | 875 | 100% | 2026-06-01 | 2026-06-01 | 1d | Projetista Metálica | 8h | 8h | STEEL STRUCTURE | Seg 01/06/26 | Seg 01/06/26 | 1 dia |  | 13,4 |
| 877 | 1.9.4.3.4 | Aprovação |  | 1d | 2026-05-26 A | 2026-05-26 A | 876 | 100% | 2026-06-02 | 2026-06-02 | 1d | Tecnored | 8h | 8h | STEEL STRUCTURE | Ter 02/06/26 | Ter 02/06/26 | 1 dia | 0,5 | 13,4 |
| 878 | 1.9.4.4 | **AG-J0006-0302-GE-S-00002** |  | 4d | 2026-05-21 A | 2026-05-26 A |  | 100% | 2026-05-25 | 2026-06-02 | 7d |  | 40h | 40h | STEEL STRUCTURE | Ter 02/06/26 | Seg 25/05/26 | 7 dias |  |  |
| 879 | 1.9.4.4.1 | Emissão inicial |  | 2d | 2026-05-21 A | 2026-05-26 A | 874FF | 100% | 2026-05-25 | 2026-05-26 | 2d | Projetista Metálica | 16h | 16h | STEEL STRUCTURE | Ter 26/05/26 | Seg 25/05/26 | 2 dias |  | 13,4 |
| 880 | 1.9.4.4.2 | Avaliação do Cliente |  | 1d | 2026-05-26 A | 2026-05-26 A | 879 | 100% | 2026-05-27 | 2026-05-29 | 3d | Tecnored | 8h | 8h | STEEL STRUCTURE | Sex 29/05/26 | Qua 27/05/26 | 3 dias |  | 13,4 |
| 881 | 1.9.4.4.3 | Atendimento de Comentário |  | 1d | 2026-05-26 A | 2026-05-26 A | 880 | 100% | 2026-06-01 | 2026-06-01 | 1d | Projetista Metálica | 8h | 8h | STEEL STRUCTURE | Seg 01/06/26 | Seg 01/06/26 | 1 dia |  | 13,4 |
| 882 | 1.9.4.4.4 | Aprovação |  | 1d | 2026-05-26 A | 2026-05-26 A | 881 | 100% | 2026-06-02 | 2026-06-02 | 1d | Tecnored | 8h | 8h | STEEL STRUCTURE | Ter 02/06/26 | Ter 02/06/26 | 1 dia | 0,5 | 13,4 |
| 883 | 1.9.4.5 | **AG-J0006-0302-GE-S-00003** |  | 4d | 2026-05-21 A | 2026-05-26 A |  | 100% | 2026-05-25 | 2026-06-02 | 7d |  | 40h | 40h | STEEL STRUCTURE | Ter 02/06/26 | Seg 25/05/26 | 7 dias |  |  |
| 884 | 1.9.4.5.1 | Emissão inicial |  | 2d | 2026-05-21 A | 2026-05-26 A | 874FF | 100% | 2026-05-25 | 2026-05-26 | 2d | Projetista Metálica | 16h | 16h | STEEL STRUCTURE | Ter 26/05/26 | Seg 25/05/26 | 2 dias |  | 13,4 |
| 885 | 1.9.4.5.2 | Avaliação do Cliente |  | 1d | 2026-05-26 A | 2026-05-26 A | 884 | 100% | 2026-05-27 | 2026-05-29 | 3d | Tecnored | 8h | 8h | STEEL STRUCTURE | Sex 29/05/26 | Qua 27/05/26 | 3 dias |  | 13,4 |
| 886 | 1.9.4.5.3 | Atendimento de Comentário |  | 1d | 2026-05-26 A | 2026-05-26 A | 885 | 100% | 2026-06-01 | 2026-06-01 | 1d | Projetista Metálica | 8h | 8h | STEEL STRUCTURE | Seg 01/06/26 | Seg 01/06/26 | 1 dia |  | 13,4 |
| 887 | 1.9.4.5.4 | Aprovação |  | 1d | 2026-05-26 A | 2026-05-26 A | 886 | 100% | 2026-06-02 | 2026-06-02 | 1d | Tecnored | 8h | 8h | STEEL STRUCTURE | Ter 02/06/26 | Ter 02/06/26 | 1 dia | 0,5 | 13,4 |
| 888 | 1.9.4.6 | **AG-J0006-0302-GE-S-00004** |  | 4d | 2026-05-21 A | 2026-05-26 A |  | 100% | 2026-05-25 | 2026-06-02 | 7d |  | 40h | 40h | STEEL STRUCTURE | Ter 02/06/26 | Seg 25/05/26 | 7 dias |  |  |
| 889 | 1.9.4.6.1 | Emissão inicial |  | 2d | 2026-05-21 A | 2026-05-26 A | 874FF | 100% | 2026-05-25 | 2026-05-26 | 2d | Projetista Metálica | 16h | 16h | STEEL STRUCTURE | Ter 26/05/26 | Seg 25/05/26 | 2 dias |  | 13,4 |
| 890 | 1.9.4.6.2 | Avaliação do Cliente |  | 1d | 2026-05-26 A | 2026-05-26 A | 889 | 100% | 2026-05-27 | 2026-05-29 | 3d | Tecnored | 8h | 8h | STEEL STRUCTURE | Sex 29/05/26 | Qua 27/05/26 | 3 dias |  | 13,4 |
| 891 | 1.9.4.6.3 | Atendimento de Comentário |  | 1d | 2026-05-26 A | 2026-05-26 A | 890 | 100% | 2026-06-01 | 2026-06-01 | 1d | Projetista Metálica | 8h | 8h | STEEL STRUCTURE | Seg 01/06/26 | Seg 01/06/26 | 1 dia |  | 13,4 |
| 892 | 1.9.4.6.4 | Aprovação |  | 1d | 2026-05-26 A | 2026-05-26 A | 891 | 100% | 2026-06-02 | 2026-06-02 | 1d | Tecnored | 8h | 8h | STEEL STRUCTURE | Ter 02/06/26 | Ter 02/06/26 | 1 dia | 0,5 | 13,4 |

| ID | WBS | Task | Type | Duration | Start | Finish | Predecessors | Complete | Baseline start | Baseline finish | Baseline duration | Resources | Work | Actual work | Disciplina | Text2 | Início_LB_R0 | Duração_LB_R0 | Duração Média (Tenax) | Duração média da atividade (Tecnored) |
| --- | --- | --- | --- | --- | --- | --- | --- | --- | --- | --- | --- | --- | --- | --- | --- | --- | --- | --- | --- | --- |
| 893 | 1.9.4.7 | **AG-J0006-0302-GE-S-00005** |  | 4d | 2026-05-21 A | 2026-05-26 A |  | 100% | 2026-05-25 | 2026-06-02 | 7d |  | 40h | 40h | STEEL STRUCTURE | Ter 02/06/26 | Seg 25/05/26 | 7 dias |  |  |
| 894 | 1.9.4.7.1 | Emissão inicial |  | 2d | 2026-05-21 A | 2026-05-26 A | 874FF | 100% | 2026-05-25 | 2026-05-26 | 2d | Projetista Metálica | 16h | 16h | STEEL STRUCTURE | Ter 26/05/26 | Seg 25/05/26 | 2 dias | 13,4 |  |
| 895 | 1.9.4.7.2 | Avaliação do Cliente |  | 1d | 2026-05-26 A | 2026-05-26 A | 894 | 100% | 2026-05-27 | 2026-05-29 | 3d | Tecnored | 8h | 8h | STEEL STRUCTURE | Sex 29/05/26 | Qua 27/05/26 | 3 dias | 13,4 |  |
| 896 | 1.9.4.7.3 | Atendimento de Comentário |  | 1d | 2026-05-26 A | 2026-05-26 A | 895 | 100% | 2026-06-01 | 2026-06-01 | 1d | Projetista Metálica | 8h | 8h | STEEL STRUCTURE | Seg 01/06/26 | Seg 01/06/26 | 1 dia | 13,4 |  |
| 897 | 1.9.4.7.4 | Aprovação |  | 1d | 2026-05-26 A | 2026-05-26 A | 896 | 100% | 2026-06-02 | 2026-06-02 | 1d | Tecnored | 8h | 8h | STEEL STRUCTURE | Ter 02/06/26 | Ter 02/06/26 | 1 dia | 13,4 | 0,5 |
| 898 | 1.9.4.8 | **AG-J0006-0302-GE-S-00006** |  | 4d | 2026-05-21 A | 2026-05-26 A |  | 100% | 2026-05-25 | 2026-06-02 | 7d |  | 40h | 40h | STEEL STRUCTURE | Ter 02/06/26 | Seg 25/05/26 | 7 dias |  |  |
| 899 | 1.9.4.8.1 | Emissão inicial |  | 2d | 2026-05-21 A | 2026-05-26 A | 874FF | 100% | 2026-05-25 | 2026-05-26 | 2d | Projetista Metálica | 16h | 16h | STEEL STRUCTURE | Ter 26/05/26 | Seg 25/05/26 | 2 dias | 13,4 |  |
| 900 | 1.9.4.8.2 | Avaliação do Cliente |  | 1d | 2026-05-26 A | 2026-05-26 A | 899 | 100% | 2026-05-27 | 2026-05-29 | 3d | Tecnored | 8h | 8h | STEEL STRUCTURE | Sex 29/05/26 | Qua 27/05/26 | 3 dias | 13,4 |  |
| 901 | 1.9.4.8.3 | Atendimento de Comentário |  | 1d | 2026-05-26 A | 2026-05-26 A | 900 | 100% | 2026-06-01 | 2026-06-01 | 1d | Projetista Metálica | 8h | 8h | STEEL STRUCTURE | Seg 01/06/26 | Seg 01/06/26 | 1 dia | 13,4 |  |
| 902 | 1.9.4.8.4 | Aprovação |  | 1d | 2026-05-26 A | 2026-05-26 A | 901 | 100% | 2026-06-02 | 2026-06-02 | 1d | Tecnored | 8h | 8h | STEEL STRUCTURE | Ter 02/06/26 | Ter 02/06/26 | 1 dia | 13,4 | 0,5 |
| 903 | 1.9.4.9 | **PL-J0006-0302-GE-S-00001** |  | 4d | 2026-05-21 A | 2026-05-26 A |  | 100% | 2026-05-25 | 2026-06-02 | 7d |  | 32h | 32h | STEEL STRUCTURE | Ter 02/06/26 | Seg 25/05/26 | 7 dias |  |  |
| 904 | 1.9.4.9.1 | Emissão inicial |  | 2d | 2026-05-21 A | 2026-05-26 A | 874FF | 100% | 2026-05-25 | 2026-05-26 | 2d | Projetista Metálica | 16h | 16h | STEEL STRUCTURE | Ter 26/05/26 | Seg 25/05/26 | 2 dias | 13,4 |  |
| 905 | 1.9.4.9.2 | Avaliação do Cliente | milestone | 0d | 2026-05-26 A | 2026-05-26 A | 904 | 100% | 2026-05-27 | 2026-05-29 | 3d | Tecnored |  |  | STEEL STRUCTURE | Sex 29/05/26 | Qua 27/05/26 | 3 dias | 13,4 |  |
| 906 | 1.9.4.9.3 | Atendimento de Comentário |  | 1d | 2026-05-26 A | 2026-05-26 A | 905 | 100% | 2026-06-01 | 2026-06-01 | 1d | Projetista Metálica | 8h | 8h | STEEL STRUCTURE | Seg 01/06/26 | Seg 01/06/26 | 1 dia | 13,4 |  |
| 907 | 1.9.4.9.4 | Aprovação |  | 1d | 2026-05-26 A | 2026-05-26 A | 906 | 100% | 2026-06-02 | 2026-06-02 | 1d | Tecnored | 8h | 8h | STEEL STRUCTURE | Ter 02/06/26 | Ter 02/06/26 | 1 dia | 13,4 | 0,5 |
| 908 | 1.9.5 | **MODULO 0400** |  | 14d | 2026-04-24 A | 2026-05-14 A |  | 100% | 2026-05-19 | 2026-06-24 | 25d |  | 852h | 852h | STEEL STRUCTURE | Qua 24/06/26 | Ter 19/05/26 | 25 dias |  |  |
| 909 | 1.9.5.1 | **ML-J0006-0402-GE-S-00001** |  | 10d | 2026-04-24 A | 2026-05-08 A |  | 100% | 2026-05-19 | 2026-06-10 | 15d |  | 320h | 320h | STEEL STRUCTURE | Qua 10/06/26 | Ter 19/05/26 | 15 dias |  |  |
| 910 | 1.9.5.1.1 | Emissão inicial |  | 10d | 2026-04-24 A | 2026-05-08 A | 287, 802 | 100% | 2026-05-19 | 2026-06-01 | 10d | Projetista Metálica | 80h | 80h | STEEL STRUCTURE | Seg 01/06/26 | Ter 19/05/26 | 10 dias | 13,4 | 40 |
| 911 | 1.9.5.1.2 | Avaliação do Cliente |  | 10d | 2026-04-24 A | 2026-05-08 A | 910 | 100% | 2026-06-02 | 2026-06-08 | 3d | Tecnored | 80h | 80h | STEEL STRUCTURE | Seg 08/06/26 | Ter 02/06/26 | 3 dias | 13,4 |  |
| 912 | 1.9.5.1.3 | Atendimento de Comentário |  | 10d | 2026-04-24 A | 2026-05-08 A | 911 | 100% | 2026-06-09 | 2026-06-09 | 1d | Projetista Metálica | 80h | 80h | STEEL STRUCTURE | Ter 09/06/26 | Ter 09/06/26 | 1 dia | 13,4 |  |
| 913 | 1.9.5.1.4 | Aprovação |  | 10d | 2026-04-24 A | 2026-05-08 A | 912 | 100% | 2026-06-10 | 2026-06-10 | 1d | Tecnored | 80h | 80h | STEEL STRUCTURE | Qua 10/06/26 | Qua 10/06/26 | 1 dia | 13,4 | 0,5 |
| 914 | 1.9.5.2 | **MC-J0006-0402-GE-S-00001** |  | 14d | 2026-04-24 A | 2026-05-14 A |  | 100% | 2026-06-02 | 2026-06-24 | 15d |  | 92h | 92h | STEEL STRUCTURE | Qua 24/06/26 | Ter 02/06/26 | 15 dias |  |  |
| 915 | 1.9.5.2.1 | Emissão inicial |  | 11.5d | 2026-04-24 A | 2026-05-14 A | 287, 910 | 100% | 2026-06-02 | 2026-06-17 | 10d | Eng. Calculista | 92h | 92h | STEEL STRUCTURE | Qua 17/06/26 | Ter 02/06/26 | 10 dias | 13,4 | 20 |
| 916 | 1.9.5.2.2 | Avaliação do Cliente | milestone | 0d | 2026-05-14 A | 2026-05-14 A | 915 | 100% | 2026-06-18 | 2026-06-22 | 3d | Tecnored |  |  | STEEL STRUCTURE | Seg 22/06/26 | Qui 18/06/26 | 3 dias | 13,4 |  |
| 917 | 1.9.5.2.3 | Atendimento de Comentário | milestone | 0d | 2026-05-14 A | 2026-05-14 A | 916 | 100% | 2026-06-23 | 2026-06-23 | 1d | Eng. Calculista |  |  | STEEL STRUCTURE | Ter 23/06/26 | Ter 23/06/26 | 1 dia | 13,4 |  |
| 918 | 1.9.5.2.4 | Aprovação | milestone | 0d | 2026-05-14 A | 2026-05-14 A | 917 | 100% | 2026-06-24 | 2026-06-24 | 1d | Tecnored |  |  | STEEL STRUCTURE | Qua 24/06/26 | Qua 24/06/26 | 1 dia | 13,4 | 0,5 |

| ID | WBS | Task | Type | Duration | Start | Finish | Predecessors | Complete | Baseline start | Baseline finish | Baseline duration | Resources | Work | Actual work | Disciplina | Text2 | Início_LB_R0 | Duração_LB_R0 | Duração Média (Tenax) | Duração média da atividade (Tecnored) |
| --- | --- | --- | --- | --- | --- | --- | --- | --- | --- | --- | --- | --- | --- | --- | --- | --- | --- | --- | --- | --- |
| 919 | 1.9.5.3 | **AG-J0006-0402-GE-S-00001** |  | 4d | 2026-05-11 A | 2026-05-14 A |  | 100% | 2026-06-11 | 2026-06-19 | 7d |  | 48h | 48h | STEEL STRUCTURE | Sex 19/06/26 | Qui 11/06/26 | 7 dias |  |  |
| 920 | 1.9.5.3.1 | Emissão inicial |  | 4d | 2026-05-11 A | 2026-05-14 A | 913 | 100% | 2026-06-11 | 2026-06-12 | 2d | Projetista Metálica | 32h | 32h | STEEL STRUCTURE | Sex 12/06/26 | Qui 11/06/26 | 2 dias | 13,4 |  |
| 921 | 1.9.5.3.2 | Avaliação do Cliente | milestone | 0d | 2026-05-14 A | 2026-05-14 A | 920 | 100% | 2026-06-15 | 2026-06-17 | 3d | Tecnored |  |  | STEEL STRUCTURE | Qua 17/06/26 | Seg 15/06/26 | 3 dias | 13,4 |  |
| 922 | 1.9.5.3.3 | Atendimento de Comentário |  | 1d | 2026-05-14 A | 2026-05-14 A | 921 | 100% | 2026-06-18 | 2026-06-18 | 1d | Projetista Metálica | 8h | 8h | STEEL STRUCTURE | Qui 18/06/26 | Qui 18/06/26 | 1 dia | 13,4 |  |
| 923 | 1.9.5.3.4 | Aprovação |  | 1d | 2026-05-14 A | 2026-05-14 A | 922 | 100% | 2026-06-19 | 2026-06-19 | 1d | Tecnored | 8h | 8h | STEEL STRUCTURE | Sex 19/06/26 | Sex 19/06/26 | 1 dia | 13,4 | 0,5 |
| 924 | 1.9.5.4 | **AG-J0006-0402-GE-S-00002** |  | 4d | 2026-05-11 A | 2026-05-14 A |  | 100% | 2026-06-11 | 2026-06-19 | 7d |  | 56h | 56h | STEEL STRUCTURE | Sex 19/06/26 | Qui 11/06/26 | 7 dias |  |  |
| 925 | 1.9.5.4.1 | Emissão inicial |  | 4d | 2026-05-11 A | 2026-05-14 A | 920FF | 100% | 2026-06-11 | 2026-06-12 | 2d | Projetista Metálica | 32h | 32h | STEEL STRUCTURE | Sex 12/06/26 | Qui 11/06/26 | 2 dias | 13,4 |  |
| 926 | 1.9.5.4.2 | Avaliação do Cliente |  | 1d | 2026-05-14 A | 2026-05-14 A | 925 | 100% | 2026-06-15 | 2026-06-17 | 3d | Tecnored | 8h | 8h | STEEL STRUCTURE | Qua 17/06/26 | Seg 15/06/26 | 3 dias | 13,4 |  |
| 927 | 1.9.5.4.3 | Atendimento de Comentário |  | 1d | 2026-05-14 A | 2026-05-14 A | 926 | 100% | 2026-06-18 | 2026-06-18 | 1d | Projetista Metálica | 8h | 8h | STEEL STRUCTURE | Qui 18/06/26 | Qui 18/06/26 | 1 dia | 13,4 |  |
| 928 | 1.9.5.4.4 | Aprovação |  | 1d | 2026-05-14 A | 2026-05-14 A | 927 | 100% | 2026-06-19 | 2026-06-19 | 1d | Tecnored | 8h | 8h | STEEL STRUCTURE | Sex 19/06/26 | Sex 19/06/26 | 1 dia | 13,4 | 0,5 |
| 929 | 1.9.5.5 | **AG-J0006-0402-GE-S-00003** |  | 4d | 2026-05-11 A | 2026-05-14 A |  | 100% | 2026-06-11 | 2026-06-19 | 7d |  | 56h | 56h | STEEL STRUCTURE | Sex 19/06/26 | Qui 11/06/26 | 7 dias |  |  |
| 930 | 1.9.5.5.1 | Emissão inicial |  | 4d | 2026-05-11 A | 2026-05-14 A | 920FF | 100% | 2026-06-11 | 2026-06-12 | 2d | Projetista Metálica | 32h | 32h | STEEL STRUCTURE | Sex 12/06/26 | Qui 11/06/26 | 2 dias | 13,4 |  |
| 931 | 1.9.5.5.2 | Avaliação do Cliente |  | 1d | 2026-05-14 A | 2026-05-14 A | 930 | 100% | 2026-06-15 | 2026-06-17 | 3d | Tecnored | 8h | 8h | STEEL STRUCTURE | Qua 17/06/26 | Seg 15/06/26 | 3 dias | 13,4 |  |
| 932 | 1.9.5.5.3 | Atendimento de Comentário |  | 1d | 2026-05-14 A | 2026-05-14 A | 931 | 100% | 2026-06-18 | 2026-06-18 | 1d | Projetista Metálica | 8h | 8h | STEEL STRUCTURE | Qui 18/06/26 | Qui 18/06/26 | 1 dia | 13,4 |  |
| 933 | 1.9.5.5.4 | Aprovação |  | 1d | 2026-05-14 A | 2026-05-14 A | 932 | 100% | 2026-06-19 | 2026-06-19 | 1d | Tecnored | 8h | 8h | STEEL STRUCTURE | Sex 19/06/26 | Sex 19/06/26 | 1 dia | 13,4 | 0,5 |
| 934 | 1.9.5.6 | **AG-J0006-0402-GE-S-00004** |  | 4d | 2026-05-11 A | 2026-05-14 A |  | 100% | 2026-06-11 | 2026-06-19 | 7d |  | 56h | 56h | STEEL STRUCTURE | Sex 19/06/26 | Qui 11/06/26 | 7 dias |  |  |
| 935 | 1.9.5.6.1 | Emissão inicial |  | 4d | 2026-05-11 A | 2026-05-14 A | 920FF | 100% | 2026-06-11 | 2026-06-12 | 2d | Projetista Metálica | 32h | 32h | STEEL STRUCTURE | Sex 12/06/26 | Qui 11/06/26 | 2 dias | 13,4 |  |
| 936 | 1.9.5.6.2 | Avaliação do Cliente |  | 1d | 2026-05-14 A | 2026-05-14 A | 935 | 100% | 2026-06-15 | 2026-06-17 | 3d | Tecnored | 8h | 8h | STEEL STRUCTURE | Qua 17/06/26 | Seg 15/06/26 | 3 dias | 13,4 |  |
| 937 | 1.9.5.6.3 | Atendimento de Comentário |  | 1d | 2026-05-14 A | 2026-05-14 A | 936 | 100% | 2026-06-18 | 2026-06-18 | 1d | Projetista Metálica | 8h | 8h | STEEL STRUCTURE | Qui 18/06/26 | Qui 18/06/26 | 1 dia | 13,4 |  |
| 938 | 1.9.5.6.4 | Aprovação |  | 1d | 2026-05-14 A | 2026-05-14 A | 937 | 100% | 2026-06-19 | 2026-06-19 | 1d | Tecnored | 8h | 8h | STEEL STRUCTURE | Sex 19/06/26 | Sex 19/06/26 | 1 dia | 13,4 | 0,5 |
| 939 | 1.9.5.7 | **AG-J0006-0402-GE-S-00005** |  | 4d | 2026-05-11 A | 2026-05-14 A |  | 100% | 2026-06-11 | 2026-06-19 | 7d |  | 56h | 56h | STEEL STRUCTURE | Sex 19/06/26 | Qui 11/06/26 | 7 dias |  |  |
| 940 | 1.9.5.7.1 | Emissão inicial |  | 4d | 2026-05-11 A | 2026-05-14 A | 920FF | 100% | 2026-06-11 | 2026-06-12 | 2d | Projetista Metálica | 32h | 32h | STEEL STRUCTURE | Sex 12/06/26 | Qui 11/06/26 | 2 dias | 13,4 |  |
| 941 | 1.9.5.7.2 | Avaliação do Cliente |  | 1d | 2026-05-14 A | 2026-05-14 A | 940 | 100% | 2026-06-15 | 2026-06-17 | 3d | Tecnored | 8h | 8h | STEEL STRUCTURE | Qua 17/06/26 | Seg 15/06/26 | 3 dias | 13,4 |  |
| 942 | 1.9.5.7.3 | Atendimento de Comentário |  | 1d | 2026-05-14 A | 2026-05-14 A | 941 | 100% | 2026-06-18 | 2026-06-18 | 1d | Projetista Metálica | 8h | 8h | STEEL STRUCTURE | Qui 18/06/26 | Qui 18/06/26 | 1 dia | 13,4 |  |
| 943 | 1.9.5.7.4 | Aprovação |  | 1d | 2026-05-14 A | 2026-05-14 A | 942 | 100% | 2026-06-19 | 2026-06-19 | 1d | Tecnored | 8h | 8h | STEEL STRUCTURE | Sex 19/06/26 | Sex 19/06/26 | 1 dia | 13,4 | 0,5 |

| ID | WBS | Task | Duration | Start | Finish | Predecessors | Complete | Remaining | Baseline start | Baseline finish | Baseline duration | Total slack | Free slack | Resources | Work | Actual work | Disciplina | Text2 | Início_LB_R0 | Duração_LB_R0 | Duração Média (Tenax) | Duração média da atividade (Tecnored) |
| --- | --- | --- | --- | --- | --- | --- | --- | --- | --- | --- | --- | --- | --- | --- | --- | --- | --- | --- | --- | --- | --- | --- |
| 944 | 1.9.5.8 | **AG-J0006-0402-GE-S-00006** | 4d | 2026-05-11 A | 2026-05-14 A |  | 100% |  | 2026-06-11 | 2026-06-19 | 7d |  |  |  | 56h | 56h | STEEL STRUCTURE | Sex 19/06/26 | Qui 11/06/26 | 7 dias |  |  |
| 945 | 1.9.5.8.1 | Emissão inicial | 4d | 2026-05-11 A | 2026-05-14 A | 920FF | 100% |  | 2026-06-11 | 2026-06-12 | 2d |  |  | Projetista Metálica | 32h | 32h | STEEL STRUCTURE | Sex 12/06/26 | Qui 11/06/26 | 2 dias | 13,4 |  |
| 946 | 1.9.5.8.2 | Avaliação do Cliente | 1d | 2026-05-14 A | 2026-05-14 A | 945 | 100% |  | 2026-06-15 | 2026-06-17 | 3d |  |  | Tecnored | 8h | 8h | STEEL STRUCTURE | Qua 17/06/26 | Seg 15/06/26 | 3 dias | 13,4 |  |
| 947 | 1.9.5.8.3 | Atendimento de Comentário | 1d | 2026-05-14 A | 2026-05-14 A | 946 | 100% |  | 2026-06-18 | 2026-06-18 | 1d |  |  | Projetista Metálica | 8h | 8h | STEEL STRUCTURE | Qui 18/06/26 | Qui 18/06/26 | 1 dia | 13,4 |  |
| 948 | 1.9.5.8.4 | Aprovação | 1d | 2026-05-14 A | 2026-05-14 A | 947 | 100% |  | 2026-06-19 | 2026-06-19 | 1d |  |  | Tecnored | 8h | 8h | STEEL STRUCTURE | Sex 19/06/26 | Sex 19/06/26 | 1 dia | 13,4 | 0,5 |
| 949 | 1.9.5.9 | **AG-J0006-0402-GE-S-00007** | 4d | 2026-05-11 A | 2026-05-14 A |  | 100% |  | 2026-06-11 | 2026-06-19 | 7d |  |  |  | 56h | 56h | STEEL STRUCTURE | Sex 19/06/26 | Qui 11/06/26 | 7 dias |  |  |
| 950 | 1.9.5.9.1 | Emissão inicial | 4d | 2026-05-11 A | 2026-05-14 A | 920FF | 100% |  | 2026-06-11 | 2026-06-12 | 2d |  |  | Projetista Metálica | 32h | 32h | STEEL STRUCTURE | Sex 12/06/26 | Qui 11/06/26 | 2 dias | 13,4 |  |
| 951 | 1.9.5.9.2 | Avaliação do Cliente | 1d | 2026-05-14 A | 2026-05-14 A | 950 | 100% |  | 2026-06-15 | 2026-06-17 | 3d |  |  | Tecnored | 8h | 8h | STEEL STRUCTURE | Qua 17/06/26 | Seg 15/06/26 | 3 dias | 13,4 |  |
| 952 | 1.9.5.9.3 | Atendimento de Comentário | 1d | 2026-05-14 A | 2026-05-14 A | 951 | 100% |  | 2026-06-18 | 2026-06-18 | 1d |  |  | Projetista Metálica | 8h | 8h | STEEL STRUCTURE | Qui 18/06/26 | Qui 18/06/26 | 1 dia | 13,4 |  |
| 953 | 1.9.5.9.4 | Aprovação | 1d | 2026-05-14 A | 2026-05-14 A | 952 | 100% |  | 2026-06-19 | 2026-06-19 | 1d |  |  | Tecnored | 8h | 8h | STEEL STRUCTURE | Sex 19/06/26 | Sex 19/06/26 | 1 dia | 13,4 | 0,5 |
| 954 | 1.9.5.10 | **PL-J0006-0402-GE-S-00001** | 4d | 2026-05-11 A | 2026-05-14 A |  | 100% |  | 2026-06-11 | 2026-06-19 | 7d |  |  |  | 56h | 56h | STEEL STRUCTURE | Sex 19/06/26 | Qui 11/06/26 | 7 dias |  |  |
| 955 | 1.9.5.10.1 | Emissão inicial | 4d | 2026-05-11 A | 2026-05-14 A | 920FF | 100% |  | 2026-06-11 | 2026-06-12 | 2d |  |  | Projetista Metálica | 32h | 32h | STEEL STRUCTURE | Sex 12/06/26 | Qui 11/06/26 | 2 dias | 13,4 |  |
| 956 | 1.9.5.10.2 | Avaliação do Cliente | 1d | 2026-05-14 A | 2026-05-14 A | 955 | 100% |  | 2026-06-15 | 2026-06-17 | 3d |  |  | Tecnored | 8h | 8h | STEEL STRUCTURE | Qua 17/06/26 | Seg 15/06/26 | 3 dias | 13,4 |  |
| 957 | 1.9.5.10.3 | Atendimento de Comentário | 1d | 2026-05-14 A | 2026-05-14 A | 956 | 100% |  | 2026-06-18 | 2026-06-18 | 1d |  |  | Projetista Metálica | 8h | 8h | STEEL STRUCTURE | Qui 18/06/26 | Qui 18/06/26 | 1 dia | 13,4 |  |
| 958 | 1.9.5.10.4 | Aprovação | 1d | 2026-05-14 A | 2026-05-14 A | 957 | 100% |  | 2026-06-19 | 2026-06-19 | 1d |  |  | Tecnored | 8h | 8h | STEEL STRUCTURE | Sex 19/06/26 | Sex 19/06/26 | 1 dia | 13,4 | 0,5 |
| 959 | 1.9.6 | **MODULO 0500** | 13d | 2026-06-02 A | 2026-06-22 |  | 24% | 9.83d | 2026-05-28 | 2026-06-26 | 20d | 4d |  |  | 336h | 82h | STEEL STRUCTURE | Sex 26/06/26 | Qui 28/05/26 | 20 dias |  |  |
| 960 | 1.9.6.1 | **ML-J0006-0500-GE-S-00001** | 10d | 2026-06-02 A | 2026-06-17 |  | 93% | 0.75d | 2026-05-28 | 2026-06-15 | 11d | 7d |  |  | 80h | 74h | STEEL STRUCTURE | Seg 15/06/26 | Qui 28/05/26 | 11 dias |  |  |
| 961 | 1.9.6.1.1 | Emissão inicial | 7d | 2026-06-02 A | 2026-06-12 A | 318, 828FS-5d | 100% |  | 2026-05-28 | 2026-06-08 | 6d |  |  | Projetista Metálica | 56h | 56h | STEEL STRUCTURE | Seg 08/06/26 | Qui 28/05/26 | 6 dias | 13,4 | 40 |
| 962 | 1.9.6.1.2 | Avaliação do Cliente | 1d | 2026-06-12 A | 2026-06-12 A | 961 | 100% |  | 2026-06-09 | 2026-06-11 | 3d |  |  | Tecnored | 8h | 8h | STEEL STRUCTURE | Qui 11/06/26 | Ter 09/06/26 | 3 dias | 13,4 |  |
| 963 | 1.9.6.1.3 | Atendimento de Comentário | 1d | 2026-06-16 A | 2026-06-16 | 962 | 75% | 0.25d | 2026-06-12 | 2026-06-12 | 1d | 0.5d | 0d | Projetista Metálica | 8h | 6h | STEEL STRUCTURE | Sex 12/06/26 | Sex 12/06/26 | 1 dia | 13,4 |  |
| 964 | 1.9.6.1.4 | Aprovação | 1d | 2026-06-17 A | 2026-06-17 | 963 | 50% | 0.5d | 2026-06-15 | 2026-06-15 | 1d | 7d |  | Tecnored | 8h | 4h | STEEL STRUCTURE | Seg 15/06/26 | Seg 15/06/26 | 1 dia | 13,4 | 0,5 |
| 965 | 1.9.6.2 | **MC-J0006-0500-GE-S-00001** | 4d | 2026-06-12 A | 2026-06-17 |  | 25% | 3d | 2026-06-09 | 2026-06-19 | 9d | 7d |  |  | 32h | 8h | STEEL STRUCTURE | Sex 19/06/26 | Ter 09/06/26 | 9 dias |  |  |
| 966 | 1.9.6.2.1 | Emissão inicial | 1d | 2026-06-12 A | 2026-06-12 A | 961 | 100% |  | 2026-06-09 | 2026-06-12 | 4d |  |  | Eng. Calculista | 8h | 8h | STEEL STRUCTURE | Sex 12/06/26 | Ter 09/06/26 | 4 dias | 13,4 | 20 |
| 967 | 1.9.6.2.2 | Avaliação do Cliente | 1d | 2026-06-15 | 2026-06-15 | 966 |  |  | 2026-06-15 | 2026-06-17 | 3d | 7d | 0d | Tecnored | 8h |  | STEEL STRUCTURE | Qua 17/06/26 | Seg 15/06/26 | 3 dias | 13,4 |  |
| 968 | 1.9.6.2.3 | Atendimento de Comentário | 1d | 2026-06-16 | 2026-06-16 | 967 |  |  | 2026-06-18 | 2026-06-18 | 1d | 7d | 0d | Eng. Calculista | 8h |  | STEEL STRUCTURE | Qui 18/06/26 | Qui 18/06/26 | 1 dia | 13,4 |  |
| 969 | 1.9.6.2.4 | Aprovação | 1d | 2026-06-17 | 2026-06-17 | 968 |  |  | 2026-06-19 | 2026-06-19 | 1d | 7d |  | Tecnored | 8h |  | STEEL STRUCTURE | Sex 19/06/26 | Sex 19/06/26 | 1 dia | 13,4 | 0,5 |

| ID | WBS | Task | Type | Duration | Start | Finish | Predecessors | Complete | Baseline start | Baseline finish | Baseline duration | Total slack | Free slack | Constraint | Resources | Work | Actual work | Disciplina | Text2 | Início_LB_R0 | Duração_LB_R0 | Duração Média (Tenax) | Duração média da atividade (Tecnored) |
| --- | --- | --- | --- | --- | --- | --- | --- | --- | --- | --- | --- | --- | --- | --- | --- | --- | --- | --- | --- | --- | --- | --- | --- |
| 970 | 1.9.6.3 | **AG-J0006-0500-GE-S-00001** |  | 7d | 2026-06-12 | 2026-06-22 |  |  | 2026-06-16 | 2026-06-26 | 9d | 4d |  |  |  | 56h |  | STEEL STRUCTURE | Sex 26/06/26 | Ter 16/06/26 | 9 dias |  |  |
| 971 | 1.9.6.3.1 | Emissão inicial |  | 4d | 2026-06-12 | 2026-06-17 |  |  | 2026-06-16 | 2026-06-19 | 4d | 4d | 0d | start no earlier than 2026-06-12 | Projetista Metálica | 32h |  | STEEL STRUCTURE | Sex 19/06/26 | Ter 16/06/26 | 4 dias | 13,4 |  |
| 972 | 1.9.6.3.2 | Avaliação do Cliente |  | 1d | 2026-06-18 | 2026-06-18 | 971 |  | 2026-06-22 | 2026-06-24 | 3d | 4d | 0d |  | Tecnored | 8h |  | STEEL STRUCTURE | Qua 24/06/26 | Seg 22/06/26 | 3 dias | 13,4 |  |
| 973 | 1.9.6.3.3 | Atendimento de Comentário |  | 1d | 2026-06-19 | 2026-06-19 | 972 |  | 2026-06-25 | 2026-06-25 | 1d | 4d | 0d |  | Projetista Metálica | 8h |  | STEEL STRUCTURE | Qui 25/06/26 | Qui 25/06/26 | 1 dia | 13,4 |  |
| 974 | 1.9.6.3.4 | Aprovação |  | 1d | 2026-06-22 | 2026-06-22 | 973 |  | 2026-06-26 | 2026-06-26 | 1d | 4d |  |  | Tecnored | 8h |  | STEEL STRUCTURE | Sex 26/06/26 | Sex 26/06/26 | 1 dia | 13,4 | 0,5 |
| 975 | 1.9.6.4 | **AG-J0006-0500-GE-S-00002** |  | 7d | 2026-06-12 | 2026-06-22 |  |  | 2026-06-16 | 2026-06-26 | 9d | 4d |  |  |  | 56h |  | STEEL STRUCTURE | Sex 26/06/26 | Ter 16/06/26 | 9 dias |  |  |
| 976 | 1.9.6.4.1 | Emissão inicial |  | 4d | 2026-06-12 | 2026-06-17 | 971FF |  | 2026-06-16 | 2026-06-19 | 4d | 4d | 0d |  | Projetista Metálica | 32h |  | STEEL STRUCTURE | Sex 19/06/26 | Ter 16/06/26 | 4 dias | 13,4 |  |
| 977 | 1.9.6.4.2 | Avaliação do Cliente |  | 1d | 2026-06-18 | 2026-06-18 | 976 |  | 2026-06-22 | 2026-06-24 | 3d | 4d | 0d |  | Tecnored | 8h |  | STEEL STRUCTURE | Qua 24/06/26 | Seg 22/06/26 | 3 dias | 13,4 |  |
| 978 | 1.9.6.4.3 | Atendimento de Comentário |  | 1d | 2026-06-19 | 2026-06-19 | 977 |  | 2026-06-25 | 2026-06-25 | 1d | 4d | 0d |  | Projetista Metálica | 8h |  | STEEL STRUCTURE | Qui 25/06/26 | Qui 25/06/26 | 1 dia | 13,4 |  |
| 979 | 1.9.6.4.4 | Aprovação |  | 1d | 2026-06-22 | 2026-06-22 | 978 |  | 2026-06-26 | 2026-06-26 | 1d | 4d |  |  | Tecnored | 8h |  | STEEL STRUCTURE | Sex 26/06/26 | Sex 26/06/26 | 1 dia | 13,4 | 0,5 |
| 980 | 1.9.6.5 | **AG-J0006-0500-GE-S-00003** |  | 7d | 2026-06-12 | 2026-06-22 |  |  | 2026-06-16 | 2026-06-26 | 9d | 4d |  |  |  | 56h |  | STEEL STRUCTURE | Sex 26/06/26 | Ter 16/06/26 | 9 dias |  |  |
| 981 | 1.9.6.5.1 | Emissão inicial |  | 4d | 2026-06-12 | 2026-06-17 | 971FF |  | 2026-06-16 | 2026-06-19 | 4d | 4d | 0d |  | Projetista Metálica | 32h |  | STEEL STRUCTURE | Sex 19/06/26 | Ter 16/06/26 | 4 dias | 13,4 |  |
| 982 | 1.9.6.5.2 | Avaliação do Cliente |  | 1d | 2026-06-18 | 2026-06-18 | 981 |  | 2026-06-22 | 2026-06-24 | 3d | 4d | 0d |  | Tecnored | 8h |  | STEEL STRUCTURE | Qua 24/06/26 | Seg 22/06/26 | 3 dias | 13,4 |  |
| 983 | 1.9.6.5.3 | Atendimento de Comentário |  | 1d | 2026-06-19 | 2026-06-19 | 982 |  | 2026-06-25 | 2026-06-25 | 1d | 4d | 0d |  | Projetista Metálica | 8h |  | STEEL STRUCTURE | Qui 25/06/26 | Qui 25/06/26 | 1 dia | 13,4 |  |
| 984 | 1.9.6.5.4 | Aprovação |  | 1d | 2026-06-22 | 2026-06-22 | 983 |  | 2026-06-26 | 2026-06-26 | 1d | 4d |  |  | Tecnored | 8h |  | STEEL STRUCTURE | Sex 26/06/26 | Sex 26/06/26 | 1 dia | 13,4 | 0,5 |
| 985 | 1.9.6.6 | **AG-J0006-0500-GE-S-00004** |  | 7d | 2026-06-12 | 2026-06-22 |  |  | 2026-06-16 | 2026-06-26 | 9d | 4d |  |  |  | 56h |  | STEEL STRUCTURE | Sex 26/06/26 | Ter 16/06/26 | 9 dias |  |  |
| 986 | 1.9.6.6.1 | Emissão inicial |  | 4d | 2026-06-12 | 2026-06-17 | 971FF |  | 2026-06-16 | 2026-06-19 | 4d | 4d | 0d |  | Projetista Metálica | 32h |  | STEEL STRUCTURE | Sex 19/06/26 | Ter 16/06/26 | 4 dias | 13,4 |  |
| 987 | 1.9.6.6.2 | Avaliação do Cliente |  | 1d | 2026-06-18 | 2026-06-18 | 986 |  | 2026-06-22 | 2026-06-24 | 3d | 4d | 0d |  | Tecnored | 8h |  | STEEL STRUCTURE | Qua 24/06/26 | Seg 22/06/26 | 3 dias | 13,4 |  |
| 988 | 1.9.6.6.3 | Atendimento de Comentário |  | 1d | 2026-06-19 | 2026-06-19 | 987 |  | 2026-06-25 | 2026-06-25 | 1d | 4d | 0d |  | Projetista Metálica | 8h |  | STEEL STRUCTURE | Qui 25/06/26 | Qui 25/06/26 | 1 dia | 13,4 |  |
| 989 | 1.9.6.6.4 | Aprovação |  | 1d | 2026-06-22 | 2026-06-22 | 988 |  | 2026-06-26 | 2026-06-26 | 1d | 4d |  |  | Tecnored | 8h |  | STEEL STRUCTURE | Sex 26/06/26 | Sex 26/06/26 | 1 dia | 13,4 | 0,5 |
| 990 | 1.9.7 | **MODULO 0600** |  | 13d | 2026-05-14 A | 2026-06-01 A |  | 100% | 2026-05-12 | 2026-06-26 | 32d |  |  |  |  | 404h | 404h | STEEL STRUCTURE | Sex 26/06/26 | Ter 12/05/26 | 32 dias |  |  |
| 991 | 1.9.7.1 | **ML-J0006-0600-GE-S-00001** |  | 8d | 2026-05-14 A | 2026-05-25 A |  | 100% | 2026-05-12 | 2026-05-28 | 13d |  |  |  |  | 64h | 64h | STEEL STRUCTURE | Qui 28/05/26 | Ter 12/05/26 | 13 dias |  |  |
| 992 | 1.9.7.1.1 | Emissão inicial |  | 8d | 2026-05-14 A | 2026-05-25 A | 344 | 100% | 2026-05-12 | 2026-05-25 | 10d |  |  |  | Projetista Metálica | 64h | 64h | STEEL STRUCTURE | Seg 25/05/26 | Ter 12/05/26 | 10 dias | 13,4 | 40 |
| 993 | 1.9.7.1.2 | Avaliação do Cliente | milestone | 0d | 2026-05-25 A | 2026-05-25 A | 992 | 100% | 2026-05-26 | 2026-05-26 | 1d |  |  |  | Tecnored |  |  | STEEL STRUCTURE | Ter 26/05/26 | Ter 26/05/26 | 1 dia | 13,4 |  |
| 994 | 1.9.7.1.3 | Atendimento de Comentário | milestone | 0d | 2026-05-25 A | 2026-05-25 A | 993 | 100% | 2026-05-27 | 2026-05-27 | 1d |  |  |  | Projetista Metálica |  |  | STEEL STRUCTURE | Qua 27/05/26 | Qua 27/05/26 | 1 dia | 13,4 |  |
| 995 | 1.9.7.1.4 | Aprovação | milestone | 0d | 2026-05-25 A | 2026-05-25 A | 994 | 100% | 2026-05-28 | 2026-05-28 | 1d |  |  |  | Tecnored |  |  | STEEL STRUCTURE | Qui 28/05/26 | Qui 28/05/26 | 1 dia | 13,4 | 0,5 |

| ID | WBS | Task | Type | Duration | Start | Finish | Predecessors | Complete | Baseline start | Baseline finish | Baseline duration | Resources | Work | Actual work | Disciplina | Text2 | Início_LB_R0 | Duração_LB_R0 | Duração média da atividade (Tecnored) | Duração Média (Tenax) |
| --- | --- | --- | --- | --- | --- | --- | --- | --- | --- | --- | --- | --- | --- | --- | --- | --- | --- | --- | --- | --- |
| 996 | 1.9.7.2 | **MC-J0006-0600-GE-S-00001** |  | 8d | 2026-05-15 A | 2026-05-26 A |  | 100% | 2026-06-18 | 2026-06-26 | 7d |  | 44h | 44h | STEEL STRUCTURE | Sex 26/06/26 | Qui 18/06/26 | 7 dias |  |  |
| 997 | 1.9.7.2.1 | Emissão inicial |  | 0.5d | 2026-05-15 A | 2026-05-15 A | 992, 915 | 100% | 2026-06-18 | 2026-06-19 | 2d | Eng. Calculista | 4h | 4h | STEEL STRUCTURE | Sex 19/06/26 | Qui 18/06/26 | 2 dias | 16 | 13,4 |
| 998 | 1.9.7.2.2 | Avaliação do Cliente |  | 3d | 2026-05-19 A | 2026-05-21 A | 997 | 100% | 2026-06-22 | 2026-06-24 | 3d | Tecnored | 24h | 24h | STEEL STRUCTURE | Qua 24/06/26 | Seg 22/06/26 | 3 dias |  | 13,4 |
| 999 | 1.9.7.2.3 | Atendimento de Comentário |  | 2d | 2026-05-25 A | 2026-05-26 A | 998 | 100% | 2026-06-25 | 2026-06-25 | 1d | Eng. Calculista | 16h | 16h | STEEL STRUCTURE | Qui 25/06/26 | Qui 25/06/26 | 1 dia |  | 13,4 |
| 1000 | 1.9.7.2.4 | Aprovação | milestone | 0d | 2026-05-26 A | 2026-05-26 A | 999 | 100% | 2026-06-26 | 2026-06-26 | 1d | Tecnored |  |  | STEEL STRUCTURE | Sex 26/06/26 | Sex 26/06/26 | 1 dia | 0,5 | 13,4 |
| 1001 | 1.9.7.3 | **AG-J0006-0602-GE-S-00001** |  | 5d | 2026-05-26 A | 2026-06-01 A |  | 100% | 2026-05-29 | 2026-06-10 | 7d |  | 40h | 40h | STEEL STRUCTURE | Qua 10/06/26 | Sex 29/05/26 | 7 dias |  |  |
| 1002 | 1.9.7.3.1 | Emissão inicial |  | 2d | 2026-05-26 A | 2026-05-27 A | 995 | 100% | 2026-05-29 | 2026-06-01 | 2d | Projetista Metálica | 16h | 16h | STEEL STRUCTURE | Seg 01/06/26 | Sex 29/05/26 | 2 dias |  | 13,4 |
| 1003 | 1.9.7.3.2 | Avaliação do Cliente |  | 1d | 2026-05-27 A | 2026-05-28 A | 1002 | 100% | 2026-06-02 | 2026-06-08 | 3d | Tecnored | 8h | 8h | STEEL STRUCTURE | Seg 08/06/26 | Ter 02/06/26 | 3 dias |  | 13,4 |
| 1004 | 1.9.7.3.3 | Atendimento de Comentário |  | 1d | 2026-05-28 A | 2026-05-29 A | 1003 | 100% | 2026-06-09 | 2026-06-09 | 1d | Projetista Metálica | 8h | 8h | STEEL STRUCTURE | Ter 09/06/26 | Ter 09/06/26 | 1 dia |  | 13,4 |
| 1005 | 1.9.7.3.4 | Aprovação |  | 1d | 2026-05-29 A | 2026-06-01 A | 1004 | 100% | 2026-06-10 | 2026-06-10 | 1d | Tecnored | 8h | 8h | STEEL STRUCTURE | Qua 10/06/26 | Qua 10/06/26 | 1 dia | 0,5 | 13,4 |
| 1006 | 1.9.7.4 | **AG-J0006-0602-GE-S-00002** |  | 5d | 2026-05-26 A | 2026-06-01 A |  | 100% | 2026-05-29 | 2026-06-10 | 7d |  | 64h | 64h | STEEL STRUCTURE | Qua 10/06/26 | Sex 29/05/26 | 7 dias |  |  |
| 1007 | 1.9.7.4.1 | Emissão inicial |  | 2d | 2026-05-26 A | 2026-05-27 A | 1002FF | 100% | 2026-05-29 | 2026-06-01 | 2d | Projetista Metálica | 16h | 16h | STEEL STRUCTURE | Seg 01/06/26 | Sex 29/05/26 | 2 dias |  | 13,4 |
| 1008 | 1.9.7.4.2 | Avaliação do Cliente |  | 2d | 2026-05-27 A | 2026-05-28 A | 1007 | 100% | 2026-06-02 | 2026-06-08 | 3d | Tecnored | 16h | 16h | STEEL STRUCTURE | Seg 08/06/26 | Ter 02/06/26 | 3 dias |  | 13,4 |
| 1009 | 1.9.7.4.3 | Atendimento de Comentário |  | 2d | 2026-05-28 A | 2026-05-29 A | 1008 | 100% | 2026-06-09 | 2026-06-09 | 1d | Projetista Metálica | 16h | 16h | STEEL STRUCTURE | Ter 09/06/26 | Ter 09/06/26 | 1 dia |  | 13,4 |
| 1010 | 1.9.7.4.4 | Aprovação |  | 2d | 2026-05-29 A | 2026-06-01 A | 1009 | 100% | 2026-06-10 | 2026-06-10 | 1d | Tecnored | 16h | 16h | STEEL STRUCTURE | Qua 10/06/26 | Qua 10/06/26 | 1 dia | 0,5 | 13,4 |
| 1011 | 1.9.7.5 | **AG-J0006-0602-GE-S-00003** |  | 5d | 2026-05-26 A | 2026-06-01 A |  | 100% | 2026-05-29 | 2026-06-10 | 7d |  | 64h | 64h | STEEL STRUCTURE | Qua 10/06/26 | Sex 29/05/26 | 7 dias |  |  |
| 1012 | 1.9.7.5.1 | Emissão inicial |  | 2d | 2026-05-26 A | 2026-05-27 A | 1002FF | 100% | 2026-05-29 | 2026-06-01 | 2d | Projetista Metálica | 16h | 16h | STEEL STRUCTURE | Seg 01/06/26 | Sex 29/05/26 | 2 dias | 16 | 13,4 |
| 1013 | 1.9.7.5.2 | Avaliação do Cliente |  | 2d | 2026-05-27 A | 2026-05-28 A | 1012 | 100% | 2026-06-02 | 2026-06-08 | 3d | Tecnored | 16h | 16h | STEEL STRUCTURE | Seg 08/06/26 | Ter 02/06/26 | 3 dias |  | 13,4 |
| 1014 | 1.9.7.5.3 | Atendimento de Comentário |  | 2d | 2026-05-28 A | 2026-05-29 A | 1013 | 100% | 2026-06-09 | 2026-06-09 | 1d | Projetista Metálica | 16h | 16h | STEEL STRUCTURE | Ter 09/06/26 | Ter 09/06/26 | 1 dia |  | 13,4 |
| 1015 | 1.9.7.5.4 | Aprovação |  | 2d | 2026-05-29 A | 2026-06-01 A | 1014 | 100% | 2026-06-10 | 2026-06-10 | 1d | Tecnored | 16h | 16h | STEEL STRUCTURE | Qua 10/06/26 | Qua 10/06/26 | 1 dia | 0,5 | 13,4 |
| 1016 | 1.9.7.6 | **AG-J0006-0602-GE-S-00004** |  | 5d | 2026-05-26 A | 2026-06-01 A |  | 100% | 2026-05-29 | 2026-06-10 | 7d |  | 64h | 64h | STEEL STRUCTURE | Qua 10/06/26 | Sex 29/05/26 | 7 dias |  |  |
| 1017 | 1.9.7.6.1 | Emissão inicial |  | 2d | 2026-05-26 A | 2026-05-27 A | 1002FF | 100% | 2026-05-29 | 2026-06-01 | 2d | Projetista Metálica | 16h | 16h | STEEL STRUCTURE | Seg 01/06/26 | Sex 29/05/26 | 2 dias | 16 | 13,4 |
| 1018 | 1.9.7.6.2 | Avaliação do Cliente |  | 2d | 2026-05-27 A | 2026-05-28 A | 1017 | 100% | 2026-06-02 | 2026-06-08 | 3d | Tecnored | 16h | 16h | STEEL STRUCTURE | Seg 08/06/26 | Ter 02/06/26 | 3 dias |  | 13,4 |
| 1019 | 1.9.7.6.3 | Atendimento de Comentário |  | 2d | 2026-05-28 A | 2026-05-29 A | 1018 | 100% | 2026-06-09 | 2026-06-09 | 1d | Projetista Metálica | 16h | 16h | STEEL STRUCTURE | Ter 09/06/26 | Ter 09/06/26 | 1 dia |  | 13,4 |
| 1020 | 1.9.7.6.4 | Aprovação |  | 2d | 2026-05-29 A | 2026-06-01 A | 1019 | 100% | 2026-06-10 | 2026-06-10 | 1d | Tecnored | 16h | 16h | STEEL STRUCTURE | Qua 10/06/26 | Qua 10/06/26 | 1 dia | 0,5 | 13,4 |

| ID | WBS | Task | Duration | Start | Finish | Predecessors | Complete | Remaining | Baseline start | Baseline finish | Baseline duration | Total slack | Free slack | Resources | Work | Actual work | Disciplina | Text2 | Início_LB_R0 | Duração_LB_R0 | Duração média da atividade (Tecnored) | Duração Média (Tenax) |
| --- | --- | --- | --- | --- | --- | --- | --- | --- | --- | --- | --- | --- | --- | --- | --- | --- | --- | --- | --- | --- | --- | --- |
| 1021 | 1.9.7.7 | **PL-J0006-0602-GE-S-00001** | 5d | 2026-05-26 A | 2026-06-01 A |  | 100% |  | 2026-05-29 | 2026-06-10 | 7d |  |  |  | 64h | 64h | STEEL STRUCTURE | Qua 10/06/26 | Sex 29/05/26 | 7 dias |  |  |
| 1022 | 1.9.7.7.1 | Emissão inicial | 2d | 2026-05-26 A | 2026-05-27 A | 1002FF | 100% |  | 2026-05-29 | 2026-06-01 | 2d |  |  | Projetista Metálica | 16h | 16h | STEEL STRUCTURE | Seg 01/06/26 | Sex 29/05/26 | 2 dias | 16 | 13,4 |
| 1023 | 1.9.7.7.2 | Avaliação do Cliente | 2d | 2026-05-27 A | 2026-05-28 A | 1022 | 100% |  | 2026-06-02 | 2026-06-08 | 3d |  |  | Tecnored | 16h | 16h | STEEL STRUCTURE | Seg 08/06/26 | Ter 02/06/26 | 3 dias |  | 13,4 |
| 1024 | 1.9.7.7.3 | Atendimento de Comentário | 2d | 2026-05-28 A | 2026-05-29 A | 1023 | 100% |  | 2026-06-09 | 2026-06-09 | 1d |  |  | Projetista Metálica | 16h | 16h | STEEL STRUCTURE | Ter 09/06/26 | Ter 09/06/26 | 1 dia |  | 13,4 |
| 1025 | 1.9.7.7.4 | Aprovação | 2d | 2026-05-29 A | 2026-06-01 A | 1024 | 100% |  | 2026-06-10 | 2026-06-10 | 1d |  |  | Tecnored | 16h | 16h | STEEL STRUCTURE | Qua 10/06/26 | Qua 10/06/26 | 1 dia | 0,5 | 13,4 |
| 1026 | 1.9.8 | **MODULO 0700** | 7d | 2026-05-29 A | 2026-06-10 |  | 99% | 0.07d | 2026-05-21 | 2026-06-24 | 23d | 12d |  |  | 376h | 372h | STEEL STRUCTURE | Qua 24/06/26 | Qui 21/05/26 | 23 dias |  |  |
| 1027 | 1.9.8.1 | **ML-J0006-0700-GE-S-00001** | 4d | 2026-06-03 A | 2026-06-10 A |  | 100% |  | 2026-05-21 | 2026-06-12 | 15d |  |  |  | 56h | 56h | STEEL STRUCTURE | Sex 12/06/26 | Qui 21/05/26 | 15 dias |  |  |
| 1028 | 1.9.8.1.1 | Emissão inicial | 2d | 2026-06-03 A | 2026-06-08 A | 370FS+5ed | 100% |  | 2026-05-21 | 2026-06-03 | 10d |  |  | Projetista Metálica | 16h | 16h | STEEL STRUCTURE | Qua 03/06/26 | Qui 21/05/26 | 10 dias | 40 | 13,4 |
| 1029 | 1.9.8.1.2 | Avaliação do Cliente | 2d | 2026-06-08 A | 2026-06-09 A | 1028 | 100% |  | 2026-06-08 | 2026-06-10 | 3d |  |  | Tecnored | 16h | 16h | STEEL STRUCTURE | Qua 10/06/26 | Seg 08/06/26 | 3 dias |  | 13,4 |
| 1030 | 1.9.8.1.3 | Atendimento de Comentário | 1d | 2026-06-09 A | 2026-06-09 A | 1029 | 100% |  | 2026-06-11 | 2026-06-11 | 1d |  |  | Projetista Metálica | 8h | 8h | STEEL STRUCTURE | Qui 11/06/26 | Qui 11/06/26 | 1 dia |  | 13,4 |
| 1031 | 1.9.8.1.4 | Aprovação | 2d | 2026-06-09 A | 2026-06-10 A | 1030 | 100% |  | 2026-06-12 | 2026-06-12 | 1d |  |  | Tecnored | 16h | 16h | STEEL STRUCTURE | Sex 12/06/26 | Sex 12/06/26 | 1 dia | 0,5 | 13,4 |
| 1032 | 1.9.8.2 | **MC-J0006-0702-GE-S-00001** | 7d | 2026-05-29 A | 2026-06-10 |  | 93% | 0.5d | 2026-06-12 | 2026-06-23 | 8d | 12d |  |  | 56h | 52h | STEEL STRUCTURE | Ter 23/06/26 | Sex 12/06/26 | 8 dias |  |  |
| 1033 | 1.9.8.2.1 | Emissão inicial | 3d | 2026-05-29 A | 2026-06-02 A | 1028, 868 | 100% |  | 2026-06-12 | 2026-06-16 | 3d |  |  | Eng. Calculista | 24h | 24h | STEEL STRUCTURE | Ter 16/06/26 | Sex 12/06/26 | 3 dias | 24 | 13,4 |
| 1034 | 1.9.8.2.2 | Avaliação do Cliente | 2d | 2026-06-03 A | 2026-06-08 A | 1033 | 100% |  | 2026-06-17 | 2026-06-19 | 3d |  |  | Tecnored | 16h | 16h | STEEL STRUCTURE | Sex 19/06/26 | Qua 17/06/26 | 3 dias |  | 13,4 |
| 1035 | 1.9.8.2.3 | Atendimento de Comentário | 1d | 2026-06-09 A | 2026-06-09 | 1034 | 75% | 0.25d | 2026-06-22 | 2026-06-22 | 1d | 0.75d | 0d | Eng. Calculista | 8h | 6h | STEEL STRUCTURE | Seg 22/06/26 | Seg 22/06/26 | 1 dia |  | 13,4 |
| 1036 | 1.9.8.2.4 | Aprovação | 1d | 2026-06-09 A | 2026-06-10 | 1035 | 75% | 0.25d | 2026-06-23 | 2026-06-23 | 1d | 12d |  | Tecnored | 8h | 6h | STEEL STRUCTURE | Ter 23/06/26 | Ter 23/06/26 | 1 dia | 0,5 | 13,4 |
| 1037 | 1.9.8.3 | **AG-J0006-0702-GE-S-00001** | 4d | 2026-06-03 A | 2026-06-10 A |  | 100% |  | 2026-06-15 | 2026-06-24 | 8d |  |  |  | 40h | 40h | STEEL STRUCTURE | Qua 24/06/26 | Seg 15/06/26 | 8 dias |  |  |
| 1038 | 1.9.8.3.1 | Emissão inicial | 1d | 2026-06-03 A | 2026-06-08 A | 1031 | 100% |  | 2026-06-15 | 2026-06-17 | 3d |  |  | Projetista Metálica | 8h | 8h | STEEL STRUCTURE | Qua 17/06/26 | Seg 15/06/26 | 3 dias |  | 13,4 |
| 1039 | 1.9.8.3.2 | Avaliação do Cliente | 2d | 2026-06-08 A | 2026-06-09 A | 1038 | 100% |  | 2026-06-18 | 2026-06-22 | 3d |  |  | Tecnored | 16h | 16h | STEEL STRUCTURE | Seg 22/06/26 | Qui 18/06/26 | 3 dias |  | 13,4 |
| 1040 | 1.9.8.3.3 | Atendimento de Comentário | 1d | 2026-06-09 A | 2026-06-09 A | 1039 | 100% |  | 2026-06-23 | 2026-06-23 | 1d |  |  | Projetista Metálica | 8h | 8h | STEEL STRUCTURE | Ter 23/06/26 | Ter 23/06/26 | 1 dia |  | 13,4 |
| 1041 | 1.9.8.3.4 | Aprovação | 1d | 2026-06-09 A | 2026-06-10 A | 1040 | 100% |  | 2026-06-24 | 2026-06-24 | 1d |  |  | Tecnored | 8h | 8h | STEEL STRUCTURE | Qua 24/06/26 | Qua 24/06/26 | 1 dia | 0,5 | 13,4 |
| 1042 | 1.9.8.4 | **AG-J0006 0702-GE-S-00002** | 4d | 2026-06-03 A | 2026-06-10 A |  | 100% |  | 2026-06-16 | 2026-06-24 | 7d |  |  |  | 56h | 56h | STEEL STRUCTURE | Qua 24/06/26 | Ter 16/06/26 | 7 dias |  |  |
| 1043 | 1.9.8.4.1 | Emissão inicial | 2d | 2026-06-03 A | 2026-06-08 A | 1038FF | 100% |  | 2026-06-16 | 2026-06-17 | 2d |  |  | Projetista Metálica | 16h | 16h | STEEL STRUCTURE | Qua 17/06/26 | Ter 16/06/26 | 2 dias |  | 13,4 |
| 1044 | 1.9.8.4.2 | Avaliação do Cliente | 2d | 2026-06-08 A | 2026-06-09 A | 1043 | 100% |  | 2026-06-18 | 2026-06-22 | 3d |  |  | Tecnored | 16h | 16h | STEEL STRUCTURE | Seg 22/06/26 | Qui 18/06/26 | 3 dias |  | 13,4 |
| 1045 | 1.9.8.4.3 | Atendimento de Comentário | 1d | 2026-06-09 A | 2026-06-09 A | 1044 | 100% |  | 2026-06-23 | 2026-06-23 | 1d |  |  | Projetista Metálica | 8h | 8h | STEEL STRUCTURE | Ter 23/06/26 | Ter 23/06/26 | 1 dia |  | 13,4 |
| 1046 | 1.9.8.4.4 | Aprovação | 2d | 2026-06-09 A | 2026-06-10 A | 1045 | 100% |  | 2026-06-24 | 2026-06-24 | 1d |  |  | Tecnored | 16h | 16h | STEEL STRUCTURE | Qua 24/06/26 | Qua 24/06/26 | 1 dia | 0,5 | 13,4 |

| ID | WBS | Task | Type | Duration | Start | Finish | Predecessors | Complete | Baseline start | Baseline finish | Baseline duration | Total slack | Free slack | Resources | Work | Actual work | Disciplina | Text2 | Início_LB_R0 | Duração_LB_R0 | Duração Média (Tenax) | Duração média da atividade (Tecnored) |
| --- | --- | --- | --- | --- | --- | --- | --- | --- | --- | --- | --- | --- | --- | --- | --- | --- | --- | --- | --- | --- | --- | --- |
| 1047 | 1.9.8.5 | **AG-J0006-0702-GE-S-00003** |  | 4d | 2026-06-03 A | 2026-06-10 A |  | 100% | 2026-06-15 | 2026-06-24 | 8d |  |  |  | 56h | 56h | STEEL STRUCTURE | Qua 24/06/26 | Seg 15/06/26 | 8 dias |  |  |
| 1048 | 1.9.8.5.1 | Emissão inicial |  | 2d | 2026-06-03 A | 2026-06-08 A | 1031 | 100% | 2026-06-15 | 2026-06-17 | 3d |  |  | Projetista Metálica | 16h | 16h | STEEL STRUCTURE | Qua 17/06/26 | Seg 15/06/26 | 3 dias | 13,4 |  |
| 1049 | 1.9.8.5.2 | Avaliação do Cliente |  | 2d | 2026-06-08 A | 2026-06-09 A | 1048 | 100% | 2026-06-18 | 2026-06-22 | 3d |  |  | Tecnored | 16h | 16h | STEEL STRUCTURE | Seg 22/06/26 | Qui 18/06/26 | 3 dias | 13,4 |  |
| 1050 | 1.9.8.5.3 | Atendimento de Comentário |  | 1d | 2026-06-09 A | 2026-06-09 A | 1049 | 100% | 2026-06-23 | 2026-06-23 | 1d |  |  | Projetista Metálica | 8h | 8h | STEEL STRUCTURE | Ter 23/06/26 | Ter 23/06/26 | 1 dia | 13,4 |  |
| 1051 | 1.9.8.5.4 | Aprovação |  | 2d | 2026-06-09 A | 2026-06-10 A | 1050 | 100% | 2026-06-24 | 2026-06-24 | 1d |  |  | Tecnored | 16h | 16h | STEEL STRUCTURE | Qua 24/06/26 | Qua 24/06/26 | 1 dia | 13,4 | 0,5 |
| 1052 | 1.9.8.6 | **AG-J0006-0702-GE-S-00004** |  | 4d | 2026-06-03 A | 2026-06-10 A |  | 100% | 2026-06-16 | 2026-06-24 | 7d |  |  |  | 56h | 56h | STEEL STRUCTURE | Qua 24/06/26 | Ter 16/06/26 | 7 dias |  |  |
| 1053 | 1.9.8.6.1 | Emissão inicial |  | 2d | 2026-06-03 A | 2026-06-08 A | 1048FF | 100% | 2026-06-16 | 2026-06-17 | 2d |  |  | Projetista Metálica | 16h | 16h | STEEL STRUCTURE | Qua 17/06/26 | Ter 16/06/26 | 2 dias | 13,4 |  |
| 1054 | 1.9.8.6.2 | Avaliação do Cliente |  | 2d | 2026-06-08 A | 2026-06-09 A | 1053 | 100% | 2026-06-18 | 2026-06-22 | 3d |  |  | Tecnored | 16h | 16h | STEEL STRUCTURE | Seg 22/06/26 | Qui 18/06/26 | 3 dias | 13,4 |  |
| 1055 | 1.9.8.6.3 | Atendimento de Comentário |  | 1d | 2026-06-09 A | 2026-06-09 A | 1054 | 100% | 2026-06-23 | 2026-06-23 | 1d |  |  | Projetista Metálica | 8h | 8h | STEEL STRUCTURE | Ter 23/06/26 | Ter 23/06/26 | 1 dia | 13,4 |  |
| 1056 | 1.9.8.6.4 | Aprovação |  | 2d | 2026-06-09 A | 2026-06-10 A | 1055 | 100% | 2026-06-24 | 2026-06-24 | 1d |  |  | Tecnored | 16h | 16h | STEEL STRUCTURE | Qua 24/06/26 | Qua 24/06/26 | 1 dia | 13,4 | 0,5 |
| 1057 | 1.9.8.7 | **PL-J0006-0702-GE-S-00001** |  | 4d | 2026-06-03 A | 2026-06-10 A |  | 100% | 2026-06-16 | 2026-06-24 | 7d |  |  |  | 56h | 56h | STEEL STRUCTURE | Qua 24/06/26 | Ter 16/06/26 | 7 dias |  |  |
| 1058 | 1.9.8.7.1 | Emissão inicial |  | 2d | 2026-06-03 A | 2026-06-08 A | 1048FF | 100% | 2026-06-16 | 2026-06-17 | 2d |  |  | Projetista Metálica | 16h | 16h | STEEL STRUCTURE | Qua 17/06/26 | Ter 16/06/26 | 2 dias | 13,4 |  |
| 1059 | 1.9.8.7.2 | Avaliação do Cliente |  | 2d | 2026-06-08 A | 2026-06-09 A | 1058 | 100% | 2026-06-18 | 2026-06-22 | 3d |  |  | Tecnored | 16h | 16h | STEEL STRUCTURE | Seg 22/06/26 | Qui 18/06/26 | 3 dias | 13,4 |  |
| 1060 | 1.9.8.7.3 | Atendimento de Comentário |  | 1d | 2026-06-09 A | 2026-06-09 A | 1059 | 100% | 2026-06-23 | 2026-06-23 | 1d |  |  | Projetista Metálica | 8h | 8h | STEEL STRUCTURE | Ter 23/06/26 | Ter 23/06/26 | 1 dia | 13,4 |  |
| 1061 | 1.9.8.7.4 | Aprovação |  | 2d | 2026-06-09 A | 2026-06-10 A | 1060 | 100% | 2026-06-24 | 2026-06-24 | 1d |  |  | Tecnored | 16h | 16h | STEEL STRUCTURE | Qua 24/06/26 | Qua 24/06/26 | 1 dia | 13,4 | 0,5 |
| 1062 | 1.9.9 | **MODULO 0800** |  | 0d | 2026-03-20 | 2026-03-20 |  |  | 2026-05-21 | 2026-06-25 | 24d | 64d |  |  |  |  | STEEL STRUCTURE | Qui 25/06/26 | Qui 21/05/26 | 24 dias |  |  |
| 1063 | 1.9.9.1 | **ML-J0006-0800-GE-S-00001** | inactive | 14d | 2026-07-08 | 2026-07-29 |  |  | 2026-05-21 | 2026-06-11 | 14d | -31d | 0d |  | 112h |  | STEEL STRUCTURE | Qui 11/06/26 | Qui 21/05/26 | 14 dias |  |  |
| 1064 | 1.9.9.1.1 | Emissão inicial | inactive | 9d | 2026-07-08 | 2026-07-22 | 411 |  | 2026-05-21 | 2026-06-02 | 9d | -31d | 0d | Projetista Metálica | 72h |  | STEEL STRUCTURE | Ter 02/06/26 | Qui 21/05/26 | 9 dias | 13,4 | 40 |
| 1065 | 1.9.9.1.2 | Avaliação do Cliente | inactive | 3d | 2026-07-23 | 2026-07-27 | 1064 |  | 2026-06-03 | 2026-06-09 | 3d | -31d | 0d | Tecnored | 24h |  | STEEL STRUCTURE | Ter 09/06/26 | Qua 03/06/26 | 3 dias | 13,4 |  |
| 1066 | 1.9.9.1.3 | Atendimento de Comentário | inactive | 1d | 2026-07-28 | 2026-07-28 | 1065 |  | 2026-06-10 | 2026-06-10 | 1d | -31d | 0d | Projetista Metálica | 8h |  | STEEL STRUCTURE | Qua 10/06/26 | Qua 10/06/26 | 1 dia | 13,4 |  |
| 1067 | 1.9.9.1.4 | Aprovação | inactive | 1d | 2026-07-29 | 2026-07-29 | 1066 |  | 2026-06-11 | 2026-06-11 | 1d | -31d | 0d | Tecnored | 8h |  | STEEL STRUCTURE | Qui 11/06/26 | Qui 11/06/26 | 1 dia | 13,4 | 0,5 |
| 1068 | 1.9.9.2 | **MC-J0006-0800-GE-S-00001** | inactive | 10d | 2026-07-23 | 2026-08-05 |  |  | 2026-06-03 | 2026-06-18 | 10d | -26d | 0d |  | 80h |  | STEEL STRUCTURE | Qui 18/06/26 | Qua 03/06/26 | 10 dias |  |  |
| 1069 | 1.9.9.2.1 | Emissão inicial | inactive | 5d | 2026-07-23 | 2026-07-29 | 1064 |  | 2026-06-03 | 2026-06-11 | 5d | -26d | 0d | Eng. Calculista | 40h |  | STEEL STRUCTURE | Qui 11/06/26 | Qua 03/06/26 | 5 dias | 13,4 | 24 |
| 1070 | 1.9.9.2.2 | Avaliação do Cliente | inactive | 3d | 2026-07-30 | 2026-08-03 | 1069 |  | 2026-06-12 | 2026-06-16 | 3d | -26d | 0d | Tecnored | 24h |  | STEEL STRUCTURE | Ter 16/06/26 | Sex 12/06/26 | 3 dias | 13,4 |  |
| 1071 | 1.9.9.2.3 | Atendimento de Comentário | inactive | 1d | 2026-08-04 | 2026-08-04 | 1070 |  | 2026-06-17 | 2026-06-17 | 1d | -26d | 0d | Eng. Calculista | 8h |  | STEEL STRUCTURE | Qua 17/06/26 | Qua 17/06/26 | 1 dia | 13,4 |  |
| 1072 | 1.9.9.2.4 | Aprovação | inactive | 1d | 2026-08-05 | 2026-08-05 | 1071 |  | 2026-06-18 | 2026-06-18 | 1d | -26d | 0d | Tecnored | 8h |  | STEEL STRUCTURE | Qui 18/06/26 | Qui 18/06/26 | 1 dia | 13,4 | 0,5 |

| ID | WBS | Task | Type | Duration | Start | Finish | Predecessors | Complete | Remaining | Baseline start | Baseline finish | Baseline duration | Total slack | Free slack | Resources | Work | Actual work | Disciplina | Text2 | Início_LB_R0 | Duração_LB_R0 | Duração Média (Tenax) | Duração média da atividade (Tecnored) |
| --- | --- | --- | --- | --- | --- | --- | --- | --- | --- | --- | --- | --- | --- | --- | --- | --- | --- | --- | --- | --- | --- | --- | --- |
| 1073 | 1.9.9.3 | **AG-J0006-0800-GE-S-00001** | inactive | 10d | 2026-07-30 | 2026-08-12 |  |  |  | 2026-06-12 | 2026-06-25 | 10d | -31d | 0d |  | 80h |  | STEEL STRUCTURE | Qui 25/06/26 | Sex 12/06/26 | 10 dias |  |  |
| 1074 | 1.9.9.3.1 | Emissão inicial | inactive | 5d | 2026-07-30 | 2026-08-05 | 1067 |  |  | 2026-06-12 | 2026-06-18 | 5d | -31d | 0d | Projetista Metálica | 40h |  | STEEL STRUCTURE | Qui 18/06/26 | Sex 12/06/26 | 5 dias | 13,4 |  |
| 1075 | 1.9.9.3.2 | Avaliação do Cliente | inactive | 3d | 2026-08-06 | 2026-08-10 | 1074 |  |  | 2026-06-19 | 2026-06-23 | 3d | -31d | 0d | Tecnored | 24h |  | STEEL STRUCTURE | Ter 23/06/26 | Sex 19/06/26 | 3 dias | 13,4 |  |
| 1076 | 1.9.9.3.3 | Atendimento de Comentário | inactive | 1d | 2026-08-11 | 2026-08-11 | 1075 |  |  | 2026-06-24 | 2026-06-24 | 1d | -31d | 0d | Projetista Metálica | 8h |  | STEEL STRUCTURE | Qua 24/06/26 | Qua 24/06/26 | 1 dia | 13,4 |  |
| 1077 | 1.9.9.3.4 | Aprovação | inactive | 1d | 2026-08-12 | 2026-08-12 | 1076 |  |  | 2026-06-25 | 2026-06-25 | 1d | -31d | 0d | Tecnored | 8h |  | STEEL STRUCTURE | Qui 25/06/26 | Qui 25/06/26 | 1 dia | 13,4 | 0,5 |
| 1078 | 1.9.9.4 | **AG-J0006-0800-GE-S-00002** | inactive | 10d | 2026-07-30 | 2026-08-12 |  |  |  | 2026-06-12 | 2026-06-25 | 10d | -31d | 0d |  | 80h |  | STEEL STRUCTURE | Qui 25/06/26 | Sex 12/06/26 | 10 dias |  |  |
| 1079 | 1.9.9.4.1 | Emissão inicial | inactive | 5d | 2026-07-30 | 2026-08-05 | 1074FF |  |  | 2026-06-12 | 2026-06-18 | 5d | -31d | 0d | Projetista Metálica | 40h |  | STEEL STRUCTURE | Qui 18/06/26 | Sex 12/06/26 | 5 dias | 13,4 |  |
| 1080 | 1.9.9.4.2 | Avaliação do Cliente | inactive | 3d | 2026-08-06 | 2026-08-10 | 1079 |  |  | 2026-06-19 | 2026-06-23 | 3d | -31d | 0d | Tecnored | 24h |  | STEEL STRUCTURE | Ter 23/06/26 | Sex 19/06/26 | 3 dias | 13,4 |  |
| 1081 | 1.9.9.4.3 | Atendimento de Comentário | inactive | 1d | 2026-08-11 | 2026-08-11 | 1080 |  |  | 2026-06-24 | 2026-06-24 | 1d | -31d | 0d | Projetista Metálica | 8h |  | STEEL STRUCTURE | Qua 24/06/26 | Qua 24/06/26 | 1 dia | 13,4 |  |
| 1082 | 1.9.9.4.4 | Aprovação | inactive | 1d | 2026-08-12 | 2026-08-12 | 1081 |  |  | 2026-06-25 | 2026-06-25 | 1d | -31d | 0d | Tecnored | 8h |  | STEEL STRUCTURE | Qui 25/06/26 | Qui 25/06/26 | 1 dia | 13,4 | 0,5 |
| 1083 | 1.9.9.5 | **AG-J0006-0800-GE-S-00003** | inactive | 10d | 2026-07-30 | 2026-08-12 |  |  |  | 2026-06-12 | 2026-06-25 | 10d | -31d | 0d |  | 80h |  | STEEL STRUCTURE | Qui 25/06/26 | Sex 12/06/26 | 10 dias |  |  |
| 1084 | 1.9.9.5.1 | Emissão inicial | inactive | 5d | 2026-07-30 | 2026-08-05 | 1074FF |  |  | 2026-06-12 | 2026-06-18 | 5d | -31d | 0d | Projetista Metálica | 40h |  | STEEL STRUCTURE | Qui 18/06/26 | Sex 12/06/26 | 5 dias | 13,4 |  |
| 1085 | 1.9.9.5.2 | Avaliação do Cliente | inactive | 3d | 2026-08-06 | 2026-08-10 | 1084 |  |  | 2026-06-19 | 2026-06-23 | 3d | -31d | 0d | Tecnored | 24h |  | STEEL STRUCTURE | Ter 23/06/26 | Sex 19/06/26 | 3 dias | 13,4 |  |
| 1086 | 1.9.9.5.3 | Atendimento de Comentário | inactive | 1d | 2026-08-11 | 2026-08-11 | 1085 |  |  | 2026-06-24 | 2026-06-24 | 1d | -31d | 0d | Projetista Metálica | 8h |  | STEEL STRUCTURE | Qua 24/06/26 | Qua 24/06/26 | 1 dia | 13,4 |  |
| 1087 | 1.9.9.5.4 | Aprovação | inactive | 1d | 2026-08-12 | 2026-08-12 | 1086 |  |  | 2026-06-25 | 2026-06-25 | 1d | -31d | 0d | Tecnored | 8h |  | STEEL STRUCTURE | Qui 25/06/26 | Qui 25/06/26 | 1 dia | 13,4 | 0,5 |
| 1088 | 1.9.9.6 | **AG-J0006-0800-GE-S-00004** | inactive | 10d | 2026-07-30 | 2026-08-12 |  |  |  | 2026-06-12 | 2026-06-25 | 10d | -31d | 0d |  | 80h |  | STEEL STRUCTURE | Qui 25/06/26 | Sex 12/06/26 | 10 dias |  |  |
| 1089 | 1.9.9.6.1 | Emissão inicial | inactive | 5d | 2026-07-30 | 2026-08-05 | 1074FF |  |  | 2026-06-12 | 2026-06-18 | 5d | -31d | 0d | Projetista Metálica | 40h |  | STEEL STRUCTURE | Qui 18/06/26 | Sex 12/06/26 | 5 dias | 13,4 |  |
| 1090 | 1.9.9.6.2 | Avaliação do Cliente | inactive | 3d | 2026-08-06 | 2026-08-10 | 1089 |  |  | 2026-06-19 | 2026-06-23 | 3d | -31d | 0d | Tecnored | 24h |  | STEEL STRUCTURE | Ter 23/06/26 | Sex 19/06/26 | 3 dias | 13,4 |  |
| 1091 | 1.9.9.6.3 | Atendimento de Comentário | inactive | 1d | 2026-08-11 | 2026-08-11 | 1090 |  |  | 2026-06-24 | 2026-06-24 | 1d | -31d | 0d | Projetista Metálica | 8h |  | STEEL STRUCTURE | Qua 24/06/26 | Qua 24/06/26 | 1 dia | 13,4 |  |
| 1092 | 1.9.9.6.4 | Aprovação | inactive | 1d | 2026-08-12 | 2026-08-12 | 1091 |  |  | 2026-06-25 | 2026-06-25 | 1d | -31d | 0d | Tecnored | 8h |  | STEEL STRUCTURE | Qui 25/06/26 | Qui 25/06/26 | 1 dia | 13,4 | 0,5 |
| 1093 | 1.9.10 | **MODULO 0900** |  | 20d | 2026-05-26 A | 2026-06-24 |  | 51% | 9.86d | 2026-05-18 | 2026-06-23 | 25d | 2d |  |  | 288h | 146h | STEEL STRUCTURE | Ter 23/06/26 | Seg 18/05/26 | 25 dias |  |  |
| 1094 | 1.9.10.1 | **ML-J0006-0900-GE-S-00001** |  | 12.75d | 2026-05-26 A | 2026-06-15 |  | 96% | 0.5d | 2026-05-18 | 2026-06-09 | 15d | 3.25d |  |  | 152h | 146h | STEEL STRUCTURE | Ter 09/06/26 | Seg 18/05/26 | 15 dias |  |  |
| 1095 | 1.9.10.1.1 | Emissão inicial |  | 12d | 2026-05-26 A | 2026-06-12 A | 432 | 100% |  | 2026-05-18 | 2026-05-29 | 10d |  |  | Projetista Metálica | 96h | 96h | STEEL STRUCTURE | Sex 29/05/26 | Seg 18/05/26 | 10 dias | 13,4 | 40 |
| 1096 | 1.9.10.1.2 | Avaliação do Cliente |  | 5d | 2026-06-08 A | 2026-06-12 A | 1095 | 100% |  | 2026-06-01 | 2026-06-03 | 3d |  |  | Tecnored | 40h | 40h | STEEL STRUCTURE | Qua 03/06/26 | Seg 01/06/26 | 3 dias | 13,4 |  |
| 1097 | 1.9.10.1.3 | Atendimento de Comentário |  | 1d | 2026-06-11 A | 2026-06-15 | 1096 | 75% | 0.25d | 2026-06-08 | 2026-06-08 | 1d | 0d |  | Projetista Metálica | 8h | 6h | STEEL STRUCTURE | Seg 08/06/26 | Seg 08/06/26 | 1 dia | 13,4 |  |
| 1098 | 1.9.10.1.4 | Aprovação |  | 1d | 2026-06-12 A | 2026-06-15 | 1097 | 50% | 0.5d | 2026-06-09 | 2026-06-09 | 1d | 3.25d | 1.25d | Tecnored | 8h | 4h | STEEL STRUCTURE | Ter 09/06/26 | Ter 09/06/26 | 1 dia | 13,4 | 0,5 |

| ID | WBS | Task | Type | Duration | Start | Finish | Predecessors | Complete | Remaining | Baseline start | Baseline finish | Baseline duration | Total slack | Free slack | Constraint | Resources | Work | Disciplina | Text2 | Início_LB_R0 | Duração_LB_R0 | Duração média da atividade (Tecnored) | Duração Média (Tenax) |
| --- | --- | --- | --- | --- | --- | --- | --- | --- | --- | --- | --- | --- | --- | --- | --- | --- | --- | --- | --- | --- | --- | --- | --- |
| 1099 | 1.9.10.2 | **MC-J0006-0900-GE-S-00001** |  | 5d | 2026-06-12 A | 2026-06-19 |  |  | 5d | 2026-06-10 | 2026-06-23 | 10d | 5d |  |  |  | 40h | STEEL STRUCTURE | Ter 23/06/26 | Qua 10/06/26 | 10 dias |  |  |
| 1100 | 1.9.10.2.1 | Emissão inicial | milestone | 0d | 2026-06-12 A | 2026-06-12 A | 1095FS+5d | 100% |  | 2026-06-10 | 2026-06-16 | 5d |  |  |  | Eng. Calculista |  | STEEL STRUCTURE | Ter 16/06/26 | Qua 10/06/26 | 5 dias | 20 | 13,4 |
| 1101 | 1.9.10.2.2 | Avaliação do Cliente |  | 3d | 2026-06-15 | 2026-06-17 | 1100 |  |  | 2026-06-17 | 2026-06-19 | 3d | 5d | 0d |  | Tecnored | 24h | STEEL STRUCTURE | Sex 19/06/26 | Qua 17/06/26 | 3 dias |  | 13,4 |
| 1102 | 1.9.10.2.3 | Atendimento de Comentário |  | 1d | 2026-06-18 | 2026-06-18 | 1101 |  |  | 2026-06-22 | 2026-06-22 | 1d | 5d | 0d |  | Eng. Calculista | 8h | STEEL STRUCTURE | Seg 22/06/26 | Seg 22/06/26 | 1 dia |  | 13,4 |
| 1103 | 1.9.10.2.4 | Aprovação |  | 1d | 2026-06-19 | 2026-06-19 | 1102 |  |  | 2026-06-23 | 2026-06-23 | 1d | 5d |  |  | Tecnored | 8h | STEEL STRUCTURE | Ter 23/06/26 | Ter 23/06/26 | 1 dia | 0,5 | 13,4 |
| 1104 | 1.9.10.3 | **AG-J0006-0900-GE-S-00001** |  | 6d | 2026-06-17 | 2026-06-24 |  |  |  | 2026-06-10 | 2026-06-15 | 4d | 2d |  |  |  | 48h | STEEL STRUCTURE | Seg 15/06/26 | Qua 10/06/26 | 4 dias |  |  |
| 1105 | 1.9.10.3.1 | Emissão inicial |  | 3d | 2026-06-17 | 2026-06-19 | 1098 |  |  | 2026-06-10 | 2026-06-10 | 1d | 2d | 0d | finish no earlier than 2026-06-19 | Projetista Metálica | 24h | STEEL STRUCTURE | Qua 10/06/26 | Qua 10/06/26 | 1 dia |  | 13,4 |
| 1106 | 1.9.10.3.2 | Avaliação do Cliente |  | 1d | 2026-06-22 | 2026-06-22 | 1105 |  |  | 2026-06-11 | 2026-06-11 | 1d | 2d | 0d |  | Tecnored | 8h | STEEL STRUCTURE | Qui 11/06/26 | Qui 11/06/26 | 1 dia |  | 13,4 |
| 1107 | 1.9.10.3.3 | Atendimento de Comentário |  | 1d | 2026-06-23 | 2026-06-23 | 1106 |  |  | 2026-06-12 | 2026-06-12 | 1d | 2d | 0d |  | Projetista Metálica | 8h | STEEL STRUCTURE | Sex 12/06/26 | Sex 12/06/26 | 1 dia |  | 13,4 |
| 1108 | 1.9.10.3.4 | Aprovação |  | 1d | 2026-06-24 | 2026-06-24 | 1107 |  |  | 2026-06-15 | 2026-06-15 | 1d | 2d |  |  | Tecnored | 8h | STEEL STRUCTURE | Seg 15/06/26 | Seg 15/06/26 | 1 dia | 0,5 | 13,4 |
| 1109 | 1.9.10.4 | **AG-J0006-0900-GE-S-00002** |  | 6d | 2026-06-17 | 2026-06-24 |  |  |  | 2026-06-10 | 2026-06-15 | 4d | 2d |  |  |  | 48h | STEEL STRUCTURE | Seg 15/06/26 | Qua 10/06/26 | 4 dias |  |  |
| 1110 | 1.9.10.4.1 | Emissão inicial |  | 3d | 2026-06-17 | 2026-06-19 | 1105FF |  |  | 2026-06-10 | 2026-06-10 | 1d | 2d | 0d |  | Projetista Metálica | 24h | STEEL STRUCTURE | Qua 10/06/26 | Qua 10/06/26 | 1 dia |  | 13,4 |
| 1111 | 1.9.10.4.2 | Avaliação do Cliente |  | 1d | 2026-06-22 | 2026-06-22 | 1110 |  |  | 2026-06-11 | 2026-06-11 | 1d | 2d | 0d |  | Tecnored | 8h | STEEL STRUCTURE | Qui 11/06/26 | Qui 11/06/26 | 1 dia |  | 13,4 |
| 1112 | 1.9.10.4.3 | Atendimento de Comentário |  | 1d | 2026-06-23 | 2026-06-23 | 1111 |  |  | 2026-06-12 | 2026-06-12 | 1d | 2d | 0d |  | Projetista Metálica | 8h | STEEL STRUCTURE | Sex 12/06/26 | Sex 12/06/26 | 1 dia |  | 13,4 |
| 1113 | 1.9.10.4.4 | Aprovação |  | 1d | 2026-06-24 | 2026-06-24 | 1112 |  |  | 2026-06-15 | 2026-06-15 | 1d | 2d |  |  | Tecnored | 8h | STEEL STRUCTURE | Seg 15/06/26 | Seg 15/06/26 | 1 dia | 0,5 | 13,4 |
| 1114 | 1.9.11 | **MODULO 1000** |  | 10d | 2026-05-18 | 2026-05-29 |  |  |  | 2026-05-28 | 2026-06-19 | 15d | 18d |  |  |  | 208h | STEEL STRUCTURE | Sex 19/06/26 | Qui 28/05/26 | 15 dias |  |  |
| 1115 | 1.9.11.1 | **AG-J0006-1000-GE-S-00001** |  | 6d | 2026-05-21 | 2026-05-28 |  |  |  | 2026-05-28 | 2026-06-19 | 15d | 19d |  |  |  | 48h | STEEL STRUCTURE | Sex 19/06/26 | Qui 28/05/26 | 15 dias |  |  |
| 1116 | 1.9.11.1.1 | Emissão inicial |  | 3d | 2026-05-21 | 2026-05-25 | 457 |  |  | 2026-05-28 | 2026-06-12 | 10d | 19d | 0d |  | Projetista Metálica | 24h | STEEL STRUCTURE | Sex 12/06/26 | Qui 28/05/26 | 10 dias | 24 | 13,4 |
| 1117 | 1.9.11.1.2 | Avaliação do Cliente |  | 1d | 2026-05-26 | 2026-05-26 | 1116 |  |  | 2026-06-15 | 2026-06-17 | 3d | 19d | 0d |  | Tecnored | 8h | STEEL STRUCTURE | Qua 17/06/26 | Seg 15/06/26 | 3 dias |  | 13,4 |
| 1118 | 1.9.11.1.3 | Atendimento de Comentário |  | 1d | 2026-05-27 | 2026-05-27 | 1117 |  |  | 2026-06-18 | 2026-06-18 | 1d | 19d | 0d |  | Projetista Metálica | 8h | STEEL STRUCTURE | Qui 18/06/26 | Qui 18/06/26 | 1 dia |  | 13,4 |
| 1119 | 1.9.11.1.4 | Aprovação |  | 1d | 2026-05-28 | 2026-05-28 | 1118 |  |  | 2026-06-19 | 2026-06-19 | 1d | 19d |  |  | Tecnored | 8h | STEEL STRUCTURE | Sex 19/06/26 | Sex 19/06/26 | 1 dia | 0,5 | 13,4 |
| 1120 | 1.9.11.2 | **AG-J0006-1000-GE-S-00002** |  | 10d | 2026-05-18 | 2026-05-29 |  |  |  | 2026-05-28 | 2026-06-19 | 15d | 18d |  |  |  | 80h | STEEL STRUCTURE | Sex 19/06/26 | Qui 28/05/26 | 15 dias |  |  |
| 1121 | 1.9.11.2.1 | Emissão inicial |  | 7d | 2026-05-18 | 2026-05-26 | 457FS-3d |  |  | 2026-05-28 | 2026-06-12 | 10d | 18d | 0d |  | Projetista Metálica | 56h | STEEL STRUCTURE | Sex 12/06/26 | Qui 28/05/26 | 10 dias | 12 | 13,4 |
| 1122 | 1.9.11.2.2 | Avaliação do Cliente |  | 1d | 2026-05-27 | 2026-05-27 | 1121 |  |  | 2026-06-15 | 2026-06-17 | 3d | 18d | 0d |  | Tecnored | 8h | STEEL STRUCTURE | Qua 17/06/26 | Seg 15/06/26 | 3 dias |  | 13,4 |
| 1123 | 1.9.11.2.3 | Atendimento de Comentário |  | 1d | 2026-05-28 | 2026-05-28 | 1122 |  |  | 2026-06-18 | 2026-06-18 | 1d | 18d | 0d |  | Projetista Metálica | 8h | STEEL STRUCTURE | Qui 18/06/26 | Qui 18/06/26 | 1 dia |  | 13,4 |
| 1124 | 1.9.11.2.4 | Aprovação |  | 1d | 2026-05-29 | 2026-05-29 | 1123 |  |  | 2026-06-19 | 2026-06-19 | 1d | 18d |  |  | Tecnored | 8h | STEEL STRUCTURE | Sex 19/06/26 | Sex 19/06/26 | 1 dia | 0,5 | 13,4 |

| ID | WBS | Task | Duration | Start | Finish | Predecessors | Complete | Remaining | Baseline start | Baseline finish | Baseline duration | Total slack | Free slack | Resources | Work | Actual work | Disciplina | Text2 | Início_LB_R0 | Duração_LB_R0 | Duração Média (Tenax) | Duração média da atividade (Tecnored) | Text20 |
| --- | --- | --- | --- | --- | --- | --- | --- | --- | --- | --- | --- | --- | --- | --- | --- | --- | --- | --- | --- | --- | --- | --- | --- |
| 1125 | 1.9.11.3 | **AG-J0006-1000-GE-S-00003** | 10d | 2026-05-18 | 2026-05-29 |  |  |  | 2026-05-28 | 2026-06-19 | 15d | 18d |  |  | 80h |  | STEEL STRUCTURE | Sex 19/06/26 | Qui 28/05/26 | 15 dias |  |  |  |
| 1126 | 1.9.11.3.1 | Emissão inicial | 7d | 2026-05-18 | 2026-05-26 | 457FS-3d |  |  | 2026-05-28 | 2026-06-12 | 10d | 18d | 0d | Projetista Metálica | 56h |  | STEEL STRUCTURE | Sex 12/06/26 | Qui 28/05/26 | 10 dias | 13,4 |  |  |
| 1127 | 1.9.11.3.2 | Avaliação do Cliente | 1d | 2026-05-27 | 2026-05-27 | 1126 |  |  | 2026-06-15 | 2026-06-17 | 3d | 18d | 0d | Tecnored | 8h |  | STEEL STRUCTURE | Qua 17/06/26 | Seg 15/06/26 | 3 dias | 13,4 |  |  |
| 1128 | 1.9.11.3.3 | Atendimento de Comentário | 1d | 2026-05-28 | 2026-05-28 | 1127 |  |  | 2026-06-18 | 2026-06-18 | 1d | 18d | 0d | Projetista Metálica | 8h |  | STEEL STRUCTURE | Qui 18/06/26 | Qui 18/06/26 | 1 dia | 13,4 |  |  |
| 1129 | 1.9.11.3.4 | Aprovação | 1d | 2026-05-29 | 2026-05-29 | 1128 |  |  | 2026-06-19 | 2026-06-19 | 1d | 18d |  | Tecnored | 8h |  | STEEL STRUCTURE | Sex 19/06/26 | Sex 19/06/26 | 1 dia | 13,4 | 0,5 |  |
| 1130 | 1.9.12 | **GERAL** | 3d | 2026-05-27 | 2026-05-29 |  |  |  | 2026-06-19 | 2026-06-26 | 6d | 18d |  |  | 80h |  | STEEL STRUCTURE | Sex 26/06/26 | Sex 19/06/26 | 6 dias |  |  |  |
| 1131 | 1.9.12.1 | **PQ-J0006-0000-GE-S-00001** | 3d | 2026-05-27 | 2026-05-29 |  |  |  | 2026-06-19 | 2026-06-26 | 6d | 18d |  |  | 40h |  | STEEL STRUCTURE | Sex 26/06/26 | Sex 19/06/26 | 6 dias |  |  |  |
| 1132 | 1.9.12.1.1 | Emissão inicial | 2d | 2026-05-27 | 2026-05-28 | 1121 |  |  | 2026-06-19 | 2026-06-19 | 1d | 18d | 0d | Eng. Calculista | 16h |  | STEEL STRUCTURE | Sex 19/06/26 | Sex 19/06/26 | 1 dia | 13,4 | 16 |  |
| 1133 | 1.9.12.1.2 | Avaliação do Cliente | 1d | 2026-05-29 | 2026-05-29 | 1132 |  |  | 2026-06-22 | 2026-06-24 | 3d | 18d | 0d | Tecnored | 8h |  | STEEL STRUCTURE | Qua 24/06/26 | Seg 22/06/26 | 3 dias | 13,4 |  |  |
| 1134 | 1.9.12.1.3 | Atendimento de Comentário | 1d | 2026-05-29 | 2026-05-29 | 1133SS |  |  | 2026-06-25 | 2026-06-25 | 1d | 18d | 0d | Eng. Calculista | 8h |  | STEEL STRUCTURE | Qui 25/06/26 | Qui 25/06/26 | 1 dia | 13,4 |  |  |
| 1135 | 1.9.12.1.4 | Aprovação | 1d | 2026-05-29 | 2026-05-29 | 1134SS |  |  | 2026-06-26 | 2026-06-26 | 1d | 18d |  | Tecnored | 8h |  | STEEL STRUCTURE | Sex 26/06/26 | Sex 26/06/26 | 1 dia | 13,4 | 0,5 |  |
| 1136 | 1.9.12.2 | **LM-J0006-0000-GE-S-00001** | 3d | 2026-05-27 | 2026-05-29 |  |  |  | 2026-06-19 | 2026-06-26 | 6d | 18d |  |  | 40h |  | STEEL STRUCTURE | Sex 26/06/26 | Sex 19/06/26 | 6 dias |  |  |  |
| 1137 | 1.9.12.2.1 | Emissão inicial | 2d | 2026-05-27 | 2026-05-28 | 1121 |  |  | 2026-06-19 | 2026-06-19 | 1d | 18d | 0d | Projetista Metálica | 16h |  | STEEL STRUCTURE | Sex 19/06/26 | Sex 19/06/26 | 1 dia | 13,4 | 16 |  |
| 1138 | 1.9.12.2.2 | Avaliação do Cliente | 1d | 2026-05-29 | 2026-05-29 | 1137 |  |  | 2026-06-22 | 2026-06-24 | 3d | 18d | 0d | Tecnored | 8h |  | STEEL STRUCTURE | Qua 24/06/26 | Seg 22/06/26 | 3 dias | 13,4 |  |  |
| 1139 | 1.9.12.2.3 | Atendimento de Comentário | 1d | 2026-05-29 | 2026-05-29 | 1138SS |  |  | 2026-06-25 | 2026-06-25 | 1d | 18d | 0d | Projetista Metálica | 8h |  | STEEL STRUCTURE | Qui 25/06/26 | Qui 25/06/26 | 1 dia | 13,4 |  |  |
| 1140 | 1.9.12.2.4 | Aprovação | 1d | 2026-05-29 | 2026-05-29 | 1139SS |  |  | 2026-06-26 | 2026-06-26 | 1d | 18d |  | Tecnored | 8h |  | STEEL STRUCTURE | Sex 26/06/26 | Sex 26/06/26 | 1 dia | 13,4 | 0,5 |  |
| 1141 | 1.10 | **ELECTRICAL** | 57d | 2026-03-25 A | 2026-06-22 |  | 62% | 21.56d | 2026-03-23 | 2026-06-26 | 63d | 4d |  |  | 641.92h | 399.08h |  | Sex 26/06/26 | Seg 23/03/26 | 63 dias | 473,08 | 273,5 |  |
| 1142 | 1.10.1 | **CP-J0006-0000-GE-E-00001** | 8d | 2026-03-25 A | 2026-04-07 A |  | 100% |  | 2026-03-23 | 2026-04-07 | 10d |  |  |  | 80h | 80h | ELECTRICAL | Ter 07/04/26 | Seg 23/03/26 | 10 dias | 23,52 |  |  |
| 1143 | 1.10.1.1 | Emissão inicial | 5d | 2026-03-25 A | 2026-03-31 A | 12 | 100% |  | 2026-03-23 | 2026-03-27 | 5d |  |  | Eng. Elétrica | 40h | 40h | ELECTRICAL | Sex 27/03/26 | Seg 23/03/26 | 5 dias | 13,4 | 32 | 31/03/2026 |
| 1144 | 1.10.1.2 | Avaliação do Cliente | 3d | 2026-03-30 A | 2026-04-01 A | 1143 | 100% |  | 2026-03-30 | 2026-04-01 | 3d |  |  | Tecnored | 24h | 24h | ELECTRICAL | Qua 01/04/26 | Seg 30/03/26 | 3 dias | 13,4 |  |  |
| 1145 | 1.10.1.3 | Atendimento de Comentário | 1d | 2026-04-02 A | 2026-04-02 A | 1144 | 100% |  | 2026-04-02 | 2026-04-02 | 1d |  |  | Eng. Elétrica | 8h | 8h | ELECTRICAL | Qui 02/04/26 | Qui 02/04/26 | 1 dia | 13,4 |  |  |
| 1146 | 1.10.1.4 | Aprovação | 1d | 2026-04-06 A | 2026-04-07 A | 1145 | 100% |  | 2026-04-07 | 2026-04-07 | 1d |  |  | Tecnored | 8h | 8h | ELECTRICAL | Ter 07/04/26 | Ter 07/04/26 | 1 dia | 13,4 | 0,5 |  |
| 1147 | 1.10.2 | **ML-J0006-0000-GE-E-00001** | 6d | 2026-05-25 A | 2026-06-01 |  | 88% | 0.75d | 2026-06-03 | 2026-06-17 | 9d | 17d |  |  | 48h | 42h | ELECTRICAL | Qua 17/06/26 | Qua 03/06/26 | 9 dias | 40,8 |  |  |
| 1148 | 1.10.2.1 | Emissão inicial | 3d | 2026-05-25 A | 2026-05-27 A | 205, 226, 257, 288, 319, 345, 371, 433 | 100% |  | 2026-06-03 | 2026-06-10 | 4d |  |  | Eng. Elétrica | 24h | 24h | ELECTRICAL | Qua 10/06/26 | Qua 03/06/26 | 4 dias | 13,4 | 32 |  |
| 1149 | 1.10.2.2 | Avaliação do Cliente | 1d | 2026-05-27 A | 2026-05-28 A | 1148 | 100% |  | 2026-06-11 | 2026-06-15 | 3d |  |  | Tecnored | 8h | 8h | ELECTRICAL | Seg 15/06/26 | Qui 11/06/26 | 3 dias | 13,4 |  |  |
| 1150 | 1.10.2.3 | Atendimento de Comentário | 1d | 2026-05-29 A | 2026-05-29 | 1149 | 75% | 0.25d | 2026-06-16 | 2026-06-16 | 1d | 0.5d | 0d | Eng. Elétrica | 8h | 6h | ELECTRICAL | Ter 16/06/26 | Ter 16/06/26 | 1 dia | 13,4 |  |  |
| 1151 | 1.10.2.4 | Aprovação | 1d | 2026-06-01 A | 2026-06-01 | 1150 | 50% | 0.5d | 2026-06-17 | 2026-06-17 | 1d | 17d |  | Tecnored | 8h | 4h | ELECTRICAL | Qua 17/06/26 | Qua 17/06/26 | 1 dia | 13,4 | 0,5 |  |

| ID | WBS | Task | Duration | Start | Finish | Predecessors | Complete | Remaining | Baseline start | Baseline finish | Baseline duration | Total slack | Free slack | Constraint | Resources | Work | Actual work | Disciplina | Text2 | Início_LB_R0 | Duração_LB_R0 | Duração Média (Tenax) | Duração média da atividade (Tecnored) |
| --- | --- | --- | --- | --- | --- | --- | --- | --- | --- | --- | --- | --- | --- | --- | --- | --- | --- | --- | --- | --- | --- | --- | --- |
| 1152 | 1.10.3 | **RL-J0006-0000-GE-E-00001** | 4.1d | 2026-06-16 A | 2026-06-22 |  | 2% | 4d | 2026-06-09 | 2026-06-17 | 7d | 4d |  |  |  | 32.8h | 0.76h | ELECTRICAL | Qua 17/06/26 | Ter 09/06/26 | 7 dias | 23,52 |  |
| 1153 | 1.10.3.1 | Emissão inicial | 0.1d | 2026-06-16 A | 2026-06-16 | 1158 | 95% | 0.01d | 2026-06-09 | 2026-06-10 | 2d | 4d | 0d | finish no earlier than 2026-06-16 | Eng. Elétrica | 0.8h | 0.76h | ELECTRICAL | Qua 10/06/26 | Ter 09/06/26 | 2 dias | 13,4 | 16 |
| 1154 | 1.10.3.2 | Avaliação do Cliente | 2d | 2026-06-17 | 2026-06-18 | 1153 |  |  | 2026-06-11 | 2026-06-15 | 3d | 4d | 0d |  | Tecnored | 16h |  | ELECTRICAL | Seg 15/06/26 | Qui 11/06/26 | 3 dias | 13,4 |  |
| 1155 | 1.10.3.3 | Atendimento de Comentário | 1d | 2026-06-19 | 2026-06-19 | 1154 |  |  | 2026-06-16 | 2026-06-16 | 1d | 4d | 0d |  | Eng. Elétrica | 8h |  | ELECTRICAL | Ter 16/06/26 | Ter 16/06/26 | 1 dia | 13,4 |  |
| 1156 | 1.10.3.4 | Aprovação | 1d | 2026-06-22 | 2026-06-22 | 1155 |  |  | 2026-06-17 | 2026-06-17 | 1d | 4d |  |  | Tecnored | 8h |  | ELECTRICAL | Qua 17/06/26 | Qua 17/06/26 | 1 dia | 13,4 | 0,5 |
| 1157 | 1.10.4 | **LE-J0006-0000-GE-E-00001** | 7d | 2026-06-03 A | 2026-06-15 |  | 27% | 5.1d | 2026-06-03 | 2026-06-15 | 7d | 9d |  |  |  | 56h | 15.2h | ELECTRICAL | Seg 15/06/26 | Qua 03/06/26 | 7 dias | 23,52 |  |
| 1158 | 1.10.4.1 | Emissão inicial | 2d | 2026-06-03 A | 2026-06-08 | 1178 | 95% | 0.1d | 2026-06-03 | 2026-06-08 | 2d | 6d | 0d |  | Eng. Elétrica | 16h | 15.2h | ELECTRICAL | Seg 08/06/26 | Qua 03/06/26 | 2 dias | 13,4 | 16 |
| 1159 | 1.10.4.2 | Avaliação do Cliente | 3d | 2026-06-09 | 2026-06-11 | 1158 |  |  | 2026-06-09 | 2026-06-11 | 3d | 9d | 0d |  | Tecnored | 24h |  | ELECTRICAL | Qui 11/06/26 | Ter 09/06/26 | 3 dias | 13,4 |  |
| 1160 | 1.10.4.3 | Atendimento de Comentário | 1d | 2026-06-12 | 2026-06-12 | 1159 |  |  | 2026-06-12 | 2026-06-12 | 1d | 9d | 0d |  | Eng. Elétrica | 8h |  | ELECTRICAL | Sex 12/06/26 | Sex 12/06/26 | 1 dia | 13,4 |  |
| 1161 | 1.10.4.4 | Aprovação | 1d | 2026-06-15 | 2026-06-15 | 1160 |  |  | 2026-06-15 | 2026-06-15 | 1d | 9d |  |  | Tecnored | 8h |  | ELECTRICAL | Seg 15/06/26 | Seg 15/06/26 | 1 dia | 13,4 | 0,5 |
| 1162 | 1.10.5 | **LR-J0006-0000-GE-E-00001** | 17d | 2026-05-07 A | 2026-05-29 A |  | 100% |  | 2026-05-22 | 2026-06-01 | 7d |  |  |  |  | 44.8h | 44.8h | ELECTRICAL | Seg 01/06/26 | Sex 22/05/26 | 7 dias | 23,52 |  |
| 1163 | 1.10.5.1 | Emissão inicial | 0.6d | 2026-05-07 A | 2026-05-11 A | 168 | 100% |  | 2026-05-22 | 2026-05-25 | 2d |  |  |  | Eng. Elétrica | 4.8h | 4.8h | ELECTRICAL | Seg 25/05/26 | Sex 22/05/26 | 2 dias | 13,4 | 16 |
| 1164 | 1.10.5.2 | Avaliação do Cliente | 3d | 2026-05-25 A | 2026-05-27 A | 1163 | 100% |  | 2026-05-26 | 2026-05-28 | 3d |  |  |  | Tecnored | 24h | 24h | ELECTRICAL | Qui 28/05/26 | Ter 26/05/26 | 3 dias | 13,4 |  |
| 1165 | 1.10.5.3 | Atendimento de Comentário | 1d | 2026-05-27 A | 2026-05-28 A | 1164 | 100% |  | 2026-05-29 | 2026-05-29 | 1d |  |  |  | Eng. Elétrica | 8h | 8h | ELECTRICAL | Sex 29/05/26 | Sex 29/05/26 | 1 dia | 13,4 |  |
| 1166 | 1.10.5.4 | Aprovação | 1d | 2026-05-29 A | 2026-05-29 A | 1165 | 100% |  | 2026-06-01 | 2026-06-01 | 1d |  |  |  | Tecnored | 8h | 8h | ELECTRICAL | Seg 01/06/26 | Seg 01/06/26 | 1 dia | 13,4 | 0,5 |
| 1167 | 1.10.6 | **PQ-J0006-1200-GE-E-00001** | 4d | 2026-06-16 A | 2026-06-22 |  | 38% | 2.48d | 2026-06-18 | 2026-06-26 | 7d | 4.1d |  |  |  | 40h | 15.2h | ELECTRICAL | Sex 26/06/26 | Qui 18/06/26 | 7 dias | 29,28 |  |
| 1168 | 1.10.6.1 | Emissão inicial | 2d | 2026-06-16 A | 2026-06-18 | 1153SS | 95% | 0.1d | 2026-06-18 | 2026-06-19 | 2d | 4.1d | 0d |  | Eng. Elétrica | 16h | 15.2h | ELECTRICAL | Sex 19/06/26 | Qui 18/06/26 | 2 dias | 13,4 | 16 |
| 1169 | 1.10.6.2 | Avaliação do Cliente | 1d | 2026-06-18 | 2026-06-19 | 1168 |  |  | 2026-06-22 | 2026-06-24 | 3d | 4.1d | 0d |  | Tecnored | 8h |  | ELECTRICAL | Qua 24/06/26 | Seg 22/06/26 | 3 dias | 13,4 |  |
| 1170 | 1.10.6.3 | Atendimento de Comentário | 1d | 2026-06-19 | 2026-06-22 | 1169 |  |  | 2026-06-25 | 2026-06-25 | 1d | 4.1d | 0d |  | Eng. Elétrica | 8h |  | ELECTRICAL | Qui 25/06/26 | Qui 25/06/26 | 1 dia | 13,4 |  |
| 1171 | 1.10.6.4 | Aprovação | 1d | 2026-06-19 | 2026-06-22 | 1170FF |  |  | 2026-06-26 | 2026-06-26 | 1d | 4.1d |  |  | Tecnored | 8h |  | ELECTRICAL | Sex 26/06/26 | Sex 26/06/26 | 1 dia | 13,4 | 0,5 |
| 1172 | 1.10.7 | **MD-J0006-1200-GE-E-00001** | 4d | 2026-06-16 | 2026-06-22 |  |  |  | 2026-06-18 | 2026-06-26 | 7d | 4.1d |  |  |  | 40h |  | ELECTRICAL | Sex 26/06/26 | Qui 18/06/26 | 7 dias | 35,04 |  |
| 1173 | 1.10.7.1 | Emissão inicial | 2d | 2026-06-16 | 2026-06-18 | 1153SS |  |  | 2026-06-18 | 2026-06-19 | 2d | 4.1d | 0d |  | Eng. Elétrica | 16h |  | ELECTRICAL | Sex 19/06/26 | Qui 18/06/26 | 2 dias | 13,4 | 16 |
| 1174 | 1.10.7.2 | Avaliação do Cliente | 1d | 2026-06-18 | 2026-06-19 | 1173 |  |  | 2026-06-22 | 2026-06-24 | 3d | 4.1d | 0d |  | Tecnored | 8h |  | ELECTRICAL | Qua 24/06/26 | Seg 22/06/26 | 3 dias | 13,4 |  |
| 1175 | 1.10.7.3 | Atendimento de Comentário | 1d | 2026-06-19 | 2026-06-22 | 1174 |  |  | 2026-06-25 | 2026-06-25 | 1d | 4.1d | 0d |  | Eng. Elétrica | 8h |  | ELECTRICAL | Qui 25/06/26 | Qui 25/06/26 | 1 dia | 13,4 |  |
| 1176 | 1.10.7.4 | Aprovação | 1d | 2026-06-19 | 2026-06-22 | 1175FF |  |  | 2026-06-26 | 2026-06-26 | 1d | 4.1d |  |  | Tecnored | 8h |  | ELECTRICAL | Sex 26/06/26 | Sex 26/06/26 | 1 dia | 13,4 | 0,5 |

| ID | WBS | Task | Type | Duration | Start | Finish | Predecessors | Complete | Remaining | Baseline start | Baseline finish | Baseline duration | Total slack | Free slack | Resources | Work | Actual work | Disciplina | Text2 | Início_LB_R0 | Duração_LB_R0 | Duração Média (Tenax) | Duração média da atividade (Tecnored) | Text20 |
| --- | --- | --- | --- | --- | --- | --- | --- | --- | --- | --- | --- | --- | --- | --- | --- | --- | --- | --- | --- | --- | --- | --- | --- | --- |
| 1177 | 1.10.8 | **MC-J0006-0000-GE-E-00001** |  | 16.54d | 2026-05-15 A | 2026-06-10 A |  | 100% |  | 2026-06-01 | 2026-06-11 | 7d |  |  |  | 124.32h | 124.32h | ELECTRICAL | Qui 11/06/26 | Seg 01/06/26 | 7 dias | 29,28 |  |  |
| 1178 | 1.10.8.1 | Emissão inicial |  | 12.54d | 2026-05-15 A | 2026-06-02 A | 1188 | 100% |  | 2026-06-01 | 2026-06-02 | 2d |  |  | Projetista Elétrica | 100.32h | 100.32h | ELECTRICAL | Ter 02/06/26 | Seg 01/06/26 | 2 dias | 13,4 | 16 |  |
| 1179 | 1.10.8.2 | Avaliação do Cliente |  | 2d | 2026-06-03 A | 2026-06-08 A | 1178 | 100% |  | 2026-06-03 | 2026-06-09 | 3d |  |  | Tecnored | 16h | 16h | ELECTRICAL | Ter 09/06/26 | Qua 03/06/26 | 3 dias | 13,4 |  |  |
| 1180 | 1.10.8.3 | Atendimento de Comentário |  | 1d | 2026-06-09 A | 2026-06-09 A | 1179 | 100% |  | 2026-06-10 | 2026-06-10 | 1d |  |  | Projetista Elétrica | 8h | 8h | ELECTRICAL | Qua 10/06/26 | Qua 10/06/26 | 1 dia | 13,4 |  |  |
| 1181 | 1.10.8.4 | Aprovação | milestone | 0d | 2026-06-09 A | 2026-06-10 A | 1180 | 100% |  | 2026-06-11 | 2026-06-11 | 1d |  |  | Tecnored |  |  | ELECTRICAL | Qui 11/06/26 | Qui 11/06/26 | 1 dia | 13,4 | 0,5 |  |
| 1182 | 1.10.9 | **AG-J0006-0000-GE-E-00001** |  | 5d | 2026-05-25 A | 2026-05-29 A |  | 100% |  | 2026-06-18 | 2026-06-26 | 7d |  |  |  | 64h | 64h | ELECTRICAL | Sex 26/06/26 | Qui 18/06/26 | 7 dias | 23,52 |  |  |
| 1183 | 1.10.9.1 | Emissão inicial |  | 2d | 2026-05-25 A | 2026-05-26 A | 1151 | 100% |  | 2026-06-18 | 2026-06-19 | 2d |  |  | Projetista Elétrica | 16h | 16h | ELECTRICAL | Sex 19/06/26 | Qui 18/06/26 | 2 dias | 13,4 | 16 |  |
| 1184 | 1.10.9.2 | Avaliação do Cliente |  | 2d | 2026-05-26 A | 2026-05-27 A | 1183 | 100% |  | 2026-06-22 | 2026-06-24 | 3d |  |  | Tecnored | 16h | 16h | ELECTRICAL | Qua 24/06/26 | Seg 22/06/26 | 3 dias | 13,4 |  |  |
| 1185 | 1.10.9.3 | Atendimento de Comentário |  | 2d | 2026-05-27 A | 2026-05-28 A | 1184 | 100% |  | 2026-06-25 | 2026-06-25 | 1d |  |  | Projetista Elétrica | 16h | 16h | ELECTRICAL | Qui 25/06/26 | Qui 25/06/26 | 1 dia | 13,4 |  |  |
| 1186 | 1.10.9.4 | Aprovação |  | 2d | 2026-05-28 A | 2026-05-29 A | 1185 | 100% |  | 2026-06-26 | 2026-06-26 | 1d |  |  | Tecnored | 16h | 16h | ELECTRICAL | Sex 26/06/26 | Sex 26/06/26 | 1 dia | 13,4 | 0,5 |  |
| 1187 | 1.10.10 | **DU-J0006-0000-GE-E-00001** |  | 9.54d | 2026-05-11 A | 2026-05-22 |  | 18% | 7.84d | 2026-05-26 | 2026-06-09 | 9d |  |  |  | 72h | 12.8h | ELECTRICAL | Ter 09/06/26 | Ter 26/05/26 | 9 dias | 23,52 |  |  |
| 1188 | 1.10.10.1 | Emissão inicial |  | 4d | 2026-05-11 A | 2026-05-15 | 1163 | 40% | 2.4d | 2026-05-26 | 2026-05-29 | 4d | 23.54d | 0d | Projetista Elétrica | 32h | 12.8h | ELECTRICAL | Sex 29/05/26 | Ter 26/05/26 | 4 dias | 13,4 | 32 |  |
| 1189 | 1.10.10.2 | Avaliação do Cliente |  | 3d | 2026-05-15 | 2026-05-20 | 1188 |  |  | 2026-06-01 | 2026-06-03 | 3d | 23.54d | 0d | Tecnored | 24h |  | ELECTRICAL | Qua 03/06/26 | Seg 01/06/26 | 3 dias | 13,4 |  |  |
| 1190 | 1.10.10.3 | Atendimento de Comentário |  | 1d | 2026-05-20 | 2026-05-21 | 1189 |  |  | 2026-06-08 | 2026-06-08 | 1d | 23.54d | 0d | Projetista Elétrica | 8h |  | ELECTRICAL | Seg 08/06/26 | Seg 08/06/26 | 1 dia | 13,4 |  |  |
| 1191 | 1.10.10.4 | Aprovação |  | 1d | 2026-05-21 | 2026-05-22 | 1190 |  |  | 2026-06-09 | 2026-06-09 | 1d | 23.54d |  | Tecnored | 8h |  | ELECTRICAL | Ter 09/06/26 | Ter 09/06/26 | 1 dia | 13,4 | 0,5 |  |
| 1192 | 1.10.11 | **AG-J0006-0000-GE-E-00002** |  | 4d | 2026-06-16 | 2026-06-22 |  |  |  | 2026-06-18 | 2026-06-26 | 7d | 4.1d |  |  | 40h |  | ELECTRICAL | Sex 26/06/26 | Qui 18/06/26 | 7 dias | 23,52 |  |  |
| 1193 | 1.10.11.1 | Emissão inicial |  | 2d | 2026-06-16 | 2026-06-18 | 1153SS |  |  | 2026-06-18 | 2026-06-19 | 2d | 4.1d | 0d | Projetista Elétrica | 16h |  | ELECTRICAL | Sex 19/06/26 | Qui 18/06/26 | 2 dias | 13,4 | 16 |  |
| 1194 | 1.10.11.2 | Avaliação do Cliente |  | 1d | 2026-06-18 | 2026-06-19 | 1193 |  |  | 2026-06-22 | 2026-06-24 | 3d | 4.1d | 0d | Tecnored | 8h |  | ELECTRICAL | Qua 24/06/26 | Seg 22/06/26 | 3 dias | 13,4 |  |  |
| 1195 | 1.10.11.3 | Atendimento de Comentário |  | 1d | 2026-06-19 | 2026-06-22 | 1194 |  |  | 2026-06-25 | 2026-06-25 | 1d | 4.1d | 0d | Projetista Elétrica | 8h |  | ELECTRICAL | Qui 25/06/26 | Qui 25/06/26 | 1 dia | 13,4 |  |  |
| 1196 | 1.10.11.4 | Aprovação |  | 1d | 2026-06-19 | 2026-06-22 | 1195FF |  |  | 2026-06-26 | 2026-06-26 | 1d | 4.1d |  | Tecnored | 8h |  | ELECTRICAL | Sex 26/06/26 | Sex 26/06/26 | 1 dia | 13,4 | 0,5 |  |
| 1197 | 1.11 | **INSTRUMENTATION / AUTOMATION** |  | 50d | 2026-04-08 A | 2026-06-23 |  | 90% | 4.88d | 2026-03-23 | 2026-06-25 | 62d | 3d |  |  | 2514h | 2268.8h |  | Qui 25/06/26 | Seg 23/03/26 | 62 dias | 163,36 | 453,5 |  |
| 1198 | 1.11.1 | **CP-J0006-0000-GE-J-00001** |  | 25d | 2026-04-08 A | 2026-05-15 A |  | 100% |  | 2026-03-23 | 2026-04-07 | 10d |  |  |  | 206h | 206h | INSTRUMENTATION / AUTOMATION | Ter 07/04/26 | Seg 23/03/26 | 10 dias | 23,52 |  |  |
| 1199 | 1.11.1.1 | Emissão inicial |  | 5d | 2026-04-08 A | 2026-04-14 A | 12FS+10d | 100% |  | 2026-03-23 | 2026-03-27 | 5d |  |  | Eng. Automação | 40h | 40h | INSTRUMENTATION / AUTOMATION | Sex 27/03/26 | Seg 23/03/26 | 5 dias | 13,4 | 32 | 17/04/2026 17:27 |
| 1200 | 1.11.1.2 | Avaliação do Cliente |  | 3d | 2026-04-15 A | 2026-04-17 A | 1199 | 100% |  | 2026-03-30 | 2026-04-01 | 3d |  |  | Tecnored | 24h | 24h | INSTRUMENTATION / AUTOMATION | Qua 01/04/26 | Seg 30/03/26 | 3 dias | 13,4 |  | 28/04/2026 14:50 |
| 1201 | 1.11.1.3 | Atendimento de Comentário |  | 16d | 2026-04-22 A | 2026-05-14 A | 1200 | 100% |  | 2026-04-02 | 2026-04-02 | 1d |  |  | Eng. Automação | 128h | 128h | INSTRUMENTATION / AUTOMATION | Qui 02/04/26 | Qui 02/04/26 | 1 dia | 13,4 |  | 28/04/2026 14:50 |
| 1202 | 1.11.1.4 | Aprovação |  | 1.75d | 2026-04-23 A | 2026-05-15 A | 1201 | 100% |  | 2026-04-07 | 2026-04-07 | 1d |  |  | Tecnored | 14h | 14h | INSTRUMENTATION / AUTOMATION | Ter 07/04/26 | Ter 07/04/26 | 1 dia | 13,4 | 0,5 | 28/04/2026 14:50 |

| ID | WBS | Task | Type | Duration | Start | Finish | Predecessors | Complete | Remaining | Baseline start | Baseline finish | Baseline duration | Total slack | Free slack | Resources | Work | Actual work | Disciplina | Text2 | Início_LB_R0 | Duração_LB_R0 | Duração Média (Tenax) | Duração média da atividade (Tecnored) | Text20 |
| --- | --- | --- | --- | --- | --- | --- | --- | --- | --- | --- | --- | --- | --- | --- | --- | --- | --- | --- | --- | --- | --- | --- | --- | --- |
| 1203 | 1.11.2 | **CP-J0006-0000-GE-J-00002** |  | 25d | 2026-04-08 A | 2026-05-15 A |  | 100% |  | 2026-03-23 | 2026-04-07 | 10d |  |  |  | 320h | 320h | INSTRUMENTATION / AUTOMATION | Ter 07/04/26 | Seg 23/03/26 | 10 dias | 23,52 |  |  |
| 1204 | 1.11.2.1 | Emissão inicial |  | 5d | 2026-04-08 A | 2026-04-14 A | 12FS+10d | 100% |  | 2026-03-23 | 2026-03-27 | 5d |  |  | Eng. Automação | 40h | 40h | INSTRUMENTATION / AUTOMATION | Sex 27/03/26 | Seg 23/03/26 | 5 dias | 13,4 | 32 | 17/04/2026 17:27 |
| 1205 | 1.11.2.2 | Avaliação do Cliente |  | 3d | 2026-04-15 A | 2026-04-17 A | 1204 | 100% |  | 2026-03-30 | 2026-04-01 | 3d |  |  | Tecnored | 24h | 24h | INSTRUMENTATION / AUTOMATION | Qua 01/04/26 | Seg 30/03/26 | 3 dias | 13,4 |  | 28/04/2026 14:50 |
| 1206 | 1.11.2.3 | Atendimento de Comentário |  | 16d | 2026-04-22 A | 2026-05-14 A | 1205 | 100% |  | 2026-04-02 | 2026-04-02 | 1d |  |  | Eng. Automação | 128h | 128h | INSTRUMENTATION / AUTOMATION | Qui 02/04/26 | Qui 02/04/26 | 1 dia | 13,4 |  | 28/04/2026 14:50 |
| 1207 | 1.11.2.4 | Aprovação |  | 16d | 2026-04-23 A | 2026-05-15 A | 1206 | 100% |  | 2026-04-07 | 2026-04-07 | 1d |  |  | Tecnored | 128h | 128h | INSTRUMENTATION / AUTOMATION | Ter 07/04/26 | Ter 07/04/26 | 1 dia | 13,4 | 0,5 | 28/04/2026 14:50 |
| 1208 | 1.11.3 | **AC-J0006-0000-GE-J-00001** |  | 21d | 2026-04-22 A | 2026-05-21 A |  | 100% |  | 2026-04-08 | 2026-04-16 | 7d |  |  |  | 172h | 172h | INSTRUMENTATION / AUTOMATION | Qui 16/04/26 | Qua 08/04/26 | 7 dias | 17,76 |  |  |
| 1209 | 1.11.3.1 | Emissão inicial |  | 3d | 2026-04-22 A | 2026-04-24 A | 1207 | 100% |  | 2026-04-08 | 2026-04-09 | 2d |  |  | Eng. Automação | 24h | 24h | INSTRUMENTATION / AUTOMATION | Qui 09/04/26 | Qua 08/04/26 | 2 dias | 13,4 | 16 |  |
| 1210 | 1.11.3.2 | Avaliação do Cliente |  | 1d | 2026-04-27 A | 2026-04-27 A | 1209 | 100% |  | 2026-04-10 | 2026-04-14 | 3d |  |  | Tecnored | 8h | 8h | INSTRUMENTATION / AUTOMATION | Ter 14/04/26 | Sex 10/04/26 | 3 dias | 13,4 |  |  |
| 1211 | 1.11.3.3 | Atendimento de Comentário |  | 17d | 2026-04-28 A | 2026-05-21 A | 1210 | 100% |  | 2026-04-15 | 2026-04-15 | 1d |  |  | Eng. Automação | 136h | 136h | INSTRUMENTATION / AUTOMATION | Qua 15/04/26 | Qua 15/04/26 | 1 dia | 13,4 |  |  |
| 1212 | 1.11.3.4 | Aprovação |  | 0.5d | 2026-04-29 A | 2026-05-21 A | 1211 | 100% |  | 2026-04-16 | 2026-04-16 | 1d |  |  | Tecnored | 4h | 4h | INSTRUMENTATION / AUTOMATION | Qui 16/04/26 | Qui 16/04/26 | 1 dia | 13,4 | 0,5 |  |
| 1213 | 1.11.4 | **LI-J0006-0000-GE-J-00001** |  | 13d | 2026-05-12 A | 2026-05-28 A |  | 100% |  | 2026-05-26 | 2026-06-03 | 7d |  |  |  | 108h | 108h | INSTRUMENTATION / AUTOMATION | Qua 03/06/26 | Ter 26/05/26 | 7 dias | 23,52 |  |  |
| 1214 | 1.11.4.1 | Emissão inicial |  | 5d | 2026-05-12 A | 2026-05-18 A | 1253, 1258, 1263, 1268, 1273, 1278, 1283, 1288, 1248, 1323, 1318, 1313, 1308, 1303, 1293, 1298 | 100% |  | 2026-05-26 | 2026-05-28 | 3d |  |  | Eng. Automação | 40h | 40h | INSTRUMENTATION / AUTOMATION | Qui 28/05/26 | Ter 26/05/26 | 3 dias | 13,4 | 24 |  |
| 1215 | 1.11.4.2 | Avaliação do Cliente |  | 2d | 2026-05-18 A | 2026-05-20 A | 1214 | 100% |  | 2026-05-29 | 2026-06-01 | 2d |  |  | Tecnored | 16h | 16h | INSTRUMENTATION / AUTOMATION | Seg 01/06/26 | Sex 29/05/26 | 2 dias | 13,4 |  |  |
| 1216 | 1.11.4.3 | Atendimento de Comentário |  | 3d | 2026-05-21 A | 2026-05-25 A | 1215 | 100% |  | 2026-06-02 | 2026-06-02 | 1d |  |  | Eng. Automação | 24h | 24h | INSTRUMENTATION / AUTOMATION | Ter 02/06/26 | Ter 02/06/26 | 1 dia | 13,4 |  |  |
| 1217 | 1.11.4.4 | Aprovação |  | 3.5d | 2026-05-25 A | 2026-05-28 A | 1216 | 100% |  | 2026-06-03 | 2026-06-03 | 1d |  |  | Tecnored | 28h | 28h | INSTRUMENTATION / AUTOMATION | Qua 03/06/26 | Qua 03/06/26 | 1 dia | 13,4 | 0,5 |  |
| 1218 | 1.11.5 | **LE-J0006-0000-GE-J-00001** |  | 5d | 2026-05-19 A | 2026-05-25 |  | 79% | 1.05d | 2026-05-29 | 2026-06-10 | 7d | 22d |  |  | 40h | 31.6h | INSTRUMENTATION / AUTOMATION | Qua 10/06/26 | Sex 29/05/26 | 7 dias | 23,52 |  |  |
| 1219 | 1.11.5.1 | Emissão inicial |  | 2d | 2026-05-19 A | 2026-05-20 A | 1214 | 100% |  | 2026-05-29 | 2026-06-01 | 2d |  |  | Eng. Automação | 16h | 16h | INSTRUMENTATION / AUTOMATION | Seg 01/06/26 | Sex 29/05/26 | 2 dias | 13,4 | 16 |  |
| 1220 | 1.11.5.2 | Avaliação do Cliente |  | 1d | 2026-05-20 A | 2026-05-21 A | 1219 | 100% |  | 2026-06-02 | 2026-06-08 | 3d |  |  | Tecnored | 8h | 8h | INSTRUMENTATION / AUTOMATION | Seg 08/06/26 | Ter 02/06/26 | 3 dias | 13,4 |  |  |
| 1221 | 1.11.5.3 | Atendimento de Comentário |  | 1d | 2026-05-21 A | 2026-05-22 | 1220 | 70% | 0.3d | 2026-06-09 | 2026-06-09 | 1d | 0.25d | 0d | Eng. Automação | 8h | 5.6h | INSTRUMENTATION / AUTOMATION | Ter 09/06/26 | Ter 09/06/26 | 1 dia | 13,4 |  |  |
| 1222 | 1.11.5.4 | Aprovação |  | 1d | 2026-05-25 A | 2026-05-25 | 1221 | 25% | 0.75d | 2026-06-10 | 2026-06-10 | 1d | 22d |  | Tecnored | 8h | 2h | INSTRUMENTATION / AUTOMATION | Qua 10/06/26 | Qua 10/06/26 | 1 dia | 13,4 | 0,5 |  |
| 1223 | 1.11.6 | **LL-J0006-0000-GE-J-00001** |  | 6d | 2026-05-20 A | 2026-05-27 |  | 83% | 1.05d | 2026-06-02 | 2026-06-12 | 7d | 20d |  |  | 48h | 39.6h | INSTRUMENTATION / AUTOMATION | Sex 12/06/26 | Ter 02/06/26 | 7 dias | 23,52 |  |  |
| 1224 | 1.11.6.1 | Emissão inicial |  | 4d | 2026-05-20 A | 2026-05-25 A | 1219 | 100% |  | 2026-06-02 | 2026-06-03 | 2d |  |  | Eng. Automação | 32h | 32h | INSTRUMENTATION / AUTOMATION | Qua 03/06/26 | Ter 02/06/26 | 2 dias | 13,4 | 16 |  |
| 1225 | 1.11.6.2 | Avaliação do Cliente | milestone | 0d | 2026-05-25 A | 2026-05-25 A | 1224 | 100% |  | 2026-06-08 | 2026-06-10 | 3d |  |  | Tecnored |  |  | INSTRUMENTATION / AUTOMATION | Qua 10/06/26 | Seg 08/06/26 | 3 dias | 13,4 |  |  |
| 1226 | 1.11.6.3 | Atendimento de Comentário |  | 1d | 2026-05-26 A | 2026-05-26 | 1225 | 70% | 0.3d | 2026-06-11 | 2026-06-11 | 1d | 0.25d | 0d | Eng. Automação | 8h | 5.6h | INSTRUMENTATION / AUTOMATION | Qui 11/06/26 | Qui 11/06/26 | 1 dia | 13,4 |  |  |
| 1227 | 1.11.6.4 | Aprovação |  | 1d | 2026-05-27 A | 2026-05-27 | 1226 | 25% | 0.75d | 2026-06-12 | 2026-06-12 | 1d | 20d |  | Tecnored | 8h | 2h | INSTRUMENTATION / AUTOMATION | Sex 12/06/26 | Sex 12/06/26 | 1 dia | 13,4 | 0,5 |  |

| ID | WBS | Task | Type | Duration | Start | Finish | Predecessors | Complete | Remaining | Baseline start | Baseline finish | Baseline duration | Total slack | Free slack | Resources | Work | Actual work | Disciplina | Text2 | Início_LB_R0 | Duração_LB_R0 | Duração Média (Tenax) | Duração média da atividade (Tecnored) |
| --- | --- | --- | --- | --- | --- | --- | --- | --- | --- | --- | --- | --- | --- | --- | --- | --- | --- | --- | --- | --- | --- | --- | --- |
| 1228 | 1.11.7 | **LL-J0006-0000-GE-J-00002** | inactive | 7d | 2026-05-26 | 2026-06-03 |  |  |  | 2026-06-08 | 2026-06-16 | 7d | 8d |  |  | 56h |  | INSTRUMENTATION / AUTOMATION | Ter 16/06/26 | Seg 08/06/26 | 7 dias | 23,52 |  |
| 1229 | 1.11.7.1 | Emissão inicial | inactive | 2d | 2026-05-26 | 2026-05-27 | 1224 |  |  | 2026-06-08 | 2026-06-09 | 2d | 8d | 0d | Eng. Automação | 16h |  | INSTRUMENTATION / AUTOMATION | Ter 09/06/26 | Seg 08/06/26 | 2 dias | 13,4 | 16 |
| 1230 | 1.11.7.2 | Avaliação do Cliente | inactive | 3d | 2026-05-28 | 2026-06-01 | 1229 |  |  | 2026-06-10 | 2026-06-12 | 3d | 8d | 0d | Tecnored | 24h |  | INSTRUMENTATION / AUTOMATION | Sex 12/06/26 | Qua 10/06/26 | 3 dias | 13,4 |  |
| 1231 | 1.11.7.3 | Atendimento de Comentário | inactive | 1d | 2026-06-02 | 2026-06-02 | 1230 |  |  | 2026-06-15 | 2026-06-15 | 1d | 8d | 0d | Eng. Automação | 8h |  | INSTRUMENTATION / AUTOMATION | Seg 15/06/26 | Seg 15/06/26 | 1 dia | 13,4 |  |
| 1232 | 1.11.7.4 | Aprovação | inactive | 1d | 2026-06-03 | 2026-06-03 | 1231 |  |  | 2026-06-16 | 2026-06-16 | 1d | 15d |  | Tecnored | 8h |  | INSTRUMENTATION / AUTOMATION | Ter 16/06/26 | Ter 16/06/26 | 1 dia | 13,4 | 0,5 |
| 1233 | 1.11.8 | **MD-J0006-1200-GE-J-00001** |  | 8d | 2026-05-21 | 2026-06-01 |  |  |  | 2026-06-16 | 2026-06-25 | 8d | 17d |  |  | 64h |  | INSTRUMENTATION / AUTOMATION | Qui 25/06/26 | Ter 16/06/26 | 8 dias | 35,04 |  |
| 1234 | 1.11.8.1 | Emissão inicial |  | 3d | 2026-05-21 | 2026-05-25 | 1239FF |  |  | 2026-06-16 | 2026-06-18 | 3d | 17d | 0d | Eng. Automação | 24h |  | INSTRUMENTATION / AUTOMATION | Qui 18/06/26 | Ter 16/06/26 | 3 dias | 13,4 | 24 |
| 1235 | 1.11.8.2 | Avaliação do Cliente |  | 3d | 2026-05-26 | 2026-05-28 | 1234 |  |  | 2026-06-19 | 2026-06-23 | 3d | 17d | 0d | Tecnored | 24h |  | INSTRUMENTATION / AUTOMATION | Ter 23/06/26 | Sex 19/06/26 | 3 dias | 13,4 |  |
| 1236 | 1.11.8.3 | Atendimento de Comentário |  | 1d | 2026-05-29 | 2026-05-29 | 1235 |  |  | 2026-06-24 | 2026-06-24 | 1d | 17d | 0d | Eng. Automação | 8h |  | INSTRUMENTATION / AUTOMATION | Qua 24/06/26 | Qua 24/06/26 | 1 dia | 13,4 |  |
| 1237 | 1.11.8.4 | Aprovação |  | 1d | 2026-06-01 | 2026-06-01 | 1236 |  |  | 2026-06-25 | 2026-06-25 | 1d | 17d |  | Tecnored | 8h |  | INSTRUMENTATION / AUTOMATION | Qui 25/06/26 | Qui 25/06/26 | 1 dia | 13,4 | 0,5 |
| 1238 | 1.11.9 | **MC-J0006-1200-GE-J-00001** | inactive | 8d | 2026-06-03 | 2026-06-16 |  |  |  | 2026-06-16 | 2026-06-25 | 8d | 8d |  |  | 64h |  | INSTRUMENTATION / AUTOMATION | Qui 25/06/26 | Ter 16/06/26 | 8 dias | 29,28 |  |
| 1239 | 1.11.9.1 | Emissão inicial | inactive | 3d | 2026-06-03 | 2026-06-09 | 1231 |  |  | 2026-06-16 | 2026-06-18 | 3d | 8d | 0d | Projetista Automação | 24h |  | INSTRUMENTATION / AUTOMATION | Qui 18/06/26 | Ter 16/06/26 | 3 dias | 13,4 | 24 |
| 1240 | 1.11.9.2 | Avaliação do Cliente | inactive | 3d | 2026-06-10 | 2026-06-12 | 1239 |  |  | 2026-06-19 | 2026-06-23 | 3d | 8d | 0d | Tecnored | 24h |  | INSTRUMENTATION / AUTOMATION | Ter 23/06/26 | Sex 19/06/26 | 3 dias | 13,4 |  |
| 1241 | 1.11.9.3 | Atendimento de Comentário | inactive | 1d | 2026-06-15 | 2026-06-15 | 1240 |  |  | 2026-06-24 | 2026-06-24 | 1d | 8d | 0d | Projetista Automação | 8h |  | INSTRUMENTATION / AUTOMATION | Qua 24/06/26 | Qua 24/06/26 | 1 dia | 13,4 |  |
| 1242 | 1.11.9.4 | Aprovação | inactive | 1d | 2026-06-16 | 2026-06-16 | 1241 |  |  | 2026-06-25 | 2026-06-25 | 1d | 8d |  | Tecnored | 8h |  | INSTRUMENTATION / AUTOMATION | Qui 25/06/26 | Qui 25/06/26 | 1 dia | 13,4 | 0,5 |
| 1243 | 1.11.10 | **PQ-J0006-0000-GE-J-00001** |  | 8d | 2026-05-21 A | 2026-06-01 |  | 34% | 5.3d | 2026-06-16 | 2026-06-25 | 8d | 17d |  |  | 64h | 21.6h | INSTRUMENTATION / AUTOMATION | Qui 25/06/26 | Ter 16/06/26 | 8 dias | 29,28 |  |
| 1244 | 1.11.10.1 | Emissão inicial |  | 3d | 2026-05-21 A | 2026-05-25 | 1239FF | 90% | 0.3d | 2026-06-16 | 2026-06-18 | 3d | 17d | 0d | Projetista Automação | 24h | 21.6h | INSTRUMENTATION / AUTOMATION | Qui 18/06/26 | Ter 16/06/26 | 3 dias | 13,4 | 24 |
| 1245 | 1.11.10.2 | Avaliação do Cliente |  | 3d | 2026-05-26 | 2026-05-28 | 1244 |  |  | 2026-06-19 | 2026-06-23 | 3d | 17d | 0d | Tecnored | 24h |  | INSTRUMENTATION / AUTOMATION | Ter 23/06/26 | Sex 19/06/26 | 3 dias | 13,4 |  |
| 1246 | 1.11.10.3 | Atendimento de Comentário |  | 1d | 2026-05-29 | 2026-05-29 | 1245 |  |  | 2026-06-24 | 2026-06-24 | 1d | 17d | 0d | Projetista Automação | 8h |  | INSTRUMENTATION / AUTOMATION | Qua 24/06/26 | Qua 24/06/26 | 1 dia | 13,4 |  |
| 1247 | 1.11.10.4 | Aprovação |  | 1d | 2026-06-01 | 2026-06-01 | 1246 |  |  | 2026-06-25 | 2026-06-25 | 1d | 17d |  | Tecnored | 8h |  | INSTRUMENTATION / AUTOMATION | Qui 25/06/26 | Qui 25/06/26 | 1 dia | 13,4 | 0,5 |
| 1248 | 1.11.11 | **FG-J0006-0100-GE-J-00001** |  | 16d | 2026-04-22 A | 2026-05-14 A |  | 100% |  | 2026-04-22 | 2026-04-30 | 7d |  |  |  | 128h | 128h | INSTRUMENTATION / AUTOMATION | Qui 30/04/26 | Qua 22/04/26 | 7 dias | 14,88 |  |
| 1249 | 1.11.11.1 | Emissão inicial |  | 2d | 2026-04-22 A | 2026-04-23 A | 102 | 100% |  | 2026-04-22 | 2026-04-23 | 2d |  |  | Projetista Automação | 16h | 16h | INSTRUMENTATION / AUTOMATION | Qui 23/04/26 | Qua 22/04/26 | 2 dias | 13,4 | 16 |
| 1250 | 1.11.11.2 | Avaliação do Cliente |  | 3d | 2026-04-24 A | 2026-04-28 A | 1249 | 100% |  | 2026-04-24 | 2026-04-28 | 3d |  |  | Tecnored | 24h | 24h | INSTRUMENTATION / AUTOMATION | Ter 28/04/26 | Sex 24/04/26 | 3 dias | 13,4 |  |
| 1251 | 1.11.11.3 | Atendimento de Comentário |  | 11d | 2026-04-29 A | 2026-05-14 A | 1250 | 100% |  | 2026-04-29 | 2026-04-29 | 1d |  |  | Projetista Automação | 88h | 88h | INSTRUMENTATION / AUTOMATION | Qua 29/04/26 | Qua 29/04/26 | 1 dia | 13,4 |  |
| 1252 | 1.11.11.4 | Aprovação | milestone | 0d | 2026-04-29 A | 2026-05-14 A | 1251 | 100% |  | 2026-04-30 | 2026-04-30 | 1d |  |  | Tecnored |  |  | INSTRUMENTATION / AUTOMATION | Qui 30/04/26 | Qui 30/04/26 | 1 dia | 13,4 | 0,5 |

| ID | WBS | Task | Duration | Start | Finish | Predecessors | Complete | Baseline start | Baseline finish | Baseline duration | Resources | Work | Actual work | Disciplina | Text2 | Início_LB_R0 | Duração_LB_R0 | Duração Média (Tenax) | Duração média da atividade (Tecnored) |
| --- | --- | --- | --- | --- | --- | --- | --- | --- | --- | --- | --- | --- | --- | --- | --- | --- | --- | --- | --- |
| 1253 | 1.11.12 | **FG-J0006-0200-GE-J-00001** | 11d | 2026-05-08 A | 2026-05-22 A |  | 100% | 2026-04-24 | 2026-05-05 | 7d |  | 90h | 90h | INSTRUMENTATION / AUTOMATION | Ter 05/05/26 | Sex 24/04/26 | 7 dias | 35,04 |  |
| 1254 | 1.11.12.1 | Emissão inicial | 2d | 2026-05-08 A | 2026-05-11 A | 107, 1249 | 100% | 2026-04-24 | 2026-04-27 | 2d | Projetista Automação | 16h | 16h | INSTRUMENTATION / AUTOMATION | Seg 27/04/26 | Sex 24/04/26 | 2 dias | 13,4 | 16 |
| 1255 | 1.11.12.2 | Avaliação do Cliente | 1d | 2026-05-11 A | 2026-05-12 A | 1254 | 100% | 2026-04-28 | 2026-04-30 | 3d | Tecnored | 8h | 8h | INSTRUMENTATION / AUTOMATION | Qui 30/04/26 | Ter 28/04/26 | 3 dias | 13,4 |  |
| 1256 | 1.11.12.3 | Atendimento de Comentário | 8d | 2026-05-13 A | 2026-05-22 A | 1255 | 100% | 2026-05-04 | 2026-05-04 | 1d | Projetista Automação | 64h | 64h | INSTRUMENTATION / AUTOMATION | Seg 04/05/26 | Seg 04/05/26 | 1 dia | 13,4 |  |
| 1257 | 1.11.12.4 | Aprovação | 0.25d | 2026-05-13 A | 2026-05-22 A | 1256 | 100% | 2026-05-05 | 2026-05-05 | 1d | Tecnored | 2h | 2h | INSTRUMENTATION / AUTOMATION | Ter 05/05/26 | Ter 05/05/26 | 1 dia | 13,4 | 0,5 |
| 1258 | 1.11.13 | **FG-J0006-0300-GE-J-00001** | 19d | 2026-04-27 A | 2026-05-22 A |  | 100% | 2026-04-28 | 2026-05-07 | 7d |  | 240h | 240h | INSTRUMENTATION / AUTOMATION | Qui 07/05/26 | Ter 28/04/26 | 7 dias | 14,88 |  |
| 1259 | 1.11.13.1 | Emissão inicial | 4d | 2026-04-27 A | 2026-04-30 A | 112, 1254 | 100% | 2026-04-28 | 2026-04-29 | 2d | Projetista Automação | 32h | 32h | INSTRUMENTATION / AUTOMATION | Qua 29/04/26 | Ter 28/04/26 | 2 dias | 13,4 | 16 |
| 1260 | 1.11.13.2 | Avaliação do Cliente | 1d | 2026-05-05 A | 2026-05-05 A | 1259 | 100% | 2026-04-30 | 2026-05-05 | 3d | Tecnored | 8h | 8h | INSTRUMENTATION / AUTOMATION | Ter 05/05/26 | Qui 30/04/26 | 3 dias | 13,4 |  |
| 1261 | 1.11.13.3 | Atendimento de Comentário | 13d | 2026-05-06 A | 2026-05-22 A | 1260 | 100% | 2026-05-06 | 2026-05-06 | 1d | Projetista Automação | 104h | 104h | INSTRUMENTATION / AUTOMATION | Qua 06/05/26 | Qua 06/05/26 | 1 dia | 13,4 |  |
| 1262 | 1.11.13.4 | Aprovação | 12d | 2026-05-07 A | 2026-05-22 A | 1261 | 100% | 2026-05-07 | 2026-05-07 | 1d | Tecnored | 96h | 96h | INSTRUMENTATION / AUTOMATION | Qui 07/05/26 | Qui 07/05/26 | 1 dia | 13,4 | 0,5 |
| 1263 | 1.11.14 | **FG-J0006-0400-GE-J-00001** | 16d | 2026-04-30 A | 2026-05-22 A |  | 100% | 2026-04-30 | 2026-05-11 | 7d |  | 128h | 128h | INSTRUMENTATION / AUTOMATION | Seg 11/05/26 | Qui 30/04/26 | 7 dias | 14,88 |  |
| 1264 | 1.11.14.1 | Emissão inicial | 2d | 2026-04-30 A | 2026-05-04 A | 117, 1259 | 100% | 2026-04-30 | 2026-05-04 | 2d | Projetista Automação | 16h | 16h | INSTRUMENTATION / AUTOMATION | Seg 04/05/26 | Qui 30/04/26 | 2 dias | 13,4 | 16 |
| 1265 | 1.11.14.2 | Avaliação do Cliente | 3d | 2026-05-05 A | 2026-05-07 A | 1264 | 100% | 2026-05-05 | 2026-05-07 | 3d | Tecnored | 24h | 24h | INSTRUMENTATION / AUTOMATION | Qui 07/05/26 | Ter 05/05/26 | 3 dias | 13,4 |  |
| 1266 | 1.11.14.3 | Atendimento de Comentário | 3d | 2026-05-08 A | 2026-05-12 A | 1265 | 100% | 2026-05-08 | 2026-05-08 | 1d | Projetista Automação | 24h | 24h | INSTRUMENTATION / AUTOMATION | Sex 08/05/26 | Sex 08/05/26 | 1 dia | 13,4 |  |
| 1267 | 1.11.14.4 | Aprovação | 8d | 2026-05-13 A | 2026-05-22 A | 1266 | 100% | 2026-05-11 | 2026-05-11 | 1d | Tecnored | 64h | 64h | INSTRUMENTATION / AUTOMATION | Seg 11/05/26 | Seg 11/05/26 | 1 dia | 13,4 | 0,5 |
| 1268 | 1.11.15 | **FG-J0006-0500-GE-J-00001** | 14d | 2026-05-05 A | 2026-05-22 A |  | 100% | 2026-05-05 | 2026-05-13 | 7d |  | 182h | 182h | INSTRUMENTATION / AUTOMATION | Qua 13/05/26 | Ter 05/05/26 | 7 dias | 14,88 |  |
| 1269 | 1.11.15.1 | Emissão inicial | 2d | 2026-05-05 A | 2026-05-06 A | 122, 1264 | 100% | 2026-05-05 | 2026-05-06 | 2d | Projetista Automação | 16h | 16h | INSTRUMENTATION / AUTOMATION | Qua 06/05/26 | Ter 05/05/26 | 2 dias | 13,4 | 16 |
| 1270 | 1.11.15.2 | Avaliação do Cliente | 3d | 2026-05-07 A | 2026-05-11 A | 1269 | 100% | 2026-05-07 | 2026-05-11 | 3d | Tecnored | 24h | 24h | INSTRUMENTATION / AUTOMATION | Seg 11/05/26 | Qui 07/05/26 | 3 dias | 13,4 |  |
| 1271 | 1.11.15.3 | Atendimento de Comentário | 9.75d | 2026-05-11 A | 2026-05-22 A | 1270 | 100% | 2026-05-12 | 2026-05-12 | 1d | Projetista Automação | 78h | 78h | INSTRUMENTATION / AUTOMATION | Ter 12/05/26 | Ter 12/05/26 | 1 dia | 13,4 |  |
| 1272 | 1.11.15.4 | Aprovação | 8d | 2026-05-13 A | 2026-05-22 A | 1271 | 100% | 2026-05-13 | 2026-05-13 | 1d | Tecnored | 64h | 64h | INSTRUMENTATION / AUTOMATION | Qua 13/05/26 | Qua 13/05/26 | 1 dia | 13,4 | 0,5 |
| 1273 | 1.11.16 | **FG-J0006-0600-GE-J-00001** | 12d | 2026-05-07 A | 2026-05-22 A |  | 100% | 2026-05-07 | 2026-05-15 | 7d |  | 168h | 168h | INSTRUMENTATION / AUTOMATION | Sex 15/05/26 | Qui 07/05/26 | 7 dias | 14,88 |  |
| 1274 | 1.11.16.1 | Emissão inicial | 2d | 2026-05-07 A | 2026-05-08 A | 127, 1269 | 100% | 2026-05-07 | 2026-05-08 | 2d | Projetista Automação | 16h | 16h | INSTRUMENTATION / AUTOMATION | Sex 08/05/26 | Qui 07/05/26 | 2 dias | 13,4 | 16 |
| 1275 | 1.11.16.2 | Avaliação do Cliente | 1d | 2026-05-11 A | 2026-05-11 A | 1274 | 100% | 2026-05-11 | 2026-05-13 | 3d | Tecnored | 8h | 8h | INSTRUMENTATION / AUTOMATION | Qua 13/05/26 | Seg 11/05/26 | 3 dias | 13,4 |  |
| 1276 | 1.11.16.3 | Atendimento de Comentário | 10d | 2026-05-11 A | 2026-05-22 A | 1275 | 100% | 2026-05-14 | 2026-05-14 | 1d | Projetista Automação | 80h | 80h | INSTRUMENTATION / AUTOMATION | Qui 14/05/26 | Qui 14/05/26 | 1 dia | 13,4 |  |
| 1277 | 1.11.16.4 | Aprovação | 8d | 2026-05-13 A | 2026-05-22 A | 1276 | 100% | 2026-05-15 | 2026-05-15 | 1d | Tecnored | 64h | 64h | INSTRUMENTATION / AUTOMATION | Sex 15/05/26 | Sex 15/05/26 | 1 dia | 13,4 | 0,5 |

| ID | WBS | Task | Type | Duration | Start | Finish | Predecessors | Complete | Remaining | Baseline start | Baseline finish | Baseline duration | Total slack | Free slack | Resources | Work | Actual work | Disciplina | Text2 | Início_LB_R0 | Duração_LB_R0 | Duração Média (Tenax) | Duração média da atividade (Tecnored) |
| --- | --- | --- | --- | --- | --- | --- | --- | --- | --- | --- | --- | --- | --- | --- | --- | --- | --- | --- | --- | --- | --- | --- | --- |
| 1278 | 1.11.17 | **FG-J0006-0700-GE-J-00001** |  | 15d | 2026-05-04 A | 2026-05-22 A |  | 100% |  | 2026-05-11 | 2026-05-19 | 7d |  |  |  | 128h | 128h | INSTRUMENTATION / AUTOMATION | Ter 19/05/26 | Seg 11/05/26 | 7 dias | 14,88 |  |
| 1279 | 1.11.17.1 | Emissão inicial |  | 4d | 2026-05-04 A | 2026-05-07 A | 132, 1274 | 100% |  | 2026-05-11 | 2026-05-12 | 2d |  |  | Projetista Automação | 32h | 32h | INSTRUMENTATION / AUTOMATION | Ter 12/05/26 | Seg 11/05/26 | 2 dias | 13,4 | 16 |
| 1280 | 1.11.17.2 | Avaliação do Cliente |  | 1d | 2026-05-07 A | 2026-05-07 A | 1279 | 100% |  | 2026-05-13 | 2026-05-15 | 3d |  |  | Tecnored | 8h | 8h | INSTRUMENTATION / AUTOMATION | Sex 15/05/26 | Qua 13/05/26 | 3 dias | 13,4 |  |
| 1281 | 1.11.17.3 | Atendimento de Comentário |  | 3d | 2026-05-08 A | 2026-05-12 A | 1280 | 100% |  | 2026-05-18 | 2026-05-18 | 1d |  |  | Projetista Automação | 24h | 24h | INSTRUMENTATION / AUTOMATION | Seg 18/05/26 | Seg 18/05/26 | 1 dia | 13,4 |  |
| 1282 | 1.11.17.4 | Aprovação |  | 8d | 2026-05-13 A | 2026-05-22 A | 1281 | 100% |  | 2026-05-19 | 2026-05-19 | 1d |  |  | Tecnored | 64h | 64h | INSTRUMENTATION / AUTOMATION | Ter 19/05/26 | Ter 19/05/26 | 1 dia | 13,4 | 0,5 |
| 1283 | 1.11.18 | **FG-J0006-0800-GE-J-00001** | inactive | 7d | 2026-05-08 | 2026-05-18 |  |  |  | 2026-05-13 | 2026-05-21 | 7d | 23d |  |  | 56h |  | INSTRUMENTATION / AUTOMATION | Qui 21/05/26 | Qua 13/05/26 | 7 dias | 35,04 |  |
| 1284 | 1.11.18.1 | Emissão inicial | inactive | 2d | 2026-05-08 | 2026-05-11 | 137, 1279 |  |  | 2026-05-13 | 2026-05-14 | 2d | 23d | 0d | Projetista Automação | 16h |  | INSTRUMENTATION / AUTOMATION | Qui 14/05/26 | Qua 13/05/26 | 2 dias | 13,4 | 16 |
| 1285 | 1.11.18.2 | Avaliação do Cliente | inactive | 3d | 2026-05-12 | 2026-05-14 | 1284 |  |  | 2026-05-15 | 2026-05-19 | 3d | 27d | 0d | Tecnored | 24h |  | INSTRUMENTATION / AUTOMATION | Ter 19/05/26 | Sex 15/05/26 | 3 dias | 13,4 |  |
| 1286 | 1.11.18.3 | Atendimento de Comentário | inactive | 1d | 2026-05-15 | 2026-05-15 | 1285 |  |  | 2026-05-20 | 2026-05-20 | 1d | 27d | 0d | Projetista Automação | 8h |  | INSTRUMENTATION / AUTOMATION | Qua 20/05/26 | Qua 20/05/26 | 1 dia | 13,4 |  |
| 1287 | 1.11.18.4 | Aprovação | inactive | 1d | 2026-05-18 | 2026-05-18 | 1286 |  |  | 2026-05-21 | 2026-05-21 | 1d | 27d |  | Tecnored | 8h |  | INSTRUMENTATION / AUTOMATION | Qui 21/05/26 | Qui 21/05/26 | 1 dia | 13,4 | 0,5 |
| 1288 | 1.11.19 | **FG-J0006-0900-GE-J-00001** |  | 6d | 2026-06-01 A | 2026-06-10 A |  | 100% |  | 2026-05-15 | 2026-05-25 | 7d |  |  |  | 48h | 48h | INSTRUMENTATION / AUTOMATION | Seg 25/05/26 | Sex 15/05/26 | 7 dias | 14,88 |  |
| 1289 | 1.11.19.1 | Emissão inicial |  | 2d | 2026-06-01 A | 2026-06-02 A | 142FS+17d, 1284 | 100% |  | 2026-05-15 | 2026-05-18 | 2d |  |  | Projetista Automação | 16h | 16h | INSTRUMENTATION / AUTOMATION | Seg 18/05/26 | Sex 15/05/26 | 2 dias | 13,4 | 16 |
| 1290 | 1.11.19.2 | Avaliação do Cliente |  | 1d | 2026-06-02 A | 2026-06-03 A | 1289 | 100% |  | 2026-05-19 | 2026-05-21 | 3d |  |  | Tecnored | 8h | 8h | INSTRUMENTATION / AUTOMATION | Qui 21/05/26 | Ter 19/05/26 | 3 dias | 13,4 |  |
| 1291 | 1.11.19.3 | Atendimento de Comentário |  | 2d | 2026-06-08 A | 2026-06-09 A | 1290 | 100% |  | 2026-05-22 | 2026-05-22 | 1d |  |  | Projetista Automação | 16h | 16h | INSTRUMENTATION / AUTOMATION | Sex 22/05/26 | Sex 22/05/26 | 1 dia | 13,4 |  |
| 1292 | 1.11.19.4 | Aprovação |  | 1d | 2026-06-09 A | 2026-06-10 A | 1291 | 100% |  | 2026-05-25 | 2026-05-25 | 1d |  |  | Tecnored | 8h | 8h | INSTRUMENTATION / AUTOMATION | Seg 25/05/26 | Seg 25/05/26 | 1 dia | 13,4 | 0,5 |
| 1293 | 1.11.20 | **FG-J0006-0902-GE-J-00001** |  | 6d | 2026-06-03 A | 2026-06-12 |  | 79% | 1.25d | 2026-05-15 | 2026-05-25 | 7d | 10d | 7d |  | 48h | 38h | INSTRUMENTATION / AUTOMATION | Seg 25/05/26 | Sex 15/05/26 | 7 dias | 14,88 |  |
| 1294 | 1.11.20.1 | Emissão inicial |  | 2d | 2026-06-03 A | 2026-06-08 A | 142FS+17d, 1284 | 100% |  | 2026-05-15 | 2026-05-18 | 2d |  |  | Projetista Automação | 16h | 16h | INSTRUMENTATION / AUTOMATION | Seg 18/05/26 | Sex 15/05/26 | 2 dias | 13,4 | 16 |
| 1295 | 1.11.20.2 | Avaliação do Cliente |  | 1d | 2026-06-08 A | 2026-06-09 A | 1294 | 100% |  | 2026-05-19 | 2026-05-21 | 3d |  |  | Tecnored | 8h | 8h | INSTRUMENTATION / AUTOMATION | Qui 21/05/26 | Ter 19/05/26 | 3 dias | 13,4 |  |
| 1296 | 1.11.20.3 | Atendimento de Comentário |  | 1d | 2026-06-09 A | 2026-06-10 | 1295 | 75% | 0.25d | 2026-05-22 | 2026-05-22 | 1d | 1d | 0d | Projetista Automação | 8h | 6h | INSTRUMENTATION / AUTOMATION | Sex 22/05/26 | Sex 22/05/26 | 1 dia | 13,4 |  |
| 1297 | 1.11.20.4 | Aprovação |  | 2d | 2026-06-11 A | 2026-06-12 | 1296 | 50% | 1d | 2026-05-25 | 2026-05-25 | 1d | 10d | 7d | Tecnored | 16h | 8h | INSTRUMENTATION / AUTOMATION | Seg 25/05/26 | Seg 25/05/26 | 1 dia | 13,4 | 0,5 |
| 1298 | 1.11.21 | **FG-J0006-0902-GE-J-00002** |  | 6d | 2026-06-03 A | 2026-06-12 |  | 82% | 1.07d | 2026-05-15 | 2026-05-25 | 7d | 10d | 7d |  | 56h | 46h | INSTRUMENTATION / AUTOMATION | Seg 25/05/26 | Sex 15/05/26 | 7 dias | 14,88 |  |
| 1299 | 1.11.21.1 | Emissão inicial |  | 2d | 2026-06-03 A | 2026-06-08 A | 142FS+17d, 1284 | 100% |  | 2026-05-15 | 2026-05-18 | 2d |  |  | Projetista Automação | 16h | 16h | INSTRUMENTATION / AUTOMATION | Seg 18/05/26 | Sex 15/05/26 | 2 dias | 13,4 | 16 |
| 1300 | 1.11.21.2 | Avaliação do Cliente |  | 2d | 2026-06-08 A | 2026-06-09 A | 1299 | 100% |  | 2026-05-19 | 2026-05-21 | 3d |  |  | Tecnored | 16h | 16h | INSTRUMENTATION / AUTOMATION | Qui 21/05/26 | Ter 19/05/26 | 3 dias | 13,4 |  |
| 1301 | 1.11.21.3 | Atendimento de Comentário |  | 1d | 2026-06-09 A | 2026-06-10 | 1300 | 75% | 0.25d | 2026-05-22 | 2026-05-22 | 1d | 1d | 0d | Projetista Automação | 8h | 6h | INSTRUMENTATION / AUTOMATION | Sex 22/05/26 | Sex 22/05/26 | 1 dia | 13,4 |  |
| 1302 | 1.11.21.4 | Aprovação |  | 2d | 2026-06-11 A | 2026-06-12 | 1301 | 50% | 1d | 2026-05-25 | 2026-05-25 | 1d | 10d | 7d | Tecnored | 16h | 8h | INSTRUMENTATION / AUTOMATION | Seg 25/05/26 | Seg 25/05/26 | 1 dia | 13,4 | 0,5 |

| ID | WBS | Task | Type | Duration | Start | Finish | Predecessors | Complete | Remaining | Baseline start | Baseline finish | Baseline duration | Total slack | Free slack | Resources | Work | Actual work | Disciplina | Text2 | Início_LB_R0 | Duração_LB_R0 | Duração Média (Tenax) | Duração média da atividade (Tecnored) |
| --- | --- | --- | --- | --- | --- | --- | --- | --- | --- | --- | --- | --- | --- | --- | --- | --- | --- | --- | --- | --- | --- | --- | --- |
| 1303 | 1.11.22 | **FG-J0006-0000-GE-J-00001 - UTILITIES SYSTEMS WALTER** |  | 6d | 2026-06-01 A | 2026-06-10 |  | 82% | 1.07d | 2026-05-15 | 2026-05-25 | 7d | 12d | 9d |  | 56h | 46h | INSTRUMENTATION / AUTOMATION | Seg 25/05/26 | Sex 15/05/26 | 7 dias | 14,88 |  |
| 1304 | 1.11.22.1 | Emissão inicial |  | 3d | 2026-06-01 A | 2026-06-03 A | 142FS+19d, 1284 | 100% |  | 2026-05-15 | 2026-05-18 | 2d |  |  | Projetista Automação | 24h | 24h | INSTRUMENTATION / AUTOMATION | Seg 18/05/26 | Sex 15/05/26 | 2 dias | 13,4 | 16 |
| 1305 | 1.11.22.2 | Avaliação do Cliente |  | 1d | 2026-06-03 A | 2026-06-03 A | 1304 | 100% |  | 2026-05-19 | 2026-05-21 | 3d |  |  | Tecnored | 8h | 8h | INSTRUMENTATION / AUTOMATION | Qui 21/05/26 | Ter 19/05/26 | 3 dias | 13,4 |  |
| 1306 | 1.11.22.3 | Atendimento de Comentário |  | 1d | 2026-06-08 A | 2026-06-08 | 1305 | 75% | 0.25d | 2026-05-22 | 2026-05-22 | 1d | 1d | 0d | Projetista Automação | 8h | 6h | INSTRUMENTATION / AUTOMATION | Sex 22/05/26 | Sex 22/05/26 | 1 dia | 13,4 |  |
| 1307 | 1.11.22.4 | Aprovação |  | 2d | 2026-06-09 A | 2026-06-10 | 1306 | 50% | 1d | 2026-05-25 | 2026-05-25 | 1d | 12d | 9d | Tecnored | 16h | 8h | INSTRUMENTATION / AUTOMATION | Seg 25/05/26 | Seg 25/05/26 | 1 dia | 13,4 | 0,5 |
| 1308 | 1.11.23 | **FG-J0006-0000-GE-J-00002 - UTILITIES SYSTEMS AIR** |  | 6d | 2026-06-01 A | 2026-06-10 |  | 82% | 1.07d | 2026-05-15 | 2026-05-25 | 7d | 12d | 9d |  | 56h | 46h | INSTRUMENTATION / AUTOMATION | Seg 25/05/26 | Sex 15/05/26 | 7 dias | 14,88 |  |
| 1309 | 1.11.23.1 | Emissão inicial |  | 3d | 2026-06-01 A | 2026-06-03 A | 142FS+20d, 1284 | 100% |  | 2026-05-15 | 2026-05-18 | 2d |  |  | Projetista Automação | 24h | 24h | INSTRUMENTATION / AUTOMATION | Seg 18/05/26 | Sex 15/05/26 | 2 dias | 13,4 | 16 |
| 1310 | 1.11.23.2 | Avaliação do Cliente |  | 1d | 2026-06-03 A | 2026-06-03 A | 1309 | 100% |  | 2026-05-19 | 2026-05-21 | 3d |  |  | Tecnored | 8h | 8h | INSTRUMENTATION / AUTOMATION | Qui 21/05/26 | Ter 19/05/26 | 3 dias | 13,4 |  |
| 1311 | 1.11.23.3 | Atendimento de Comentário |  | 1d | 2026-06-08 A | 2026-06-08 | 1310 | 75% | 0.25d | 2026-05-22 | 2026-05-22 | 1d | 1d | 0d | Projetista Automação | 8h | 6h | INSTRUMENTATION / AUTOMATION | Sex 22/05/26 | Sex 22/05/26 | 1 dia | 13,4 |  |
| 1312 | 1.11.23.4 | Aprovação |  | 2d | 2026-06-09 A | 2026-06-10 | 1311 | 50% | 1d | 2026-05-25 | 2026-05-25 | 1d | 12d | 9d | Tecnored | 16h | 8h | INSTRUMENTATION / AUTOMATION | Seg 25/05/26 | Seg 25/05/26 | 1 dia | 13,4 | 0,5 |
| 1313 | 1.11.24 | **FG-J0006-0000-GE-J-00003 - UTILITIES SYSTEMS GAS** |  | 6d | 2026-06-01 A | 2026-06-10 |  | 77% | 1.36d | 2026-05-15 | 2026-05-25 | 7d | 12d | 9d |  | 44h | 34h | INSTRUMENTATION / AUTOMATION | Seg 25/05/26 | Sex 15/05/26 | 7 dias | 14,88 |  |
| 1314 | 1.11.24.1 | Emissão inicial |  | 1.5d | 2026-06-01 A | 2026-06-03 A | 142FS+21d, 1284 | 100% |  | 2026-05-15 | 2026-05-18 | 2d |  |  | Projetista Automação | 12h | 12h | INSTRUMENTATION / AUTOMATION | Seg 18/05/26 | Sex 15/05/26 | 2 dias | 13,4 | 16 |
| 1315 | 1.11.24.2 | Avaliação do Cliente |  | 1d | 2026-06-03 A | 2026-06-03 A | 1314 | 100% |  | 2026-05-19 | 2026-05-21 | 3d |  |  | Tecnored | 8h | 8h | INSTRUMENTATION / AUTOMATION | Qui 21/05/26 | Ter 19/05/26 | 3 dias | 13,4 |  |
| 1316 | 1.11.24.3 | Atendimento de Comentário |  | 1d | 2026-06-08 A | 2026-06-08 | 1315 | 75% | 0.25d | 2026-05-22 | 2026-05-22 | 1d | 1d | 0d | Projetista Automação | 8h | 6h | INSTRUMENTATION / AUTOMATION | Sex 22/05/26 | Sex 22/05/26 | 1 dia | 13,4 |  |
| 1317 | 1.11.24.4 | Aprovação |  | 2d | 2026-06-09 A | 2026-06-10 | 1316 | 50% | 1d | 2026-05-25 | 2026-05-25 | 1d | 12d | 9d | Tecnored | 16h | 8h | INSTRUMENTATION / AUTOMATION | Seg 25/05/26 | Seg 25/05/26 | 1 dia | 13,4 | 0,5 |
| 1318 | 1.11.25 | **FG-J0006-0000-GE-J-00004 - UTILITIES SYSTEMS NITROGEN** |  | 6d | 2026-06-01 A | 2026-06-10 A |  | 100% |  | 2026-05-15 | 2026-05-25 | 7d |  |  |  | 48h | 48h | INSTRUMENTATION / AUTOMATION | Seg 25/05/26 | Sex 15/05/26 | 7 dias | 14,88 |  |
| 1319 | 1.11.25.1 | Emissão inicial |  | 3d | 2026-06-01 A | 2026-06-03 A | 142FS+22d, 1284 | 100% |  | 2026-05-15 | 2026-05-18 | 2d |  |  | Projetista Automação | 24h | 24h | INSTRUMENTATION / AUTOMATION | Seg 18/05/26 | Sex 15/05/26 | 2 dias | 13,4 | 16 |
| 1320 | 1.11.25.2 | Avaliação do Cliente | milestone | 0d | 2026-06-03 A | 2026-06-03 A | 1319 | 100% |  | 2026-05-19 | 2026-05-21 | 3d |  |  | Tecnored |  |  | INSTRUMENTATION / AUTOMATION | Qui 21/05/26 | Ter 19/05/26 | 3 dias | 13,4 |  |
| 1321 | 1.11.25.3 | Atendimento de Comentário |  | 2d | 2026-06-08 A | 2026-06-09 A | 1320 | 100% |  | 2026-05-22 | 2026-05-22 | 1d |  |  | Projetista Automação | 16h | 16h | INSTRUMENTATION / AUTOMATION | Sex 22/05/26 | Sex 22/05/26 | 1 dia | 13,4 |  |
| 1322 | 1.11.25.4 | Aprovação |  | 1d | 2026-06-09 A | 2026-06-10 A | 1321 | 100% |  | 2026-05-25 | 2026-05-25 | 1d |  |  | Tecnored | 8h | 8h | INSTRUMENTATION / AUTOMATION | Seg 25/05/26 | Seg 25/05/26 | 1 dia | 13,4 | 0,5 |
| 1323 | 1.11.26 | **FG-J0006-0000-GE-J-00005 - UTILITIES SYSTEMS FIRE PROTECTION** |  | 9d | 2026-06-10 | 2026-06-23 |  |  |  | 2026-05-15 | 2026-05-25 | 7d | 3d | 0d |  | 72h |  | INSTRUMENTATION / AUTOMATION | Seg 25/05/26 | Sex 15/05/26 | 7 dias | 14,88 |  |
| 1324 | 1.11.26.1 | Emissão inicial | milestone | 0d | 2026-06-10 | 2026-06-10 | 142FS+23d, 1284 |  |  | 2026-05-15 | 2026-05-18 | 2d | 3d | 0d | Projetista Automação |  |  | INSTRUMENTATION / AUTOMATION | Seg 18/05/26 | Sex 15/05/26 | 2 dias | 13,4 | 16 |
| 1325 | 1.11.26.2 | Avaliação do Cliente |  | 2d | 2026-06-11 | 2026-06-12 | 1324 |  |  | 2026-05-19 | 2026-05-21 | 3d | 3d | 0d | Tecnored | 16h |  | INSTRUMENTATION / AUTOMATION | Qui 21/05/26 | Ter 19/05/26 | 3 dias | 13,4 |  |
| 1326 | 1.11.26.3 | Atendimento de Comentário |  | 2d | 2026-06-15 | 2026-06-16 | 1325 |  |  | 2026-05-22 | 2026-05-22 | 1d | 3d | 0d | Projetista Automação | 16h |  | INSTRUMENTATION / AUTOMATION | Sex 22/05/26 | Sex 22/05/26 | 1 dia | 13,4 |  |
| 1327 | 1.11.26.4 | Aprovação |  | 5d | 2026-06-17 | 2026-06-23 | 1326 |  |  | 2026-05-25 | 2026-05-25 | 1d | 3d | 0d | Tecnored | 40h |  | INSTRUMENTATION / AUTOMATION | Seg 25/05/26 | Seg 25/05/26 | 1 dia | 13,4 | 0,5 |

| ID | WBS | Task | Type | Duration | Start | Finish | Predecessors | Complete | Remaining | Baseline start | Baseline finish | Baseline duration | Total slack | Free slack | Resources | Work | Actual work | Text2 | Início_LB_R0 | Duração_LB_R0 | Duração média da atividade (Tecnored) | Duração Média (Tenax) | Disciplina |
| --- | --- | --- | --- | --- | --- | --- | --- | --- | --- | --- | --- | --- | --- | --- | --- | --- | --- | --- | --- | --- | --- | --- | --- |
| 1328 | 1.12 | **TELECOMMUNICATIONS** |  | 12d | 2026-05-22 A | 2026-06-10 |  | 86% | 1.7d | 2026-04-24 | 2026-06-25 | 42d | 12d |  |  | 212h | 182h | Qui 25/06/26 | Sex 24/04/26 | 42 dias | 196 | 232,24 |  |
| 1329 | 1.12.1 | **CP-J0006-0000-GE-K-00001** |  | 7d | 2026-05-22 A | 2026-06-01 A |  | 100% |  | 2026-04-24 | 2026-05-06 | 8d |  |  |  | 48h | 48h | Qua 06/05/26 | Sex 24/04/26 | 8 dias |  | 23,52 | TELECOMMUNICATIONS |
| 1330 | 1.12.1.1 | Emissão inicial |  | 2d | 2026-05-22 A | 2026-05-26 A | 1292, 1327, 1322, 1317, 1312, 1307, 1297, 1302 | 100% |  | 2026-04-24 | 2026-04-28 | 3d |  |  | Eng. Elétrica | 16h | 16h | Ter 28/04/26 | Sex 24/04/26 | 3 dias | 24 | 13,4 | TELECOMMUNICATIONS |
| 1331 | 1.12.1.2 | Avaliação do Cliente |  | 1d | 2026-05-27 A | 2026-05-27 A | 1330 | 100% |  | 2026-04-29 | 2026-05-04 | 3d |  |  | Tecnored | 8h | 8h | Seg 04/05/26 | Qua 29/04/26 | 3 dias |  | 13,4 | TELECOMMUNICATIONS |
| 1332 | 1.12.1.3 | Atendimento de Comentário |  | 2d | 2026-05-28 A | 2026-05-29 A | 1331 | 100% |  | 2026-05-05 | 2026-05-05 | 1d |  |  | Eng. Elétrica | 16h | 16h | Ter 05/05/26 | Ter 05/05/26 | 1 dia |  | 13,4 | TELECOMMUNICATIONS |
| 1333 | 1.12.1.4 | Aprovação |  | 1d | 2026-05-29 A | 2026-06-01 A | 1332 | 100% |  | 2026-05-06 | 2026-05-06 | 1d |  |  | Tecnored | 8h | 8h | Qua 06/05/26 | Qua 06/05/26 | 1 dia | 0,5 | 13,4 | TELECOMMUNICATIONS |
| 1334 | 1.12.2 | **DG-J0006-0000-GE-K-00001** |  | 5d | 2026-06-01 A | 2026-06-09 |  | 79% | 1.07d | 2026-05-15 | 2026-05-25 | 7d | 13d |  |  | 28h | 22h | Seg 25/05/26 | Sex 15/05/26 | 7 dias |  | 17,76 | TELECOMMUNICATIONS |
| 1335 | 1.12.2.1 | Emissão inicial |  | 1.5d | 2026-06-01 A | 2026-06-03 A | 1292FS-2d, 1327FS-2d, 1322FS-2d, 1317FS-2d, 1312FS-2d, 1307, 1297FS-2d, 1302FS-2d | 100% |  | 2026-05-15 | 2026-05-18 | 2d |  |  | Eng. Elétrica | 12h | 12h | Seg 18/05/26 | Sex 15/05/26 | 2 dias | 16 | 13,4 | TELECOMMUNICATIONS |
| 1336 | 1.12.2.2 | Avaliação do Cliente | milestone | 0d | 2026-06-03 A | 2026-06-03 A | 1335 | 100% |  | 2026-05-19 | 2026-05-21 | 3d |  |  | Tecnored |  |  | Qui 21/05/26 | Ter 19/05/26 | 3 dias |  | 13,4 | TELECOMMUNICATIONS |
| 1337 | 1.12.2.3 | Atendimento de Comentário |  | 1d | 2026-06-03 A | 2026-06-08 | 1336 | 75% | 0.25d | 2026-05-22 | 2026-05-22 | 1d | 0.5d | 0d | Eng. Elétrica | 8h | 6h | Sex 22/05/26 | Sex 22/05/26 | 1 dia |  | 13,4 | TELECOMMUNICATIONS |
| 1338 | 1.12.2.4 | Aprovação |  | 1d | 2026-06-09 A | 2026-06-09 | 1337 | 50% | 0.5d | 2026-05-25 | 2026-05-25 | 1d | 13d |  | Tecnored | 8h | 4h | Seg 25/05/26 | Seg 25/05/26 | 1 dia | 0,5 | 13,4 | TELECOMMUNICATIONS |
| 1339 | 1.12.3 | **DG-J0006-1200-GE-K-00002** | inactive | 7d | 2026-06-24 | 2026-07-02 |  |  |  | 2026-05-15 | 2026-05-25 | 7d | -18d | 0d |  | 56h |  | Seg 25/05/26 | Sex 15/05/26 | 7 dias |  | 17,76 | TELECOMMUNICATIONS |
| 1340 | 1.12.3.1 | Emissão inicial | inactive | 2d | 2026-06-24 | 2026-06-25 | 1292, 1327, 1322, 1317, 1312, 1307, 1297, 1302 |  |  | 2026-05-15 | 2026-05-18 | 2d | -18d | 0d | Eng. Elétrica | 16h |  | Seg 18/05/26 | Sex 15/05/26 | 2 dias | 16 | 13,4 | TELECOMMUNICATIONS |
| 1341 | 1.12.3.2 | Avaliação do Cliente | inactive | 3d | 2026-06-26 | 2026-06-30 | 1340 |  |  | 2026-05-19 | 2026-05-21 | 3d | -18d | 0d | Tecnored | 24h |  | Qui 21/05/26 | Ter 19/05/26 | 3 dias |  | 13,4 | TELECOMMUNICATIONS |
| 1342 | 1.12.3.3 | Atendimento de Comentário | inactive | 1d | 2026-07-01 | 2026-07-01 | 1341 |  |  | 2026-05-22 | 2026-05-22 | 1d | -18d | 0d | Eng. Elétrica | 8h |  | Sex 22/05/26 | Sex 22/05/26 | 1 dia |  | 13,4 | TELECOMMUNICATIONS |
| 1343 | 1.12.3.4 | Aprovação | inactive | 1d | 2026-07-02 | 2026-07-02 | 1342 |  |  | 2026-05-25 | 2026-05-25 | 1d | -18d | 0d | Tecnored | 8h |  | Seg 25/05/26 | Seg 25/05/26 | 1 dia | 0,5 | 13,4 | TELECOMMUNICATIONS |
| 1344 | 1.12.4 | **LE-J0006-1200-GE-K-00001** | inactive | 7d | 2026-07-03 | 2026-07-15 |  |  |  | 2026-05-26 | 2026-06-03 | 7d | -18d | 0d |  | 56h |  | Qua 03/06/26 | Ter 26/05/26 | 7 dias |  | 23,52 | TELECOMMUNICATIONS |
| 1345 | 1.12.4.1 | Emissão inicial | inactive | 2d | 2026-07-03 | 2026-07-06 | 1343 |  |  | 2026-05-26 | 2026-05-27 | 2d | -18d | 0d | Eng. Elétrica | 16h |  | Qua 27/05/26 | Ter 26/05/26 | 2 dias | 16 | 13,4 | TELECOMMUNICATIONS |
| 1346 | 1.12.4.2 | Avaliação do Cliente | inactive | 3d | 2026-07-07 | 2026-07-13 | 1345 |  |  | 2026-05-28 | 2026-06-01 | 3d | -18d | 0d | Tecnored | 24h |  | Seg 01/06/26 | Qui 28/05/26 | 3 dias |  | 13,4 | TELECOMMUNICATIONS |
| 1347 | 1.12.4.3 | Atendimento de Comentário | inactive | 1d | 2026-07-14 | 2026-07-14 | 1346 |  |  | 2026-06-02 | 2026-06-02 | 1d | -18d | 0d | Eng. Elétrica | 8h |  | Ter 02/06/26 | Ter 02/06/26 | 1 dia |  | 13,4 | TELECOMMUNICATIONS |
| 1348 | 1.12.4.4 | Aprovação | inactive | 1d | 2026-07-15 | 2026-07-15 | 1347 |  |  | 2026-06-03 | 2026-06-03 | 1d | -18d | 0d | Tecnored | 8h |  | Qua 03/06/26 | Qua 03/06/26 | 1 dia | 0,5 | 13,4 | TELECOMMUNICATIONS |
| 1349 | 1.12.5 | **MC-J0006-1200-GE-K-00001** | inactive | 7d | 2026-07-16 | 2026-07-24 |  |  |  | 2026-06-08 | 2026-06-16 | 7d | -18d | 0d |  | 56h |  | Ter 16/06/26 | Seg 08/06/26 | 7 dias |  | 29,28 | TELECOMMUNICATIONS |
| 1350 | 1.12.5.1 | Emissão inicial | inactive | 2d | 2026-07-16 | 2026-07-17 | 1348 |  |  | 2026-06-08 | 2026-06-09 | 2d | -18d | 0d | Eng. Elétrica | 16h |  | Ter 09/06/26 | Seg 08/06/26 | 2 dias | 16 | 13,4 | TELECOMMUNICATIONS |
| 1351 | 1.12.5.2 | Avaliação do Cliente | inactive | 3d | 2026-07-20 | 2026-07-22 | 1350 |  |  | 2026-06-10 | 2026-06-12 | 3d | -18d | 0d | Tecnored | 24h |  | Sex 12/06/26 | Qua 10/06/26 | 3 dias |  | 13,4 | TELECOMMUNICATIONS |
| 1352 | 1.12.5.3 | Atendimento de Comentário | inactive | 1d | 2026-07-23 | 2026-07-23 | 1351 |  |  | 2026-06-15 | 2026-06-15 | 1d | -18d | 0d | Eng. Elétrica | 8h |  | Seg 15/06/26 | Seg 15/06/26 | 1 dia |  | 13,4 | TELECOMMUNICATIONS |
| 1353 | 1.12.5.4 | Aprovação | inactive | 1d | 2026-07-24 | 2026-07-24 | 1352 |  |  | 2026-06-16 | 2026-06-16 | 1d | -18d | 0d | Tecnored | 8h |  | Ter 16/06/26 | Ter 16/06/26 | 1 dia | 0,5 | 13,4 | TELECOMMUNICATIONS |

| ID | WBS | Task | Type | Duration | Start | Finish | Predecessors | Complete | Remaining | Baseline start | Baseline finish | Baseline duration | Total slack | Free slack | Resources | Work | Actual work | Disciplina | Text2 | Início_LB_R0 | Duração_LB_R0 | Duração Média (Tenax) | Duração média da atividade (Tecnored) |
| --- | --- | --- | --- | --- | --- | --- | --- | --- | --- | --- | --- | --- | --- | --- | --- | --- | --- | --- | --- | --- | --- | --- | --- |
| 1354 | 1.12.6 | **PQ-J0006-0000-GE-K-00001** |  | 6d | 2026-06-01 A | 2026-06-10 |  | 50% | 3d | 2026-06-17 | 2026-06-25 | 7d | 12d |  |  | 48h | 24h | TELECOMMUNICATIONS | Qui 25/06/26 | Qua 17/06/26 | 7 dias | 29,28 |  |
| 1355 | 1.12.6.1 | Emissão inicial |  | 3d | 2026-06-01 A | 2026-06-03 A | 1326 | 100% |  | 2026-06-17 | 2026-06-18 | 2d |  |  | Projetista Elétrica | 24h | 24h | TELECOMMUNICATIONS | Qui 18/06/26 | Qua 17/06/26 | 2 dias | 13,4 | 16 |
| 1356 | 1.12.6.2 | Avaliação do Cliente |  | 1d | 2026-06-08 | 2026-06-08 | 1355 |  |  | 2026-06-19 | 2026-06-23 | 3d | 12d | 0d | Tecnored | 8h |  | TELECOMMUNICATIONS | Ter 23/06/26 | Sex 19/06/26 | 3 dias | 13,4 |  |
| 1357 | 1.12.6.3 | Atendimento de Comentário |  | 1d | 2026-06-09 | 2026-06-09 | 1356 |  |  | 2026-06-24 | 2026-06-24 | 1d | 12d | 0d | Projetista Elétrica | 8h |  | TELECOMMUNICATIONS | Qua 24/06/26 | Qua 24/06/26 | 1 dia | 13,4 |  |
| 1358 | 1.12.6.4 | Aprovação |  | 1d | 2026-06-10 | 2026-06-10 | 1357 |  |  | 2026-06-25 | 2026-06-25 | 1d | 12d |  | Tecnored | 8h |  | TELECOMMUNICATIONS | Qui 25/06/26 | Qui 25/06/26 | 1 dia | 13,4 | 0,5 |
| 1359 | 1.12.7 | **MD-J0006-1200-GE-K-00001** |  | 5d | 2026-05-25 A | 2026-05-29 A |  | 100% |  | 2026-06-16 | 2026-06-25 | 8d |  |  |  | 40h | 40h | TELECOMMUNICATIONS | Qui 25/06/26 | Ter 16/06/26 | 8 dias | 35,04 |  |
| 1360 | 1.12.7.1 | Emissão inicial |  | 3d | 2026-05-25 A | 2026-05-27 A | 1355FF | 100% |  | 2026-06-16 | 2026-06-18 | 3d |  |  | Projetista Elétrica | 24h | 24h | TELECOMMUNICATIONS | Qui 18/06/26 | Ter 16/06/26 | 3 dias | 13,4 | 24 |
| 1361 | 1.12.7.2 | Avaliação do Cliente |  | 1d | 2026-05-28 A | 2026-05-28 A | 1360 | 100% |  | 2026-06-19 | 2026-06-23 | 3d |  |  | Tecnored | 8h | 8h | TELECOMMUNICATIONS | Ter 23/06/26 | Sex 19/06/26 | 3 dias | 13,4 |  |
| 1362 | 1.12.7.3 | Atendimento de Comentário |  | 1d | 2026-05-28 A | 2026-05-29 A | 1361 | 100% |  | 2026-06-24 | 2026-06-24 | 1d |  |  | Projetista Elétrica | 8h | 8h | TELECOMMUNICATIONS | Qua 24/06/26 | Qua 24/06/26 | 1 dia | 13,4 |  |
| 1363 | 1.12.7.4 | Aprovação | milestone | 0d | 2026-05-29 A | 2026-05-29 A | 1362 | 100% |  | 2026-06-25 | 2026-06-25 | 1d |  |  | Tecnored |  |  | TELECOMMUNICATIONS | Qui 25/06/26 | Qui 25/06/26 | 1 dia | 13,4 | 0,5 |
| 1364 | 1.12.8 | **AG-J0006-1200-GE-K-00001** |  | 6d | 2026-05-22 A | 2026-05-29 A |  | 100% |  | 2026-05-13 | 2026-05-25 | 9d |  |  |  | 48h | 48h | TELECOMMUNICATIONS | Seg 25/05/26 | Qua 13/05/26 | 9 dias | 23,52 |  |
| 1365 | 1.12.8.1 | Emissão inicial |  | 4d | 2026-05-22 A | 2026-05-27 A | 1335FF | 100% |  | 2026-05-13 | 2026-05-18 | 4d |  |  | Projetista Elétrica | 32h | 32h | TELECOMMUNICATIONS | Seg 18/05/26 | Qua 13/05/26 | 4 dias | 13,4 | 32 |
| 1366 | 1.12.8.2 | Avaliação do Cliente | milestone | 0d | 2026-05-27 A | 2026-05-27 A | 1365 | 100% |  | 2026-05-19 | 2026-05-21 | 3d |  |  | Tecnored |  |  | TELECOMMUNICATIONS | Qui 21/05/26 | Ter 19/05/26 | 3 dias | 13,4 |  |
| 1367 | 1.12.8.3 | Atendimento de Comentário |  | 1d | 2026-05-27 A | 2026-05-28 A | 1366 | 100% |  | 2026-05-22 | 2026-05-22 | 1d |  |  | Projetista Elétrica | 8h | 8h | TELECOMMUNICATIONS | Sex 22/05/26 | Sex 22/05/26 | 1 dia | 13,4 |  |
| 1368 | 1.12.8.4 | Aprovação |  | 1d | 2026-05-28 A | 2026-05-29 A | 1367 | 100% |  | 2026-05-25 | 2026-05-25 | 1d |  |  | Tecnored | 8h | 8h | TELECOMMUNICATIONS | Seg 25/05/26 | Seg 25/05/26 | 1 dia | 13,4 | 0,5 |
